# Предварительный план2007

How a schedule from MS Project changed from version to version. A marks actual dates.

## Version 1 (saved 2013-04-19)

Note of the change: То же самое, но в формате MS PRJ 2007

| ID | WBS | Task | Duration | Start | Finish | Predecessors | Total float | Constraint |
| --- | --- | --- | --- | --- | --- | --- | --- | --- |
| 1 | 1 | **Разработка второй версии CM5** | 334d? | 2013-04-19 | 2014-08-06 |  | 0d |  |
| 2 |  | Принято решение о разработке функциональных модулей | 0d | 2013-04-22 | 2013-04-22 |  | 0d | start no earlier than 2013-04-22 |
| 3 |  | Управление проектом | 267d | 2013-04-22 | 2014-05-06 | 2 | 66d |  |
| 4 |  | Управление требованиями | 267d | 2013-04-22 | 2014-05-06 | 2 | 66d |  |
| 5 | 1.4 | **Создание модуля "КАНЦЕЛЯРИЯ" (документоориентированная среда)** | 146d? | 2013-04-19 | 2013-11-15 |  | 1d |  |
| 6 |  | Первичные требования для создания модуля "канцелярия" подготовлены | 0d | 2013-04-22 | 2013-04-22 | 2 | 0d | finish no earlier than 2012-04-02 |
| 7 | 1.4.2 | **Апробация идей прототипа** | 6d | 2013-04-19 | 2013-04-26 |  | 328d |  |
| 8 |  | Проведение предварительных испытаний системы | 6d | 2013-04-19 | 2013-04-26 |  | 328d |  |
| 9 | 1.4.3 | **Проектирование** | 75d | 2013-04-22 | 2013-08-09 | 6 | 0d |  |
| 10 | 1.4.3.1 | **Определение структуры модуля канцелярия** | 59d | 2013-04-22 | 2013-07-18 |  | 0d |  |
| 11 |  | Разбивка на слои | 5d | 2013-04-22 | 2013-04-26 |  | 0d |  |
| 12 |  | Конфигурации, загрузка и инициализация системы в базовой конфигурации | 5d | 2013-04-29 | 2013-05-08 | 11 | 0d |  |
| 13 |  | Базовая конфигурация объектов системы | 5d | 2013-04-29 | 2013-05-08 | 11 | 1d |  |
| 14 | 1.4.3.1.4 | **Подготовка к разработке модуля "КАНЦЕЛЯРИЯ"** | 9d | 2013-05-13 | 2013-05-23 | 13 | 40d |  |
| 15 |  | Настройка среды разработки | 4d | 2013-05-13 | 2013-05-16 |  | 40d |  |
| 16 |  | Поддержка UNIT-тестирования и интеграционного тестирования | 5d | 2013-05-17 | 2013-05-23 | 15 | 40d |  |
| 17 | 1.4.3.1.5 | **Права доступа** | 12d | 2013-05-13 | 2013-05-28 |  | 37d |  |
| 18 |  | Финализация структуры хранения | 5d | 2013-05-13 | 2013-05-17 | 13 | 37d |  |
| 19 |  | Модификация DAO для учета прав доступа | 5d | 2013-05-20 | 2013-05-24 | 13, 18 | 37d |  |
| 20 |  | Скрипты по инициализации системы | 2d | 2013-05-27 | 2013-05-28 | 19 | 37d |  |
| 21 | 1.4.3.1.6 | **Базовая имплементация слоя DAO** | 10d | 2013-05-13 | 2013-05-24 | 12 | 39d |  |
| 22 |  | Конфигурация слоя DAO | 5d | 2013-05-13 | 2013-05-17 |  | 39d |  |
| 23 |  | Имплементация слоя DAO | 5d | 2013-05-20 | 2013-05-24 | 22 | 39d |  |
| 24 |  | Workflow | 20d | 2013-05-13 | 2013-06-07 | 13 | 1d |  |
| 25 |  | Базовая архитектура GUI (GWT) | 20d | 2013-05-13 | 2013-06-07 | 12 | 0d |  |
| 26 |  | Поддержка механизма "логина" | 3d | 2013-06-10 | 2013-06-12 | 25 | 0d |  |
| 27 |  | Веб-сервисы | 3d | 2013-06-10 | 2013-06-12 | 24 | 1d |  |
| 28 |  | Списки | 10d | 2013-06-13 | 2013-06-26 | 26 | 0d |  |
| 29 |  | Формы | 10d | 2013-06-27 | 2013-07-10 | 28 | 0d |  |
| 30 |  | Вложения | 6d | 2013-07-11 | 2013-07-18 | 29 | 0d |  |
| 31 |  | Поиск | 15d | 2013-06-13 | 2013-07-03 | 27 | 1d |  |
| 32 |  | Полнотекстовый поиск | 10d | 2013-07-04 | 2013-07-17 | 31 | 1d |  |
| 33 |  | Изучение возможностей CM4-клиента | 20d | 2013-04-22 | 2013-05-24 |  | 39d |  |
| 34 |  | Описание структуры модуля "КАНЦЕЛЯРИЯ" | 15d | 2013-07-19 | 2013-08-08 | 10 | 0d |  |
| 35 |  | Уточнение состава и сроков работ | 1d | 2013-08-09 | 2013-08-09 | 34 | 0d |  |
| 36 | 1.4.4 | **Разработка** | 40d | 2013-08-12 | 2013-10-04 | 14 | 0d |  |
| 37 |  | Контроль и корректировка технических решений "Архитектурный комитет" | 40d | 2013-08-12 | 2013-10-04 | 34, 35 | 0d |  |
| 38 | 1.4.4.2 | **Разработка серверной логики модуля Канцелярия** | 40d | 2013-08-12 | 2013-10-04 | 9 | 0d |  |
| 39 |  | Разработка схем документов модуля КАНЦЕЛЯРИЯ | 20d | 2013-08-12 | 2013-09-06 |  | 0d |  |
| 40 |  | Разработка ЖЦ процессов модуля (WF) | 20d | 2013-09-09 | 2013-10-04 | 39 | 0d |  |
| 41 |  | Разработка логики бизнес- действий модуля "Канцелярия" | 40d | 2013-08-12 | 2013-10-04 |  | 0d |  |
| 42 |  | Разработка процессов автоматизации для модуля "канцелярия" | 20d | 2013-08-12 | 2013-09-06 |  | 20d |  |
| 43 |  | Разработка модели прав доступа (контекстные роли) | 20d | 2013-09-09 | 2013-10-04 | 39 | 0d |  |
| 44 | 1.4.4.3 | **Разработка клиентской логики модуля "канцелярия"** | 40d | 2013-08-12 | 2013-10-04 | 9 | 0d |  |
| 45 |  | Разработка форм для работы с документами в GUI (настройки форм) | 20d | 2013-08-12 | 2013-09-06 |  | 20d |  |
| 46 |  | Разработка структуры рабочего места | 20d | 2013-09-09 | 2013-10-04 | 39 | 0d |  |
| 47 |  | Разработка специфичных для модуля форм элементов GUI | 40d | 2013-08-12 | 2013-10-04 |  | 0d |  |
| 48 | 1.4.4.4 | **Подготовка работы со списками значений** | 40d | 2013-08-12 | 2013-10-04 |  | 0d |  |
| 49 |  | Разработка функционала учета организационно штатной структуры | 40d | 2013-08-12 | 2013-10-04 | 9 | 0d |  |
| 50 |  | Разработка функционала с рубрикаторами (сложные справочники) | 20d | 2013-08-12 | 2013-09-06 | 9 | 0d |  |
| 51 |  | Разработка функционала для работы с словарями данных (просте, линейные справочники) | 20d | 2013-09-09 | 2013-10-04 | 9, 50 | 0d |  |
| 52 |  | Адаптация компонент сканирования (СПО) | 20d | 2013-08-12 | 2013-09-06 | 9 | 218d |  |
| 53 |  | Подготовка отчетов | 20d | 2013-09-09 | 2013-10-04 | 9, 39, 52 | 218d |  |
| 54 |  | Разработка "ЕЖЕДНЕВНИКА" для модуля "КАНЦЕЛЯРИЯ" | 30d | 2013-08-26 | 2013-10-04 | 9FS+10d | 218d |  |
| 55 |  | Сборка прототипа модуля "Канцелярия" завершена | 0d | 2013-10-04 | 2013-10-04 | 38, 44, 48 | 0d |  |
| 56 | 1.4.6 | **Тестирование** | 70d? | 2013-08-12 | 2013-11-15 | 9 | 2d |  |
| 57 | 1.4.6.1 | **Функциональное тестирование** | 55d? | 2013-08-12 | 2013-10-25 |  | 2d |  |
| 58 |  | Подготовка ПМИ | 5d | 2013-08-12 | 2013-08-16 |  | 2d |  |
| 59 |  | Разработка "сценариев тестирования" | 15d | 2013-08-12 | 2013-08-30 |  | 2d |  |
| 60 |  | Разработка модели нагрузки для тестирования | 10d | 2013-08-19 | 2013-08-30 | 58 | 2d |  |
| 61 | 1.4.6.1.4 | **Проведение тестирования** | 40d? | 2013-09-02 | 2013-10-25 | 59, 60 | 2d |  |
| 62 | 1.4.6.1.4.1 | **Подготовка среды тестирования** | 15d? | 2013-09-02 | 2013-09-20 |  | 2d |  |
| 63 |  | Разворачивание системы | 5d? | 2013-09-02 | 2013-09-06 |  | 2d |  |
| 64 |  | Наполнение данными | 10d? | 2013-09-09 | 2013-09-20 | 63 | 2d |  |
| 65 |  | Среда тестирования готова | 0d | 2013-09-20 | 2013-09-20 | 64 | 2d | start no earlier than 2012-05-24 |
| 66 |  | Проведение тестирования | 10d | 2013-09-23 | 2013-10-04 | 65 | 2d |  |
| 67 | 1.4.6.1.4.4 | **Обработка результатов тестирования и внесение изменений в модуль** | 15d | 2013-10-07 | 2013-10-25 | 55, 66FS-2d | 0d |  |
| 68 |  | Устранение замечаний по результатам функционального тестирования | 15d | 2013-10-07 | 2013-10-25 |  | 0d |  |
| 69 |  | Проверка устранения замечаний | 6d | 2013-10-18 | 2013-10-25 | 68FS-6d | 2d |  |
| 70 | 1.4.6.2 | **Нагрузочное тестирование** | 65d | 2013-08-19 | 2013-11-15 | 58 | 2d |  |

| ID | WBS | Task | Duration | Start | Finish | Predecessors | Total float | Constraint |
| --- | --- | --- | --- | --- | --- | --- | --- | --- |
| 71 |  | Подготовка автоматизированных сценариев для создания нагрузки | 38d | 2013-08-19 | 2013-10-09 |  | 14d |  |
| 72 |  | Стенд для нагрузочного тестирования подготовлен | 0d | 2013-10-04 | 2013-10-04 | 66 | 17d | finish no earlier than 2012-06-09 |
| 73 |  | Проведения нагрузочного тестирования | 10d | 2013-10-28 | 2013-11-08 | 69, 71, 72 | 2d |  |
| 74 |  | Обработка результатов нагрузочного тестирования | 5d | 2013-11-11 | 2013-11-15 | 73 | 2d |  |
| 75 |  | Разработка модуля "Канцелярия" завершена | 0d | 2013-11-15 | 2013-11-15 | 56 | 188d |  |
| 76 | 1.4.8 | **Подготовка документации** | 40d | 2013-08-12 | 2013-10-04 | 56SS | 0d |  |
| 77 |  | Разработка документа "Концепция системы " | 20d | 2013-08-12 | 2013-09-06 |  | 0d |  |
| 78 |  | Разработка "Software Architecture Document" | 20d | 2013-09-09 | 2013-10-04 | 77 | 0d |  |
| 79 |  | Документы подготовлены | 0d | 2013-10-04 | 2013-10-04 | 78 | 0d |  |
| 80 | 1.5 | **Создание модулей первой очереди** | 88d? | 2013-10-04 | 2014-02-05 |  | 0d |  |
| 81 |  | Определен состав модулей первой очереди и первичные требования подготовлены | 0d | 2013-10-04 | 2013-10-04 | 79 | 0d | finish no earlier than 2012-04-02 |
| 82 | 1.5.2 | **Проектирование** | 15d | 2013-10-07 | 2013-10-25 | 81 | 0d |  |
| 83 |  | Определение структуры модулей первой очереди | 13d | 2013-10-07 | 2013-10-23 | 37 | 0d |  |
| 84 |  | Уточнение состава и сроков работ | 2d | 2013-10-24 | 2013-10-25 | 83 | 0d |  |
| 85 |  | Принято решение о разработке модулей второй очереди | 0d | 2013-10-25 | 2013-10-25 | 68, 83 | 0d | finish no earlier than 2012-05-21 |
| 86 | 1.5.4 | **Разработка** | 40d | 2013-10-28 | 2013-12-20 | 85 | 0d |  |
| 87 |  | Контроль и корректировка технических решений "Архитектурный комитет" | 40d | 2013-10-28 | 2013-12-20 |  | 132d |  |
| 88 | 1.5.4.2 | **Разработка серверной логики модулей первой очереди** | 40d | 2013-10-28 | 2013-12-20 |  | 0d |  |
| 89 |  | Разработка схем документов для модулей первой очереди | 20d | 2013-10-28 | 2013-11-22 |  | 0d |  |
| 90 |  | Разработка ЖЦ процессов (WF) | 20d | 2013-11-25 | 2013-12-20 | 89 | 0d |  |
| 91 |  | Разработка логики бизнес- действий для модулей первой очереди | 40d | 2013-10-28 | 2013-12-20 |  | 0d |  |
| 92 |  | Разработка процессов автоматизации для модулей первой очереди | 20d | 2013-10-28 | 2013-11-22 |  | 20d |  |
| 93 |  | Разработка модели прав доступа (контекстные роли) | 20d | 2013-11-25 | 2013-12-20 | 89 | 0d |  |
| 94 | 1.5.4.3 | **Разработка клиентской логики модулей первой очереди** | 40d | 2013-10-28 | 2013-12-20 |  | 0d |  |
| 95 |  | Разработка форм для работы с документами в GUI (настройки форм) | 20d | 2013-10-28 | 2013-11-22 |  | 20d |  |
| 96 |  | Разработка структуры рабочего места | 20d | 2013-11-25 | 2013-12-20 | 89 | 0d |  |
| 97 |  | Разработка специфичных для модуля форм элементов GUI | 40d | 2013-10-28 | 2013-12-20 |  | 0d |  |
| 98 | 1.5.4.4 | **Разработка вспомогательного инструментария** | 40d | 2013-10-28 | 2013-12-20 |  | 0d |  |
| 99 |  | Построитель форм | 40d | 2013-10-28 | 2013-12-20 | 82 | 0d |  |
| 100 |  | Разработка инсталлятора | 40d | 2013-10-28 | 2013-12-20 | 82 | 0d |  |
| 101 |  | Разработка конфигуратора | 40d | 2013-10-28 | 2013-12-20 | 82 | 0d |  |
| 102 |  | Подготовка отчетов | 40d | 2013-10-28 | 2013-12-20 |  | 132d |  |
| 103 |  | Подготовка модуля для работы с УИП | 40d | 2013-10-28 | 2013-12-20 | 101SS | 132d |  |
| 104 |  | Сборка модулей первой очереди завершена | 0d | 2013-12-20 | 2013-12-20 | 88, 94, 98 | 0d |  |
| 105 | 1.5.6 | **Тестирование** | 58d? | 2013-11-18 | 2014-02-05 | 70 | 2d |  |
| 106 | 1.5.6.1 | **Функциональное тестирование** | 40d? | 2013-11-18 | 2014-01-10 |  | 2d |  |
| 107 |  | Подготовка ПМИ | 5d | 2013-11-18 | 2013-11-22 |  | 130d |  |
| 108 |  | Разработка "сценариев тестирования" | 15d | 2013-11-18 | 2013-12-06 |  | 2d |  |
| 109 |  | Разработка модели нагрузки для тестирования | 10d | 2013-11-25 | 2013-12-06 | 107 | 173d |  |
| 110 | 1.5.6.1.4 | **Проведение тестирования** | 40d? | 2013-11-18 | 2014-01-10 |  | 2d |  |
| 111 | 1.5.6.1.4.1 | **Подготовка среды тестирования** | 15d? | 2013-11-18 | 2013-12-06 |  | 2d |  |
| 112 |  | Разворачивание системы | 5d? | 2013-11-18 | 2013-11-22 |  | 2d |  |
| 113 |  | Наполнение данными | 10d? | 2013-11-25 | 2013-12-06 | 112 | 2d |  |
| 114 |  | Среда тестирования готова | 0d | 2013-12-06 | 2013-12-06 | 108, 113 | 2d | finish no earlier than 2012-06-09 |
| 115 |  | Проведение тестирования | 10d | 2013-12-09 | 2013-12-20 | 114 | 2d |  |
| 116 | 1.5.6.1.4.4 | **Обработка результатов тестирования и внесение изменений в модуль** | 15d | 2013-12-23 | 2014-01-10 | 104, 115FS-2d | 0d |  |
| 117 |  | Устранение замечаний по результатам функционального тестирования | 15d | 2013-12-23 | 2014-01-10 |  | 0d |  |
| 118 |  | Проверка устранения замечаний | 6d | 2014-01-03 | 2014-01-10 | 117FS-6d | 22d |  |
| 119 | 1.5.6.2 | **Нагрузочное тестирование** | 53d | 2013-11-25 | 2014-02-05 | 107 | 130d |  |
| 120 |  | Подготовка автоматизированных сценариев для создания нагрузки | 38d | 2013-11-25 | 2014-01-15 |  | 130d |  |
| 121 |  | Стенд для нагрузочного тестирования подготовлен | 0d | 2013-12-20 | 2013-12-20 | 115 | 148d | finish no earlier than 2012-06-09 |
| 122 |  | Проведения нагрузочного тестирования | 10d | 2014-01-16 | 2014-01-29 | 118, 120, 121 | 130d |  |
| 123 |  | Обработка результатов нагрузочного тестирования | 5d | 2014-01-30 | 2014-02-05 | 122 | 130d |  |
| 124 |  | Разработка модулей первой очереди завершена | 0d | 2014-02-05 | 2014-02-05 | 105 | 130d |  |
| 125 | 1.5.8 | **Подготовка документации** | 40d | 2013-11-18 | 2014-01-10 | 105SS | 30d |  |
| 126 |  | Разработка "Software Architecture Document" для модулей первой очереди | 20d | 2013-11-18 | 2013-12-13 |  | 50d |  |
| 127 |  | Документы подготовлены | 0d | 2014-01-10 | 2014-01-10 | 118, 126 | 30d |  |
| 128 | 1.6 | **Проверка работоспособности решения - Организация демонстрации** | 31d? | 2013-12-23 | 2014-02-03 | 86 | 132d |  |
| 129 |  | Подготовка стенда | 3d | 2013-12-23 | 2013-12-25 |  | 132d |  |
| 130 |  | разработка прототипа | 20d? | 2013-12-26 | 2014-01-22 | 129 | 132d |  |
| 131 |  | Проведение демонстраций | 6d | 2014-01-23 | 2014-01-30 | 130 | 132d |  |
| 132 |  | Анализ результатов - выводы | 2d | 2014-01-31 | 2014-02-03 | 131 | 132d |  |
| 133 | 1.7 | **Подготовка документации для тиражирования CM5 v2** | 244d? | 2013-04-22 | 2014-04-03 | 2 | 89d |  |
| 134 |  | Подготовка стенда для документирования | 5d? | 2013-04-22 | 2013-04-26 |  | 89d | start no earlier than 2012-02-02 |
| 135 |  | Подготовка документации по обновленному функционалу BR4J (регионалка) | 19d | 2013-04-29 | 2013-05-30 | 134 | 89d | start no earlier than 2012-02-06 |
| 136 | 1.7.3 | **Описание функциональных особенностей системы** | 220d? | 2013-05-31 | 2014-04-03 | 135 | 89d |  |
| 137 |  | Подготовка спецификации | 22d | 2013-05-31 | 2013-07-01 |  | 89d |  |
| 138 |  | Подготовка описания типового функционала | 3.5d | 2013-07-02 | 2013-07-05 | 137 | 89d |  |
| 139 |  | Подготовка описания типового функционала (Апрель) | 10d | 2013-07-08 | 2013-07-19 | 138 | 273d |  |
| 140 | 1.7.3.4 | **Подготовка руководства по администрированию и установке** | 220d? | 2013-05-31 | 2014-04-03 |  | 89d |  |

| ID | WBS | Task | Duration | Start | Finish | Predecessors | Total float | Constraint |
| --- | --- | --- | --- | --- | --- | --- | --- | --- |
| 141 |  | Подготовка руководства администратора | 7d | 2013-05-31 | 2013-06-10 |  | 115d |  |
| 142 |  | Подготовка руководства по установке | 7d | 2013-06-11 | 2013-06-19 | 141 | 115d |  |
| 143 |  | Консультирование по вопросам администрирования и установке стенда | 14d | 2013-07-08 | 2013-07-25 | 138 | 89d |  |
| 144 |  | Рецензирование руководства администратора и руководства по установке | 2d | 2013-07-26 | 2013-07-29 | 142, 143 | 89d |  |
| 145 |  | Проверка комплектности | 1d | 2013-07-30 | 2013-07-30 | 144 | 266d |  |
| 146 |  | Поддержка и сопровождение работы стенда | 50d | 2013-05-31 | 2013-08-08 |  | 259d |  |
| 147 |  | Подготовка описания функционала | 21d? | 2013-07-30 | 2013-08-27 | 144 | 89d |  |
| 148 |  | Разработка «Программа и методика испытаний (ПМИ)» | 21d? | 2013-08-28 | 2013-09-25 | 147 | 89d |  |
| 149 |  | Рецензирование руководств | 15d | 2013-09-05 | 2013-09-25 | 147, 148FF | 89d |  |
| 150 | 1.7.3.4.10 | **Эксплуатационная документация** | 107d? | 2013-09-26 | 2014-02-21 | 149 | 89d |  |
| 151 |  | Разработка «Руководство по установке» (РУ) | 21d | 2013-09-26 | 2013-10-24 |  | 89d |  |
| 152 |  | Разработка «Руководство пользователя» (РП) | 21d? | 2013-10-25 | 2013-11-22 | 151 | 89d |  |
| 153 |  | Разработка «Руководство по администрированию» (РА ) | 23d | 2013-11-25 | 2013-12-25 | 152 | 89d |  |
| 154 |  | Рецензирование руководств | 15d | 2013-12-05 | 2013-12-25 | 152, 153FF | 89d |  |
| 155 |  | Доработка РП, РА, РУ | 11d | 2013-12-26 | 2014-01-09 | 154 | 89d |  |
| 156 | 1.7.3.4.10.6 | **Разработка инструкций** | 31d? | 2014-01-10 | 2014-02-21 | 155 | 89d |  |
| 157 |  | Разработка инструкций по типам документов | 21d? | 2014-01-10 | 2014-02-07 |  | 89d |  |
| 158 |  | Разработка инструкций по ролям | 21d? | 2014-01-10 | 2014-02-07 |  | 89d |  |
| 159 |  | Разработка инструкции по работе в АРМ (общая и по ролям) | 10d? | 2014-02-10 | 2014-02-21 | 157, 158 | 89d |  |
| 160 |  | Рецензирование инструкций | 10d? | 2014-02-10 | 2014-02-21 | 159FF | 89d |  |
| 161 | 1.7.3.4.11 | **Технологическая документация** | 13d | 2014-02-24 | 2014-03-12 | 160 | 89d |  |
| 162 |  | Разработка «Описание архитектуры системы» | 10d | 2014-02-24 | 2014-03-07 |  | 89d |  |
| 163 |  | Форматирование «Описание архитектуры системы» | 3d | 2014-03-10 | 2014-03-12 | 162 | 89d |  |
| 164 | 1.7.3.4.12 | **Внедренческая документация** | 16d? | 2014-03-13 | 2014-04-03 | 163 | 89d |  |
| 165 |  | Разработка типового ТКП | 10d? | 2014-03-13 | 2014-03-26 |  | 89d |  |
| 166 |  | Разработка типового ТЗ | 6d? | 2014-03-27 | 2014-04-03 | 165 | 89d |  |
| 167 | 1.8 | **Создание модулей второй очереди** | 85d? | 2013-12-23 | 2014-04-18 |  | 15d |  |
| 168 |  | Определен состав модулей второй очереди и первичные требования подготовлены | 0d | 2013-12-23 | 2013-12-23 | 169SF | 163d |  |
| 169 | 1.8.2 | **Проектирование** | 15d | 2013-12-23 | 2014-01-13 |  | 148d |  |
| 170 |  | Определение структуры модулей второй очереди | 13d | 2013-12-23 | 2014-01-09 | 171SF | 150d |  |
| 171 |  | Уточнение состава и сроков работ | 2d | 2014-01-09 | 2014-01-13 | 172SF | 148d |  |
| 172 |  | Принято решение о разработке модулей второй очереди | 0d | 2014-01-13 | 2014-01-13 | 87, 174SS | 148d |  |
| 173 | 1.8.3 | **Разработка** | 40d | 2014-01-13 | 2014-03-07 | 117 | 0d |  |
| 174 |  | Контроль и корректировка технических решений "Архитектурный комитет" | 40d | 2014-01-13 | 2014-03-07 |  | 108d |  |
| 175 | 1.8.3.2 | **Разработка серверной логики модулей второй очереди** | 40d | 2014-01-13 | 2014-03-07 |  | 0d |  |
| 176 |  | Разработка схем документов для модулей второй очереди | 20d | 2014-01-13 | 2014-02-07 |  | 0d |  |
| 177 |  | Разработка ЖЦ процессов (WF) | 20d | 2014-02-10 | 2014-03-07 | 176 | 0d |  |
| 178 |  | Разработка логики бизнес- действий для модулей второй очереди | 40d | 2014-01-13 | 2014-03-07 |  | 0d |  |
| 179 |  | Разработка процессов автоматизации для модулей второй очереди | 20d | 2014-01-13 | 2014-02-07 |  | 20d |  |
| 180 |  | Разработка модели прав доступа (контекстные роли) | 20d | 2014-02-10 | 2014-03-07 | 176 | 0d |  |
| 181 | 1.8.3.3 | **Разработка клиентской логики модулей второй очереди** | 40d | 2014-01-13 | 2014-03-07 |  | 0d |  |
| 182 |  | Разработка форм для работы с документами в GUI (настройки форм) | 20d | 2014-01-13 | 2014-02-07 |  | 20d |  |
| 183 |  | Разработка структуры рабочего места | 20d | 2014-02-10 | 2014-03-07 | 176 | 0d |  |
| 184 |  | Разработка специфичных для модуля форм элементов GUI | 40d | 2014-01-13 | 2014-03-07 |  | 0d |  |
| 185 | 1.8.3.4 | **Разработка вспомогательного инструментария** | 40d | 2014-01-13 | 2014-03-07 |  | 0d |  |
| 186 |  | Доработка "Построителя форм" | 40d | 2014-01-13 | 2014-03-07 |  | 0d |  |
| 187 |  | Доработка "Инсталлятора" | 40d | 2014-01-13 | 2014-03-07 |  | 0d |  |
| 188 |  | Доработка "Конфигуратора" | 40d | 2014-01-13 | 2014-03-07 |  | 0d |  |
| 189 |  | Подготовка отчетов для второй очереди модулей | 40d | 2014-01-13 | 2014-03-07 |  | 108d |  |
| 190 |  | Сборка модулей второй очереди завершена | 0d | 2014-03-07 | 2014-03-07 | 175, 181, 185 | 0d |  |
| 191 | 1.8.5 | **Тестирование** | 70d? | 2014-01-13 | 2014-04-18 | 116 | 22d |  |
| 192 | 1.8.5.1 | **Функциональное тестирование** | 55d? | 2014-01-13 | 2014-03-28 |  | 22d |  |
| 193 |  | Подготовка ПМИ | 5d | 2014-01-13 | 2014-01-17 |  | 22d |  |
| 194 |  | Разработка "сценариев тестирования" | 15d | 2014-01-13 | 2014-01-31 |  | 25d |  |
| 195 |  | Разработка модели нагрузки для тестирования | 10d | 2014-01-20 | 2014-01-31 | 125, 193 | 25d |  |
| 196 | 1.8.5.1.4 | **Проведение тестирования** | 40d? | 2014-02-03 | 2014-03-28 | 194, 195 | 25d |  |
| 197 | 1.8.5.1.4.1 | **Подготовка среды тестирования** | 10d? | 2014-02-03 | 2014-02-14 |  | 30d |  |
| 198 |  | Разворачивание системы | 5d? | 2014-02-03 | 2014-02-07 | 199SF | 128d |  |
| 199 |  | Наполнение данными | 10d? | 2014-02-03 | 2014-02-14 |  | 30d |  |
| 200 |  | Среда тестирования готова | 0d | 2014-02-14 | 2014-02-14 | 199 | 30d |  |
| 201 |  | Проведение тестирования | 10d | 2014-02-17 | 2014-02-28 | 200 | 30d |  |
| 202 | 1.8.5.1.4.4 | **Обработка результатов тестирования и внесение изменений в модуль** | 15d | 2014-03-10 | 2014-03-28 | 190 | 0d |  |
| 203 |  | Устранение замечаний по результатам функционального тестирования | 15d | 2014-03-10 | 2014-03-28 |  | 0d |  |
| 204 |  | Проверка устранения замечаний | 6d | 2014-03-21 | 2014-03-28 | 203FS-6d | 0d |  |
| 205 | 1.8.5.2 | **Нагрузочное тестирование** | 65d | 2014-01-20 | 2014-04-18 | 193 | 10d |  |
| 206 |  | Подготовка автоматизированных сценариев для создания нагрузки | 38d | 2014-01-20 | 2014-03-12 |  | 22d |  |
| 207 |  | Стенд для нагрузочного тестирования подготовлен | 0d | 2014-02-28 | 2014-02-28 | 201 | 30d | finish no earlier than 2012-06-09 |
| 208 |  | Проведения нагрузочного тестирования | 10d | 2014-03-31 | 2014-04-11 | 204, 206, 207 | 10d |  |
| 209 |  | Обработка результатов нагрузочного тестирования | 5d | 2014-04-14 | 2014-04-18 | 208 | 10d |  |
| 210 |  | Разработка модулей второй очереди завершена | 0d | 2014-04-18 | 2014-04-18 | 191 | 78d |  |

| ID | WBS | Task | Duration | Start | Finish | Predecessors | Total float | Constraint |
| --- | --- | --- | --- | --- | --- | --- | --- | --- |
| 211 | 1.8.7 | **Подготовка документации** | 55d | 2014-01-13 | 2014-03-28 | 191SS | 93d |  |
| 212 |  | Разработка "Software Architecture Document" для модулей второй очереди | 20d | 2014-01-13 | 2014-02-07 |  | 128d |  |
| 213 |  | Документы подготовлены | 0d | 2014-03-28 | 2014-03-28 | 204, 212 | 93d |  |
| 214 | 1.9 | **Создание модулей третьей очереди** | 108d? | 2014-03-10 | 2014-08-06 |  | 0d |  |
| 215 |  | Определен состав модулей третьей очереди и первичные требования подготовлены | 0d | 2014-03-10 | 2014-03-10 | 216SF | 108d |  |
| 216 | 1.9.2 | **Проектирование** | 15d | 2014-03-10 | 2014-03-31 |  | 93d |  |
| 217 |  | Определение структуры третьей очереди | 11d | 2014-03-10 | 2014-03-25 | 218SF | 97d |  |
| 218 |  | Уточнение состава и сроков работ | 4d | 2014-03-25 | 2014-03-31 | 219SF | 93d |  |
| 219 |  | Принято решение о разработке модулей второй очереди | 0d | 2014-03-31 | 2014-03-31 | 221SS | 93d |  |
| 220 | 1.9.3 | **Разработка** | 91d | 2014-03-31 | 2014-08-04 | 202 | 0d |  |
| 221 |  | Контроль и корректировка технических решений "Архитектурный комитет" | 91d | 2014-03-31 | 2014-08-04 |  | 2d |  |
| 222 | 1.9.3.2 | **Разработка серверной логики модулей первой очереди** | 40d | 2014-03-31 | 2014-05-23 |  | 0d |  |
| 223 |  | Разработка схем документов для модулей второй очереди | 20d | 2014-03-31 | 2014-04-25 |  | 0d |  |
| 224 |  | Разработка ЖЦ процессов (WF) | 20d | 2014-04-28 | 2014-05-23 | 223 | 0d |  |
| 225 |  | Разработка логики бизнес- действий для модулей второй очереди | 40d | 2014-03-31 | 2014-05-23 |  | 0d |  |
| 226 |  | Разработка процессов автоматизации для модулей второй очереди | 20d | 2014-03-31 | 2014-04-25 |  | 20d |  |
| 227 |  | Разработка модели прав доступа (контекстные роли) | 20d | 2014-04-28 | 2014-05-23 | 223 | 0d |  |
| 228 | 1.9.3.3 | **Разработка клиентской логики модулей первой очереди** | 40d | 2014-03-31 | 2014-05-23 |  | 0d |  |
| 229 |  | Разработка форм для работы с документами в GUI (настройки форм) | 20d | 2014-03-31 | 2014-04-25 |  | 20d |  |
| 230 |  | Разработка структуры рабочего места | 20d | 2014-04-28 | 2014-05-23 | 223 | 0d |  |
| 231 |  | Разработка специфичных для модуля форм элементов GUI | 40d | 2014-03-31 | 2014-05-23 |  | 0d |  |
| 232 | 1.9.3.4 | **Разработка вспомогательного инструментария** | 40d | 2014-03-31 | 2014-05-23 |  | 0d |  |
| 233 |  | Доработка "Построителя форм" | 40d | 2014-03-31 | 2014-05-23 |  | 0d |  |
| 234 |  | Доработка "Инсталлятора" | 40d | 2014-03-31 | 2014-05-23 |  | 0d |  |
| 235 |  | Доработка "Конфигуратора" | 40d | 2014-03-31 | 2014-05-23 |  | 0d |  |
| 236 |  | Подготовка отчетов для второй очереди модулей | 40d | 2014-03-31 | 2014-05-23 |  | 53d |  |
| 237 |  | Разработка модулей второй очереди завершена | 0d | 2014-05-23 | 2014-05-23 | 222, 228, 232 | 0d |  |
| 238 | 1.9.5 | **Тестирование** | 78d? | 2014-04-21 | 2014-08-06 | 205 | 0d |  |
| 239 | 1.9.5.1 | **Функциональное тестирование** | 63d? | 2014-04-21 | 2014-07-16 |  | 10d |  |
| 240 |  | Подготовка ПМИ | 5d | 2014-04-21 | 2014-04-25 |  | 10d |  |
| 241 |  | Разработка "сценариев тестирования" | 15d | 2014-04-21 | 2014-05-09 |  | 10d |  |
| 242 |  | Разработка модели нагрузки для тестирования | 10d | 2014-04-28 | 2014-05-09 | 240 | 10d |  |
| 243 | 1.9.5.1.4 | **Проведение тестирования** | 43d? | 2014-05-19 | 2014-07-16 | 241, 242 | 5d |  |
| 244 | 1.9.5.1.4.1 | **Подготовка среды тестирования** | 15d? | 2014-05-19 | 2014-06-06 |  | 5d |  |
| 245 |  | Разворачивание системы | 5d? | 2014-05-19 | 2014-05-26 | 246SF | 53d |  |
| 246 |  | Наполнение данными | 10d? | 2014-05-26 | 2014-06-06 | 237 | 0d |  |
| 247 |  | Среда тестирования готова | 0d | 2014-06-06 | 2014-06-06 | 246 | 0d | finish no earlier than 2012-06-09 |
| 248 |  | Проведение тестирования | 10d | 2014-06-09 | 2014-06-20 | 247 | 0d |  |
| 249 | 1.9.5.1.4.4 | **Обработка результатов тестирования и внесение изменений в модуль** | 20d | 2014-06-19 | 2014-07-16 | 248FS-2d | 0d |  |
| 250 |  | Устранение замечаний по результатам функционального тестирования | 20d | 2014-06-19 | 2014-07-16 |  | 0d |  |
| 251 |  | Проверка устранения замечаний | 6d | 2014-07-09 | 2014-07-16 | 250FS-6d | 0d |  |
| 252 | 1.9.5.2 | **Нагрузочное тестирование** | 73d | 2014-04-28 | 2014-08-06 | 240 | 0d |  |
| 253 |  | Подготовка автоматизированных сценариев для создания нагрузки | 38d | 2014-04-28 | 2014-06-18 |  | 20d |  |
| 254 |  | Стенд для нагрузочного тестирования подготовлен | 0d | 2014-06-20 | 2014-06-20 | 248 | 18d | finish no earlier than 2012-06-09 |
| 255 |  | Проведения нагрузочного тестирования | 10d | 2014-07-17 | 2014-07-30 | 251, 253, 254 | 0d |  |
| 256 |  | Обработка результатов нагрузочного тестирования | 5d | 2014-07-31 | 2014-08-06 | 255 | 0d |  |
| 257 | 1.9.6 | **Подготовка документации** | 63d | 2014-04-21 | 2014-07-16 | 238SS | 15d |  |
| 258 |  | Разработка "Software Architecture Document" для модулей второй очереди | 20d | 2014-04-21 | 2014-05-16 |  | 58d |  |
| 259 |  | Документы подготовлены | 0d | 2014-07-16 | 2014-07-16 | 251, 258 | 15d |  |

## Version 2 (saved 2013-05-30)

Note of the change: обновленная редакция

Last finish stays 2014-08-06.

Added:

| ID | Task | Duration | Start | Finish | Constraint |
| --- | --- | --- | --- | --- | --- |
| 8 | Пирожков доступен | 0d | 2013-05-31 | 2013-05-31 | start no earlier than 2013-05-31 |

Removed: 54 Разработка "ЕЖЕДНЕВНИКА" для модуля "КАНЦЕЛЯРИЯ"; 55 Сборка прототипа модуля "Канцелярия" завершена; 103 Подготовка модуля для работы с УИП

Changed:

| ID | Task | Start | Finish | Duration | Total float | Predecessors | Other |
| --- | --- | --- | --- | --- | --- | --- | --- |
| 1 | **Разработка второй версии CM5** | 2013-04-19 → 2013-04-22 (+3d) |  | 334d? → 333d? |  |  |  |
| 5 | **Создание модуля "Делопроизводство" (документоориентированная среда)** | 2013-04-19 → 2013-04-22 (+3d) | 2013-11-15 → 2013-11-13 (-2d) | 146d? → 143d? | 1d → 0d |  | was named Создание модуля "КАНЦЕЛЯРИЯ" (документоориентированная среда) |
| 7 | **Апробация идей прототипа** | 2013-04-19 → 2013-05-20 (+31d) | 2013-04-26 → 2013-05-31 (+35d) | 6d → 9d | 328d → 16d |  |  |
| 9 | Проведение предварительных испытаний системы | 2013-04-19 → 2013-05-20 (+31d) | 2013-04-26 → 2013-05-27 (+31d) |  | 328d → 312d | none → 8FS-9d |  |
| 11 | **Определение структуры модуля Делопроизводство** |  |  |  |  |  | was named Определение структуры модуля канцелярия |
| 15 | **Подготовка к разработке модуля " Делопроизводство"** |  |  |  |  |  | was named Подготовка к разработке модуля "КАНЦЕЛЯРИЯ" |
| 16 | Настройка среды разработки |  |  |  |  |  | resources Конструктор 1 → Тугушев Илья |
| 17 | Поддержка UNIT-тестирования и интеграционного тестирования |  |  |  |  |  | resources Конструктор 1 → Тугушев Илья |
| 18 | **Права доступа** |  | 2013-05-28 → 2013-06-07 (+10d) | 12d → 20d | 37d → 1d |  |  |
| 22 | Workflow |  |  |  |  | 14 → 14, 8SF |  |
| 26 | Базовая архитектура GUI (Vaadin) |  |  |  |  |  | was named Базовая архитектура GUI (GWT) |
| 34 | Изучение возможностей CM4-клиента | 2013-04-22 → 2013-05-31 (+39d) | 2013-05-24 → 2013-06-27 (+34d) |  | 39d → 15d | none → 8 | resources Андрей Пирожков [10%]; Денис Митавский [10%] → Андрей Пирожков [10%]; Денис Митавский [10%]; Тугушев Илья [10%] |
| 35 | Описание структуры модуля " Делопроизводство" |  |  |  |  |  | was named Описание структуры модуля "КАНЦЕЛЯРИЯ"; resources Конструктор 1 → Владимир Панов |
| 38 | Контроль и корректировка технических решений "Архитектурный комитет" |  |  |  |  |  | resources Конструктор 1; Андрей Пирожков; Денис Митавский; WEB-дизайнер; Аналитик → Тугушев Илья [20%]; Андрей Пирожков [20%]; Денис Митавский [20%]; WEB-дизайнер [20%]; Аналитик [20%]; Владимир Панов [50%] |
| 39 | **Разработка серверной логики модуля Делопроизводство** |  |  |  | 0d → 218d |  | was named Разработка серверной логики модуля Канцелярия |
| 40 | Разработка схем документов модуля Делопроизводство |  |  |  | 0d → 218d |  | was named Разработка схем документов модуля КАНЦЕЛЯРИЯ |
| 42 | Разработка логики бизнес- действий модуля "Делопроизводство" |  |  |  | 0d → 218d |  | was named Разработка логики бизнес- действий модуля "Канцелярия" |
| 43 | Разработка процессов автоматизации для модуля "Делопроизводство" |  |  |  | 20d → 238d |  | was named Разработка процессов автоматизации для модуля "канцелярия" |
| 45 | **Разработка клиентской логики модуля "Делопроизводство"** |  |  |  | 0d → 218d |  | was named Разработка клиентской логики модуля "канцелярия" |
| 52 | Разработка функционала для работы с словарями данных (простые, линейные справочники) |  |  |  | 0d → 218d |  | was named Разработка функционала для работы с словарями данных (просте, линейные справочники) |
| 55 | **Тестирование** |  | 2013-11-15 → 2013-11-13 (-2d) | 70d? → 68d? |  |  |  |
| 56 | **Функциональное тестирование** |  | 2013-10-25 → 2013-10-23 (-2d) | 55d? → 53d? |  |  |  |
| 60 | **Проведение тестирования** |  | 2013-10-25 → 2013-10-23 (-2d) | 40d? → 38d? |  |  |  |
| 66 | **Обработка результатов тестирования и внесение изменений в модуль** | 2013-10-07 → 2013-10-03 (-4d) | 2013-10-25 → 2013-10-23 (-2d) |  | 0d → 2d | Сборка прототипа модуля "Канцелярия" завершена, 65FS-2d → 65FS-2d |  |
| 67 | Устранение замечаний по результатам функционального тестирования | 2013-10-07 → 2013-10-03 (-4d) | 2013-10-25 → 2013-10-23 (-2d) |  | 0d → 2d |  |  |
| 68 | Проверка устранения замечаний | 2013-10-18 → 2013-10-16 (-2d) | 2013-10-25 → 2013-10-23 (-2d) |  | 2d → 4d |  |  |
| 69 | **Нагрузочное тестирование** |  | 2013-11-15 → 2013-11-13 (-2d) | 65d → 63d | 2d → 4d |  |  |
| 70 | Адаптация автоматизированных сценариев для создания нагрузки от СМ4 |  |  |  |  |  | was named Подготовка автоматизированных сценариев для создания нагрузки |
| 72 | Проведения нагрузочного тестирования | 2013-10-28 → 2013-10-24 (-4d) | 2013-11-08 → 2013-11-06 (-2d) |  | 2d → 4d |  |  |
| 73 | Обработка результатов нагрузочного тестирования | 2013-11-11 → 2013-11-07 (-4d) | 2013-11-15 → 2013-11-13 (-2d) |  | 2d → 4d |  |  |
| 74 | Разработка модуля "Делопроизводство" завершена | 2013-11-15 → 2013-11-13 (-2d) | 2013-11-15 → 2013-11-13 (-2d) |  | 188d → 168d |  | was named Разработка модуля "Канцелярия" завершена |
| 79 | **Проверка работоспособности решения - Организация демонстрации** | 2013-12-23 → 2013-11-06 (-47d) | 2014-02-03 → 2013-12-13 (-52d) | 31d? → 28d? | 132d → 168d | 90 → none |  |
| 80 | Подготовка стенда | 2013-12-23 → 2013-11-06 (-47d) | 2013-12-25 → 2013-11-11 (-44d) |  | 132d → 193d | none → 81SF |  |
| 81 | Подготовка прототипа | 2013-12-26 → 2013-11-11 (-45d) | 2014-01-22 → 2013-12-06 (-47d) |  | 132d → 168d | 80 → 74FS-3d | was named разработка прототипа |
| 82 | Проведение демонстраций | 2014-01-23 → 2013-12-09 (-45d) | 2014-01-30 → 2013-12-11 (-50d) | 6d → 3d | 132d → 168d | 81 → 74SF, 81 |  |
| 83 | Анализ результатов - выводы | 2014-01-31 → 2013-12-12 (-50d) | 2014-02-03 → 2013-12-13 (-52d) |  | 132d → 168d |  |  |
| 84 | **Создание модулей первой очереди** |  | 2014-02-05 → 2014-02-03 (-2d) | 88d? → 86d? |  |  |  |
| 87 | Определение структуры модулей первой очереди |  |  |  |  |  | resources Андрей Пирожков; Конструктор 1; Денис Митавский; WEB-дизайнер → Андрей Пирожков; Тугушев Илья; Денис Митавский; WEB-дизайнер |
| 88 | Уточнение состава и сроков работ |  |  |  |  |  | resources Конструктор 1; Андрей Пирожков; Денис Митавский; WEB-дизайнер → Тугушев Илья; Андрей Пирожков; Денис Митавский; WEB-дизайнер |
| 89 | Принято решение о разработке модулей второй очереди | 2013-10-25 → 2013-10-23 (-2d) | 2013-10-25 → 2013-10-23 (-2d) |  | 0d → 2d |  |  |
| 90 | **Разработка** | 2013-10-28 → 2013-10-24 (-4d) |  | 40d → 42d | 0d → 2d |  |  |
| 91 | Контроль и корректировка технических решений "Архитектурный комитет" | 2013-10-28 → 2013-10-24 (-4d) | 2013-12-20 → 2013-12-18 (-2d) |  | 132d → 165d |  | resources Конструктор 1; Андрей Пирожков; Денис Митавский; WEB-дизайнер → Тугушев Илья; Андрей Пирожков; Денис Митавский; WEB-дизайнер |
| 92 | **Разработка серверной логики модулей первой очереди** | 2013-10-28 → 2013-10-24 (-4d) | 2013-12-20 → 2013-12-18 (-2d) |  | 0d → 2d |  |  |
| 93 | Разработка схем документов для модулей первой очереди | 2013-10-28 → 2013-10-24 (-4d) | 2013-11-22 → 2013-11-20 (-2d) |  | 0d → 2d |  |  |
| 94 | Разработка ЖЦ процессов (WF) | 2013-11-25 → 2013-11-21 (-4d) | 2013-12-20 → 2013-12-18 (-2d) |  | 0d → 2d |  |  |
| 95 | Разработка логики бизнес- действий для модулей первой очереди | 2013-10-28 → 2013-10-24 (-4d) | 2013-12-20 → 2013-12-18 (-2d) |  | 0d → 2d |  |  |
| 96 | Разработка процессов автоматизации для модулей первой очереди | 2013-10-28 → 2013-10-24 (-4d) | 2013-11-22 → 2013-11-20 (-2d) |  | 20d → 22d |  |  |
| 97 | Разработка модели прав доступа (контекстные роли) | 2013-11-25 → 2013-11-21 (-4d) | 2013-12-20 → 2013-12-18 (-2d) |  | 0d → 2d |  |  |
| 98 | **Разработка клиентской логики модулей первой очереди** | 2013-10-28 → 2013-10-24 (-4d) | 2013-12-20 → 2013-12-18 (-2d) |  | 0d → 2d |  |  |
| 99 | Разработка форм для работы с документами в GUI (настройки форм) | 2013-10-28 → 2013-10-24 (-4d) | 2013-11-22 → 2013-11-20 (-2d) |  | 20d → 22d |  |  |
| 100 | Разработка структуры рабочего места | 2013-11-25 → 2013-11-21 (-4d) | 2013-12-20 → 2013-12-18 (-2d) |  | 0d → 2d |  |  |
| 101 | Разработка специфичных для модуля форм элементов GUI | 2013-10-28 → 2013-10-24 (-4d) | 2013-12-20 → 2013-12-18 (-2d) |  | 0d → 2d |  |  |
| 106 | Подготовка отчетов | 2013-10-28 → 2013-10-24 (-4d) | 2013-12-20 → 2013-12-18 (-2d) |  | 132d → 165d |  |  |
| 108 | **Тестирование** | 2013-11-18 → 2013-11-14 (-4d) | 2014-02-05 → 2014-02-03 (-2d) |  | 2d → 4d |  |  |
| 109 | **Функциональное тестирование** | 2013-11-18 → 2013-11-14 (-4d) |  | 40d? → 42d? | 2d → 4d |  |  |
| 110 | Подготовка ПМИ | 2013-11-18 → 2013-11-14 (-4d) | 2013-11-22 → 2013-11-20 (-2d) |  | 130d → 132d |  |  |
| 111 | Разработка "сценариев тестирования" | 2013-11-18 → 2013-11-14 (-4d) | 2013-12-06 → 2013-12-04 (-2d) |  | 2d → 4d |  |  |
| 112 | Разработка модели нагрузки для тестирования | 2013-11-25 → 2013-11-21 (-4d) | 2013-12-06 → 2013-12-04 (-2d) |  | 173d → 175d |  |  |
| 113 | **Проведение тестирования** | 2013-11-18 → 2013-11-14 (-4d) |  | 40d? → 42d? | 2d → 4d |  |  |
| 114 | **Подготовка среды тестирования** | 2013-11-18 → 2013-11-14 (-4d) | 2013-12-06 → 2013-12-04 (-2d) |  | 2d → 4d |  |  |
| 115 | Разворачивание системы | 2013-11-18 → 2013-11-14 (-4d) | 2013-11-22 → 2013-11-20 (-2d) |  | 2d → 4d |  |  |
| 116 | Наполнение данными | 2013-11-25 → 2013-11-21 (-4d) | 2013-12-06 → 2013-12-04 (-2d) |  | 2d → 4d |  |  |
| 117 | Среда тестирования готова | 2013-12-06 → 2013-12-04 (-2d) | 2013-12-06 → 2013-12-04 (-2d) |  | 2d → 4d |  |  |
| 118 | Проведение тестирования | 2013-12-09 → 2013-12-05 (-4d) | 2013-12-20 → 2013-12-18 (-2d) |  | 2d → 4d |  |  |
| 122 | **Нагрузочное тестирование** | 2013-11-25 → 2013-11-21 (-4d) | 2014-02-05 → 2014-02-03 (-2d) |  | 130d → 132d |  |  |
| 123 | Подготовка автоматизированных сценариев для создания нагрузки | 2013-11-25 → 2013-11-21 (-4d) | 2014-01-15 → 2014-01-13 (-2d) |  | 130d → 132d |  |  |
| 124 | Стенд для нагрузочного тестирования подготовлен | 2013-12-20 → 2013-12-18 (-2d) | 2013-12-20 → 2013-12-18 (-2d) |  | 148d → 150d |  |  |
| 125 | Проведения нагрузочного тестирования | 2014-01-16 → 2014-01-14 (-2d) | 2014-01-29 → 2014-01-27 (-2d) |  | 130d → 132d |  |  |
| 126 | Обработка результатов нагрузочного тестирования | 2014-01-30 → 2014-01-28 (-2d) | 2014-02-05 → 2014-02-03 (-2d) |  | 130d → 132d |  |  |
| 127 | Разработка модулей первой очереди завершена | 2014-02-05 → 2014-02-03 (-2d) | 2014-02-05 → 2014-02-03 (-2d) |  | 130d → 132d |  |  |

| ID | Task | Start | Finish | Duration | Total float | Other |
| --- | --- | --- | --- | --- | --- | --- |
| 128 | **Подготовка документации** | 2013-11-18 → 2013-11-14 (-4d) |  | 40d → 42d |  |  |
| 129 | Разработка "Software Architecture Document" для модулей первой очереди | 2013-11-18 → 2013-11-14 (-4d) | 2013-12-13 → 2013-12-11 (-2d) |  | 50d → 52d |  |
| 168 | Определение структуры модулей второй очереди |  |  |  |  | resources Андрей Пирожков; Конструктор 1; Денис Митавский; WEB-дизайнер → Андрей Пирожков; Тугушев Илья; Денис Митавский; WEB-дизайнер |
| 169 | Уточнение состава и сроков работ |  |  |  |  | resources Конструктор 1; Андрей Пирожков; Денис Митавский; WEB-дизайнер → Тугушев Илья; Андрей Пирожков; Денис Митавский; WEB-дизайнер |
| 172 | Контроль и корректировка технических решений "Архитектурный комитет" |  |  |  |  | resources Конструктор 1; Андрей Пирожков; Денис Митавский; WEB-дизайнер → Тугушев Илья; Андрей Пирожков; Денис Митавский; WEB-дизайнер |
| 215 | Определение структуры третьей очереди |  |  |  |  | resources Андрей Пирожков; Конструктор 1; Денис Митавский; WEB-дизайнер → Андрей Пирожков; Тугушев Илья; Денис Митавский; WEB-дизайнер |
| 216 | Уточнение состава и сроков работ |  |  |  |  | resources Конструктор 1; Андрей Пирожков; Денис Митавский; WEB-дизайнер → Тугушев Илья; Андрей Пирожков; Денис Митавский; WEB-дизайнер |
| 219 | Контроль и корректировка технических решений "Архитектурный комитет" |  |  |  |  | resources Конструктор 1; Андрей Пирожков; Денис Митавский; WEB-дизайнер → Тугушев Илья; Андрей Пирожков; Денис Митавский; WEB-дизайнер |

## Version 3 (saved 2013-05-31)

Note of the change: обновление

Last finish 2014-08-06 → 2014-05-06 (-92d).

Removed: 133 Подготовка документации по обновленному функционалу BR4J (регионалка); 165 Создание модулей второй очереди; 166 Определен состав модулей второй очереди и первичные требования подготовлены; 167 Проектирование; 168 Определение структуры модулей второй очереди; 169 Уточнение состава и сроков работ; 170 Принято решение о разработке модулей второй очереди; 171 Разработка; 172 Контроль и корректировка технических решений "Архитектурный комитет"; 173 Разработка серверной логики модулей второй очереди; 174 Разработка схем документов для модулей второй очереди; 175 Разработка ЖЦ процессов (WF); 176 Разработка логики бизнес- действий для модулей второй очереди; 177 Разработка процессов автоматизации для модулей второй очереди; 178 Разработка модели прав доступа (контекстные роли); 179 Разработка клиентской логики модулей второй очереди; 180 Разработка форм для работы с документами в GUI (настройки форм); 181 Разработка структуры рабочего места; 182 Разработка специфичных для модуля форм элементов GUI; 183 Разработка вспомогательного инструментария; 184 Доработка "Построителя форм"; 185 Доработка "Инсталлятора"; 186 Доработка "Конфигуратора"; 187 Подготовка отчетов для второй очереди модулей; 188 Сборка модулей второй очереди завершена; 189 Тестирование; 190 Функциональное тестирование; 191 Подготовка ПМИ; 192 Разработка "сценариев тестирования"; 193 Разработка модели нагрузки для тестирования; 194 Проведение тестирования; 195 Подготовка среды тестирования; 196 Разворачивание системы; 197 Наполнение данными; 198 Среда тестирования готова; 199 Проведение тестирования; 200 Обработка результатов тестирования и внесение изменений в модуль; 201 Устранение замечаний по результатам функционального тестирования; 202 Проверка устранения замечаний; 203 Нагрузочное тестирование; 204 Подготовка автоматизированных сценариев для создания нагрузки; 205 Стенд для нагрузочного тестирования подготовлен; 206 Проведения нагрузочного тестирования; 207 Обработка результатов нагрузочного тестирования; 208 Разработка модулей второй очереди завершена; 209 Подготовка документации; 210 Разработка "Software Architecture Document" для модулей второй очереди; 211 Документы подготовлены; 212 Создание модулей третьей очереди; 213 Определен состав модулей третьей очереди и первичные требования подготовлены; 214 Проектирование; 215 Определение структуры третьей очереди; 216 Уточнение состава и сроков работ; 217 Принято решение о разработке модулей второй очереди; 218 Разработка; 219 Контроль и корректировка технических решений "Архитектурный комитет"; 220 Разработка серверной логики модулей первой очереди; 221 Разработка схем документов для модулей второй очереди; 222 Разработка ЖЦ процессов (WF); 223 Разработка логики бизнес- действий для модулей второй очереди; 224 Разработка процессов автоматизации для модулей второй очереди; 225 Разработка модели прав доступа (контекстные роли); 226 Разработка клиентской логики модулей первой очереди; 227 Разработка форм для работы с документами в GUI (настройки форм); 228 Разработка структуры рабочего места; 229 Разработка специфичных для модуля форм элементов GUI; 230 Разработка вспомогательного инструментария; 231 Доработка "Построителя форм"; 232 Доработка "Инсталлятора"; 233 Доработка "Конфигуратора"; 234 Подготовка отчетов для второй очереди модулей; 235 Разработка модулей второй очереди завершена; 236 Тестирование; 237 Функциональное тестирование; 238 Подготовка ПМИ; 239 Разработка "сценариев тестирования"; 240 Разработка модели нагрузки для тестирования; 241 Проведение тестирования; 242 Подготовка среды тестирования; 243 Разворачивание системы; 244 Наполнение данными; 245 Среда тестирования готова; 246 Проведение тестирования; 247 Обработка результатов тестирования и внесение изменений в модуль; 248 Устранение замечаний по результатам функционального тестирования; 249 Проверка устранения замечаний; 250 Нагрузочное тестирование; 251 Подготовка автоматизированных сценариев для создания нагрузки; 252 Стенд для нагрузочного тестирования подготовлен; 253 Проведения нагрузочного тестирования; 254 Обработка результатов нагрузочного тестирования; 255 Подготовка документации; 256 Разработка "Software Architecture Document" для модулей второй очереди; 257 Документы подготовлены

Changed:

| ID | Task | Start | Finish | Duration | Total float | Predecessors | Other |
| --- | --- | --- | --- | --- | --- | --- | --- |
| 1 | **Разработка второй версии CM4/5** |  | 2014-08-06 → 2014-05-06 (-92d) | 333d? → 267d? |  |  | was named Разработка второй версии CM5 |
| 131 | **Подготовка документации для тиражирования CM5 v2** |  | 2014-04-03 → 2014-02-28 (-34d) | 244d? → 220d? | 89d → 47d |  |  |
| 133 | **Описание функциональных особенностей системы** | 2013-05-31 → 2013-04-22 (-39d) | 2014-04-03 → 2014-02-28 (-34d) |  | 89d → 47d | Подготовка документации по обновленному функционалу BR4J (регионалка) → none |  |
| 134 | Подготовка спецификации | 2013-05-31 → 2013-04-22 (-39d) | 2013-07-01 → 2013-05-28 (-34d) |  | 98d → 47d |  |  |
| 135 | Подготовка описания типового функционала | 2013-07-02 → 2013-05-29 (-34d) | 2013-07-05 → 2013-06-03 (-32d) |  | 98d → 47d |  |  |
| 136 | Подготовка описания типового функционала | 2013-07-08 → 2013-06-04 (-34d) | 2013-07-19 → 2013-06-17 (-32d) |  | 282d → 231d |  | was named Подготовка описания типового функционала (Апрель) |
| 137 | **Подготовка руководства по администрированию и установке** | 2013-05-31 → 2013-04-22 (-39d) | 2014-04-03 → 2014-02-28 (-34d) |  | 89d → 47d |  |  |
| 138 | Подготовка руководства администратора | 2013-05-31 → 2013-04-22 (-39d) | 2013-06-10 → 2013-04-30 (-41d) |  | 124d → 73d |  |  |
| 139 | Подготовка руководства по установке | 2013-06-11 → 2013-05-06 (-36d) | 2013-06-19 → 2013-05-16 (-34d) |  | 124d → 73d |  |  |
| 140 | Консультирование по вопросам администрирования и установке стенда | 2013-07-08 → 2013-06-04 (-34d) | 2013-07-25 → 2013-06-21 (-34d) |  | 98d → 47d |  |  |
| 141 | Рецензирование руководства администратора и руководства по установке | 2013-07-26 → 2013-06-24 (-32d) | 2013-07-29 → 2013-06-25 (-34d) |  | 98d → 47d |  |  |
| 142 | Проверка комплектности | 2013-07-30 → 2013-06-26 (-34d) | 2013-07-30 → 2013-06-26 (-34d) |  | 275d → 224d |  |  |
| 143 | Поддержка и сопровождение работы стенда | 2013-05-31 → 2013-04-22 (-39d) | 2013-08-08 → 2013-07-05 (-34d) |  | 268d → 217d |  |  |
| 144 | Подготовка описания функционала | 2013-07-30 → 2013-06-26 (-34d) | 2013-08-27 → 2013-07-24 (-34d) |  | 98d → 47d |  |  |
| 145 | Разработка «Программа и методика испытаний (ПМИ)» | 2013-08-28 → 2013-07-25 (-34d) | 2013-09-25 → 2013-08-22 (-34d) |  | 98d → 47d |  |  |
| 146 | Рецензирование руководств | 2013-09-05 → 2013-08-02 (-34d) | 2013-09-25 → 2013-08-22 (-34d) |  | 89d → 47d |  |  |
| 147 | **Эксплуатационная документация** | 2013-09-26 → 2013-08-23 (-34d) | 2014-02-21 → 2014-01-20 (-32d) |  | 89d → 47d |  |  |
| 148 | Разработка «Руководство по установке» (РУ) | 2013-09-26 → 2013-08-23 (-34d) | 2013-10-24 → 2013-09-20 (-34d) |  | 98d → 47d |  |  |
| 149 | Разработка «Руководство пользователя» (РП) | 2013-10-25 → 2013-09-23 (-32d) | 2013-11-22 → 2013-10-21 (-32d) |  | 98d → 47d |  |  |
| 150 | Разработка «Руководство по администрированию» (РА ) | 2013-11-25 → 2013-10-22 (-34d) | 2013-12-25 → 2013-11-21 (-34d) |  | 98d → 47d |  |  |
| 151 | Рецензирование руководств | 2013-12-05 → 2013-11-01 (-34d) | 2013-12-25 → 2013-11-21 (-34d) |  | 89d → 47d |  |  |
| 152 | Доработка РП, РА, РУ | 2013-12-26 → 2013-11-22 (-34d) | 2014-01-09 → 2013-12-06 (-34d) |  | 98d → 47d |  |  |
| 153 | **Разработка инструкций** | 2014-01-10 → 2013-12-09 (-32d) | 2014-02-21 → 2014-01-20 (-32d) |  | 89d → 47d |  |  |
| 154 | Разработка инструкций по типам документов | 2014-01-10 → 2013-12-09 (-32d) | 2014-02-07 → 2014-01-06 (-32d) |  | 98d → 47d |  |  |
| 155 | Разработка инструкций по ролям | 2014-01-10 → 2013-12-09 (-32d) | 2014-02-07 → 2014-01-06 (-32d) |  | 98d → 47d |  |  |
| 156 | Разработка инструкции по работе в АРМ (общая и по ролям) | 2014-02-10 → 2014-01-07 (-34d) | 2014-02-21 → 2014-01-20 (-32d) |  | 98d → 47d |  |  |
| 157 | Рецензирование инструкций | 2014-02-10 → 2014-01-07 (-34d) | 2014-02-21 → 2014-01-20 (-32d) |  | 89d → 47d |  |  |
| 158 | **Технологическая документация** | 2014-02-24 → 2014-01-21 (-34d) | 2014-03-12 → 2014-02-06 (-34d) |  | 89d → 47d |  |  |
| 159 | Разработка «Описание архитектуры системы» | 2014-02-24 → 2014-01-21 (-34d) | 2014-03-07 → 2014-02-03 (-32d) |  | 98d → 47d |  |  |
| 160 | Форматирование «Описание архитектуры системы» | 2014-03-10 → 2014-02-04 (-34d) | 2014-03-12 → 2014-02-06 (-34d) |  | 98d → 47d |  |  |
| 161 | **Внедренческая документация** | 2014-03-13 → 2014-02-07 (-34d) | 2014-04-03 → 2014-02-28 (-34d) |  | 89d → 47d |  |  |
| 162 | Разработка типового ТКП | 2014-03-13 → 2014-02-07 (-34d) | 2014-03-26 → 2014-02-20 (-34d) |  | 98d → 47d |  |  |
| 163 | Разработка типового ТЗ | 2014-03-27 → 2014-02-21 (-34d) | 2014-04-03 → 2014-02-28 (-34d) |  | 98d → 47d |  |  |

## Version 4 (saved 2013-06-01)

Note of the change: Правка прот. совещ. 31.05 + новая версия Кал.плана от Шилина

Last finish stays 2014-05-06.

Added:

| ID | Task | Duration | Start | Finish | Predecessors | Constraint | Resources |
| --- | --- | --- | --- | --- | --- | --- | --- |
| 10 | Описание обработки ВХ. Док. На примере технологий прототипа | 8d | 2013-05-20 | 2013-06-05 |  | start no earlier than 2013-05-20 | Андрей Пирожков |
| 14 | Репакеджинг проекта | 3d | 2013-05-27 | 2013-05-29 |  | start no earlier than 2013-05-27 | Сергей Кашанский |
| 20 | Юнит-тестирование - базис | 6d | 2013-05-17 | 2013-05-24 | 9 |  | Денис Митавский [50%]; Андрей Цветков |
| 21 | Базовая имплементация слоя DAO | 5d | 2013-05-20 | 2013-05-24 | 19 |  | Денис Митавский [50%]; Валерий Мацукевич |
| 22 | Обеспечение программных компонет верификации первой очереди | 5d | 2013-05-27 | 2013-05-31 | 21 |  | Валерий Мацукевич; Андрей Цветков |
| 23 | **DAO** | 22d | 2013-06-03 | 2013-07-02 | 21, 22 |  |  |
| 24 | DAO для бизнес-объектов | 7d | 2013-06-03 | 2013-06-11 |  |  | Андрей Цветков; Валерий Мацукевич |
| 25 | DAO для коллекций | 9d | 2013-06-12 | 2013-06-24 | 24 |  | Андрей Цветков; Валерий Мацукевич |
| 26 | DAO - утилитарные поля | 6d | 2013-06-25 | 2013-07-02 | 25 |  | Денис Митавский [50%] |
| 27 | CRUD-сервис для бизнес-объектов | 10d | 2013-06-25 | 2013-07-08 | 25 |  | Андрей Цветков |
| 28 | Поддержка отсортированных дочерних бизнес-объектов | 5d | 2013-07-09 | 2013-07-15 | 27 |  | Валерий Мацукевич; Андрей Цветков |
| 29 | **Встроенный GUI** | 14d | 2013-05-30 | 2013-06-18 |  |  |  |
| 30 | Базис GUI | 5d | 2013-06-10 | 2013-06-14 |  | start no earlier than 2013-06-10 | Денис Митавский [50%] |
| 31 | Стилистическая адаптация компонентов GUI | 14d | 2013-05-30 | 2013-06-18 | 14 |  | Сергей Кашанский |
| 33 | Права - оптимизация хранения | 10d | 2013-06-12 | 2013-06-25 | 24 |  | Денис Митавский |
| 34 | Описание существующими декларативными средствами конфигурации | 8d | 2013-06-26 | 2013-07-05 | 33, 25 |  | Денис Митавский [50%]; Валерий Мацукевич |
| 35 | Автофильтрация | 10d | 2013-06-26 | 2013-07-09 | 33, 25 |  | Денис Митавский [50%]; Роман Митинков |
| 36 | **Workflow - интеграция с Activiti** | 30d | 2013-06-06 | 2013-07-17 | 10 |  |  |
| 37 | Проектирование | 10d | 2013-06-06 | 2013-06-19 |  |  | Андрей Пирожков [50%]; Сергей Кашанский |
| 38 | Разработка | 20d | 2013-06-20 | 2013-07-17 | 37, 31 |  | Андрей Пирожков [50%]; Сергей Кашанский |
| 39 | Наследование/Аспекты | 20d | 2013-06-20 | 2013-07-17 | 37 |  | Андрей Пирожков [50%] |
| 40 | **Коллекции** | 26d | 2013-07-18 | 2013-08-22 |  |  |  |
| 41 | Коллекции - конфигурация | 3d | 2013-07-18 | 2013-07-22 | 38 |  | Андрей Пирожков |
| 42 | DAO - язык запросов коллекций | 12d | 2013-07-23 | 2013-08-07 | 41 |  | Сергей Кашанский; Андрей Пирожков [50%] |
| 43 | Сервис получения и получения счетчиков | 6d | 2013-08-08 | 2013-08-15 | 41, 42 |  | Андрей Пирожков [50%]; Сергей Кашанский |
| 44 | ПКД | 11d | 2013-08-08 | 2013-08-22 | 42 |  | Андрей Пирожков [50%]; Сергей Кашанский |
| 45 | **Действия** | 18d | 2013-07-23 | 2013-08-15 |  |  |  |
| 46 | Концепция | 4d | 2013-07-23 | 2013-07-26 | 41 |  | Андрей Пирожков [50%] |
| 47 | Реализация | 14d | 2013-07-29 | 2013-08-15 | 46 |  | Роман Митинков; Андрей Пирожков [50%] |
| 48 | **Формы встроенного GUI** | 26d | 2013-07-10 | 2013-08-14 |  |  |  |
| 49 | Конфигурация | 6d | 2013-07-10 | 2013-07-17 | 35 |  | Денис Митавский [50%] |
| 50 | API, сервис получения | 6d | 2013-07-18 | 2013-07-25 | 49 |  | Денис Митавский [50%]; Валерий Мацукевич |
| 51 | DAO форм | 14d | 2013-07-26 | 2013-08-14 | 50 |  | Денис Митавский [50%]; Валерий Мацукевич |
| 52 | **Слой сопряжения GUI CM4** | 53d | 2013-07-03 | 2013-09-13 |  |  |  |
| 53 | REST-протокол для АРМа - проектирование | 3d | 2013-07-03 | 2013-07-05 | 26 |  | Тугушев Илья; Денис Митавский [20%]; Андрей Пирожков [20%] |
| 54 | REST-протокол для АРМа - реализация | 50d | 2013-07-08 | 2013-09-13 | 53 |  | Тугушев Илья; Роман; Глеб |
| 55 | **Поиск** | 26d | 2013-07-09 | 2013-08-13 | 27 |  |  |
| 58 | Расширенный поиск | 6d | 2013-08-06 | 2013-08-13 | 56, 57 |  | Денис Митавский; Андрей Цветков |
| 59 | **Работа с отчетами** | 23d | 2013-08-23 | 2013-09-24 |  |  |  |
| 60 | JDBC-драйвер для системы построения отчётов | 8d | 2013-08-23 | 2013-09-03 | 44 |  | Денис Митавский [50%]; Андрей Цветков |
| 61 | Интеграция с Jasper Reports | 15d | 2013-09-04 | 2013-09-24 | 60 |  | Денис Митавский [50%]; Андрей Цветков |
| 62 | **Компоненты GUI** | 42d | 2013-08-08 | 2013-10-04 |  |  |  |
| 63 | GUI - архитектура активностей/дочерних активностей | 10d | 2013-08-08 | 2013-08-21 | 42, 57 |  | Денис Митавский [50%] |
| 64 | GUI - панель навигации | 10d | 2013-08-23 | 2013-09-05 | 44, 63 |  | Денис Митавский [50%]; Java разработчик |
| 65 | GUI - отображение коллекций активность | 10d | 2013-08-22 | 2013-09-04 | 63 |  | Тугушев Илья [50%]; Роман |
| 66 | GUI - отображение отчётов | 8d | 2013-09-25 | 2013-10-04 | 63, 61 |  | Андрей Цветков |
| 67 | GUI - действия | 10d | 2013-08-22 | 2013-09-04 | 63 |  | Тугушев Илья [50%]; Глеб |
| 68 | GUI - конфигурируемые формы проектирование | 3d | 2013-08-14 | 2013-08-16 | 58 |  | Денис Митавский [50%] |
| 69 | GUI - конфигурируемые формы реализация | 8d | 2013-08-19 | 2013-08-28 | 68 |  | Валерий Мацукевич |
| 70 | GUI - виджеты разработка (базовый набор) | 25d | 2013-08-29 | 2013-10-02 | 69 |  | Тугушев Илья [50%]; Роман; Глеб |
| 71 | Тестирование производительности | 25d | 2013-09-06 | 2013-10-10 | 32, 27, 40, 64, 69 |  | Денис Митавский; Валерий Мацукевич |
| 72 | Версионность/аудит | 8d | 2013-08-16 | 2013-08-27 | 27, 47 |  | Андрей Пирожков; Сергей Кашанский |
| 73 | Блокировки бизнес-объектов | 6d | 2013-08-28 | 2013-09-04 | 72 |  | Андрей Пирожков; Сергей Кашанский |
| 76 | Кросс-СУБД, поддержка Oracle | 15d | 2013-09-05 | 2013-09-25 | 73 |  | Роман Митинков |
| 77 | SQL-trace | 5d | 2013-09-26 | 2013-10-02 | 76 |  | Java разработчик |
| 78 | Локализация (на уровне конфигурации) | 15d | 2013-10-03 | 2013-10-23 | 77 |  | Java разработчик |
| 79 | **Расширение функций сервиса конфигурации** | 21d | 2013-09-26 | 2013-10-24 | 63, 76 |  |  |
| 80 | Точки расширения | 5d | 2013-09-26 | 2013-10-02 | 21 |  | Андрей Пирожков; Роман Митинков |
| 81 | Изменение и дополнение конфигурации системы | 16d | 2013-10-03 | 2013-10-24 | 80 |  | Андрей Пирожков; Роман Митинков |

Removed: 19 Финализация структуры хранения; 20 Модификация DAO для учета прав доступа; 21 Скрипты по инициализации системы; 22 Workflow; 23 Базовая имплементация слоя DAO; 24 Конфигурация слоя DAO; 25 Имплементация слоя DAO; 26 Базовая архитектура GUI (Vaadin); 27 Поддержка механизма "логина"; 28 Веб-сервисы; 29 Списки; 30 Формы; 31 Вложения; 34 Изучение возможностей CM4-клиента; 53 Адаптация компонент сканирования (СПО); 131 Подготовка документации для тиражирования CM5 v2; 132 Подготовка стенда для документирования; 133 Описание функциональных особенностей системы; 134 Подготовка спецификации; 135 Подготовка описания типового функционала; 136 Подготовка описания типового функционала; 137 Подготовка руководства по администрированию и установке; 138 Подготовка руководства администратора; 139 Подготовка руководства по установке; 140 Консультирование по вопросам администрирования и установке стенда; 141 Рецензирование руководства администратора и руководства по установке; 142 Проверка комплектности; 143 Поддержка и сопровождение работы стенда; 144 Подготовка описания функционала; 145 Разработка «Программа и методика испытаний (ПМИ)»; 146 Рецензирование руководств; 147 Эксплуатационная документация; 148 Разработка «Руководство по установке» (РУ); 149 Разработка «Руководство пользователя» (РП); 150 Разработка «Руководство по администрированию» (РА ); 151 Рецензирование руководств; 152 Доработка РП, РА, РУ; 153 Разработка инструкций; 154 Разработка инструкций по типам документов; 155 Разработка инструкций по ролям; 156 Разработка инструкции по работе в АРМ (общая и по ролям); 157 Рецензирование инструкций; 158 Технологическая документация; 159 Разработка «Описание архитектуры системы»; 160 Форматирование «Описание архитектуры системы»; 161 Внедренческая документация; 162 Разработка типового ТКП; 163 Разработка типового ТЗ

Changed:

| ID | Task | Start | Finish | Duration | Total float | Predecessors | Other |
| --- | --- | --- | --- | --- | --- | --- | --- |
| 2 | Принято решение о начале разработки |  |  |  |  |  | was named Принято решение о разработке функциональных модулей |
| 5 | **Создание модуля "Делопроизводство" (документоориентированная среда)** |  | 2013-11-13 → 2014-02-13 (+92d) | 143d? → 209d? | 66d → 36d |  |  |
| 6 | Первичные требования для создания модуля "Делопроизводство" подготовлены |  |  |  | 66d → 36d |  | was named Первичные требования для создания модуля "канцелярия" подготовлены |
| 7 | **Апробация идей прототипа** | 2013-05-20 → 2013-04-29 (-21d) | 2013-05-31 → 2013-06-05 (+5d) | 9d → 23d | 82d → 73d |  |  |
| 9 | Проведение предварительных испытаний системы | 2013-05-20 → 2013-04-29 (-21d) | 2013-05-27 → 2013-05-16 (-11d) | 6d → 9d | 312d → 149d | 8FS-9d → 6FS+5d |  |
| 11 | **Настройка инфраструктуры** | 2013-05-13 → 2013-05-20 (+7d) | 2013-05-23 → 2013-06-10 (+18d) | 9d → 16d | 106d → 69d |  | was named Подготовка к разработке модуля " Делопроизводство" |
| 12 | Настройка непрерывной интеграции | 2013-05-13 → 2013-05-20 (+7d) | 2013-05-16 → 2013-05-23 (+7d) |  | 40d → 102d |  | was named Настройка среды разработки |
| 13 | Поддержка UNIT-тестирования и интеграционного тестирования на уроне среды непрерывной интеграции | 2013-05-17 → 2013-06-04 (+18d) | 2013-05-23 → 2013-06-10 (+18d) |  | 40d → 90d | 12 → none | was named Поддержка UNIT-тестирования и интеграционного тестирования; constraint none → start no earlier than 2013-06-04 |
| 15 | **Проектирование и формирование ядра системы** |  | 2013-08-09 → 2013-10-24 (+76d) | 75d → 129d | 66d → 36d |  | was named Проектирование |
| 16 | **Определение структуры модуля Делопроизводство** |  | 2013-07-18 → 2013-05-31 (-48d) | 59d → 25d | 66d → 36d |  |  |
| 18 | Конфигурации, загрузка и инициализация системы в базовой конфигурации |  |  |  | 66d → 36d |  | resources Андрей Цветков; Денис Митавский [50%] → Валерий Мацукевич; Денис Митавский [50%] |
| 19 | Базовая конфигурация объектов системы | 2013-04-29 → 2013-05-13 (+14d) | 2013-05-08 → 2013-05-17 (+9d) |  | 1d → 36d | 17 → 17, 18 | resources Андрей Пирожков [50%]; Валерий Мацукевич → Денис Митавский [50%]; Валерий Мацукевич |
| 32 | **Права доступа** | 2013-05-13 → 2013-06-12 (+30d) | 2013-06-07 → 2013-07-09 (+32d) |  | 67d → 121d |  |  |
| 56 | Поиск | 2013-06-13 → 2013-07-09 (+26d) | 2013-07-03 → 2013-07-29 (+26d) |  | 1d → 89d | Веб-сервисы → none | resources Андрей Пирожков; Андрей Цветков → Денис Митавский [50%]; Андрей Цветков |
| 57 | Полнотекстовый поиск | 2013-07-04 → 2013-07-09 (+5d) | 2013-07-17 → 2013-08-05 (+19d) | 10d → 20d | 1d → 83d | 56 → none | resources Андрей Пирожков; Андрей Цветков → Java разработчик |
| 74 | Описание структуры модуля " Делопроизводство" | 2013-07-19 → 2013-07-09 (-10d) | 2013-08-08 → 2013-08-19 (+11d) | 15d → 30d | 66d → 118d | 16 → 16, 11, 55SS |  |
| 75 | Уточнение состава и сроков работ | 2013-08-09 → 2013-10-07 (+59d) | 2013-08-09 → 2013-10-08 (+60d) | 1d → 2d | 66d → 82d | 74 → 62 | resources Андрей Пирожков; Денис Митавский → Андрей Пирожков; Денис Митавский; Тугушев Илья |
| 82 | **Разработка** | 2013-08-12 → 2013-06-11 (-62d) | 2013-10-04 → 2013-12-19 (+76d) | 40d → 138d | 67d → 90d |  |  |
| 83 | Контроль и корректировка технических решений "Архитектурный комитет" | 2013-08-12 → 2013-06-11 (-62d) | 2013-10-04 → 2013-10-31 (+27d) | 40d → 103d | 67d → 133d | 74, 75 → none |  |
| 84 | **Разработка серверной логики модуля Делопроизводство** | 2013-08-12 → 2013-07-18 (-25d) | 2013-10-04 → 2013-09-11 (-23d) |  | 152d → 63d | 15 → 11, 36 |  |
| 85 | Разработка схем документов модуля Делопроизводство | 2013-08-12 → 2013-07-18 (-25d) | 2013-09-06 → 2013-08-14 (-23d) |  | 218d → 63d |  |  |
| 86 | Разработка ЖЦ процессов модуля (WF) | 2013-09-09 → 2013-08-15 (-25d) | 2013-10-04 → 2013-09-11 (-23d) |  | 218d → 169d |  |  |
| 87 | Разработка логики бизнес- действий модуля "Делопроизводство" | 2013-08-12 → 2013-07-18 (-25d) | 2013-10-04 → 2013-09-11 (-23d) |  | 218d → 169d |  |  |
| 88 | Разработка процессов автоматизации для модуля "Делопроизводство" | 2013-08-12 → 2013-07-18 (-25d) | 2013-09-06 → 2013-08-14 (-23d) |  | 238d → 189d |  |  |
| 89 | Разработка модели прав доступа (контекстные роли) | 2013-09-09 → 2013-08-15 (-25d) | 2013-10-04 → 2013-09-11 (-23d) |  | 218d → 169d |  |  |
| 90 | **Разработка клиентской логики модуля "Делопроизводство"** | 2013-08-12 → 2013-09-16 (+35d) | 2013-10-04 → 2013-09-27 (-7d) | 40d → 10d | 152d → 36d | 15 → 54 |  |
| 91 | Разработка форм для работы с документами в GUI (настройки форм) | 2013-08-12 → 2013-09-16 (+35d) | 2013-09-06 → 2013-09-20 (+14d) | 20d → 5d | 238d → 36d |  |  |
| 92 | Разработка структуры рабочего места | 2013-09-09 → 2013-09-23 (+14d) | 2013-10-04 → 2013-09-27 (-7d) | 20d → 5d | 218d → 36d | 85 → 85, 91 |  |
| 93 | Разработка специфичных для модуля форм элементов GUI | 2013-08-12 → 2013-09-16 (+35d) | 2013-10-04 → 2013-09-27 (-7d) | 40d → 10d | 218d → 36d |  |  |
| 94 | **Подготовка работы со списками значений** | 2013-08-12 → 2013-09-30 (+49d) | 2013-10-04 → 2013-11-22 (+49d) |  | 152d → 117d |  |  |
| 95 | Разработка функционала учета организационно штатной структуры | 2013-08-12 → 2013-09-30 (+49d) | 2013-10-04 → 2013-11-22 (+49d) |  | 218d → 117d | 15 → 90 |  |
| 96 | Разработка функционала с рубрикаторами (сложные справочники) | 2013-08-12 → 2013-09-30 (+49d) | 2013-09-06 → 2013-10-25 (+49d) |  | 218d → 117d | 15 → 90 |  |
| 97 | Разработка функционала для работы с словарями данных (простые, линейные справочники) | 2013-09-09 → 2013-10-28 (+49d) | 2013-10-04 → 2013-11-22 (+49d) |  | 218d → 117d | 15, 96 → 96 |  |
| 98 | Подготовка отчетов | 2013-09-09 → 2013-10-25 (+46d) | 2013-10-04 → 2013-12-19 (+76d) | 20d → 40d | 218d → 98d | 15, 85, Адаптация компонент сканирования (СПО) → 15, 85 | resources Java разработчик → Java разработчик; Java разработчик1; Java разработчик2 |
| 99 | **Тестирование** | 2013-08-12 → 2013-10-25 (+74d) | 2013-11-13 → 2014-01-28 (+76d) |  | 66d → 70d |  |  |
| 100 | **Функциональное тестирование** | 2013-08-12 → 2013-10-25 (+74d) | 2013-10-23 → 2014-01-07 (+76d) |  | 66d → 70d |  |  |
| 101 | Подготовка ПМИ | 2013-08-12 → 2013-10-25 (+74d) | 2013-08-16 → 2013-10-31 (+76d) |  | 2d → 70d |  |  |
| 102 | Разработка "сценариев тестирования" | 2013-08-12 → 2013-10-25 (+74d) | 2013-08-30 → 2013-11-14 (+76d) |  | 2d → 70d |  |  |
| 103 | Разработка модели нагрузки для тестирования | 2013-08-19 → 2013-11-01 (+74d) | 2013-08-30 → 2013-11-14 (+76d) |  | 2d → 70d |  |  |
| 104 | **Проведение тестирования** | 2013-09-02 → 2013-11-15 (+74d) | 2013-10-23 → 2014-01-07 (+76d) |  | 66d → 70d |  |  |
| 105 | **Подготовка среды тестирования** | 2013-09-02 → 2013-11-15 (+74d) | 2013-09-20 → 2013-12-05 (+76d) |  | 66d → 70d |  |  |
| 106 | Разворачивание системы | 2013-09-02 → 2013-11-15 (+74d) | 2013-09-06 → 2013-11-21 (+76d) |  | 2d → 70d |  |  |
| 107 | Наполнение данными | 2013-09-09 → 2013-11-22 (+74d) | 2013-09-20 → 2013-12-05 (+76d) |  | 2d → 70d |  |  |
| 108 | Среда тестирования готова | 2013-09-20 → 2013-12-05 (+76d) | 2013-09-20 → 2013-12-05 (+76d) |  | 2d → 70d |  |  |
| 109 | Проведение тестирования | 2013-09-23 → 2013-12-06 (+74d) | 2013-10-04 → 2013-12-19 (+76d) |  | 2d → 70d |  |  |
| 110 | **Обработка результатов тестирования и внесение изменений в модуль** | 2013-10-03 → 2013-12-18 (+76d) | 2013-10-23 → 2014-01-07 (+76d) |  | 66d → 70d |  |  |
| 111 | Устранение замечаний по результатам функционального тестирования | 2013-10-03 → 2013-12-18 (+76d) | 2013-10-23 → 2014-01-07 (+76d) |  | 66d → 70d |  |  |
| 112 | Проверка устранения замечаний | 2013-10-16 → 2013-12-31 (+76d) | 2013-10-23 → 2014-01-07 (+76d) |  | 4d → 70d |  |  |
| 113 | **Нагрузочное тестирование** | 2013-08-19 → 2013-11-01 (+74d) | 2013-11-13 → 2014-01-28 (+76d) |  | 66d → 70d |  |  |
| 114 | Адаптация автоматизированных сценариев от СМ4 для создания нагрузки | 2013-08-19 → 2013-11-01 (+74d) | 2013-10-09 → 2013-12-12 (+64d) | 38d → 30d | 14d → 88d |  | was named Адаптация автоматизированных сценариев для создания нагрузки от СМ4 |
| 115 | Стенд для нагрузочного тестирования подготовлен | 2013-10-04 → 2013-12-19 (+76d) | 2013-10-04 → 2013-12-19 (+76d) |  | 17d → 110.67d |  |  |
| 116 | Проведения нагрузочного тестирования | 2013-10-24 → 2014-01-08 (+76d) | 2013-11-06 → 2014-01-21 (+76d) |  | 4d → 70d |  |  |
| 117 | Обработка результатов нагрузочного тестирования | 2013-11-07 → 2014-01-22 (+76d) | 2013-11-13 → 2014-01-28 (+76d) |  | 4d → 70d |  |  |
| 118 | Разработка модуля "Делопроизводство" завершена | 2013-11-13 → 2014-01-28 (+76d) | 2013-11-13 → 2014-01-28 (+76d) |  | 168d → 70d |  |  |
| 119 | **Подготовка документации** | 2013-08-12 → 2013-10-25 (+74d) | 2013-10-04 → 2014-02-13 (+132d) | 40d → 80d | 67d → 58d |  |  |
| 120 | Разработка документа "Концепция системы " | 2013-08-12 → 2013-10-25 (+74d) | 2013-09-06 → 2013-12-19 (+104d) | 20d → 40d | 67d → 58d |  |  |
| 121 | Разработка "Software Architecture Document" | 2013-09-09 → 2013-12-20 (+102d) | 2013-10-04 → 2014-02-13 (+132d) | 20d → 40d | 67d → 58d |  |  |
| 122 | Документы подготовлены | 2013-10-04 → 2014-02-13 (+132d) | 2013-10-04 → 2014-02-13 (+132d) |  | 67d → 58d |  |  |
| 123 | **Проверка работоспособности решения - Организация демонстрации** | 2013-11-06 → 2013-11-15 (+9d) | 2013-12-13 → 2013-12-19 (+6d) | 28d? → 25d? | 102d → 98d | none → 104SS |  |
| 124 | Подготовка стенда | 2013-11-06 → 2013-11-15 (+9d) | 2013-11-11 → 2013-11-19 (+8d) |  | 127d → 120d |  |  |
| 125 | Подготовка прототипа | 2013-11-11 → 2013-11-15 (+4d) | 2013-12-06 → 2013-12-12 (+6d) |  | 102d → 98d | 118FS-3d → none |  |
| 126 | Проведение демонстраций | 2013-12-09 → 2013-12-13 (+4d) | 2013-12-11 → 2013-12-17 (+6d) |  | 168d → 98d | 118SF, 125 → 125 |  |
| 127 | Анализ результатов - выводы | 2013-12-12 → 2013-12-18 (+6d) | 2013-12-13 → 2013-12-19 (+6d) |  | 168d → 98d |  |  |
| 128 | **Создание модулей первой очереди** | 2013-10-04 → 2013-10-11 (+7d) | 2014-02-03 → 2014-03-17 (+42d) | 86d? → 111d? | 66d → 36d |  |  |
| 129 | Определен состав модулей первой очереди и первичные требования подготовлены | 2013-10-04 → 2013-10-11 (+7d) | 2013-10-04 → 2013-10-11 (+7d) |  | 67d → 36d | 122 → 90FS+10d |  |
| 130 | **Проектирование** | 2013-10-07 → 2013-10-14 (+7d) | 2013-10-25 → 2013-11-04 (+10d) | 15d → 15.67d | 67d → 36d |  |  |
| 131 | Определение структуры модулей первой очереди | 2013-10-07 → 2013-10-14 (+7d) | 2013-10-23 → 2013-10-30 (+7d) |  | 67d → 36d | 83 → none |  |
| 132 | Уточнение состава и сроков работ | 2013-10-24 → 2013-10-31 (+7d) | 2013-10-25 → 2013-11-04 (+10d) | 2d → 2.67d | 67d → 53.33d |  | resources Тугушев Илья; Андрей Пирожков; Денис Митавский; WEB-дизайнер → Тугушев Илья; Андрей Пирожков; Денис Митавский |
| 133 | Принято решение о разработке модулей второй очереди | 2013-10-23 → 2013-10-30 (+7d) | 2013-10-23 → 2013-10-30 (+7d) |  | 2d → 36d | 111, 131 → 131 |  |
| 134 | **Разработка** | 2013-10-24 → 2013-10-31 (+7d) | 2013-12-20 → 2013-12-25 (+5d) | 42d → 40d | 69d → 36d |  |  |

| ID | Task | Start | Finish | Duration | Total float | Predecessors |
| --- | --- | --- | --- | --- | --- | --- |
| 135 | Контроль и корректировка технических решений "Архитектурный комитет" | 2013-10-24 → 2013-10-31 (+7d) | 2013-12-18 → 2013-12-25 (+7d) |  | 165d → 94d |  |
| 136 | **Разработка серверной логики модулей первой очереди** | 2013-10-24 → 2013-10-31 (+7d) | 2013-12-18 → 2013-12-25 (+7d) |  | 69d → 36d |  |
| 137 | Разработка схем документов для модулей первой очереди | 2013-10-24 → 2013-10-31 (+7d) | 2013-11-20 → 2013-11-27 (+7d) |  | 2d → 36d |  |
| 138 | Разработка ЖЦ процессов (WF) | 2013-11-21 → 2013-11-28 (+7d) | 2013-12-18 → 2013-12-25 (+7d) |  | 2d → 36d |  |
| 139 | Разработка логики бизнес- действий для модулей первой очереди | 2013-10-24 → 2013-10-31 (+7d) | 2013-12-18 → 2013-12-25 (+7d) |  | 2d → 36d |  |
| 140 | Разработка процессов автоматизации для модулей первой очереди | 2013-10-24 → 2013-10-31 (+7d) | 2013-11-20 → 2013-11-27 (+7d) |  | 22d → 56d |  |
| 141 | Разработка модели прав доступа (контекстные роли) | 2013-11-21 → 2013-11-28 (+7d) | 2013-12-18 → 2013-12-25 (+7d) |  | 2d → 36d |  |
| 142 | **Разработка клиентской логики модулей первой очереди** | 2013-10-24 → 2013-10-31 (+7d) | 2013-12-18 → 2013-12-11 (-7d) | 40d → 30d | 69d → 46d |  |
| 143 | Разработка форм для работы с документами в GUI (настройки форм) | 2013-10-24 → 2013-10-31 (+7d) | 2013-11-20 → 2013-11-13 (-7d) | 20d → 10d | 22d → 66d |  |
| 144 | Разработка структуры рабочего места | 2013-11-21 → 2013-11-28 (+7d) | 2013-12-18 → 2013-12-11 (-7d) | 20d → 10d | 2d → 46d |  |
| 145 | Разработка специфичных для модуля форм элементов GUI | 2013-10-24 → 2013-10-31 (+7d) | 2013-12-18 → 2013-11-27 (-21d) | 40d → 20d | 2d → 56d |  |
| 146 | **Разработка вспомогательного инструментария** | 2013-10-28 → 2013-11-04 (+7d) | 2013-12-20 → 2013-12-02 (-18d) | 40d → 20d | 67d → 53.33d |  |
| 147 | Построитель форм | 2013-10-28 → 2013-11-04 (+7d) | 2013-12-20 → 2013-11-18 (-32d) | 40d → 10d | 67d → 63.33d |  |
| 148 | Разработка инсталлятора | 2013-10-28 → 2013-11-04 (+7d) | 2013-12-20 → 2013-12-02 (-18d) | 40d → 20d | 67d → 53.33d |  |
| 149 | Разработка конфигуратора | 2013-10-28 → 2013-11-04 (+7d) | 2013-12-20 → 2013-11-18 (-32d) | 40d → 10d | 67d → 63.33d |  |
| 150 | Подготовка отчетов | 2013-10-24 → 2013-10-31 (+7d) | 2013-12-18 → 2013-11-27 (-21d) | 40d → 20d | 165d → 114d |  |
| 151 | Сборка модулей первой очереди завершена | 2013-12-20 → 2013-12-25 (+5d) | 2013-12-20 → 2013-12-25 (+5d) |  | 67d → 36d |  |
| 152 | **Тестирование** | 2013-11-14 → 2013-12-26 (+42d) | 2014-02-03 → 2014-03-17 (+42d) |  | 66d → 36d | 113 → 151 |
| 153 | **Функциональное тестирование** | 2013-11-14 → 2013-12-26 (+42d) | 2014-01-10 → 2014-02-17 (+38d) | 42d? → 38d? | 66d → 36d |  |
| 154 | Подготовка ПМИ | 2013-11-14 → 2013-12-26 (+42d) | 2013-11-20 → 2014-01-01 (+42d) |  | 132d → 36d |  |
| 155 | Разработка "сценариев тестирования" | 2013-11-14 → 2013-12-26 (+42d) | 2013-12-04 → 2014-01-15 (+42d) |  | 4d → 41d |  |
| 156 | Разработка модели нагрузки для тестирования | 2013-11-21 → 2014-01-02 (+42d) | 2013-12-04 → 2014-01-15 (+42d) |  | 175d → 79d |  |
| 157 | **Проведение тестирования** | 2013-11-14 → 2013-12-26 (+42d) | 2014-01-10 → 2014-02-17 (+38d) | 42d? → 38d? | 67d → 41d |  |
| 158 | **Подготовка среды тестирования** | 2013-11-14 → 2013-12-26 (+42d) | 2013-12-04 → 2014-01-15 (+42d) |  | 71d → 41d |  |
| 159 | Разворачивание системы | 2013-11-14 → 2013-12-26 (+42d) | 2013-11-20 → 2014-01-01 (+42d) |  | 4d → 41d |  |
| 160 | Наполнение данными | 2013-11-21 → 2014-01-02 (+42d) | 2013-12-04 → 2014-01-15 (+42d) |  | 4d → 41d |  |
| 161 | Среда тестирования готова | 2013-12-04 → 2014-01-15 (+42d) | 2013-12-04 → 2014-01-15 (+42d) |  | 4d → 41d |  |
| 162 | Проведение тестирования | 2013-12-05 → 2014-01-16 (+42d) | 2013-12-18 → 2014-01-29 (+42d) |  | 4d → 41d |  |
| 163 | **Обработка результатов тестирования и внесение изменений в модуль** | 2013-12-23 → 2014-01-28 (+36d) | 2014-01-10 → 2014-02-17 (+38d) |  | 67d → 41d |  |
| 164 | Устранение замечаний по результатам функционального тестирования | 2013-12-23 → 2014-01-28 (+36d) | 2014-01-10 → 2014-02-17 (+38d) |  | 67d → 41d |  |
| 165 | Проверка устранения замечаний | 2014-01-03 → 2014-02-10 (+38d) | 2014-01-10 → 2014-02-17 (+38d) |  | 22d → 41d |  |
| 166 | **Нагрузочное тестирование** | 2013-11-21 → 2014-01-02 (+42d) | 2014-02-03 → 2014-03-17 (+42d) |  | 66d → 36d |  |
| 167 | Подготовка автоматизированных сценариев для создания нагрузки | 2013-11-21 → 2014-01-02 (+42d) | 2014-01-13 → 2014-02-24 (+42d) |  | 132d → 36d |  |
| 168 | Стенд для нагрузочного тестирования подготовлен | 2013-12-18 → 2014-01-29 (+42d) | 2013-12-18 → 2014-01-29 (+42d) |  | 150d → 54d |  |
| 169 | Проведения нагрузочного тестирования | 2014-01-14 → 2014-02-25 (+42d) | 2014-01-27 → 2014-03-10 (+42d) |  | 132d → 36d |  |
| 170 | Обработка результатов нагрузочного тестирования | 2014-01-28 → 2014-03-11 (+42d) | 2014-02-03 → 2014-03-17 (+42d) |  | 132d → 36d |  |
| 171 | Разработка модулей первой очереди завершена | 2014-02-03 → 2014-03-17 (+42d) | 2014-02-03 → 2014-03-17 (+42d) |  | 132d → 36d |  |
| 172 | **Подготовка документации** | 2013-11-14 → 2013-12-26 (+42d) | 2014-01-10 → 2014-02-17 (+38d) | 42d → 38d | 82d → 56d |  |
| 173 | Разработка "Software Architecture Document" для модулей первой очереди | 2013-11-14 → 2013-12-26 (+42d) | 2013-12-11 → 2014-01-22 (+42d) |  | 104d → 74d |  |
| 174 | Документы подготовлены | 2014-01-10 → 2014-02-17 (+38d) | 2014-01-10 → 2014-02-17 (+38d) |  | 82d → 56d |  |

## Version 5 (saved 2013-06-03)

Note of the change: Изменения от 02.06

Last finish stays 2014-05-06.

Added:

| ID | Task | Duration | Start | Finish | Predecessors | Constraint | Resources |
| --- | --- | --- | --- | --- | --- | --- | --- |
| 5 | Выделен аналитик на проект | 0d | 2013-05-27 | 2013-05-27 |  | start no earlier than 2013-05-27 |  |
| 6 | Формирование скоупа проекта _ верхний уровень | 12d | 2013-05-27 | 2013-06-11 | 5 |  | Евгения Капустина |
| 7 | Скоуп на систему сформирован и утвержден | 0d | 2013-06-18 | 2013-06-18 | 6FS+5d |  |  |
| 8 | Сопровождение требований | 173d | 2013-06-19 | 2014-02-14 | 5, 7 |  | Эдуард Михайлов; Евгения Капустина [30%] |

Changed:

| ID | Task | Start | Finish | Duration | Total float | Predecessors | Other |
| --- | --- | --- | --- | --- | --- | --- | --- |
| 4 | **Управление требованиями** | 2013-04-22 → 2013-05-27 (+35d) | 2014-05-06 → 2014-02-14 (-81d) | 267d → 190d | 0d → 57d |  |  |
| 12 | Пирожков доступен | 2013-05-31 → 2013-06-03 (+3d) | 2013-05-31 → 2013-06-03 (+3d) |  | 243d → 242d |  | constraint start no earlier than 2013-05-31 → start no earlier than 2013-06-03 |
| 108 | Адаптация автоматизированных сценариев от СМ4 для создания нагрузки |  | 2013-12-12 → 2013-12-05 (-7d) | 30d → 25d | 88d → 70d | none → 105 |  |
| 113 | Среда тестирования готова |  |  |  |  | 112 → 112, 108 |  |
| 118 | **Нагрузочное тестирование** | 2013-11-01 → 2013-12-19 (+48d) |  | 63d → 28d |  |  |  |

## Version 6 (saved 2013-06-04)

Note of the change: Изменения от 04.06

Last finish stays 2014-05-06.

Added:

| ID | Task | Duration | Start | Finish | Predecessors |
| --- | --- | --- | --- | --- | --- |
| 112 | Система готова для подключения инструментов мониторинга | 0d | 2013-11-21 | 2013-11-21 | 111 |

## Version 7 (saved 2013-06-05)

Note of the change: Изменения от 05.06

Last finish stays 2014-05-06.

Added:

| ID | Task | Duration | Start | Finish | Predecessors | Resources |
| --- | --- | --- | --- | --- | --- | --- |
| 30 | Функционал системы готов для проведения проектирования интеграции с GUI СМ4 | 0d | 2013-06-24 | 2013-06-24 | 28, 29 |  |
| 84 | **Интеграция с системой управления учетными записями** | 14d | 2013-09-05 | 2013-09-24 | 78 |  |
| 85 | Интеграция с ActiveDirectory | 14d | 2013-09-05 | 2013-09-24 |  | Андрей Пирожков |

Changed:

| ID | Task | Start | Finish | Duration | Total float | Predecessors | Other |
| --- | --- | --- | --- | --- | --- | --- | --- |
| 25 | Базовая имплементация слоя DAO |  |  |  | 36d → 42d |  | resources Денис Митавский [50%]; Валерий Мацукевич → Валерий Мацукевич |
| 39 | Описание существующими декларативными средствами конфигурации |  |  |  |  |  | resources Денис Митавский [50%]; Валерий Мацукевич → Валерий Мацукевич |
| 57 | **Слой сопряжения GUI CM4** | 2013-07-03 → 2013-06-25 (-8d) | 2013-09-13 → 2013-09-05 (-8d) |  | 36d → 42d |  |  |
| 58 | REST-протокол для АРМа - проектирование | 2013-07-03 → 2013-06-25 (-8d) | 2013-07-05 → 2013-06-27 (-8d) |  | 36d → 42d | 31 → 30 |  |
| 59 | REST-протокол для АРМа - реализация | 2013-07-08 → 2013-06-28 (-10d) | 2013-09-13 → 2013-09-05 (-8d) |  | 36d → 42d |  | resources Тугушев Илья; Роман; Глеб → Тугушев Илья [33%]; Роман; Глеб |
| 70 | GUI - отображение коллекций активность |  |  |  |  |  | resources Тугушев Илья [50%]; Роман → Тугушев Илья [33%]; Роман |
| 72 | GUI - действия |  |  |  |  |  | resources Тугушев Илья [50%]; Глеб → Тугушев Илья [33%]; Глеб |
| 75 | GUI - виджеты разработка (базовый набор) |  |  |  |  |  | resources Тугушев Илья [50%]; Роман; Глеб → Роман; Глеб |
| 97 | **Разработка клиентской логики модуля "Делопроизводство"** | 2013-09-16 → 2013-09-06 (-10d) | 2013-09-27 → 2013-09-19 (-8d) |  | 36d → 42d |  |  |
| 98 | Разработка форм для работы с документами в GUI (настройки форм) | 2013-09-16 → 2013-09-06 (-10d) | 2013-09-20 → 2013-09-12 (-8d) |  | 36d → 42d |  |  |
| 99 | Разработка структуры рабочего места | 2013-09-23 → 2013-09-13 (-10d) | 2013-09-27 → 2013-09-19 (-8d) |  | 36d → 42d |  |  |
| 100 | Разработка специфичных для модуля форм элементов GUI | 2013-09-16 → 2013-09-06 (-10d) | 2013-09-27 → 2013-09-19 (-8d) |  | 36d → 42d |  |  |
| 101 | **Подготовка работы со списками значений** | 2013-09-30 → 2013-09-20 (-10d) | 2013-11-22 → 2013-11-14 (-8d) |  | 117d → 123d |  |  |
| 102 | Разработка функционала учета организационно штатной структуры | 2013-09-30 → 2013-09-20 (-10d) | 2013-11-22 → 2013-11-14 (-8d) |  | 117d → 123d |  |  |
| 103 | Разработка функционала с рубрикаторами (сложные справочники) | 2013-09-30 → 2013-09-20 (-10d) | 2013-10-25 → 2013-10-17 (-8d) |  | 117d → 123d |  |  |
| 104 | Разработка функционала для работы с словарями данных (простые, линейные справочники) | 2013-10-28 → 2013-10-18 (-10d) | 2013-11-22 → 2013-11-14 (-8d) |  | 117d → 123d |  |  |
| 136 | **Создание модулей первой очереди** | 2013-10-11 → 2013-10-03 (-8d) | 2014-03-17 → 2014-03-07 (-10d) |  | 36d → 42d |  |  |
| 137 | Определен состав модулей первой очереди и первичные требования подготовлены | 2013-10-11 → 2013-10-03 (-8d) | 2013-10-11 → 2013-10-03 (-8d) |  | 36d → 42d |  |  |
| 138 | **Проектирование** | 2013-10-14 → 2013-10-04 (-10d) | 2013-11-04 → 2013-10-30 (-5d) | 15.67d → 18.33d | 36d → 42d |  |  |
| 139 | Определение структуры модулей первой очереди | 2013-10-14 → 2013-10-04 (-10d) | 2013-10-30 → 2013-10-22 (-8d) |  | 36d → 42d |  |  |
| 140 | Уточнение состава и сроков работ | 2013-10-31 → 2013-10-23 (-8d) | 2013-11-04 → 2013-10-30 (-5d) | 2.67d → 5.33d | 53.33d → 56.67d |  | resources Тугушев Илья; Андрей Пирожков; Денис Митавский → Тугушев Илья [50%]; Андрей Пирожков [50%]; Денис Митавский [50%] |
| 141 | Принято решение о разработке модулей второй очереди | 2013-10-30 → 2013-10-22 (-8d) | 2013-10-30 → 2013-10-22 (-8d) |  | 36d → 42d |  |  |
| 142 | **Разработка** | 2013-10-31 → 2013-10-23 (-8d) | 2013-12-25 → 2013-12-17 (-8d) |  | 36d → 42d |  |  |
| 143 | Контроль и корректировка технических решений "Архитектурный комитет" | 2013-10-31 → 2013-10-23 (-8d) | 2013-12-25 → 2013-12-12 (-13d) | 40d → 37d | 94d → 103d |  | resources Тугушев Илья; Андрей Пирожков; Денис Митавский; WEB-дизайнер → Тугушев Илья [10%]; Андрей Пирожков [10%]; Денис Митавский [10%]; WEB-дизайнер |
| 144 | **Разработка серверной логики модулей первой очереди** | 2013-10-31 → 2013-10-23 (-8d) | 2013-12-25 → 2013-12-17 (-8d) |  | 36d → 42d |  |  |
| 145 | Разработка схем документов для модулей первой очереди | 2013-10-31 → 2013-10-23 (-8d) | 2013-11-27 → 2013-11-19 (-8d) |  | 36d → 42d |  |  |
| 146 | Разработка ЖЦ процессов (WF) | 2013-11-28 → 2013-11-20 (-8d) | 2013-12-25 → 2013-12-17 (-8d) |  | 36d → 42d |  |  |
| 147 | Разработка логики бизнес- действий для модулей первой очереди | 2013-10-31 → 2013-10-23 (-8d) | 2013-12-25 → 2013-12-17 (-8d) |  | 36d → 42d |  |  |
| 148 | Разработка процессов автоматизации для модулей первой очереди | 2013-10-31 → 2013-10-23 (-8d) | 2013-11-27 → 2013-11-19 (-8d) |  | 56d → 62d |  |  |
| 149 | Разработка модели прав доступа (контекстные роли) | 2013-11-28 → 2013-11-20 (-8d) | 2013-12-25 → 2013-12-17 (-8d) |  | 36d → 42d |  |  |
| 150 | **Разработка клиентской логики модулей первой очереди** | 2013-10-31 → 2013-10-23 (-8d) | 2013-12-11 → 2013-12-03 (-8d) |  | 46d → 52d |  |  |
| 151 | Разработка форм для работы с документами в GUI (настройки форм) | 2013-10-31 → 2013-10-23 (-8d) | 2013-11-13 → 2013-11-05 (-8d) |  | 66d → 72d |  |  |
| 152 | Разработка структуры рабочего места | 2013-11-28 → 2013-11-20 (-8d) | 2013-12-11 → 2013-12-03 (-8d) |  | 46d → 52d |  |  |
| 153 | Разработка специфичных для модуля форм элементов GUI | 2013-10-31 → 2013-10-23 (-8d) | 2013-11-27 → 2013-11-19 (-8d) |  | 56d → 62d |  |  |
| 154 | **Разработка вспомогательного инструментария** | 2013-11-04 → 2013-10-30 (-5d) | 2013-12-02 → 2013-11-27 (-5d) |  | 53.33d → 56.67d |  |  |
| 155 | Построитель форм | 2013-11-04 → 2013-10-30 (-5d) | 2013-11-18 → 2013-11-13 (-5d) |  | 63.33d → 66.67d |  |  |
| 156 | Разработка инсталлятора | 2013-11-04 → 2013-10-30 (-5d) | 2013-12-02 → 2013-11-27 (-5d) |  | 53.33d → 56.67d |  |  |
| 157 | Разработка конфигуратора | 2013-11-04 → 2013-10-30 (-5d) | 2013-11-18 → 2013-11-13 (-5d) |  | 63.33d → 66.67d |  |  |
| 158 | Подготовка отчетов | 2013-10-31 → 2013-10-23 (-8d) | 2013-11-27 → 2013-11-19 (-8d) |  | 114d → 120d |  |  |
| 159 | Сборка модулей первой очереди завершена | 2013-12-25 → 2013-12-17 (-8d) | 2013-12-25 → 2013-12-17 (-8d) |  | 36d → 42d |  |  |
| 160 | **Тестирование** | 2013-12-26 → 2013-12-18 (-8d) | 2014-03-17 → 2014-03-07 (-10d) |  | 36d → 42d |  |  |
| 161 | **Функциональное тестирование** | 2013-12-26 → 2013-12-18 (-8d) | 2014-02-17 → 2014-02-07 (-10d) |  | 36d → 42d |  |  |
| 162 | Подготовка ПМИ | 2013-12-26 → 2013-12-18 (-8d) | 2014-01-01 → 2013-12-24 (-8d) |  | 36d → 42d |  |  |
| 163 | Разработка "сценариев тестирования" | 2013-12-26 → 2013-12-18 (-8d) | 2014-01-15 → 2014-01-07 (-8d) |  | 41d → 47d |  |  |
| 164 | Разработка модели нагрузки для тестирования | 2014-01-02 → 2013-12-25 (-8d) | 2014-01-15 → 2014-01-07 (-8d) |  | 79d → 85d |  |  |
| 165 | **Проведение тестирования** | 2013-12-26 → 2013-12-18 (-8d) | 2014-02-17 → 2014-02-07 (-10d) |  | 41d → 47d |  |  |
| 166 | **Подготовка среды тестирования** | 2013-12-26 → 2013-12-18 (-8d) | 2014-01-15 → 2014-01-07 (-8d) |  | 41d → 47d |  |  |
| 167 | Разворачивание системы | 2013-12-26 → 2013-12-18 (-8d) | 2014-01-01 → 2013-12-24 (-8d) |  | 41d → 47d |  |  |
| 168 | Наполнение данными | 2014-01-02 → 2013-12-25 (-8d) | 2014-01-15 → 2014-01-07 (-8d) |  | 41d → 47d |  |  |
| 169 | Среда тестирования готова | 2014-01-15 → 2014-01-07 (-8d) | 2014-01-15 → 2014-01-07 (-8d) |  | 41d → 47d |  |  |
| 170 | Проведение тестирования | 2014-01-16 → 2014-01-08 (-8d) | 2014-01-29 → 2014-01-21 (-8d) |  | 41d → 47d |  |  |
| 171 | **Обработка результатов тестирования и внесение изменений в модуль** | 2014-01-28 → 2014-01-20 (-8d) | 2014-02-17 → 2014-02-07 (-10d) |  | 41d → 47d |  |  |
| 172 | Устранение замечаний по результатам функционального тестирования | 2014-01-28 → 2014-01-20 (-8d) | 2014-02-17 → 2014-02-07 (-10d) |  | 41d → 47d |  |  |
| 173 | Проверка устранения замечаний | 2014-02-10 → 2014-01-31 (-10d) | 2014-02-17 → 2014-02-07 (-10d) |  | 41d → 47d |  |  |
| 174 | **Нагрузочное тестирование** | 2014-01-02 → 2013-12-25 (-8d) | 2014-03-17 → 2014-03-07 (-10d) |  | 36d → 42d |  |  |
| 175 | Подготовка автоматизированных сценариев для создания нагрузки | 2014-01-02 → 2013-12-25 (-8d) | 2014-02-24 → 2014-02-14 (-10d) |  | 36d → 42d |  |  |
| 176 | Стенд для нагрузочного тестирования подготовлен | 2014-01-29 → 2014-01-21 (-8d) | 2014-01-29 → 2014-01-21 (-8d) |  | 54d → 60d |  |  |
| 177 | Проведения нагрузочного тестирования | 2014-02-25 → 2014-02-17 (-8d) | 2014-03-10 → 2014-02-28 (-10d) |  | 36d → 42d |  |  |
| 178 | Обработка результатов нагрузочного тестирования | 2014-03-11 → 2014-03-03 (-8d) | 2014-03-17 → 2014-03-07 (-10d) |  | 36d → 42d |  |  |
| 179 | Разработка модулей первой очереди завершена | 2014-03-17 → 2014-03-07 (-10d) | 2014-03-17 → 2014-03-07 (-10d) |  | 36d → 42d |  |  |
| 180 | **Подготовка документации** | 2013-12-26 → 2013-12-18 (-8d) | 2014-02-17 → 2014-02-07 (-10d) | 38d → 38d? | 56d → 62d |  |  |
| 181 | Разработка "Software Architecture Document" для модулей первой очереди | 2013-12-26 → 2013-12-18 (-8d) | 2014-01-22 → 2014-01-14 (-8d) |  | 74d → 80d |  |  |
| 182 | Документы подготовлены | 2014-02-17 → 2014-02-07 (-10d) | 2014-02-17 → 2014-02-07 (-10d) |  | 56d → 62d |  |  |

## Version 8 (saved 2013-06-06)

Note of the change: изменения от 06ю06

Last finish stays 2014-05-06.

Added:

| ID | Task | Duration | Start | Finish | Predecessors | Resources |
| --- | --- | --- | --- | --- | --- | --- |
| 106 | Сопряжение с мобильным клиентом СМ4 | 25d | 2013-11-15 | 2013-12-19 | 101 | Java разработчик3 |

Changed:

| ID | Task | Start | Finish | Duration | Total float |
| --- | --- | --- | --- | --- | --- |
| 9 | **Создание модуля "Делопроизводство" (документоориентированная среда)** |  | 2014-02-13 → 2014-02-14 (+1d) | 209d? → 210d? |  |
| 11 | **Апробация идей прототипа** |  | 2013-06-05 → 2013-06-06 (+1d) | 23d → 24d | 73d → 72d |
| 14 | Описание обработки ВХ. Док. На примере технологий прототипа |  | 2013-06-05 → 2013-06-06 (+1d) | 8d → 9d | 63d → 62d |
| 19 | **Проектирование и формирование ядра системы** |  | 2013-10-24 → 2013-10-25 (+1d) | 129d → 130d |  |
| 41 | **Workflow - интеграция с Activiti** | 2013-06-06 → 2013-06-07 (+1d) | 2013-07-17 → 2013-07-18 (+1d) |  | 63d → 62d |
| 42 | Проектирование | 2013-06-06 → 2013-06-07 (+1d) | 2013-06-19 → 2013-06-20 (+1d) |  | 63d → 62d |
| 43 | Разработка | 2013-06-20 → 2013-06-21 (+1d) | 2013-07-17 → 2013-07-18 (+1d) |  | 63d → 62d |
| 44 | Наследование/Аспекты | 2013-06-20 → 2013-06-21 (+1d) | 2013-07-17 → 2013-07-18 (+1d) |  | 141d → 140d |
| 45 | **Коллекции** | 2013-07-18 → 2013-07-19 (+1d) | 2013-08-22 → 2013-08-23 (+1d) |  | 70d → 69d |
| 46 | Коллекции - конфигурация | 2013-07-18 → 2013-07-19 (+1d) | 2013-07-22 → 2013-07-23 (+1d) |  | 70d → 69d |
| 47 | DAO - язык запросов коллекций | 2013-07-23 → 2013-07-24 (+1d) | 2013-08-07 → 2013-08-08 (+1d) |  | 80d → 79d |
| 48 | Сервис получения и получения счетчиков | 2013-08-08 → 2013-08-09 (+1d) | 2013-08-15 → 2013-08-16 (+1d) |  | 95d → 94d |
| 49 | ПКД | 2013-08-08 → 2013-08-09 (+1d) | 2013-08-22 → 2013-08-23 (+1d) |  | 80d → 79d |
| 50 | **Действия** | 2013-07-23 → 2013-07-24 (+1d) | 2013-08-15 → 2013-08-16 (+1d) |  | 70d → 69d |
| 51 | Концепция | 2013-07-23 → 2013-07-24 (+1d) | 2013-07-26 → 2013-07-29 (+3d) |  | 70d → 69d |
| 52 | Реализация | 2013-07-29 → 2013-07-30 (+1d) | 2013-08-15 → 2013-08-16 (+1d) |  | 70d → 69d |
| 64 | **Работа с отчетами** | 2013-08-23 → 2013-08-26 (+3d) | 2013-09-24 → 2013-09-25 (+1d) |  | 82d → 81d |
| 65 | JDBC-драйвер для системы построения отчётов | 2013-08-23 → 2013-08-26 (+3d) | 2013-09-03 → 2013-09-04 (+1d) |  | 82d → 81d |
| 66 | Интеграция с Jasper Reports | 2013-09-04 → 2013-09-05 (+1d) | 2013-09-24 → 2013-09-25 (+1d) |  | 82d → 81d |
| 67 | **Компоненты GUI** | 2013-08-08 → 2013-08-09 (+1d) | 2013-10-04 → 2013-10-07 (+3d) |  | 81d → 80d |
| 68 | GUI - архитектура активностей/дочерних активностей | 2013-08-08 → 2013-08-09 (+1d) | 2013-08-21 → 2013-08-22 (+1d) |  | 81d → 80d |
| 69 | GUI - панель навигации | 2013-08-23 → 2013-08-26 (+3d) | 2013-09-05 → 2013-09-06 (+1d) |  | 80d → 79d |
| 70 | GUI - отображение коллекций активность | 2013-08-22 → 2013-08-23 (+1d) | 2013-09-04 → 2013-09-05 (+1d) |  | 104d → 103d |
| 71 | GUI - отображение отчётов | 2013-09-25 → 2013-09-26 (+1d) | 2013-10-04 → 2013-10-07 (+3d) |  | 82d → 81d |
| 72 | GUI - действия | 2013-08-22 → 2013-08-23 (+1d) | 2013-09-04 → 2013-09-05 (+1d) |  | 104d → 103d |
| 76 | Тестирование производительности | 2013-09-06 → 2013-09-09 (+3d) | 2013-10-10 → 2013-10-11 (+1d) |  | 80d → 79d |
| 77 | Версионность/аудит | 2013-08-16 → 2013-08-19 (+3d) | 2013-08-27 → 2013-08-28 (+1d) |  | 70d → 69d |
| 78 | Блокировки бизнес-объектов | 2013-08-28 → 2013-08-29 (+1d) | 2013-09-04 → 2013-09-05 (+1d) |  | 70d → 69d |
| 80 | Уточнение состава и сроков работ | 2013-10-07 → 2013-10-08 (+1d) | 2013-10-08 → 2013-10-09 (+1d) |  | 82d → 81d |
| 81 | Кросс-СУБД, поддержка Oracle | 2013-09-05 → 2013-09-06 (+1d) | 2013-09-25 → 2013-09-26 (+1d) |  | 70d → 69d |
| 82 | SQL-trace | 2013-09-26 → 2013-09-27 (+1d) | 2013-10-02 → 2013-10-03 (+1d) |  | 71d → 70d |
| 83 | Локализация (на уровне конфигурации) | 2013-10-03 → 2013-10-04 (+1d) | 2013-10-23 → 2013-10-24 (+1d) |  | 71d → 70d |
| 84 | **Интеграция с системой управления учетными записями** | 2013-09-05 → 2013-09-06 (+1d) | 2013-09-24 → 2013-09-25 (+1d) |  | 92d → 91d |
| 85 | Интеграция с ActiveDirectory | 2013-09-05 → 2013-09-06 (+1d) | 2013-09-24 → 2013-09-25 (+1d) |  | 92d → 91d |
| 86 | **Расширение функций сервиса конфигурации** | 2013-09-26 → 2013-09-27 (+1d) | 2013-10-24 → 2013-10-25 (+1d) |  | 70d → 69d |
| 87 | Точки расширения | 2013-09-26 → 2013-09-27 (+1d) | 2013-10-02 → 2013-10-03 (+1d) |  | 70d → 69d |
| 88 | Изменение и дополнение конфигурации системы | 2013-10-03 → 2013-10-04 (+1d) | 2013-10-24 → 2013-10-25 (+1d) |  | 70d → 69d |
| 89 | **Разработка** |  | 2013-12-19 → 2013-12-20 (+1d) | 138d → 139d |  |
| 90 | Контроль и корректировка технических решений "Архитектурный комитет" |  | 2013-10-31 → 2013-12-20 (+50d) | 103d → 139d | 133d → 97d |
| 91 | **Разработка серверной логики модуля Делопроизводство** | 2013-07-18 → 2013-07-19 (+1d) | 2013-09-11 → 2013-09-12 (+1d) |  | 63d → 62d |
| 92 | Разработка схем документов модуля Делопроизводство | 2013-07-18 → 2013-07-19 (+1d) | 2013-08-14 → 2013-08-15 (+1d) |  | 63d → 62d |
| 93 | Разработка ЖЦ процессов модуля (WF) | 2013-08-15 → 2013-08-16 (+1d) | 2013-09-11 → 2013-09-12 (+1d) |  | 169d → 168d |
| 94 | Разработка логики бизнес- действий модуля "Делопроизводство" | 2013-07-18 → 2013-07-19 (+1d) | 2013-09-11 → 2013-09-12 (+1d) |  | 169d → 168d |
| 95 | Разработка процессов автоматизации для модуля "Делопроизводство" | 2013-07-18 → 2013-07-19 (+1d) | 2013-08-14 → 2013-08-15 (+1d) |  | 189d → 188d |
| 96 | Разработка модели прав доступа (контекстные роли) | 2013-08-15 → 2013-08-16 (+1d) | 2013-09-11 → 2013-09-12 (+1d) |  | 169d → 168d |
| 105 | Подготовка отчетов | 2013-10-25 → 2013-10-28 (+3d) | 2013-12-19 → 2013-12-20 (+1d) |  | 98d → 97d |
| 107 | **Тестирование** | 2013-10-25 → 2013-10-28 (+3d) | 2014-01-28 → 2014-01-29 (+1d) |  | 70d → 69d |
| 108 | **Функциональное тестирование** | 2013-10-25 → 2013-10-28 (+3d) | 2014-01-07 → 2014-01-08 (+1d) |  | 70d → 69d |
| 109 | Подготовка ПМИ | 2013-10-25 → 2013-10-28 (+3d) | 2013-10-31 → 2013-11-01 (+1d) |  | 70d → 69d |
| 110 | Разработка "сценариев тестирования" | 2013-10-25 → 2013-10-28 (+3d) | 2013-11-14 → 2013-11-15 (+1d) |  | 70d → 69d |
| 111 | Разработка модели нагрузки для тестирования | 2013-11-01 → 2013-11-04 (+3d) | 2013-11-14 → 2013-11-15 (+1d) |  | 70d → 69d |
| 112 | Адаптация автоматизированных сценариев от СМ4 для создания нагрузки | 2013-11-01 → 2013-11-04 (+3d) | 2013-12-05 → 2013-12-06 (+1d) |  | 70d → 69d |
| 113 | **Проведение тестирования** | 2013-11-15 → 2013-11-18 (+3d) | 2014-01-07 → 2014-01-08 (+1d) |  | 70d → 69d |
| 114 | **Подготовка среды тестирования** | 2013-11-15 → 2013-11-18 (+3d) | 2013-12-05 → 2013-12-06 (+1d) |  | 70d → 69d |
| 115 | Разворачивание системы | 2013-11-15 → 2013-11-18 (+3d) | 2013-11-21 → 2013-11-22 (+1d) |  | 70d → 69d |
| 116 | Система готова для подключения инструментов мониторинга | 2013-11-21 → 2013-11-22 (+1d) | 2013-11-21 → 2013-11-22 (+1d) |  | 118d → 117d |
| 117 | Наполнение данными | 2013-11-22 → 2013-11-25 (+3d) | 2013-12-05 → 2013-12-06 (+1d) |  | 70d → 69d |
| 118 | Среда тестирования готова | 2013-12-05 → 2013-12-06 (+1d) | 2013-12-05 → 2013-12-06 (+1d) |  | 70d → 69d |
| 119 | Проведение тестирования | 2013-12-06 → 2013-12-09 (+3d) | 2013-12-19 → 2013-12-20 (+1d) |  | 70d → 69d |
| 120 | **Обработка результатов тестирования и внесение изменений в модуль** | 2013-12-18 → 2013-12-19 (+1d) | 2014-01-07 → 2014-01-08 (+1d) |  | 70d → 69d |
| 121 | Устранение замечаний по результатам функционального тестирования | 2013-12-18 → 2013-12-19 (+1d) | 2014-01-07 → 2014-01-08 (+1d) |  | 70d → 69d |
| 122 | Проверка устранения замечаний | 2013-12-31 → 2014-01-01 (+1d) | 2014-01-07 → 2014-01-08 (+1d) |  | 70d → 69d |
| 123 | **Нагрузочное тестирование** | 2013-12-19 → 2013-12-20 (+1d) | 2014-01-28 → 2014-01-29 (+1d) |  | 70d → 69d |
| 124 | Стенд для нагрузочного тестирования подготовлен | 2013-12-19 → 2013-12-20 (+1d) | 2013-12-19 → 2013-12-20 (+1d) |  | 83d → 82d |
| 125 | Проведения нагрузочного тестирования | 2014-01-08 → 2014-01-09 (+1d) | 2014-01-21 → 2014-01-22 (+1d) |  | 70d → 69d |
| 126 | Обработка результатов нагрузочного тестирования | 2014-01-22 → 2014-01-23 (+1d) | 2014-01-28 → 2014-01-29 (+1d) |  | 70d → 69d |
| 127 | Разработка модуля "Делопроизводство" завершена | 2014-01-28 → 2014-01-29 (+1d) | 2014-01-28 → 2014-01-29 (+1d) |  | 70d → 69d |
| 128 | **Подготовка документации** | 2013-10-25 → 2013-10-28 (+3d) | 2014-02-13 → 2014-02-14 (+1d) |  | 58d → 57d |
| 129 | Разработка документа "Концепция системы " | 2013-10-25 → 2013-10-28 (+3d) | 2013-12-19 → 2013-12-20 (+1d) |  | 58d → 57d |
| 130 | Разработка "Software Architecture Document" | 2013-12-20 → 2013-12-23 (+3d) | 2014-02-13 → 2014-02-14 (+1d) |  | 58d → 57d |

| ID | Task | Start | Finish | Total float |
| --- | --- | --- | --- | --- |
| 131 | Документы подготовлены | 2014-02-13 → 2014-02-14 (+1d) | 2014-02-13 → 2014-02-14 (+1d) | 58d → 57d |
| 132 | **Проверка работоспособности решения - Организация демонстрации** | 2013-11-15 → 2013-11-18 (+3d) | 2013-12-19 → 2013-12-20 (+1d) | 98d → 97d |
| 133 | Подготовка стенда | 2013-11-15 → 2013-11-18 (+3d) | 2013-11-19 → 2013-11-20 (+1d) | 120d → 119d |
| 134 | Подготовка прототипа | 2013-11-15 → 2013-11-18 (+3d) | 2013-12-12 → 2013-12-13 (+1d) | 98d → 97d |
| 135 | Проведение демонстраций | 2013-12-13 → 2013-12-16 (+3d) | 2013-12-17 → 2013-12-18 (+1d) | 98d → 97d |
| 136 | Анализ результатов - выводы | 2013-12-18 → 2013-12-19 (+1d) | 2013-12-19 → 2013-12-20 (+1d) | 98d → 97d |

## Version 9 (saved 2013-06-07)

Note of the change: изменения за 10

Last finish stays 2014-05-06.

Removed: 79 Описание структуры модуля " Делопроизводство"

Changed:

| ID | Task | Start | Finish | Duration | Total float | Predecessors | Other |
| --- | --- | --- | --- | --- | --- | --- | --- |
| 77 | Версионность/аудит |  |  |  |  |  | resources Андрей Пирожков; Сергей Кашанский → Сергей Кашанский |
| 78 | Блокировки бизнес-объектов |  |  |  |  |  | resources Андрей Пирожков; Сергей Кашанский → Сергей Кашанский |
| 84 | Интеграция с ActiveDirectory |  |  |  |  |  | resources Андрей Пирожков → Андрей Пирожков [50%] |
| 91 | Разработка схем документов модуля Делопроизводство |  |  |  |  |  | resources Java разработчик2; Java разработчик → Андрей Пирожков [50%]; Java разработчик |
| 92 | Разработка ЖЦ процессов модуля (WF) |  |  |  | 168d → 80d |  | resources Java разработчик2; Java разработчик → Java разработчик; Андрей Пирожков [50%] |
| 93 | Разработка логики бизнес- действий модуля "Делопроизводство" |  |  |  | 168d → 80d |  | resources Java разработчик1; Java разработчик → Java разработчик1; Андрей Пирожков [50%] |
| 94 | Разработка процессов автоматизации для модуля "Делопроизводство" |  |  |  |  |  | resources Java разработчик → Java разработчик2 |
| 95 | Разработка модели прав доступа (контекстные роли) |  |  |  |  |  | resources Java разработчик → Java разработчик2 |
| 104 | Подготовка отчетов | 2013-10-28 → 2013-09-13 (-45d) | 2013-12-20 → 2013-11-07 (-43d) |  | 97d → 80d | 19, 91 → 91, 93, 92 |  |
| 105 | Сопряжение с мобильным клиентом СМ4 | 2013-11-15 → 2013-09-20 (-56d) | 2013-12-19 → 2013-10-24 (-56d) |  | 98d → 138d | 100 → 96 |  |
| 113 | **Подготовка среды тестирования** |  | 2013-12-06 → 2013-11-29 (-7d) | 15d? → 10d? | 69d → 74d |  |  |
| 114 | Разворачивание системы |  |  |  | 69d → 117d | none → 116SF |  |
| 116 | Наполнение данными | 2013-11-25 → 2013-11-18 (-7d) | 2013-12-06 → 2013-11-29 (-7d) |  | 69d → 74d | 114 → 104 |  |

## Version 10 (saved 2013-06-13)

Note of the change: изменения за 12

Last finish stays 2014-05-06. Complete tasks 0 → 9.

Added:

| ID | Task | Duration | Start | Finish | Predecessors | Resources |
| --- | --- | --- | --- | --- | --- | --- |
| 79 | Описание структуры модуля Делопроизводство | 20d | 2013-06-11 | 2013-07-08 | 20, 15, 14 | Владимир Панов |

Changed:

| ID | Task | Start | Finish | Duration | Complete | Total float | Predecessors | Other |
| --- | --- | --- | --- | --- | --- | --- | --- | --- |
| 1 | **Разработка второй версии CM4/5** | 2013-04-22 A |  |  | 0% → 3% |  |  |  |
| 4 | **Управление требованиями** | 2013-05-27 A | 2014-02-14 → 2014-02-19 (+5d) | 190d → 193d | 0% → 6% | 57d → 54d |  |  |
| 6 | Формирование скоупа проекта _ верхний уровень | 2013-05-27 A | 2013-06-11 → 2013-06-14 (+3d) | 12d → 15d | 0% → 73% | 235d → 54d |  |  |
| 7 | Скоуп на систему сформирован и утвержден | 2013-06-18 → 2013-06-21 (+3d) | 2013-06-18 → 2013-06-21 (+3d) |  |  | 57d → 54d |  |  |
| 8 | Сопровождение требований | 2013-06-19 → 2013-06-24 (+5d) | 2014-02-14 → 2014-02-19 (+5d) |  |  | 57d → 54d |  |  |
| 9 | **Создание модуля "Делопроизводство" (документоориентированная среда)** | 2013-04-22 A |  |  | 0% → 5% | 42d → 57d |  |  |
| 11 | **Апробация идей прототипа** | 2013-04-29 A |  |  | 0% → 78% | 72d → 238d |  |  |
| 13 | Проведение предварительных испытаний системы | 2013-04-29 A | 2013-05-16 A |  | 0% → 100% | 149d → none |  |  |
| 14 | Описание обработки ВХ. Док. На примере технологий прототипа | 2013-05-20 A |  |  | 0% → 56% | 62d → 0d |  |  |
| 15 | **Настройка инфраструктуры** | 2013-05-20 A |  |  | 0% → 58% | 69d → 70d |  |  |
| 16 | Настройка непрерывной интеграции | 2013-05-20 A | 2013-05-23 A |  | 0% → 100% | 102d → none |  |  |
| 18 | Репакеджинг проекта | 2013-05-27 A | 2013-05-29 A |  | 0% → 100% | 64d → none |  |  |
| 19 | **Проектирование и формирование ядра системы** | 2013-04-22 A |  |  | 0% → 7% | 42d → 69d |  |  |
| 20 | **Определение структуры модуля Делопроизводство** | 2013-04-22 A | 2013-05-31 A |  | 0% → 100% | 42d → none |  |  |
| 21 | Разбивка на слои | 2013-04-22 A | 2013-04-26 A |  | 0% → 100% | 42d → none |  |  |
| 22 | Конфигурации, загрузка и инициализация системы в базовой конфигурации | 2013-04-29 A | 2013-05-08 A |  | 0% → 100% | 42d → none |  |  |
| 23 | Базовая конфигурация объектов системы | 2013-05-13 A | 2013-05-17 A |  | 0% → 100% | 42d → none |  |  |
| 24 | Юнит-тестирование - базис | 2013-05-17 A | 2013-05-24 A |  | 0% → 100% | 149d → none |  |  |
| 25 | Базовая имплементация слоя DAO | 2013-05-20 A | 2013-05-24 A |  | 0% → 100% | 42d → none |  |  |
| 26 | Обеспечение программных компонет верификации первой очереди | 2013-05-27 A | 2013-05-31 A |  | 0% → 100% | 42d → none |  |  |
| 27 | **DAO** | 2013-06-03 A |  |  | 0% → 27% | 42d → 152d |  |  |
| 28 | DAO для бизнес-объектов | 2013-06-03 A |  |  | 0% → 86% |  |  |  |
| 38 | Права - оптимизация хранения (проектирование) |  |  |  |  |  |  | was named Права - оптимизация хранения |
| 41 | **Workflow - интеграция с Activiti** | 2013-06-07 A |  |  | 0% → 10% |  |  |  |
| 42 | Проектирование | 2013-06-07 A |  |  | 0% → 30% |  |  |  |
| 91 | **Разработка серверной логики модуля Делопроизводство** |  |  |  |  |  | 15, 41 → 15, 41, 79 |  |

## Version 11 (saved 2013-06-19)

Note of the change: уточнения работ

Last finish stays 2014-05-06. Complete tasks 9 → 10.

Changed:

| ID | Task | Start | Finish | Duration | Complete | Total float | Predecessors | Other |
| --- | --- | --- | --- | --- | --- | --- | --- | --- |
| 1 | **Разработка второй версии CM4/5** |  |  |  | 3% → 4% |  |  |  |
| 9 | **Создание модуля "Делопроизводство" (документоориентированная среда)** |  |  |  | 5% → 6% |  |  |  |
| 11 | **Апробация идей прототипа** |  |  |  | 78% → 99% |  |  |  |
| 14 | Описание обработки ВХ. Док. На примере технологий прототипа |  | 2013-06-06 A |  | 56% → 100% | 0d → none |  |  |
| 19 | **Проектирование и формирование ядра системы** |  |  |  | 7% → 9% |  |  |  |
| 27 | **DAO** |  |  |  | 27% → 60% |  |  |  |
| 29 | DAO для коллекций | 2013-06-12 A |  |  | 0% → 80% |  |  |  |
| 32 | CRUD-сервис для бизнес-объектов | 2013-06-25 → 2013-06-11 (-14d) | 2013-07-08 → 2013-06-24 (-14d) |  |  | 83d → 93d | 29 → 29FF |  |
| 33 | Поддержка отсортированных дочерних бизнес-объектов | 2013-07-09 → 2013-06-25 (-14d) | 2013-07-15 → 2013-07-01 (-14d) |  |  | 143d → 153d |  |  |
| 37 | **Права доступа** | 2013-06-12 A |  |  | 0% → 11% | 121d → 122d |  |  |
| 38 | Права - оптимизация хранения (проектирование) | 2013-06-12 A |  |  | 0% → 30% |  |  | resources Денис Митавский → Андрей Пирожков [50%] |
| 39 | Описание существующими декларативными средствами конфигурации |  |  |  |  |  | 38, 29 → 38, 29FF |  |
| 42 | Проектирование |  |  |  |  |  |  | resources Андрей Пирожков [50%]; Сергей Кашанский → Андрей Пирожков [50%] |
| 60 | **Поиск** | 2013-07-09 → 2013-06-25 (-14d) | 2013-08-13 → 2013-07-30 (-14d) |  |  | 83d → 93d |  |  |
| 61 | Поиск | 2013-07-09 → 2013-06-25 (-14d) | 2013-07-29 → 2013-07-15 (-14d) |  |  | 89d → 99d |  |  |
| 62 | Полнотекстовый поиск | 2013-07-09 → 2013-06-25 (-14d) | 2013-08-05 → 2013-07-22 (-14d) |  |  | 83d → 93d |  |  |
| 63 | Расширенный поиск | 2013-08-06 → 2013-07-23 (-14d) | 2013-08-13 → 2013-07-30 (-14d) |  |  | 84d → 94d |  |  |
| 67 | **Компоненты GUI** | 2013-08-09 → 2013-07-31 (-9d) |  | 42d → 49d |  | 80d → 81d |  |  |
| 73 | GUI - конфигурируемые формы проектирование | 2013-08-14 → 2013-07-31 (-14d) | 2013-08-16 → 2013-08-02 (-14d) |  |  | 84d → 94d |  |  |
| 74 | GUI - конфигурируемые формы реализация | 2013-08-19 → 2013-08-05 (-14d) | 2013-08-28 → 2013-08-14 (-14d) |  |  | 84d → 94d |  |  |
| 75 | GUI - виджеты разработка (базовый набор) | 2013-08-29 → 2013-08-15 (-14d) | 2013-10-02 → 2013-09-18 (-14d) |  |  | 84d → 94d |  |  |

## Version 12 (saved 2013-07-09)

Note of the change: редакция от 09.07

Last finish stays 2014-05-06. Complete tasks 10 → 17.

Added:

| ID | Task | Duration | Start | Finish | Predecessors | Constraint | Resources |
| --- | --- | --- | --- | --- | --- | --- | --- |
| 32 | DAO - кэш уровня транзакции | 5d? | 2013-07-15 | 2013-07-19 | 92 |  | Валерий Мацукевич |
| 35 | Настройка Datasources/Jaas сервера приложений средствами Maven | 2d | 2013-07-05 | 2013-07-08 | 29 |  | Андрей Цветков |
| 36 | Рефакторинг | 4d | 2013-07-03 A | 2013-07-08 A | 25 | start no earlier than 2013-07-03 | Валерий Мацукевич |
| 63 | Сервис работы с вложениями | 7d | 2013-05-27 | 2013-06-04 | 25 |  | Java разработчик1 |
| 65 | Идея поиска овормлена | 0d | 2013-07-29 | 2013-07-29 |  | finish no earlier than 2013-07-29 |  |
| 92 | Расширяемость конфигурации | 4d | 2013-07-09 | 2013-07-12 | 36 |  | Валерий Мацукевич |

Removed: 87 Точки расширения

Changed:

| ID | Task | Start | Finish | Duration | Complete | Total float | Predecessors | Other |
| --- | --- | --- | --- | --- | --- | --- | --- | --- |
| 1 | **Разработка второй версии CM4/5** |  |  |  | 4% → 6% |  |  |  |
| 9 | **Создание модуля "Делопроизводство" (документоориентированная среда)** |  | 2014-02-14 → 2014-02-19 (+5d) | 210d? → 213d? | 6% → 10% | 57d → 54d |  |  |
| 19 | **Проектирование и формирование ядра системы** |  | 2013-10-25 → 2013-10-28 (+3d) | 130d → 131d? | 9% → 17% | 69d → 68d |  |  |
| 27 | **DAO** |  | 2013-07-02 → 2013-07-19 (+17d) | 22d → 35d? | 60% → 67% | 152d → 139d |  |  |
| 28 | DAO для бизнес-объектов |  | 2013-06-11 A |  | 86% → 100% | 49.2d → none |  | resources Андрей Цветков; Валерий Мацукевич → Валерий Мацукевич |
| 29 | DAO для коллекций |  | 2013-06-24 → 2013-07-04 (+10d) | 9d → 13d | 80% → 69% | 42d → 114d |  | resources Андрей Цветков; Валерий Мацукевич → Андрей Цветков |
| 30 | Функционал системы готов для проведения проектирования интеграции с GUI СМ4 | 2013-06-24 A | 2013-06-24 A |  | 0% → 100% | 42d → none |  |  |
| 31 | DAO - утилитарные поля | 2013-06-25 A | 2013-07-02 → 2013-07-08 (+6d) |  | 0% → 80% | 152d → 148.8d |  |  |
| 33 | CRUD-сервис для бизнес-объектов | 2013-06-11 A | 2013-06-24 A |  | 0% → 100% | 93d → none |  |  |
| 34 | Поддержка отсортированных дочерних бизнес-объектов | 2013-06-25 → 2013-07-22 (+27d) | 2013-07-01 → 2013-07-26 (+25d) |  |  | 153d → 134d | 33 → 32 | resources Валерий Мацукевич; Андрей Цветков → Валерий Мацукевич |
| 37 | **Встроенный GUI** | 2013-05-30 → 2013-06-10 A (+11d) | 2013-06-18 → 2013-07-26 (+38d) | 14d → 35d | 0% → 24% | 64d → 134d |  |  |
| 38 | Базис GUI | 2013-06-10 A |  |  | 0% → 90% |  |  |  |
| 39 | Стилистическая адаптация компонентов GUI | 2013-05-30 → 2013-07-09 (+40d) | 2013-06-18 → 2013-07-26 (+38d) |  |  | 64d → 36d | 18 → none | constraint none → start no earlier than 2013-07-09; resources Сергей Кашанский → Тимофей Билый |
| 40 | **Права доступа** |  | 2013-07-09 → 2013-07-18 (+9d) | 20d → 27d | 11% → 32% | 122d → 115d |  |  |
| 41 | Права - оптимизация хранения (проектирование) |  |  |  | 30% → 90% |  |  |  |
| 42 | Описание существующими декларативными средствами конфигурации | 2013-06-26 → 2013-07-01 (+5d) | 2013-07-05 → 2013-07-10 (+5d) |  |  | 124d → 121d |  | resources Валерий Мацукевич → Андрей Цветков |
| 43 | Автофильтрация | 2013-06-26 → 2013-07-05 (+9d) | 2013-07-09 → 2013-07-18 (+9d) |  |  | 121d → 114d |  | resources Денис Митавский [50%]; Роман Митинков → Андрей Цветков |
| 44 | **Workflow - интеграция с Activiti** |  | 2013-07-18 → 2013-08-23 (+36d) | 30d → 56d |  | 62d → 36d |  |  |
| 46 | Разработка | 2013-06-21 → 2013-07-29 (+38d) | 2013-07-18 → 2013-08-23 (+36d) |  |  | 62d → 36d |  |  |
| 48 | **Коллекции** | 2013-07-19 A |  |  | 0% → 66% | 69d → 79d |  |  |
| 49 | Коллекции - конфигурация | 2013-07-19 A | 2013-07-23 A |  | 0% → 100% | 69d → none |  | resources Андрей Пирожков → Денис Митавский |
| 50 | DAO - язык запросов коллекций | 2013-07-24 A | 2013-08-08 A |  | 0% → 100% | 79d → none |  | resources Сергей Кашанский; Андрей Пирожков [50%] → Сергей Кашанский; Денис Митавский [50%] |
| 51 | Сервис получения и получения счетчиков | 2013-08-09 A | 2013-08-16 A |  | 0% → 100% | 94d → none |  |  |
| 56 | **Формы встроенного GUI** | 2013-07-10 → 2013-07-19 (+9d) | 2013-08-14 → 2013-08-23 (+9d) |  |  | 121d → 114d |  |  |
| 57 | Конфигурация | 2013-07-10 → 2013-07-19 (+9d) | 2013-07-17 → 2013-07-26 (+9d) |  |  | 121d → 114d |  |  |
| 58 | API, сервис получения | 2013-07-18 → 2013-07-29 (+11d) | 2013-07-25 → 2013-08-05 (+11d) |  |  | 121d → 114d |  |  |
| 59 | DAO форм | 2013-07-26 → 2013-08-06 (+11d) | 2013-08-14 → 2013-08-23 (+9d) |  |  | 121d → 114d |  |  |
| 60 | **Слой сопряжения GUI CM4** | 2013-06-25 → 2013-05-27 (-29d) |  | 53d → 74d |  | 42d → 63d |  |  |
| 64 | **Поиск** | 2013-06-25 → 2013-07-29 (+34d) | 2013-07-30 → 2013-09-03 (+35d) |  |  | 93d → 68d |  |  |
| 66 | Поиск | 2013-06-25 → 2013-07-30 (+35d) | 2013-07-15 → 2013-08-19 (+35d) |  |  | 99d → 74d | none → 65 |  |
| 67 | Полнотекстовый поиск | 2013-06-25 → 2013-07-30 (+35d) | 2013-07-22 → 2013-08-26 (+35d) |  |  | 93d → 68d | none → 65 |  |
| 68 | Расширенный поиск | 2013-07-23 → 2013-08-27 (+35d) | 2013-07-30 → 2013-09-03 (+35d) |  |  | 94d → 69d |  |  |
| 72 | **Компоненты GUI** | 2013-07-31 → 2013-08-27 (+27d) | 2013-10-07 → 2013-10-23 (+16d) | 49d → 42d |  | 81d → 68d |  |  |
| 73 | GUI - архитектура активностей/дочерних активностей | 2013-08-09 → 2013-08-27 (+18d) | 2013-08-22 → 2013-09-09 (+18d) |  |  | 80d → 68d |  |  |
| 74 | GUI - панель навигации | 2013-08-26 → 2013-09-10 (+15d) | 2013-09-06 → 2013-09-23 (+17d) |  |  | 79d → 68d |  |  |
| 75 | GUI - отображение коллекций активность | 2013-08-23 → 2013-09-10 (+18d) | 2013-09-05 → 2013-09-23 (+18d) |  |  | 103d → 91d |  |  |
| 77 | GUI - действия | 2013-08-23 → 2013-09-10 (+18d) | 2013-09-05 → 2013-09-23 (+18d) |  |  | 103d → 91d |  |  |
| 78 | GUI - конфигурируемые формы проектирование | 2013-07-31 → 2013-09-04 (+35d) | 2013-08-02 → 2013-09-06 (+35d) |  |  | 94d → 69d |  |  |
| 79 | GUI - конфигурируемые формы реализация | 2013-08-05 → 2013-09-09 (+35d) | 2013-08-14 → 2013-09-18 (+35d) |  |  | 94d → 69d |  |  |
| 80 | GUI - виджеты разработка (базовый набор) | 2013-08-15 → 2013-09-19 (+35d) | 2013-09-18 → 2013-10-23 (+35d) |  |  | 94d → 69d |  |  |
| 81 | Тестирование производительности | 2013-09-09 → 2013-09-24 (+15d) | 2013-10-11 → 2013-10-28 (+17d) |  |  | 79d → 68d |  |  |
| 85 | Уточнение состава и сроков работ | 2013-10-08 → 2013-10-24 (+16d) | 2013-10-09 → 2013-10-25 (+16d) |  |  | 81d → 69d |  |  |
| 91 | **Расширение функций сервиса конфигурации** | 2013-09-27 → 2013-04-22 (-158d) | 2013-10-25 → 2013-07-12 (-105d) | 21d → 55d |  | 69d → 144d | 73, 86 → none |  |
| 93 | Изменение и дополнение конфигурации системы | 2013-10-04 → 2013-04-22 (-165d) | 2013-10-25 → 2013-05-20 (-158d) |  |  | 69d → 183d | Точки расширения → none |  |
| 96 | **Разработка серверной логики модуля Делопроизводство** | 2013-07-19 → 2013-08-26 (+38d) | 2013-09-12 → 2013-10-18 (+36d) |  |  | 62d → 36d |  |  |
| 97 | Разработка схем документов модуля Делопроизводство | 2013-07-19 → 2013-08-26 (+38d) | 2013-08-15 → 2013-09-20 (+36d) |  |  | 62d → 36d |  |  |
| 98 | Разработка ЖЦ процессов модуля (WF) | 2013-08-16 → 2013-09-23 (+38d) | 2013-09-12 → 2013-10-18 (+36d) |  |  | 80d → 54d |  |  |
| 99 | Разработка логики бизнес- действий модуля "Делопроизводство" | 2013-07-19 → 2013-08-26 (+38d) | 2013-09-12 → 2013-10-18 (+36d) |  |  | 80d → 54d |  |  |
| 100 | Разработка процессов автоматизации для модуля "Делопроизводство" | 2013-07-19 → 2013-08-26 (+38d) | 2013-08-15 → 2013-09-20 (+36d) |  |  | 188d → 162d |  |  |
| 101 | Разработка модели прав доступа (контекстные роли) | 2013-08-16 → 2013-09-23 (+38d) | 2013-09-12 → 2013-10-18 (+36d) |  |  | 168d → 142d |  |  |
| 102 | **Разработка клиентской логики модуля "Делопроизводство"** |  | 2013-09-19 → 2013-09-27 (+8d) | 10d → 16d |  | 42d → 36d |  |  |
| 104 | Разработка структуры рабочего места | 2013-09-13 → 2013-09-23 (+10d) | 2013-09-19 → 2013-09-27 (+8d) |  |  | 42d → 36d |  |  |
| 106 | **Подготовка работы со списками значений** | 2013-09-20 → 2013-09-30 (+10d) | 2013-11-14 → 2013-11-22 (+8d) |  |  | 123d → 117d |  |  |
| 107 | Разработка функционала учета организационно штатной структуры | 2013-09-20 → 2013-09-30 (+10d) | 2013-11-14 → 2013-11-22 (+8d) |  |  | 123d → 117d |  |  |
| 108 | Разработка функционала с рубрикаторами (сложные справочники) | 2013-09-20 → 2013-09-30 (+10d) | 2013-10-17 → 2013-10-25 (+8d) |  |  | 123d → 117d |  |  |
| 109 | Разработка функционала для работы с словарями данных (простые, линейные справочники) | 2013-10-18 → 2013-10-28 (+10d) | 2013-11-14 → 2013-11-22 (+8d) |  |  | 123d → 117d |  |  |
| 110 | Подготовка отчетов | 2013-09-13 → 2013-10-21 (+38d) | 2013-11-07 → 2013-12-13 (+36d) |  |  | 80d → 54d |  |  |
| 111 | Сопряжение с мобильным клиентом СМ4 | 2013-09-20 → 2013-09-30 (+10d) | 2013-10-24 → 2013-11-01 (+8d) |  |  | 138d → 132d |  |  |
| 112 | **Тестирование** | 2013-10-28 → 2013-10-29 (+1d) | 2014-01-29 → 2014-02-19 (+21d) | 68d? → 82d? |  | 69d → 54d |  |  |
| 113 | **Функциональное тестирование** | 2013-10-28 → 2013-10-29 (+1d) | 2014-01-08 → 2014-01-29 (+21d) | 53d? → 67d? |  | 69d → 68d |  |  |
| 114 | Подготовка ПМИ | 2013-10-28 → 2013-10-29 (+1d) | 2013-11-01 → 2013-11-04 (+3d) |  |  | 69d → 68d |  |  |
| 115 | Разработка "сценариев тестирования" | 2013-10-28 → 2013-10-29 (+1d) | 2013-11-15 → 2013-11-18 (+3d) |  |  | 69d → 73d |  |  |
| 116 | Разработка модели нагрузки для тестирования | 2013-11-04 → 2013-11-05 (+1d) | 2013-11-15 → 2013-11-18 (+3d) |  |  | 69d → 73d |  |  |
| 117 | Адаптация автоматизированных сценариев от СМ4 для создания нагрузки | 2013-11-04 → 2013-11-05 (+1d) | 2013-12-06 → 2013-12-09 (+3d) |  |  | 69d → 68d |  |  |
| 118 | **Проведение тестирования** | 2013-11-18 → 2013-12-09 (+21d) | 2014-01-08 → 2014-01-29 (+21d) |  |  | 74d → 59d |  |  |
| 119 | **Подготовка среды тестирования** | 2013-11-18 → 2013-12-09 (+21d) | 2013-11-29 → 2013-12-27 (+28d) | 10d? → 15d? |  | 74d → 59d |  |  |
| 120 | Разворачивание системы | 2013-11-18 → 2013-12-09 (+21d) | 2013-11-22 → 2013-12-16 (+24d) |  |  | 117d → 102d |  |  |
| 121 | Система готова для подключения инструментов мониторинга | 2013-11-22 → 2013-12-16 (+24d) | 2013-11-22 → 2013-12-16 (+24d) |  |  | 117d → 102d |  |  |
| 122 | Наполнение данными | 2013-11-18 → 2013-12-16 (+28d) | 2013-11-29 → 2013-12-27 (+28d) |  |  | 74d → 54d |  |  |
| 123 | Среда тестирования готова | 2013-12-06 → 2013-12-27 (+21d) | 2013-12-06 → 2013-12-27 (+21d) |  |  | 69d → 54d |  |  |

| ID | Task | Start | Finish | Total float |
| --- | --- | --- | --- | --- |
| 124 | Проведение тестирования | 2013-12-09 → 2013-12-30 (+21d) | 2013-12-20 → 2014-01-10 (+21d) | 69d → 54d |
| 125 | **Обработка результатов тестирования и внесение изменений в модуль** | 2013-12-19 → 2014-01-09 (+21d) | 2014-01-08 → 2014-01-29 (+21d) | 69d → 54d |
| 126 | Устранение замечаний по результатам функционального тестирования | 2013-12-19 → 2014-01-09 (+21d) | 2014-01-08 → 2014-01-29 (+21d) | 69d → 54d |
| 127 | Проверка устранения замечаний | 2014-01-01 → 2014-01-22 (+21d) | 2014-01-08 → 2014-01-29 (+21d) | 69d → 54d |
| 128 | **Нагрузочное тестирование** | 2013-12-20 → 2014-01-10 (+21d) | 2014-01-29 → 2014-02-19 (+21d) | 69d → 54d |
| 129 | Стенд для нагрузочного тестирования подготовлен | 2013-12-20 → 2014-01-10 (+21d) | 2013-12-20 → 2014-01-10 (+21d) | 82d → 67d |
| 130 | Проведения нагрузочного тестирования | 2014-01-09 → 2014-01-30 (+21d) | 2014-01-22 → 2014-02-12 (+21d) | 69d → 54d |
| 131 | Обработка результатов нагрузочного тестирования | 2014-01-23 → 2014-02-13 (+21d) | 2014-01-29 → 2014-02-19 (+21d) | 69d → 54d |
| 132 | Разработка модуля "Делопроизводство" завершена | 2014-01-29 → 2014-02-19 (+21d) | 2014-01-29 → 2014-02-19 (+21d) | 69d → 54d |
| 133 | **Подготовка документации** | 2013-10-28 → 2013-10-29 (+1d) | 2014-02-14 → 2014-02-17 (+3d) | 57d → 56d |
| 134 | Разработка документа "Концепция системы " | 2013-10-28 → 2013-10-29 (+1d) | 2013-12-20 → 2013-12-23 (+3d) | 57d → 56d |
| 135 | Разработка "Software Architecture Document" | 2013-12-23 → 2013-12-24 (+1d) | 2014-02-14 → 2014-02-17 (+3d) | 57d → 56d |
| 136 | Документы подготовлены | 2014-02-14 → 2014-02-17 (+3d) | 2014-02-14 → 2014-02-17 (+3d) | 57d → 56d |
| 137 | **Проверка работоспособности решения - Организация демонстрации** | 2013-11-18 → 2013-12-09 (+21d) | 2013-12-20 → 2014-01-10 (+21d) | 97d → 82d |
| 138 | Подготовка стенда | 2013-11-18 → 2013-12-09 (+21d) | 2013-11-20 → 2013-12-11 (+21d) | 119d → 104d |
| 139 | Подготовка прототипа | 2013-11-18 → 2013-12-09 (+21d) | 2013-12-13 → 2014-01-03 (+21d) | 97d → 82d |
| 140 | Проведение демонстраций | 2013-12-16 → 2014-01-06 (+21d) | 2013-12-18 → 2014-01-08 (+21d) | 97d → 82d |
| 141 | Анализ результатов - выводы | 2013-12-19 → 2014-01-09 (+21d) | 2013-12-20 → 2014-01-10 (+21d) | 97d → 82d |
| 142 | **Создание модулей первой очереди** | 2013-10-03 → 2013-10-11 (+8d) | 2014-03-07 → 2014-03-17 (+10d) | 42d → 36d |
| 143 | Определен состав модулей первой очереди и первичные требования подготовлены | 2013-10-03 → 2013-10-11 (+8d) | 2013-10-03 → 2013-10-11 (+8d) | 42d → 36d |
| 144 | **Проектирование** | 2013-10-04 → 2013-10-14 (+10d) | 2013-10-30 → 2013-11-07 (+8d) | 42d → 36d |
| 145 | Определение структуры модулей первой очереди | 2013-10-04 → 2013-10-14 (+10d) | 2013-10-22 → 2013-10-30 (+8d) | 42d → 36d |
| 146 | Уточнение состава и сроков работ | 2013-10-23 → 2013-10-31 (+8d) | 2013-10-30 → 2013-11-07 (+8d) | 56.67d → 50.67d |
| 147 | Принято решение о разработке модулей второй очереди | 2013-10-22 → 2013-10-30 (+8d) | 2013-10-22 → 2013-10-30 (+8d) | 42d → 36d |
| 148 | **Разработка** | 2013-10-23 → 2013-10-31 (+8d) | 2013-12-17 → 2013-12-25 (+8d) | 42d → 36d |
| 149 | Контроль и корректировка технических решений "Архитектурный комитет" | 2013-10-23 → 2013-10-31 (+8d) | 2013-12-12 → 2013-12-20 (+8d) | 103d → 97d |
| 150 | **Разработка серверной логики модулей первой очереди** | 2013-10-23 → 2013-10-31 (+8d) | 2013-12-17 → 2013-12-25 (+8d) | 42d → 36d |
| 151 | Разработка схем документов для модулей первой очереди | 2013-10-23 → 2013-10-31 (+8d) | 2013-11-19 → 2013-11-27 (+8d) | 42d → 36d |
| 152 | Разработка ЖЦ процессов (WF) | 2013-11-20 → 2013-11-28 (+8d) | 2013-12-17 → 2013-12-25 (+8d) | 42d → 36d |
| 153 | Разработка логики бизнес- действий для модулей первой очереди | 2013-10-23 → 2013-10-31 (+8d) | 2013-12-17 → 2013-12-25 (+8d) | 42d → 36d |
| 154 | Разработка процессов автоматизации для модулей первой очереди | 2013-10-23 → 2013-10-31 (+8d) | 2013-11-19 → 2013-11-27 (+8d) | 62d → 56d |
| 155 | Разработка модели прав доступа (контекстные роли) | 2013-11-20 → 2013-11-28 (+8d) | 2013-12-17 → 2013-12-25 (+8d) | 42d → 36d |
| 156 | **Разработка клиентской логики модулей первой очереди** | 2013-10-23 → 2013-10-31 (+8d) | 2013-12-03 → 2013-12-11 (+8d) | 52d → 46d |
| 157 | Разработка форм для работы с документами в GUI (настройки форм) | 2013-10-23 → 2013-10-31 (+8d) | 2013-11-05 → 2013-11-13 (+8d) | 72d → 66d |
| 158 | Разработка структуры рабочего места | 2013-11-20 → 2013-11-28 (+8d) | 2013-12-03 → 2013-12-11 (+8d) | 52d → 46d |
| 159 | Разработка специфичных для модуля форм элементов GUI | 2013-10-23 → 2013-10-31 (+8d) | 2013-11-19 → 2013-11-27 (+8d) | 62d → 56d |
| 160 | **Разработка вспомогательного инструментария** | 2013-10-30 → 2013-11-07 (+8d) | 2013-11-27 → 2013-12-05 (+8d) | 56.67d → 50.67d |
| 161 | Построитель форм | 2013-10-30 → 2013-11-07 (+8d) | 2013-11-13 → 2013-11-21 (+8d) | 66.67d → 60.67d |
| 162 | Разработка инсталлятора | 2013-10-30 → 2013-11-07 (+8d) | 2013-11-27 → 2013-12-05 (+8d) | 56.67d → 50.67d |
| 163 | Разработка конфигуратора | 2013-10-30 → 2013-11-07 (+8d) | 2013-11-13 → 2013-11-21 (+8d) | 66.67d → 60.67d |
| 164 | Подготовка отчетов | 2013-10-23 → 2013-10-31 (+8d) | 2013-11-19 → 2013-11-27 (+8d) | 120d → 114d |
| 165 | Сборка модулей первой очереди завершена | 2013-12-17 → 2013-12-25 (+8d) | 2013-12-17 → 2013-12-25 (+8d) | 42d → 36d |
| 166 | **Тестирование** | 2013-12-18 → 2013-12-26 (+8d) | 2014-03-07 → 2014-03-17 (+10d) | 42d → 36d |
| 167 | **Функциональное тестирование** | 2013-12-18 → 2013-12-26 (+8d) | 2014-02-07 → 2014-02-17 (+10d) | 42d → 36d |
| 168 | Подготовка ПМИ | 2013-12-18 → 2013-12-26 (+8d) | 2013-12-24 → 2014-01-01 (+8d) | 42d → 36d |
| 169 | Разработка "сценариев тестирования" | 2013-12-18 → 2013-12-26 (+8d) | 2014-01-07 → 2014-01-15 (+8d) | 47d → 41d |
| 170 | Разработка модели нагрузки для тестирования | 2013-12-25 → 2014-01-02 (+8d) | 2014-01-07 → 2014-01-15 (+8d) | 85d → 79d |
| 171 | **Проведение тестирования** | 2013-12-18 → 2013-12-26 (+8d) | 2014-02-07 → 2014-02-17 (+10d) | 47d → 41d |
| 172 | **Подготовка среды тестирования** | 2013-12-18 → 2013-12-26 (+8d) | 2014-01-07 → 2014-01-15 (+8d) | 47d → 41d |
| 173 | Разворачивание системы | 2013-12-18 → 2013-12-26 (+8d) | 2013-12-24 → 2014-01-01 (+8d) | 47d → 41d |
| 174 | Наполнение данными | 2013-12-25 → 2014-01-02 (+8d) | 2014-01-07 → 2014-01-15 (+8d) | 47d → 41d |
| 175 | Среда тестирования готова | 2014-01-07 → 2014-01-15 (+8d) | 2014-01-07 → 2014-01-15 (+8d) | 47d → 41d |
| 176 | Проведение тестирования | 2014-01-08 → 2014-01-16 (+8d) | 2014-01-21 → 2014-01-29 (+8d) | 47d → 41d |
| 177 | **Обработка результатов тестирования и внесение изменений в модуль** | 2014-01-20 → 2014-01-28 (+8d) | 2014-02-07 → 2014-02-17 (+10d) | 47d → 41d |
| 178 | Устранение замечаний по результатам функционального тестирования | 2014-01-20 → 2014-01-28 (+8d) | 2014-02-07 → 2014-02-17 (+10d) | 47d → 41d |
| 179 | Проверка устранения замечаний | 2014-01-31 → 2014-02-10 (+10d) | 2014-02-07 → 2014-02-17 (+10d) | 47d → 41d |
| 180 | **Нагрузочное тестирование** | 2013-12-25 → 2014-01-02 (+8d) | 2014-03-07 → 2014-03-17 (+10d) | 42d → 36d |
| 181 | Подготовка автоматизированных сценариев для создания нагрузки | 2013-12-25 → 2014-01-02 (+8d) | 2014-02-14 → 2014-02-24 (+10d) | 42d → 36d |
| 182 | Стенд для нагрузочного тестирования подготовлен | 2014-01-21 → 2014-01-29 (+8d) | 2014-01-21 → 2014-01-29 (+8d) | 60d → 54d |
| 183 | Проведения нагрузочного тестирования | 2014-02-17 → 2014-02-25 (+8d) | 2014-02-28 → 2014-03-10 (+10d) | 42d → 36d |
| 184 | Обработка результатов нагрузочного тестирования | 2014-03-03 → 2014-03-11 (+8d) | 2014-03-07 → 2014-03-17 (+10d) | 42d → 36d |
| 185 | Разработка модулей первой очереди завершена | 2014-03-07 → 2014-03-17 (+10d) | 2014-03-07 → 2014-03-17 (+10d) | 42d → 36d |
| 186 | **Подготовка документации** | 2013-12-18 → 2013-12-26 (+8d) | 2014-02-07 → 2014-02-17 (+10d) | 62d → 56d |
| 187 | Разработка "Software Architecture Document" для модулей первой очереди | 2013-12-18 → 2013-12-26 (+8d) | 2014-01-14 → 2014-01-22 (+8d) | 80d → 74d |
| 188 | Документы подготовлены | 2014-02-07 → 2014-02-17 (+10d) | 2014-02-07 → 2014-02-17 (+10d) | 62d → 56d |

## Version 13 (saved 2013-07-10)

Note of the change: ОБновление от 10.07

Last finish stays 2014-05-06. Complete tasks 17 → 18.

Added:

| ID | Task | Duration | Start | Finish | Predecessors | Resources |
| --- | --- | --- | --- | --- | --- | --- |
| 94 | **Сервис для работы с системным журналом** | 15d | 2013-08-06 | 2013-08-26 | 93 |  |
| 95 | Ведение журнала действий пользователей и действий с объектами системы | 10d | 2013-08-06 | 2013-08-19 |  | Java разработчик2 |
| 96 | Настройка уровня логирования | 5d | 2013-08-20 | 2013-08-26 | 95 | Java разработчик2 |

Changed:

| ID | Task | Start | Finish | Duration | Complete | Total float | Predecessors |
| --- | --- | --- | --- | --- | --- | --- | --- |
| 1 | **Разработка второй версии CM4/5** |  |  |  | 6% → 7% |  |  |
| 5 | Выделен аналитик на проект | 2013-05-27 A | 2013-05-27 A |  | 0% → 100% | 11d → none |  |
| 9 | **Создание модуля "Делопроизводство" (документоориентированная среда)** |  |  |  | 10% → 12% |  |  |
| 91 | **Расширение функций сервиса конфигурации** | 2013-04-22 → 2013-07-09 (+78d) | 2013-07-12 → 2013-08-05 (+24d) | 55d → 20d |  | 144d → 113d |  |
| 93 | Изменение и дополнение конфигурации системы | 2013-04-22 → 2013-07-15 (+84d) | 2013-05-20 → 2013-08-05 (+77d) |  |  | 183d → 113d | none → 92 |
| 97 | **Разработка** | 2013-06-11 A |  |  | 0% → 5% | 90d → 97d |  |
| 98 | Контроль и корректировка технических решений "Архитектурный комитет" | 2013-06-11 A |  |  | 0% → 14% |  |  |

## Version 14 (saved 2013-07-11)

Note of the change: Актуализация плана работ

Last finish 2014-05-06 → 2014-05-07 (+1d). Complete tasks 18 → 22.

Added:

| ID | Task | Duration | Start | Finish | Predecessors | Constraint | Resources |
| --- | --- | --- | --- | --- | --- | --- | --- |
| 19 | Автоматическое заполнение параметров JDBC через Maven | 3d | 2013-07-05 | 2013-07-09 | 30 |  | Андрей Цветков |
| 54 | **Бизнес-объекты (иерархии доменных объектов)** | 7d | 2013-04-22 | 2013-04-30 |  |  |  |
| 55 | Проектирование | 4d | 2013-04-22 | 2013-04-25 |  |  |  |
| 56 | Реализация | 7d | 2013-04-22 | 2013-04-30 |  |  |  |
| 59 | Проектиирование выполнено и ресурсы достуны | 0d | 2013-07-31 | 2013-07-31 |  | start no earlier than 2013-07-31 |  |
| 62 | **Сервис работы с вложениями** | 5d | 2013-04-22 | 2013-04-26 |  |  |  |
| 63 | API | 2d | 2013-04-22 | 2013-04-23 |  |  | Андрей Цветков |
| 64 | Реализация | 3d | 2013-04-24 | 2013-04-26 | 63 |  | Влад Симоненко |
| 75 | Интеграция с JAAS/Аутентификация | 4d | 2013-07-08 A | 2013-07-11 A |  | start no earlier than 2013-07-08 | Денис Митавский [50%] |
| 82 | API | 5d | 2013-08-30 | 2013-09-05 | 81 |  | Денис Митавский [50%] |
| 83 | Реализация | 10d | 2013-09-06 | 2013-09-19 | 82 |  | Андрей Карандей |
| 86 | GUI - поиск. Проектирование | 3d | 2013-09-06 | 2013-09-10 | 82 |  | Денис Митавский [50%] |
| 87 | GUI - поиск. Реализация | 4d | 2013-09-20 | 2013-09-25 | 83 |  | Андрей Карандей |
| 89 | Дата/время | 1d? | 2013-09-06 | 2013-09-06 | 82 |  | Тимофей Билый |
| 90 | Остальные | 25d? | 2013-09-06 | 2013-10-10 | 82 |  |  |
| 91 | **GUI - брендинг, стилизация, темы** | 5d | 2013-09-11 | 2013-09-17 |  |  |  |
| 92 | Концепция | 5d | 2013-09-11 | 2013-09-17 | 86 |  | Денис Митавский [50%] |

Removed: 37 Встроенный GUI; 38 Базис GUI; 58 API, сервис получения; 59 DAO форм; 79 GUI - конфигурируемые формы реализация

Changed:

| ID | Task | Start | Finish | Duration | Complete | Total float | Predecessors | Other |
| --- | --- | --- | --- | --- | --- | --- | --- | --- |
| 1 | **Разработка второй версии CM4/5** |  | 2014-05-06 → 2014-05-07 (+1d) | 267d? → 268d? | 7% → 8% |  |  |  |
| 9 | **Создание модуля "Делопроизводство" (документоориентированная среда)** |  | 2014-02-19 → 2014-02-25 (+6d) | 213d? → 217d? |  | 54d → 51d |  |  |
| 15 | **Настройка инфраструктуры** |  | 2013-06-10 → 2013-07-09 (+29d) | 16d → 37d | 58% → 47% | 70d → -21d |  |  |
| 20 | **Проектирование и формирование ядра системы** |  | 2013-10-28 → 2013-11-05 (+8d) | 131d? → 137d? |  | 68d → 63d |  |  |
| 28 | **DAO** |  | 2013-07-19 → 2013-07-22 (+3d) | 35d? → 36d? | 67% → 84% | 139d → 85d |  |  |
| 30 | DAO для коллекций |  | 2013-07-04 A |  | 69% → 100% | 114d → none |  |  |
| 32 | DAO - утилитарные поля |  | 2013-07-08 A |  | 80% → 100% | 148.8d → none |  |  |
| 33 | DAO - кэш уровня транзакции | 2013-07-15 → 2013-07-16 (+1d) | 2013-07-19 → 2013-07-22 (+3d) |  |  | 134d → 85d |  |  |
| 35 | Поддержка отсортированных дочерних бизнес-объектов | 2013-07-22 → 2013-07-23 (+1d) | 2013-07-26 → 2013-07-29 (+3d) |  |  | 134d → 85d |  |  |
| 36 | Настройка Datasources/Jaas сервера приложений средствами Maven | 2013-07-05 A | 2013-07-08 A |  | 0% → 100% | 148d → none |  | resources Андрей Цветков → Сергей Кашанский |
| 38 | **Права доступа** |  | 2013-07-18 → 2013-08-05 (+18d) | 27d → 39d | 32% → 31% | 115d → 129d |  |  |
| 40 | Описание существующими декларативными средствами конфигурации | 2013-07-01 → 2013-07-10 (+9d) | 2013-07-10 → 2013-07-22 (+12d) | 8d → 9d |  | 121d → 129d | 39, 30FF → 39, 19 |  |
| 41 | Автофильтрация | 2013-07-05 → 2013-07-23 (+18d) | 2013-07-18 → 2013-08-05 (+18d) |  |  | 114d → 129d | 39, 30 → 40 |  |
| 42 | **Workflow - интеграция с Activiti** |  | 2013-08-23 → 2013-08-01 (-22d) | 56d → 40d |  | 36d → 53d |  |  |
| 43 | Проектирование |  | 2013-06-20 → 2013-07-04 (+14d) |  |  | 62d → 53d | none → 39 |  |
| 44 | Разработка | 2013-07-29 → 2013-07-05 (-24d) | 2013-08-23 → 2013-08-01 (-22d) |  |  | 36d → 53d | 43, 74 → 43 |  |
| 45 | Наследование/Аспекты | 2013-06-21 → 2013-07-05 (+14d) | 2013-07-18 → 2013-08-01 (+14d) |  |  | 130d → 131d |  |  |
| 46 | **Коллекции** | 2013-07-19 A → 2013-05-29 A (-51d) | 2013-08-23 → 2013-07-02 (-52d) | 26d → 25d | 66% → 62% | 79d → 120d |  |  |
| 47 | Коллекции - конфигурация | 2013-07-19 A → 2013-05-29 A (-51d) | 2013-07-23 A → 2013-05-31 A (-53d) |  |  |  | 44 → none |  |
| 48 | DAO - язык запросов коллекций | 2013-07-24 A → 2013-05-29 A (-56d) | 2013-08-08 A → 2013-06-17 A (-52d) |  |  |  |  |  |
| 49 | Сервис получения и получения счетчиков | 2013-08-09 A → 2013-05-29 A (-72d) | 2013-08-16 A → 2013-05-31 A (-77d) | 6d → 3d |  |  | 47, 48 → 47 | resources Андрей Пирожков [50%]; Сергей Кашанский → Сергей Кашанский |
| 50 | ПКД | 2013-08-09 → 2013-06-18 (-52d) | 2013-08-23 → 2013-07-02 (-52d) |  |  | 79d → 120d |  |  |
| 51 | **Действия** | 2013-07-24 → 2013-06-03 (-51d) | 2013-08-16 → 2013-06-26 (-51d) |  |  | 70d → 157d |  |  |
| 52 | Концепция | 2013-07-24 → 2013-06-03 (-51d) | 2013-07-29 → 2013-06-06 (-53d) |  |  | 70d → 157d |  |  |
| 53 | Реализация | 2013-07-30 → 2013-06-07 (-53d) | 2013-08-16 → 2013-06-26 (-51d) |  |  | 70d → 157d |  |  |
| 57 | **Слой сопряжения GUI CM4** | 2013-05-27 → 2013-04-29 (-28d) | 2013-09-05 → 2013-11-05 (+61d) | 74d → 132d |  | 63d → 59d |  |  |
| 60 | Реализация коннекторов к платформе | 2013-06-28 → 2013-07-31 (+33d) | 2013-09-05 → 2013-11-05 (+61d) | 50d → 70d |  | 42d → 0d | 58 → 58, 59 | was named REST-протокол для АРМа - реализация; resources Тугушев Илья [33%]; Роман; Глеб → Тугушев Илья [33%]; Роман Болотов; Глеб Наздрачев |
| 61 | Сопряжение - работа с вложениями | 2013-05-27 → 2013-04-29 (-28d) | 2013-06-04 → 2013-05-14 (-21d) |  |  | 172d → 188d | 26 → 64 | was named Сервис работы с вложениями; resources Java разработчик1 → Влад Симоненко |
| 68 | Полнотекстовый поиск |  |  |  |  | 68d → 108d |  | resources Java разработчик → Влад Симоненко |
| 70 | **Работа с отчетами** | 2013-08-26 → 2013-07-03 (-54d) | 2013-09-25 → 2013-08-02 (-54d) |  |  | 81d → 120d |  |  |
| 71 | JDBC-драйвер для системы построения отчётов | 2013-08-26 → 2013-07-03 (-54d) | 2013-09-04 → 2013-07-12 (-54d) |  |  | 81d → 120d |  |  |
| 72 | Интеграция с Jasper Reports | 2013-09-05 → 2013-07-15 (-52d) | 2013-09-25 → 2013-08-02 (-54d) |  |  | 81d → 120d |  |  |
| 73 | **GUI** | 2013-08-27 → 2013-07-08 A (-50d) | 2013-10-23 → 2013-10-10 (-13d) | 42d → 69d? | 0% → 4% | 68d → 79d |  | was named Компоненты GUI |
| 74 | Стилистическая адаптация компонентов GUI | 2013-07-09 → 2013-07-11 (+2d) | 2013-07-26 → 2013-07-30 (+4d) |  |  | 36d → 131d |  | constraint start no earlier than 2013-07-09 → start no earlier than 2013-07-11; resources Тимофей Билый → Тимофей Билый; Алексей Львов |
| 76 | GUI - панель навигации | 2013-09-10 → 2013-07-12 (-60d) | 2013-09-23 → 2013-07-23 (-62d) | 10d → 8d |  | 68d → 73d | 50, 77 → 75 | resources Денис Митавский [50%]; Java разработчик → Денис Митавский [50%] |
| 77 | GUI - архитектура активностей/дочерних активностей | 2013-08-27 → 2013-07-24 (-34d) | 2013-09-09 → 2013-08-02 (-38d) | 10d → 8d |  | 68d → 73d | 48, 68 → 76 |  |
| 78 | GUI - отображение коллекций активность | 2013-09-10 → 2013-08-05 (-36d) | 2013-09-23 → 2013-08-14 (-40d) | 10d → 8d |  | 91d → 73d |  | resources Тугушев Илья [33%]; Роман → Денис Митавский [50%] |
| 79 | GUI - действия | 2013-09-10 → 2013-08-15 (-26d) | 2013-09-23 → 2013-08-26 (-28d) | 10d → 8d |  | 91d → 73d | 77 → 78 | resources Тугушев Илья [33%]; Глеб → Денис Митавский [50%] |
| 80 | **Формы встроенного GUI** | 2013-07-19 → 2013-08-27 (+39d) | 2013-08-23 → 2013-09-19 (+27d) | 26d → 18d |  | 114d → 73d |  |  |
| 81 | Конфигурация | 2013-07-19 → 2013-08-27 (+39d) | 2013-07-26 → 2013-08-29 (+34d) | 6d → 3d |  | 114d → 73d | 41 → 79 |  |
| 84 | GUI - отображение отчётов | 2013-09-26 → 2013-08-05 (-52d) | 2013-10-07 → 2013-08-14 (-54d) |  |  | 81d → 120d | 77, 72 → 72 |  |
| 85 | **GUI - поиск** | 2013-09-04 → 2013-09-06 (+2d) | 2013-09-06 → 2013-09-25 (+19d) | 3d → 14d |  | 69d → 73d | 69 → none | was named GUI - конфигурируемые формы проектирование; resources Денис Митавский [50%] → none |
| 88 | **GUI - виджеты разработка (базовый набор)** | 2013-09-19 → 2013-09-06 (-13d) | 2013-10-23 → 2013-10-10 (-13d) | 25d → 25d? |  | 69d → 79d | GUI - конфигурируемые формы реализация → none | resources Роман; Глеб → none |
| 93 | Тестирование производительности | 2013-09-24 → 2013-09-18 (-6d) | 2013-10-28 → 2013-10-22 (-6d) |  |  | 68d → 73d | 38, 34, 46, 76, GUI - конфигурируемые формы реализация → 92 |  |
| 94 | Версионность/аудит | 2013-08-19 → 2013-07-30 (-20d) | 2013-08-28 → 2013-08-08 (-20d) |  |  | 70d → 85d | 34, 53 → 35 | resources Сергей Кашанский → Валерий Мацукевич |
| 95 | Блокировки бизнес-объектов | 2013-08-29 → 2013-08-09 (-20d) | 2013-09-05 → 2013-08-16 (-20d) |  |  | 70d → 85d |  | resources Сергей Кашанский → Валерий Мацукевич |
| 96 | Описание структуры модуля Делопроизводство | 2013-06-11 → 2013-07-30 (+49d) | 2013-07-08 → 2013-08-26 (+49d) |  |  | 70d → 36d | 21, 15, 14 → 21, 15, 14, 66 |  |
| 97 | Уточнение состава и сроков работ | 2013-10-24 → 2013-10-11 (-13d) | 2013-10-25 → 2013-10-14 (-11d) |  |  | 69d → 79d |  |  |
| 98 | Кросс-СУБД, поддержка Oracle | 2013-09-06 → 2013-08-19 (-18d) | 2013-09-26 → 2013-09-06 (-20d) |  |  | 70d → 85d |  | resources Роман Митинков → Валерий Мацукевич |
| 99 | SQL-trace | 2013-09-27 → 2013-09-09 (-18d) | 2013-10-03 → 2013-09-13 (-20d) |  |  | 70d → 85d |  | resources Java разработчик → Влад Симоненко |
| 100 | Локализация (на уровне конфигурации) | 2013-10-04 → 2013-09-16 (-18d) | 2013-10-24 → 2013-10-04 (-20d) |  |  | 70d → 85d |  | resources Java разработчик → Влад Симоненко |
| 101 | **Интеграция с системой управления учетными записями** | 2013-09-06 → 2013-08-19 (-18d) | 2013-09-25 → 2013-09-05 (-20d) |  |  | 91d → 106d |  |  |
| 102 | Интеграция с ActiveDirectory | 2013-09-06 → 2013-08-19 (-18d) | 2013-09-25 → 2013-09-05 (-20d) |  |  | 91d → 106d |  |  |
| 103 | **Расширение функций сервиса конфигурации** | 2013-07-09 A | 2013-08-05 → 2013-08-06 (+1d) | 20d → 21d | 0% → 14% |  |  |  |
| 104 | Расширяемость конфигурации | 2013-07-09 A | 2013-07-12 → 2013-07-15 (+3d) | 4d → 5d | 0% → 60% | 113d → 85d |  |  |
| 105 | Изменение и дополнение конфигурации системы | 2013-07-15 → 2013-07-16 (+1d) | 2013-08-05 → 2013-08-06 (+1d) |  |  |  |  |  |
| 106 | **Сервис для работы с системным журналом** | 2013-08-06 → 2013-08-07 (+1d) | 2013-08-26 → 2013-08-27 (+1d) |  |  |  |  |  |
| 107 | Ведение журнала действий пользователей и действий с объектами системы | 2013-08-06 → 2013-08-07 (+1d) | 2013-08-19 → 2013-08-20 (+1d) |  |  |  |  | resources Java разработчик2 → Андрей Карандей |
| 108 | Настройка уровня логирования | 2013-08-20 → 2013-08-21 (+1d) | 2013-08-26 → 2013-08-27 (+1d) |  |  |  |  | resources Java разработчик2 → Андрей Карандей |
| 109 | **Разработка** |  | 2013-12-20 → 2014-01-14 (+25d) | 139d → 156d |  | 97d → 81d |  |  |
| 110 | Контроль и корректировка технических решений "Архитектурный комитет" |  | 2013-12-20 → 2013-12-23 (+3d) |  |  |  |  |  |
| 111 | **Разработка серверной логики модуля Делопроизводство** | 2013-08-26 → 2013-08-27 (+1d) | 2013-10-18 → 2013-10-21 (+3d) |  |  |  |  |  |
| 112 | Разработка схем документов модуля Делопроизводство | 2013-08-26 → 2013-08-27 (+1d) | 2013-09-20 → 2013-09-23 (+3d) |  |  |  |  | resources Андрей Пирожков [50%]; Java разработчик → Андрей Пирожков [50%]; Влад Симоненко |
| 113 | Разработка ЖЦ процессов модуля (WF) | 2013-09-23 → 2013-09-24 (+1d) | 2013-10-18 → 2013-10-21 (+3d) |  |  |  |  | resources Java разработчик; Андрей Пирожков [50%] → Влад Симоненко; Андрей Пирожков [50%] |
| 114 | Разработка логики бизнес- действий модуля "Делопроизводство" | 2013-08-26 → 2013-08-27 (+1d) | 2013-10-18 → 2013-10-21 (+3d) |  |  |  |  | resources Java разработчик1; Андрей Пирожков [50%] → Алексей Львов; Андрей Пирожков [50%] |
| 115 | Разработка процессов автоматизации для модуля "Делопроизводство" | 2013-08-26 → 2013-08-27 (+1d) | 2013-09-20 → 2013-09-23 (+3d) |  |  |  |  | resources Java разработчик2 → Андрей Карандей |
| 116 | Разработка модели прав доступа (контекстные роли) | 2013-09-23 → 2013-09-24 (+1d) | 2013-10-18 → 2013-10-21 (+3d) |  |  |  |  | resources Java разработчик2 → Андрей Карандей |
| 117 | **Разработка клиентской логики модуля "Делопроизводство"** | 2013-09-06 → 2013-11-06 (+61d) | 2013-09-27 → 2013-11-19 (+53d) | 16d → 10d |  | 36d → 0d |  |  |
| 118 | Разработка форм для работы с документами в GUI (настройки форм) | 2013-09-06 → 2013-11-06 (+61d) | 2013-09-12 → 2013-11-12 (+61d) |  |  | 42d → 0d |  |  |
| 119 | Разработка структуры рабочего места | 2013-09-23 → 2013-11-13 (+51d) | 2013-09-27 → 2013-11-19 (+53d) |  |  | 36d → 0d |  |  |

| ID | Task | Start | Finish | Duration | Total float | Other |
| --- | --- | --- | --- | --- | --- | --- |
| 120 | Разработка специфичных для модуля форм элементов GUI | 2013-09-06 → 2013-11-06 (+61d) | 2013-09-19 → 2013-11-19 (+61d) |  | 42d → 0d |  |
| 121 | **Подготовка работы со списками значений** | 2013-09-30 → 2013-11-20 (+51d) | 2013-11-22 → 2014-01-14 (+53d) |  | 117d → 81d |  |
| 122 | Разработка функционала учета организационно штатной структуры | 2013-09-30 → 2013-11-20 (+51d) | 2013-11-22 → 2014-01-14 (+53d) |  | 117d → 81d |  |
| 123 | Разработка функционала с рубрикаторами (сложные справочники) | 2013-09-30 → 2013-11-20 (+51d) | 2013-10-25 → 2013-12-17 (+53d) |  | 117d → 81d |  |
| 124 | Разработка функционала для работы с словарями данных (простые, линейные справочники) | 2013-10-28 → 2013-12-18 (+51d) | 2013-11-22 → 2014-01-14 (+53d) |  | 117d → 81d |  |
| 125 | Подготовка отчетов | 2013-10-21 → 2013-10-22 (+1d) | 2013-12-13 → 2013-12-16 (+3d) |  |  | resources Java разработчик; Java разработчик1; Java разработчик2 → Влад Симоненко; Алексей Львов; Андрей Карандей |
| 126 | Сопряжение с мобильным клиентом СМ4 | 2013-09-30 → 2013-11-20 (+51d) | 2013-11-01 → 2013-12-24 (+53d) |  | 132d → 96d |  |
| 127 | **Тестирование** | 2013-10-29 → 2013-11-06 (+8d) | 2014-02-19 → 2014-02-20 (+1d) | 82d? → 77d? |  |  |
| 128 | **Функциональное тестирование** | 2013-10-29 → 2013-11-06 (+8d) | 2014-01-29 → 2014-01-30 (+1d) | 67d? → 62d? | 68d → 63d |  |
| 129 | Подготовка ПМИ | 2013-10-29 → 2013-11-06 (+8d) | 2013-11-04 → 2013-11-12 (+8d) |  | 68d → 63d |  |
| 130 | Разработка "сценариев тестирования" | 2013-10-29 → 2013-11-06 (+8d) | 2013-11-18 → 2013-11-26 (+8d) |  | 73d → 68d |  |
| 131 | Разработка модели нагрузки для тестирования | 2013-11-05 → 2013-11-13 (+8d) | 2013-11-18 → 2013-11-26 (+8d) |  | 73d → 68d |  |
| 132 | Адаптация автоматизированных сценариев от СМ4 для создания нагрузки | 2013-11-05 → 2013-11-13 (+8d) | 2013-12-09 → 2013-12-17 (+8d) |  | 68d → 63d | resources Java разработчик → Влад Симоненко |
| 133 | **Проведение тестирования** | 2013-12-09 → 2013-12-10 (+1d) | 2014-01-29 → 2014-01-30 (+1d) |  |  |  |
| 134 | **Подготовка среды тестирования** | 2013-12-09 → 2013-12-10 (+1d) | 2013-12-27 → 2013-12-30 (+3d) |  |  |  |
| 135 | Разворачивание системы | 2013-12-09 → 2013-12-10 (+1d) | 2013-12-16 → 2013-12-17 (+1d) |  |  | resources Java разработчик → Влад Симоненко |
| 136 | Система готова для подключения инструментов мониторинга | 2013-12-16 → 2013-12-17 (+1d) | 2013-12-16 → 2013-12-17 (+1d) |  |  |  |
| 137 | Наполнение данными | 2013-12-16 → 2013-12-17 (+1d) | 2013-12-27 → 2013-12-30 (+3d) |  |  | resources Java разработчик; Java разработчик6 → Влад Симоненко; Java разработчик6 |
| 138 | Среда тестирования готова | 2013-12-27 → 2013-12-30 (+3d) | 2013-12-27 → 2013-12-30 (+3d) |  |  |  |
| 139 | Проведение тестирования | 2013-12-30 → 2013-12-31 (+1d) | 2014-01-10 → 2014-01-13 (+3d) |  |  |  |
| 140 | **Обработка результатов тестирования и внесение изменений в модуль** | 2014-01-09 → 2014-01-10 (+1d) | 2014-01-29 → 2014-01-30 (+1d) |  |  |  |
| 141 | Устранение замечаний по результатам функционального тестирования | 2014-01-09 → 2014-01-10 (+1d) | 2014-01-29 → 2014-01-30 (+1d) |  |  | resources Java разработчик5; Java разработчик [300%]; Валерий Мацукевич; Java разработчик3; Java разработчик4; Java разработчик2; Java разработчик1; Андрей Цветков → Java разработчик5; Влад Симоненко [300%]; Валерий Мацукевич; Java разработчик3; Java разработчик4; Андрей Карандей; Алексей Львов; Андрей Цветков |
| 142 | Проверка устранения замечаний | 2014-01-22 → 2014-01-23 (+1d) | 2014-01-29 → 2014-01-30 (+1d) |  |  |  |
| 143 | **Нагрузочное тестирование** | 2014-01-10 → 2014-01-13 (+3d) | 2014-02-19 → 2014-02-20 (+1d) |  |  |  |
| 144 | Стенд для нагрузочного тестирования подготовлен | 2014-01-10 → 2014-01-13 (+3d) | 2014-01-10 → 2014-01-13 (+3d) |  |  |  |
| 145 | Проведения нагрузочного тестирования | 2014-01-30 → 2014-01-31 (+1d) | 2014-02-12 → 2014-02-13 (+1d) |  |  | resources Java разработчик; Тест Аналитик; Тестировщик → Влад Симоненко; Тест Аналитик; Тестировщик |
| 146 | Обработка результатов нагрузочного тестирования | 2014-02-13 → 2014-02-14 (+1d) | 2014-02-19 → 2014-02-20 (+1d) |  |  |  |
| 147 | Разработка модуля "Делопроизводство" завершена | 2014-02-19 → 2014-02-20 (+1d) | 2014-02-19 → 2014-02-20 (+1d) |  |  |  |
| 148 | **Подготовка документации** | 2013-10-29 → 2013-11-06 (+8d) | 2014-02-17 → 2014-02-25 (+8d) |  | 56d → 51d |  |
| 149 | Разработка документа "Концепция системы " | 2013-10-29 → 2013-11-06 (+8d) | 2013-12-23 → 2013-12-31 (+8d) |  | 56d → 51d |  |
| 150 | Разработка "Software Architecture Document" | 2013-12-24 → 2014-01-01 (+8d) | 2014-02-17 → 2014-02-25 (+8d) |  | 56d → 51d |  |
| 151 | Документы подготовлены | 2014-02-17 → 2014-02-25 (+8d) | 2014-02-17 → 2014-02-25 (+8d) |  | 56d → 51d |  |
| 152 | **Проверка работоспособности решения - Организация демонстрации** | 2013-12-09 → 2013-12-10 (+1d) | 2014-01-10 → 2014-01-13 (+3d) |  |  |  |
| 153 | Подготовка стенда | 2013-12-09 → 2013-12-10 (+1d) | 2013-12-11 → 2013-12-12 (+1d) |  |  | resources Java разработчик; Аналитик → Влад Симоненко; Аналитик |
| 154 | Подготовка прототипа | 2013-12-09 → 2013-12-10 (+1d) | 2014-01-03 → 2014-01-06 (+3d) |  |  | resources Java разработчик; Аналитик → Влад Симоненко; Аналитик |
| 155 | Проведение демонстраций | 2014-01-06 → 2014-01-07 (+1d) | 2014-01-08 → 2014-01-09 (+1d) |  |  | resources Java разработчик; Аналитик → Влад Симоненко; Аналитик |
| 156 | Анализ результатов - выводы | 2014-01-09 → 2014-01-10 (+1d) | 2014-01-10 → 2014-01-13 (+3d) |  |  | resources Java разработчик; Аналитик → Влад Симоненко; Аналитик |
| 157 | **Создание модулей первой очереди** | 2013-10-11 → 2013-12-03 (+53d) | 2014-03-17 → 2014-05-07 (+51d) |  | 36d → 0d |  |
| 158 | Определен состав модулей первой очереди и первичные требования подготовлены | 2013-10-11 → 2013-12-03 (+53d) | 2013-10-11 → 2013-12-03 (+53d) |  | 36d → 0d |  |
| 159 | **Проектирование** | 2013-10-14 → 2013-12-04 (+51d) | 2013-11-07 → 2013-12-30 (+53d) |  | 36d → 0d |  |
| 160 | Определение структуры модулей первой очереди | 2013-10-14 → 2013-12-04 (+51d) | 2013-10-30 → 2013-12-20 (+51d) |  | 36d → 0d |  |
| 161 | Уточнение состава и сроков работ | 2013-10-31 → 2013-12-23 (+53d) | 2013-11-07 → 2013-12-30 (+53d) |  | 50.67d → 14.67d |  |
| 162 | Принято решение о разработке модулей второй очереди | 2013-10-30 → 2013-12-20 (+51d) | 2013-10-30 → 2013-12-20 (+51d) |  | 36d → 0d |  |
| 163 | **Разработка** | 2013-10-31 → 2013-12-23 (+53d) | 2013-12-25 → 2014-02-14 (+51d) |  | 36d → 0d |  |
| 164 | Контроль и корректировка технических решений "Архитектурный комитет" | 2013-10-31 → 2013-12-23 (+53d) | 2013-12-20 → 2014-02-11 (+53d) |  | 97d → 61d |  |
| 165 | **Разработка серверной логики модулей первой очереди** | 2013-10-31 → 2013-12-23 (+53d) | 2013-12-25 → 2014-02-14 (+51d) |  | 36d → 0d |  |
| 166 | Разработка схем документов для модулей первой очереди | 2013-10-31 → 2013-12-23 (+53d) | 2013-11-27 → 2014-01-17 (+51d) |  | 36d → 0d | resources Java разработчик2; Java разработчик → Андрей Карандей; Влад Симоненко |
| 167 | Разработка ЖЦ процессов (WF) | 2013-11-28 → 2014-01-20 (+53d) | 2013-12-25 → 2014-02-14 (+51d) |  | 36d → 0d | resources Java разработчик2; Java разработчик → Андрей Карандей; Влад Симоненко |
| 168 | Разработка логики бизнес- действий для модулей первой очереди | 2013-10-31 → 2013-12-23 (+53d) | 2013-12-25 → 2014-02-14 (+51d) |  | 36d → 0d | resources Java разработчик1; Java разработчик → Алексей Львов; Влад Симоненко |
| 169 | Разработка процессов автоматизации для модулей первой очереди | 2013-10-31 → 2013-12-23 (+53d) | 2013-11-27 → 2014-01-17 (+51d) |  | 56d → 20d | resources Java разработчик → Влад Симоненко |
| 170 | Разработка модели прав доступа (контекстные роли) | 2013-11-28 → 2014-01-20 (+53d) | 2013-12-25 → 2014-02-14 (+51d) |  | 36d → 0d | resources Java разработчик → Влад Симоненко |
| 171 | **Разработка клиентской логики модулей первой очереди** | 2013-10-31 → 2013-12-23 (+53d) | 2013-12-11 → 2014-01-31 (+51d) |  | 46d → 10d |  |
| 172 | Разработка форм для работы с документами в GUI (настройки форм) | 2013-10-31 → 2013-12-23 (+53d) | 2013-11-13 → 2014-01-03 (+51d) |  | 66d → 30d |  |
| 173 | Разработка структуры рабочего места | 2013-11-28 → 2014-01-20 (+53d) | 2013-12-11 → 2014-01-31 (+51d) |  | 46d → 10d |  |
| 174 | Разработка специфичных для модуля форм элементов GUI | 2013-10-31 → 2013-12-23 (+53d) | 2013-11-27 → 2014-01-17 (+51d) |  | 56d → 20d |  |
| 175 | **Разработка вспомогательного инструментария** | 2013-11-07 → 2013-12-30 (+53d) | 2013-12-05 → 2014-01-27 (+53d) |  | 50.67d → 14.67d |  |
| 176 | Построитель форм | 2013-11-07 → 2013-12-30 (+53d) | 2013-11-21 → 2014-01-13 (+53d) |  | 60.67d → 24.67d |  |
| 177 | Разработка инсталлятора | 2013-11-07 → 2013-12-30 (+53d) | 2013-12-05 → 2014-01-27 (+53d) |  | 50.67d → 14.67d |  |
| 178 | Разработка конфигуратора | 2013-11-07 → 2013-12-30 (+53d) | 2013-11-21 → 2014-01-13 (+53d) |  | 60.67d → 24.67d | resources Java разработчик5; Java разработчик → Java разработчик5; Влад Симоненко |
| 179 | Подготовка отчетов | 2013-10-31 → 2013-12-23 (+53d) | 2013-11-27 → 2014-01-17 (+51d) |  | 114d → 78d | resources Java разработчик → Влад Симоненко |
| 180 | Сборка модулей первой очереди завершена | 2013-12-25 → 2014-02-14 (+51d) | 2013-12-25 → 2014-02-14 (+51d) |  | 36d → 0d |  |
| 181 | **Тестирование** | 2013-12-26 → 2014-02-17 (+53d) | 2014-03-17 → 2014-05-07 (+51d) |  | 36d → 0d |  |
| 182 | **Функциональное тестирование** | 2013-12-26 → 2014-02-17 (+53d) | 2014-02-17 → 2014-04-09 (+51d) |  | 36d → 0d |  |
| 183 | Подготовка ПМИ | 2013-12-26 → 2014-02-17 (+53d) | 2014-01-01 → 2014-02-21 (+51d) |  | 36d → 0d |  |
| 184 | Разработка "сценариев тестирования" | 2013-12-26 → 2014-02-17 (+53d) | 2014-01-15 → 2014-03-07 (+51d) |  | 41d → 5d |  |
| 185 | Разработка модели нагрузки для тестирования | 2014-01-02 → 2014-02-24 (+53d) | 2014-01-15 → 2014-03-07 (+51d) |  | 79d → 43d |  |
| 186 | **Проведение тестирования** | 2013-12-26 → 2014-02-17 (+53d) | 2014-02-17 → 2014-04-09 (+51d) |  | 41d → 5d |  |
| 187 | **Подготовка среды тестирования** | 2013-12-26 → 2014-02-17 (+53d) | 2014-01-15 → 2014-03-07 (+51d) |  | 41d → 5d |  |
| 188 | Разворачивание системы | 2013-12-26 → 2014-02-17 (+53d) | 2014-01-01 → 2014-02-21 (+51d) |  | 41d → 5d | resources Java разработчик → Влад Симоненко |
| 189 | Наполнение данными | 2014-01-02 → 2014-02-24 (+53d) | 2014-01-15 → 2014-03-07 (+51d) |  | 41d → 5d | resources Java разработчик; Java разработчик6 → Влад Симоненко; Java разработчик6 |

| ID | Task | Start | Finish | Total float | Other |
| --- | --- | --- | --- | --- | --- |
| 190 | Среда тестирования готова | 2014-01-15 → 2014-03-07 (+51d) | 2014-01-15 → 2014-03-07 (+51d) | 41d → 5d |  |
| 191 | Проведение тестирования | 2014-01-16 → 2014-03-10 (+53d) | 2014-01-29 → 2014-03-21 (+51d) | 41d → 5d |  |
| 192 | **Обработка результатов тестирования и внесение изменений в модуль** | 2014-01-28 → 2014-03-20 (+51d) | 2014-02-17 → 2014-04-09 (+51d) | 41d → 5d |  |
| 193 | Устранение замечаний по результатам функционального тестирования | 2014-01-28 → 2014-03-20 (+51d) | 2014-02-17 → 2014-04-09 (+51d) | 41d → 5d | resources Java разработчик5; Java разработчик [300%]; Валерий Мацукевич; Java разработчик3; Java разработчик4; Java разработчик2; Java разработчик1; Андрей Цветков → Java разработчик5; Влад Симоненко [300%]; Валерий Мацукевич; Java разработчик3; Java разработчик4; Андрей Карандей; Алексей Львов; Андрей Цветков |
| 194 | Проверка устранения замечаний | 2014-02-10 → 2014-04-02 (+51d) | 2014-02-17 → 2014-04-09 (+51d) | 41d → 5d |  |
| 195 | **Нагрузочное тестирование** | 2014-01-02 → 2014-02-24 (+53d) | 2014-03-17 → 2014-05-07 (+51d) | 36d → 0d |  |
| 196 | Подготовка автоматизированных сценариев для создания нагрузки | 2014-01-02 → 2014-02-24 (+53d) | 2014-02-24 → 2014-04-16 (+51d) | 36d → 0d | resources Java разработчик → Влад Симоненко |
| 197 | Стенд для нагрузочного тестирования подготовлен | 2014-01-29 → 2014-03-21 (+51d) | 2014-01-29 → 2014-03-21 (+51d) | 54d → 18d |  |
| 198 | Проведения нагрузочного тестирования | 2014-02-25 → 2014-04-17 (+51d) | 2014-03-10 → 2014-04-30 (+51d) | 36d → 0d | resources Java разработчик; Тест Аналитик; Тестировщик → Влад Симоненко; Тест Аналитик; Тестировщик |
| 199 | Обработка результатов нагрузочного тестирования | 2014-03-11 → 2014-05-01 (+51d) | 2014-03-17 → 2014-05-07 (+51d) | 36d → 0d |  |
| 200 | Разработка модулей первой очереди завершена | 2014-03-17 → 2014-05-07 (+51d) | 2014-03-17 → 2014-05-07 (+51d) | 36d → 0d |  |
| 201 | **Подготовка документации** | 2013-12-26 → 2014-02-17 (+53d) | 2014-02-17 → 2014-04-09 (+51d) | 56d → 20d |  |
| 202 | Разработка "Software Architecture Document" для модулей первой очереди | 2013-12-26 → 2014-02-17 (+53d) | 2014-01-22 → 2014-03-14 (+51d) | 74d → 38d |  |
| 203 | Документы подготовлены | 2014-02-17 → 2014-04-09 (+51d) | 2014-02-17 → 2014-04-09 (+51d) | 56d → 20d |  |

## Version 15 (saved 2013-07-12)

Note of the change: Изменение плана от 12.07

Last finish 2014-05-07 → 2014-05-06 (-1d).

Added:

| ID | Task | Duration | Start | Finish | Predecessors | Constraint | Resources |
| --- | --- | --- | --- | --- | --- | --- | --- |
| 63 | Принято решение о проектировании сервиса обработки вложений | 0d | 2013-07-11 | 2013-07-11 |  | start no earlier than 2013-07-11 |  |
| 77 | Разметка экрана | 1d | 2013-07-12 | 2013-07-12 | 76 |  | Денис Митавский [50%] |
| 78 | **Панель навигации** | 8d | 2013-07-15 | 2013-07-24 |  |  |  |
| 79 | Проектирование - панель навигации | 2d | 2013-07-15 | 2013-07-16 | 76, 77 |  | Денис Митавский [50%] |

Removed: 157 Создание модулей первой очереди; 158 Определен состав модулей первой очереди и первичные требования подготовлены; 159 Проектирование; 160 Определение структуры модулей первой очереди; 161 Уточнение состава и сроков работ; 162 Принято решение о разработке модулей второй очереди; 163 Разработка; 164 Контроль и корректировка технических решений "Архитектурный комитет"; 165 Разработка серверной логики модулей первой очереди; 166 Разработка схем документов для модулей первой очереди; 167 Разработка ЖЦ процессов (WF); 168 Разработка логики бизнес- действий для модулей первой очереди; 169 Разработка процессов автоматизации для модулей первой очереди; 170 Разработка модели прав доступа (контекстные роли); 171 Разработка клиентской логики модулей первой очереди; 172 Разработка форм для работы с документами в GUI (настройки форм); 173 Разработка структуры рабочего места; 174 Разработка специфичных для модуля форм элементов GUI; 175 Разработка вспомогательного инструментария; 176 Построитель форм; 177 Разработка инсталлятора; 178 Разработка конфигуратора; 179 Подготовка отчетов; 180 Сборка модулей первой очереди завершена; 181 Тестирование; 182 Функциональное тестирование; 183 Подготовка ПМИ; 184 Разработка "сценариев тестирования"; 185 Разработка модели нагрузки для тестирования; 186 Проведение тестирования; 187 Подготовка среды тестирования; 188 Разворачивание системы; 189 Наполнение данными; 190 Среда тестирования готова; 191 Проведение тестирования; 192 Обработка результатов тестирования и внесение изменений в модуль; 193 Устранение замечаний по результатам функционального тестирования; 194 Проверка устранения замечаний; 195 Нагрузочное тестирование; 196 Подготовка автоматизированных сценариев для создания нагрузки; 197 Стенд для нагрузочного тестирования подготовлен; 198 Проведения нагрузочного тестирования; 199 Обработка результатов нагрузочного тестирования; 200 Разработка модулей первой очереди завершена; 201 Подготовка документации

Changed:

| ID | Task | Start | Finish | Duration | Complete | Total float | Predecessors | Other |
| --- | --- | --- | --- | --- | --- | --- | --- | --- |
| 1 | **Разработка второй версии CM4/5** |  | 2014-05-07 → 2014-05-06 (-1d) | 268d? → 267d? | 8% → 9% |  |  |  |
| 9 | **Создание модуля "Делопроизводство" (документоориентированная среда)** |  | 2014-02-25 → 2014-03-21 (+24d) | 217d? → 235d? | 12% → 11% | 51d → 32d |  |  |
| 20 | **Проектирование и формирование ядра системы** |  | 2013-11-05 → 2013-11-14 (+9d) | 137d? → 144d? | 17% → 19% | 63d → 55d |  |  |
| 38 | **Права доступа** |  | 2013-08-05 → 2013-08-09 (+4d) | 39d → 43d | 31% → 44% | 129d → 106d |  |  |
| 39 | Права - оптимизация хранения (проектирование) |  | 2013-06-25 → 2013-07-15 (+20d) | 10d → 24d | 90% → 79% | 0d → 39d |  |  |
| 40 | Описание существующими декларативными средствами конфигурации | 2013-07-10 → 2013-07-16 (+6d) | 2013-07-22 → 2013-07-26 (+4d) |  |  | 129d → 107d |  |  |
| 41 | Автофильтрация | 2013-07-23 → 2013-07-29 (+6d) | 2013-08-05 → 2013-08-09 (+4d) |  |  | 129d → 107d |  |  |
| 42 | **Workflow - интеграция с Activiti** |  | 2013-08-01 → 2013-08-21 (+20d) | 40d → 54d |  | 53d → 36d |  |  |
| 43 | Проектирование |  | 2013-07-04 → 2013-07-24 (+20d) |  |  | 53d → 36d |  |  |
| 44 | Разработка | 2013-07-05 → 2013-07-25 (+20d) | 2013-08-01 → 2013-08-21 (+20d) |  |  | 53d → 39d |  |  |
| 45 | Наследование ??? | 2013-07-05 → 2013-07-25 (+20d) | 2013-08-01 → 2013-08-06 (+5d) | 20d → 9d |  | 131d → 128d |  | was named Наследование/Аспекты |
| 51 | **Действия** | 2013-06-03 → 2013-08-12 (+70d) | 2013-06-26 → 2013-09-04 (+70d) |  |  | 157d → 106d |  |  |
| 52 | Концепция | 2013-06-03 → 2013-08-12 (+70d) | 2013-06-06 → 2013-08-15 (+70d) |  |  | 157d → 107d | 47 → 47, 41 |  |
| 53 | Реализация | 2013-06-07 → 2013-08-16 (+70d) | 2013-06-26 → 2013-09-04 (+70d) |  |  | 157d → 107d |  | resources Роман Митинков; Андрей Пирожков [50%] → Андрей Карандей; Андрей Пирожков [50%] |
| 54 | **Бизнес-объекты (иерархии доменных объектов)** | 2013-04-22 → 2013-08-06 (+106d) | 2013-04-30 → 2013-08-28 (+120d) | 7d → 16d |  | 193d → 112d |  |  |
| 55 | Проектирование | 2013-04-22 → 2013-08-06 (+106d) | 2013-04-25 → 2013-08-14 (+111d) | 4d → 6d |  | 196d → 122d | none → 56SF | resources none → Сергей Кашанский |
| 56 | Реализация | 2013-04-22 → 2013-08-14 (+114d) | 2013-04-30 → 2013-08-28 (+120d) | 7d → 10d |  | 193d → 112d | none → 85SF | resources none → Сергей Кашанский |
| 57 | **Слой сопряжения GUI CM4** | 2013-04-29 → 2013-06-25 (+57d) | 2013-11-05 → 2013-11-14 (+9d) | 132d → 103d |  | 59d → 55d |  |  |
| 61 | Сопряжение - работа с вложениями | 2013-04-29 → 2013-11-06 (+191d) | 2013-05-14 → 2013-11-14 (+184d) |  |  | 188d → 55d | 65 → 65, 60 |  |
| 62 | **Сервис работы с вложениями** | 2013-04-22 → 2013-07-11 (+80d) | 2013-04-26 → 2013-07-17 (+82d) |  |  | 188d → 134d |  |  |
| 64 | API | 2013-04-22 → 2013-07-11 (+80d) | 2013-04-23 → 2013-07-12 (+80d) |  |  | 188d → 134d | none → 63 |  |
| 65 | Реализация | 2013-04-24 → 2013-07-15 (+82d) | 2013-04-26 → 2013-07-17 (+82d) |  |  | 188d → 134d |  |  |
| 67 | Идея поиска оформлена |  |  |  |  | 36d → 33d |  | was named Идея поиска овормлена |
| 74 | **GUI** |  | 2013-10-10 → 2013-10-11 (+1d) | 69d? → 70d? | 4% → 3% | 79d → 77d |  |  |
| 80 | Разработка - панель навигации | 2013-07-12 → 2013-07-17 (+5d) | 2013-07-23 → 2013-07-24 (+1d) | 8d → 6d |  | 73d → 72d | 76 → 76, 79 | was named GUI - панель навигации |
| 81 | GUI - архитектура активностей/дочерних активностей | 2013-07-24 → 2013-07-25 (+1d) | 2013-08-02 → 2013-08-05 (+3d) |  |  | 73d → 72d |  |  |
| 82 | GUI - отображение коллекций активность | 2013-08-05 → 2013-08-06 (+1d) | 2013-08-14 → 2013-08-15 (+1d) |  |  | 73d → 72d |  |  |
| 83 | GUI - действия | 2013-08-15 → 2013-08-16 (+1d) | 2013-08-26 → 2013-08-27 (+1d) |  |  | 73d → 72d |  |  |
| 84 | **Формы встроенного GUI** | 2013-08-27 → 2013-08-28 (+1d) | 2013-09-19 → 2013-09-20 (+1d) |  |  | 73d → 71d |  |  |
| 85 | Конфигурация | 2013-08-27 → 2013-08-28 (+1d) | 2013-08-29 → 2013-08-30 (+1d) |  |  | 73d → 72d |  |  |
| 86 | API | 2013-08-30 → 2013-09-02 (+3d) | 2013-09-05 → 2013-09-06 (+1d) |  |  | 73d → 72d |  |  |
| 87 | Реализация | 2013-09-06 → 2013-09-09 (+3d) | 2013-09-19 → 2013-09-20 (+1d) |  |  | 90d → 89d |  |  |
| 89 | **GUI - поиск** | 2013-09-06 → 2013-09-09 (+3d) | 2013-09-25 → 2013-09-26 (+1d) |  |  | 73d → 71d |  |  |
| 90 | GUI - поиск. Проектирование | 2013-09-06 → 2013-09-09 (+3d) | 2013-09-10 → 2013-09-11 (+1d) |  |  | 73d → 72d |  |  |
| 91 | GUI - поиск. Реализация | 2013-09-20 → 2013-09-23 (+3d) | 2013-09-25 → 2013-09-26 (+1d) |  |  | 90d → 89d |  |  |
| 92 | **GUI - виджеты разработка (базовый набор)** | 2013-09-06 → 2013-09-09 (+3d) | 2013-10-10 → 2013-10-11 (+1d) |  |  | 79d → 77d |  |  |
| 93 | Дата/время | 2013-09-06 → 2013-09-09 (+3d) | 2013-09-06 → 2013-09-09 (+3d) |  |  | 103d → 102d |  |  |
| 94 | Остальные | 2013-09-06 → 2013-09-09 (+3d) | 2013-10-10 → 2013-10-11 (+1d) |  |  | 79d → 78d |  |  |
| 95 | **GUI - брендинг, стилизация, темы** | 2013-09-11 → 2013-09-12 (+1d) | 2013-09-17 → 2013-09-18 (+1d) |  |  | 73d → 71d |  |  |
| 96 | Концепция | 2013-09-11 → 2013-09-12 (+1d) | 2013-09-17 → 2013-09-18 (+1d) |  |  | 73d → 72d |  |  |
| 97 | Тестирование производительности | 2013-09-18 → 2013-09-19 (+1d) | 2013-10-22 → 2013-10-23 (+1d) |  |  | 73d → 72d |  |  |
| 101 | Уточнение состава и сроков работ | 2013-10-11 → 2013-10-14 (+3d) | 2013-10-14 → 2013-10-15 (+1d) |  |  | 79d → 78d |  |  |
| 113 | **Разработка** |  | 2014-01-14 → 2014-03-21 (+66d) | 156d → 204d | 5% → 3% | 81d → 32d |  |  |
| 114 | Контроль и корректировка технических решений "Архитектурный комитет" |  | 2013-12-23 → 2014-03-21 (+88d) | 139d → 203d | 14% → 10% | 97d → 32d |  |  |
| 115 | **Разработка серверной логики модуля CMJ** |  | 2013-10-21 → 2013-11-18 (+28d) | 40d → 60d |  | 36d → 33d |  | was named Разработка серверной логики модуля Делопроизводство |
| 116 | Разработка схем документов модуля CMJ |  | 2013-09-23 → 2013-10-21 (+28d) | 20d → 40d |  | 36d → 33d |  | was named Разработка схем документов модуля Делопроизводство |
| 117 | Разработка ЖЦ процессов модуля (WF) | 2013-09-24 → 2013-10-22 (+28d) | 2013-10-21 → 2013-11-18 (+28d) |  |  | 54d → 33d |  |  |
| 118 | Разработка логики бизнес- действий модуля CMJ |  | 2013-10-21 → 2013-11-18 (+28d) | 40d → 60d |  | 54d → 33d |  | was named Разработка логики бизнес- действий модуля "Делопроизводство" |
| 119 | Разработка процессов автоматизации для модуля CMJ |  | 2013-09-23 → 2013-10-21 (+28d) | 20d → 40d |  | 162d → 91d |  | was named Разработка процессов автоматизации для модуля "Делопроизводство" |
| 120 | Разработка модели прав доступа (контекстные роли) | 2013-09-24 → 2013-10-22 (+28d) | 2013-10-21 → 2013-11-18 (+28d) |  |  | 142d → 71d |  |  |
| 121 | **Разработка Форм для АРМ тематических администраторов** |  | 2013-11-19 → 2013-12-31 (+42d) | 10d → 40d |  | 0d → 90d |  | was named Разработка клиентской логики модуля "Делопроизводство" |
| 122 | **Подготовка работы со списками значений** | 2013-11-20 → 2013-11-06 (-14d) | 2014-01-14 → 2013-12-31 (-14d) |  |  | 81d → 90d |  |  |
| 123 | Разработка функционала учета организационно штатной структуры | 2013-11-20 → 2013-11-06 (-14d) | 2014-01-14 → 2013-12-31 (-14d) |  |  | 81d → 90d | 121 → none |  |
| 124 | Разработка функционала с рубрикаторами (сложные справочники) | 2013-11-20 → 2013-11-06 (-14d) | 2013-12-17 → 2013-12-03 (-14d) |  |  | 81d → 90d | 121 → none |  |
| 125 | Разработка функционала для работы с словарями данных (простые, линейные справочники) | 2013-12-18 → 2013-12-04 (-14d) | 2014-01-14 → 2013-12-31 (-14d) |  |  | 81d → 90d |  |  |
| 126 | Разработка форм для работы в GUI (настройки форм) |  | 2013-11-12 → 2013-11-26 (+14d) | 5d → 15d |  | 0d → 110d |  | was named Разработка форм для работы с документами в GUI (настройки форм) |
| 127 | Разработка структуры рабочего места АРМ | 2013-11-13 → 2013-11-27 (+14d) | 2013-11-19 → 2013-12-03 (+14d) |  |  | 0d → 110d |  | was named Разработка структуры рабочего места |
| 128 | Разработка специфичных для форм АРМ элементов GUI |  | 2013-11-19 → 2013-12-03 (+14d) | 10d → 20d |  | 0d → 110d |  | was named Разработка специфичных для модуля форм элементов GUI |
| 129 | Подготовка отчетов | 2013-10-22 → 2013-11-19 (+28d) | 2013-12-16 → 2014-01-13 (+28d) |  |  | 54d → 33d |  |  |
| 130 | Сопряжение с мобильным клиентом СМ4 | 2013-11-20 → 2013-11-19 (-1d) | 2013-12-24 → 2014-01-27 (+34d) | 25d → 50d |  | 96d → 71d | 121 → 115 |  |
| 131 | **Тестирование** | 2013-11-06 → 2013-11-15 (+9d) | 2014-02-20 → 2014-03-20 (+28d) | 77d? → 90d? |  | 54d → 33d |  |  |
| 132 | **Функциональное тестирование** | 2013-11-06 → 2013-11-15 (+9d) | 2014-01-30 → 2014-02-27 (+28d) | 62d? → 75d? |  | 63d → 48d |  |  |
| 133 | Подготовка ПМИ | 2013-11-06 → 2013-11-15 (+9d) | 2013-11-12 → 2013-11-21 (+9d) |  |  | 63d → 55d |  |  |
| 134 | Разработка "сценариев тестирования" | 2013-11-06 → 2013-11-15 (+9d) | 2013-11-26 → 2013-12-05 (+9d) |  |  | 68d → 60d |  |  |
| 135 | Разработка модели нагрузки для тестирования | 2013-11-13 → 2013-11-22 (+9d) | 2013-11-26 → 2013-12-05 (+9d) |  |  | 68d → 60d |  |  |
| 136 | Адаптация автоматизированных сценариев от СМ4 для создания нагрузки | 2013-11-13 → 2013-11-22 (+9d) | 2013-12-17 → 2013-12-26 (+9d) |  |  | 63d → 55d |  |  |
| 137 | **Проведение тестирования** | 2013-12-10 → 2014-01-07 (+28d) | 2014-01-30 → 2014-02-27 (+28d) |  |  | 59d → 38d |  |  |
| 138 | **Подготовка среды тестирования** | 2013-12-10 → 2014-01-07 (+28d) | 2013-12-30 → 2014-01-27 (+28d) |  |  | 59d → 38d |  |  |
| 139 | Разворачивание системы | 2013-12-10 → 2014-01-07 (+28d) | 2013-12-17 → 2014-01-14 (+28d) |  |  | 102d → 81d |  |  |
| 140 | Система готова для подключения инструментов мониторинга | 2013-12-17 → 2014-01-14 (+28d) | 2013-12-17 → 2014-01-14 (+28d) |  |  | 102d → 81d |  |  |

| ID | Task | Start | Finish | Total float | Predecessors |
| --- | --- | --- | --- | --- | --- |
| 141 | Наполнение данными | 2013-12-17 → 2014-01-14 (+28d) | 2013-12-30 → 2014-01-27 (+28d) | 54d → 33d |  |
| 142 | Среда тестирования готова | 2013-12-30 → 2014-01-27 (+28d) | 2013-12-30 → 2014-01-27 (+28d) | 54d → 33d |  |
| 143 | Проведение тестирования | 2013-12-31 → 2014-01-28 (+28d) | 2014-01-13 → 2014-02-10 (+28d) | 54d → 33d |  |
| 144 | **Обработка результатов тестирования и внесение изменений в модуль** | 2014-01-10 → 2014-02-07 (+28d) | 2014-01-30 → 2014-02-27 (+28d) | 54d → 33d |  |
| 145 | Устранение замечаний по результатам функционального тестирования | 2014-01-10 → 2014-02-07 (+28d) | 2014-01-30 → 2014-02-27 (+28d) | 54d → 33d |  |
| 146 | Проверка устранения замечаний | 2014-01-23 → 2014-02-20 (+28d) | 2014-01-30 → 2014-02-27 (+28d) | 54d → 33d |  |
| 147 | **Нагрузочное тестирование** | 2014-01-13 → 2014-02-10 (+28d) | 2014-02-20 → 2014-03-20 (+28d) | 54d → 33d |  |
| 148 | Стенд для нагрузочного тестирования подготовлен | 2014-01-13 → 2014-02-10 (+28d) | 2014-01-13 → 2014-02-10 (+28d) | 67d → 46d |  |
| 149 | Проведения нагрузочного тестирования | 2014-01-31 → 2014-02-28 (+28d) | 2014-02-13 → 2014-03-13 (+28d) | 54d → 33d |  |
| 150 | Обработка результатов нагрузочного тестирования | 2014-02-14 → 2014-03-14 (+28d) | 2014-02-20 → 2014-03-20 (+28d) | 54d → 33d |  |
| 151 | Разработка модуля "Делопроизводство" завершена | 2014-02-20 → 2014-03-20 (+28d) | 2014-02-20 → 2014-03-20 (+28d) | 54d → 33d |  |
| 152 | **Подготовка документации** | 2013-11-06 → 2013-11-15 (+9d) | 2014-02-25 → 2014-03-06 (+9d) | 51d → 43d |  |
| 153 | Разработка документа "Концепция системы " | 2013-11-06 → 2013-11-15 (+9d) | 2013-12-31 → 2014-01-09 (+9d) | 51d → 43d |  |
| 154 | Разработка "Software Architecture Document" | 2014-01-01 → 2014-01-10 (+9d) | 2014-02-25 → 2014-03-06 (+9d) | 51d → 43d |  |
| 155 | Документы подготовлены | 2014-02-25 → 2014-03-06 (+9d) | 2014-02-25 → 2014-03-06 (+9d) | 51d → 43d |  |
| 156 | Разработка "Software Architecture Document" для модулей первой очереди | 2014-02-17 → 2013-11-15 (-94d) | 2014-03-14 → 2013-12-12 (-92d) | 38d → 103d |  |
| 157 | Документы подготовлены | 2014-04-09 → 2013-12-12 (-118d) | 2014-04-09 → 2013-12-12 (-118d) | 20d → 103d | Проверка устранения замечаний, 156 → 156 |
| 158 | **Проверка работоспособности решения - Организация демонстрации** | 2013-12-10 → 2014-01-07 (+28d) | 2014-01-13 → 2014-02-10 (+28d) | 82d → 61d |  |
| 159 | Подготовка стенда | 2013-12-10 → 2014-01-07 (+28d) | 2013-12-12 → 2014-01-09 (+28d) | 104d → 83d |  |
| 160 | Подготовка прототипа | 2013-12-10 → 2014-01-07 (+28d) | 2014-01-06 → 2014-02-03 (+28d) | 82d → 61d |  |
| 161 | Проведение демонстраций | 2014-01-07 → 2014-02-04 (+28d) | 2014-01-09 → 2014-02-06 (+28d) | 82d → 61d |  |
| 162 | Анализ результатов - выводы | 2014-01-10 → 2014-02-07 (+28d) | 2014-01-13 → 2014-02-10 (+28d) | 82d → 61d |  |

## Version 16 (saved 2013-07-15)

Note of the change: Работа на расширением конфигурации - изменение сроков

Last finish stays 2014-05-06.

Changed:

| ID | Task | Start | Finish | Duration | Complete | Total float |
| --- | --- | --- | --- | --- | --- | --- |
| 28 | **DAO** |  | 2013-07-22 → 2013-07-24 (+2d) | 36d? → 38d? |  | 84d → 82d |
| 33 | DAO - кэш уровня транзакции | 2013-07-16 → 2013-07-18 (+2d) | 2013-07-22 → 2013-07-24 (+2d) |  |  | 85d → 82d |
| 35 | Поддержка отсортированных дочерних бизнес-объектов | 2013-07-23 → 2013-07-25 (+2d) | 2013-07-29 → 2013-07-31 (+2d) |  |  | 85d → 82d |
| 98 | Версионность/аудит | 2013-07-30 → 2013-08-01 (+2d) | 2013-08-08 → 2013-08-12 (+4d) |  |  | 85d → 82d |
| 99 | Блокировки бизнес-объектов | 2013-08-09 → 2013-08-13 (+4d) | 2013-08-16 → 2013-08-20 (+4d) |  |  | 85d → 82d |
| 102 | Кросс-СУБД, поддержка Oracle | 2013-08-19 → 2013-08-21 (+2d) | 2013-09-06 → 2013-09-10 (+4d) |  |  | 85d → 82d |
| 103 | SQL-trace | 2013-09-09 → 2013-09-11 (+2d) | 2013-09-13 → 2013-09-17 (+4d) |  |  | 85d → 82d |
| 104 | Локализация (на уровне конфигурации) | 2013-09-16 → 2013-09-18 (+2d) | 2013-10-04 → 2013-10-08 (+4d) |  |  | 85d → 82d |
| 105 | **Интеграция с системой управления учетными записями** | 2013-08-19 → 2013-08-21 (+2d) | 2013-09-05 → 2013-09-09 (+4d) |  |  | 105d → 103d |
| 106 | Интеграция с ActiveDirectory | 2013-08-19 → 2013-08-21 (+2d) | 2013-09-05 → 2013-09-09 (+4d) |  |  | 106d → 103d |
| 107 | **Расширение функций сервиса конфигурации** |  | 2013-08-06 → 2013-08-08 (+2d) | 21d → 23d | 14% → 13% | 112d → 110d |
| 108 | Расширяемость конфигурации |  | 2013-07-15 → 2013-07-17 (+2d) | 5d → 7d | 60% → 43% | 85d → 82d |
| 109 | Изменение и дополнение конфигурации системы | 2013-07-16 → 2013-07-18 (+2d) | 2013-08-06 → 2013-08-08 (+2d) |  |  | 113d → 110d |
| 110 | **Сервис для работы с системным журналом** | 2013-08-07 → 2013-08-09 (+2d) | 2013-08-27 → 2013-08-29 (+2d) |  |  | 112d → 110d |
| 111 | Ведение журнала действий пользователей и действий с объектами системы | 2013-08-07 → 2013-08-09 (+2d) | 2013-08-20 → 2013-08-22 (+2d) |  |  | 113d → 110d |
| 112 | Настройка уровня логирования | 2013-08-21 → 2013-08-23 (+2d) | 2013-08-27 → 2013-08-29 (+2d) |  |  | 113d → 110d |

## Version 17 (saved 2013-07-23)

Note of the change: Обновление плана работ

Last finish stays 2014-05-06. Complete tasks 22 → 21.

Added:

| ID | Task | Duration | Start | Finish | Predecessors | Constraint | Resources |
| --- | --- | --- | --- | --- | --- | --- | --- |
| 75 | Принято решение о применении GWT-компонентов | 0d | 2013-07-22 | 2013-07-22 |  | start no earlier than 2013-07-22 |  |
| 77 | Разработка базовой архитектуры GUI на основе GWT-компонентов | 3d | 2013-07-22 | 2013-07-24 | 75 |  | Денис Митавский |
| 86 | Проектирование | 2d | 2013-08-08 | 2013-08-09 | 83 |  | Денис Митавский |
| 87 | Разработка | 6d | 2013-08-14 | 2013-08-21 | 82 |  | Алексей Львов |
| 89 | Проектирование | 2d | 2013-08-12 | 2013-08-13 | 86 |  | Денис Митавский [50%] |
| 90 | Разработка | 6d | 2013-08-22 | 2013-08-29 | 87 |  | Алексей Львов |
| 93 | Маппинг на объекты | 2d | 2013-08-19 | 2013-08-20 | 92, 84 |  | Андрей Карандей |
| 102 | Остальные для стиля ст.лебедева | 25d? | 2013-10-03 | 2013-11-06 | 101 |  |  |

Changed:

| ID | Task | Start | Finish | Duration | Complete | Total float | Predecessors | Other |
| --- | --- | --- | --- | --- | --- | --- | --- | --- |
| 9 | **Создание модуля "Делопроизводство" (документоориентированная среда)** |  | 2014-03-21 → 2014-03-20 (-1d) | 235d? → 234d? |  | 32d → 33d |  |  |
| 20 | **Проектирование и формирование ядра системы** |  |  |  | 19% → 18% |  |  |  |
| 28 | **DAO** |  | 2013-07-24 → 2013-07-31 (+7d) | 38d? → 43d? |  | 82d → 77d |  |  |
| 33 | DAO - кэш уровня транзакции | 2013-07-18 → 2013-07-25 (+7d) | 2013-07-24 → 2013-07-31 (+7d) |  |  | 82d → 77d |  |  |
| 35 | Поддержка отсортированных дочерних бизнес-объектов | 2013-07-25 → 2013-08-01 (+7d) | 2013-07-31 → 2013-08-07 (+7d) |  |  | 82d → 77d |  |  |
| 54 | **Бизнес-объекты (иерархии доменных объектов)** | 2013-08-06 → 2013-07-23 (-14d) | 2013-08-28 → 2013-08-14 (-14d) |  |  | 112d → 122d |  |  |
| 55 | Проектирование | 2013-08-06 → 2013-07-23 (-14d) | 2013-08-14 → 2013-07-31 (-14d) |  |  | 122d → 132d |  |  |
| 56 | Реализация | 2013-08-14 → 2013-07-31 (-14d) | 2013-08-28 → 2013-08-14 (-14d) |  |  | 112d → 122d |  |  |
| 68 | Поиск |  |  |  |  |  |  | resources Денис Митавский [50%]; Андрей Цветков → Андрей Пирожков [50%]; Андрей Цветков |
| 70 | Расширенный поиск |  |  |  |  |  |  | resources Денис Митавский; Андрей Цветков → Андрей Пирожков; Андрей Цветков |
| 74 | **GUI** | 2013-07-08 A → 2013-07-22 (+14d) | 2013-10-11 → 2013-11-06 (+26d) | 70d? → 78d? | 3% → 0% | 77d → 56d |  |  |
| 76 | Адаптация компонентов GUI из СМ4 для наложения на архитектуру см5 | 2013-07-11 → 2013-07-22 (+11d) | 2013-07-30 → 2013-08-05 (+6d) | 14d → 11d |  | 130d → 44d | none → 75 | was named Стилистическая адаптация компонентов GUI |
| 78 | Интеграция с JAAS/Аутентификация | 2013-07-08 A → 2013-07-31 (+23d) | 2013-07-11 A → 2013-08-06 (+26d) | 4d → 5d | 100% → 0% | none → 115d | none → 77, 81 | resources Денис Митавский [50%] → Андрей Карандей |
| 79 | Архитектура разметки главного экрана | 2013-07-12 → 2013-07-25 (+13d) | 2013-07-12 → 2013-07-26 (+14d) | 1d → 2d |  | 71d → 56d | 78 → 77, 78 | was named Разметка экрана |
| 80 | **Панель навигации** | 2013-07-15 → 2013-07-29 (+14d) | 2013-07-24 → 2013-08-13 (+20d) | 8d → 12d |  | 71d → 56d |  |  |
| 81 | Проектирование - панель навигации | 2013-07-15 → 2013-07-29 (+14d) | 2013-07-16 → 2013-07-30 (+14d) |  |  | 71d → 56d |  |  |
| 82 | Разработка - панель навигации | 2013-07-17 → 2013-08-06 (+20d) | 2013-07-24 → 2013-08-13 (+20d) |  |  | 71d → 108d | 78, 81 → 81, 76 | resources Денис Митавский [50%] → Алексей Львов |
| 83 | GUI - архитектура плагинов/дочерних плагинов | 2013-07-25 → 2013-07-31 (+6d) | 2013-08-05 → 2013-08-07 (+2d) | 8d → 6d |  | 71d → 56d | 82 → 81 | was named GUI - архитектура активностей/дочерних активностей; resources Денис Митавский [50%] → Денис Митавский |
| 84 | GUI - отображение отчётов | 2013-08-05 → 2013-08-07 (+2d) | 2013-08-14 → 2013-08-16 (+2d) |  |  | 119d → 115d | 73 → 83FS-2d, 78 | resources Андрей Цветков → Андрей Карандей |
| 85 | **GUI - плагин отображения коллекций** | 2013-08-06 → 2013-08-08 (+2d) | 2013-08-15 → 2013-08-21 (+6d) | 8d → 10d |  | 71d → 56d |  | was named GUI - отображение коллекций активность; resources Денис Митавский [50%] → none |
| 88 | **GUI - действия** | 2013-08-16 → 2013-08-12 (-4d) | 2013-08-27 → 2013-08-29 (+2d) | 8d → 14d |  | 71d → 56d | 85 → none | resources Денис Митавский [50%] → none |
| 91 | **Формы встроенного GUI** | 2013-08-28 → 2013-08-14 (-14d) | 2013-09-20 → 2013-09-13 (-7d) | 18d → 23d |  | 71d → 56d |  |  |
| 92 | Конфигурация-архитектура | 2013-08-28 → 2013-08-14 (-14d) | 2013-08-30 → 2013-08-16 (-14d) |  |  | 71d → 56d | 88 → 89 | was named Конфигурация |
| 94 | API GWT client-server | 2013-09-02 → 2013-08-19 (-14d) | 2013-09-06 → 2013-08-28 (-9d) | 5d → 8d |  | 71d → 56d |  | was named API; resources Денис Митавский [50%] → Денис Митавский |
| 95 | Реализация | 2013-09-09 → 2013-08-29 (-11d) | 2013-09-20 → 2013-09-13 (-7d) | 10d → 12d |  | 88d → 92d |  |  |
| 96 | **GUI - поиск** | 2013-09-09 → 2013-08-29 (-11d) | 2013-09-26 → 2013-09-20 (-6d) | 14d → 17d |  | 71d → 78d |  |  |
| 97 | GUI - поиск. Проектирование | 2013-09-09 → 2013-08-29 (-11d) | 2013-09-11 → 2013-09-02 (-9d) |  |  | 71d → 78d |  |  |
| 98 | GUI - поиск. Реализация | 2013-09-23 → 2013-09-16 (-7d) | 2013-09-26 → 2013-09-20 (-6d) | 4d → 5d |  | 88d → 92d |  |  |
| 99 | **GUI - виджеты разработка** | 2013-09-09 → 2013-08-29 (-11d) | 2013-10-11 → 2013-11-06 (+26d) | 25d? → 50d? |  | 77d → 56d |  | was named GUI - виджеты разработка (базовый набор) |
| 100 | Дата/время | 2013-09-09 → 2013-08-29 (-11d) | 2013-09-09 → 2013-08-29 (-11d) |  |  | 101d → 108d |  |  |
| 101 | Остальные без особенностей стиля ст.лебедева (базовый набор) | 2013-09-09 → 2013-08-29 (-11d) | 2013-10-11 → 2013-10-02 (-9d) |  |  | 77d → 56d |  | was named Остальные |
| 103 | **GUI - брендинг, стилизация, темы** | 2013-09-12 → 2013-10-03 (+21d) | 2013-09-18 → 2013-10-09 (+21d) |  |  | 71d → 56d |  |  |
| 104 | Концепция | 2013-09-12 → 2013-10-03 (+21d) | 2013-09-18 → 2013-10-09 (+21d) |  |  | 71d → 56d | 97 → 97, 101 |  |
| 105 | Тестирование производительности | 2013-09-19 → 2013-10-10 (+21d) | 2013-10-23 → 2013-11-13 (+21d) |  |  | 71d → 56d |  |  |
| 106 | Версионность/аудит | 2013-08-01 → 2013-08-08 (+7d) | 2013-08-12 → 2013-08-19 (+7d) |  |  | 82d → 77d |  |  |
| 107 | Блокировки бизнес-объектов | 2013-08-13 → 2013-08-20 (+7d) | 2013-08-20 → 2013-08-27 (+7d) |  |  | 82d → 77d |  |  |
| 109 | Уточнение состава и сроков работ | 2013-10-14 → 2013-11-07 (+24d) | 2013-10-15 → 2013-11-08 (+24d) |  |  | 77d → 59d |  |  |
| 110 | Кросс-СУБД, поддержка Oracle | 2013-08-21 → 2013-08-28 (+7d) | 2013-09-10 → 2013-09-17 (+7d) |  |  | 82d → 77d |  |  |
| 111 | SQL-trace | 2013-09-11 → 2013-09-18 (+7d) | 2013-09-17 → 2013-09-24 (+7d) |  |  | 82d → 77d |  |  |
| 112 | Локализация (на уровне конфигурации) | 2013-09-18 → 2013-09-25 (+7d) | 2013-10-08 → 2013-10-15 (+7d) |  |  | 82d → 77d |  |  |
| 113 | **Интеграция с системой управления учетными записями** | 2013-08-21 → 2013-08-28 (+7d) | 2013-09-09 → 2013-09-16 (+7d) |  |  | 103d → 98d |  |  |
| 114 | Интеграция с ActiveDirectory | 2013-08-21 → 2013-08-28 (+7d) | 2013-09-09 → 2013-09-16 (+7d) |  |  | 103d → 98d |  |  |
| 115 | **Расширение функций сервиса конфигурации** |  | 2013-08-08 → 2013-08-15 (+7d) | 23d → 28d | 13% → 32% | 110d → 105d |  |  |
| 116 | Расширяемость конфигурации |  | 2013-07-17 → 2013-07-24 (+7d) | 7d → 12d | 43% → 75% | 82d → 77d |  |  |
| 117 | Изменение и дополнение конфигурации системы | 2013-07-18 → 2013-07-25 (+7d) | 2013-08-08 → 2013-08-15 (+7d) |  |  | 110d → 105d |  |  |
| 118 | **Сервис для работы с системным журналом** | 2013-08-09 → 2013-08-16 (+7d) | 2013-08-29 → 2013-09-05 (+7d) |  |  | 110d → 105d |  |  |
| 119 | Ведение журнала действий пользователей и действий с объектами системы | 2013-08-09 → 2013-08-16 (+7d) | 2013-08-22 → 2013-08-29 (+7d) |  |  | 110d → 105d |  |  |
| 120 | Настройка уровня логирования | 2013-08-23 → 2013-08-30 (+7d) | 2013-08-29 → 2013-09-05 (+7d) |  |  | 110d → 105d |  |  |
| 121 | **Разработка** |  | 2014-03-21 → 2014-03-20 (-1d) | 204d → 203d |  | 32d → 33d |  |  |
| 122 | Контроль и корректировка технических решений "Архитектурный комитет" |  | 2014-03-21 → 2014-03-20 (-1d) |  |  | 32d → 33d |  |  |

## Version 18 (saved 2013-07-31)

Note of the change: Актуализация от 25

Last finish stays 2014-05-06. Complete tasks 21 → 23.

Changed:

| ID | Task | Start | Finish | Duration | Complete | Total float | Predecessors |
| --- | --- | --- | --- | --- | --- | --- | --- |
| 9 | **Создание модуля "Делопроизводство" (документоориентированная среда)** |  |  |  | 11% → 12% |  |  |
| 20 | **Проектирование и формирование ядра системы** |  |  |  | 18% → 19% |  |  |
| 62 | **Сервис работы с вложениями** | 2013-07-11 A | 2013-07-17 → 2013-07-25 (+8d) | 5d → 11d | 0% → 99% | 134d → 135d |  |
| 64 | API | 2013-07-11 A | 2013-07-12 → 2013-07-17 A (+5d) | 2d → 5d | 0% → 100% | 134d → none |  |
| 65 | Реализация | 2013-07-15 → 2013-07-18 A (+3d) | 2013-07-17 → 2013-07-25 A (+8d) | 3d → 6d | 0% → 100% | 134d → none |  |
| 79 | Архитектура разметки главного экрана |  |  |  |  |  | 77, 78 → 77 |
| 81 | Проектирование - панель навигации |  |  |  |  |  | 79, 78 → 79 |

## Version 19 (saved 2013-08-06)

Note of the change: Обновление плана работ

Last finish stays 2014-05-06. Complete tasks 23 → 30.

Added:

| ID | Task | Duration | Start | Finish | Predecessors | Constraint | Resources |
| --- | --- | --- | --- | --- | --- | --- | --- |
| 66 | Исследования по перехватчику конца транзакции | 5d | 2013-07-29 A | 2013-08-02 A | 65 |  | Влад Симоненко |
| 67 | Чистка файлов в случае отката транзакции | 3d | 2013-08-05 A | 2013-08-07 | 66 |  | Влад Симоненко |
| 79 | Изучение GWT/Настройка CMJ 4 для дебага | 4d | 2013-08-05 | 2013-08-08 |  | start no earlier than 2013-08-05 | Андрей Карандей |

Changed:

| ID | Task | Start | Finish | Duration | Complete | Total float | Predecessors | Other |
| --- | --- | --- | --- | --- | --- | --- | --- | --- |
| 1 | **Разработка второй версии CM4/5** |  |  |  | 9% → 13% |  |  |  |
| 9 | **Создание модуля "Делопроизводство" (документоориентированная среда)** |  | 2014-03-20 → 2014-03-28 (+8d) | 234d? → 240d? | 12% → 16% | 33d → 27d |  |  |
| 20 | **Проектирование и формирование ядра системы** |  | 2013-11-14 → 2013-11-26 (+12d) | 144d? → 152d? | 19% → 26% | 55d → 47d |  |  |
| 38 | **Права доступа** |  |  |  | 44% → 86% | 106d → 124d |  |  |
| 39 | Права - оптимизация хранения (проектирование) |  |  |  | 79% → 96% | 36d → 143d |  |  |
| 40 | Описание существующими декларативными средствами конфигурации | 2013-07-16 A | 2013-07-26 A |  | 0% → 100% | 106d → none |  |  |
| 41 | Автофильтрация | 2013-07-29 A |  |  | 0% → 50% |  |  |  |
| 42 | **Workflow - интеграция с Activiti** |  | 2013-08-21 → 2013-08-28 (+7d) | 54d → 59d | 10% → 30% | 36d → 31d |  |  |
| 43 | Проектирование |  | 2013-07-24 A |  | 30% → 100% | 36d → none |  |  |
| 44 | Разработка |  | 2013-08-21 → 2013-08-28 (+7d) | 20d → 23d |  | 36d → 31d |  |  |
| 46 | **Коллекции** |  | 2013-07-02 → 2013-08-28 (+57d) | 25d → 66d | 62% → 56% | 129d → 88d |  |  |
| 50 | ПКД | 2013-06-18 → 2013-08-07 (+50d) | 2013-07-02 → 2013-08-28 (+57d) | 11d → 14d |  | 119d → 88d | 48 → 48, 45 |  |
| 51 | **Действия** |  | 2013-09-04 → 2013-09-11 (+7d) | 18d → 23d |  | 106d → 101d |  |  |
| 53 | Реализация |  | 2013-09-04 → 2013-09-11 (+7d) | 14d → 19d |  | 106d → 101d |  |  |
| 54 | **Бизнес-объекты (иерархии доменных объектов)** | 2013-07-23 → 2013-07-24 A (+1d) | 2013-08-14 → 2013-08-27 (+13d) | 16d → 24d | 0% → 53% | 122d → 113d |  |  |
| 55 | Проектирование | 2013-07-23 → 2013-07-24 A (+1d) | 2013-07-31 → 2013-07-30 A (-1d) | 6d → 5d | 0% → 100% | 132d → none |  | resources Сергей Кашанский → Андрей Пирожков [20%] |
| 56 | Реализация | 2013-07-31 A | 2013-08-14 → 2013-08-27 (+13d) |  | 0% → 30% | 122d → 113d |  | resources Сергей Кашанский → Андрей Пирожков |
| 57 | **Слой сопряжения GUI CM4** |  | 2013-11-14 → 2013-11-19 (+5d) | 103d → 106d |  | 55d → 52d |  |  |
| 60 | Реализация коннекторов к платформе | 2013-07-31 → 2013-08-05 (+5d) | 2013-11-05 → 2013-11-08 (+3d) |  |  | 55d → 52d | 58, 59 → 58, 59FS+3d |  |
| 61 | Сопряжение - работа с вложениями | 2013-11-06 → 2013-11-11 (+5d) | 2013-11-14 → 2013-11-19 (+5d) |  |  | 55d → 52d | 65, 60 → 60, 67 |  |
| 62 | **Сервис работы с вложениями** |  | 2013-07-25 → 2013-08-07 (+13d) | 11d → 20d |  | 135d → 119d |  |  |
| 63 | Принято решение о проектировании сервиса обработки вложений | 2013-07-11 A | 2013-07-11 A |  | 0% → 100% | 134d → none |  |  |
| 65 | Реализация |  | 2013-07-25 A → 2013-07-26 A (+1d) | 6d → 7d |  |  |  |  |
| 68 | **Поиск** | 2013-07-29 A | 2013-09-03 → 2013-09-17 (+14d) | 26d → 36d | 0% → 10% | 33d → 97d |  |  |
| 70 | Поиск | 2013-07-30 A | 2013-08-19 → 2013-08-26 (+7d) | 15d → 16d | 0% → 25% | 112d → 97d |  |  |
| 71 | Полнотекстовый поиск | 2013-07-30 → 2013-08-13 (+14d) | 2013-08-26 → 2013-09-09 (+14d) |  |  | 107d → 97d | 69 → 69, 70FS-10d |  |
| 72 | Расширенный поиск | 2013-08-27 → 2013-09-10 (+14d) | 2013-09-03 → 2013-09-17 (+14d) |  |  | 107d → 97d |  |  |
| 73 | **Работа с отчетами** | 2013-07-03 → 2013-08-29 (+57d) | 2013-08-02 → 2013-09-30 (+59d) |  |  | 129d → 88d |  |  |
| 74 | JDBC-драйвер для системы построения отчётов | 2013-07-03 → 2013-08-29 (+57d) | 2013-07-12 → 2013-09-09 (+59d) |  |  | 119d → 88d |  |  |
| 75 | Интеграция с Jasper Reports | 2013-07-15 → 2013-09-10 (+57d) | 2013-08-02 → 2013-09-30 (+59d) |  |  | 119d → 88d |  |  |
| 76 | **GUI** | 2013-07-22 A | 2013-11-06 → 2013-11-19 (+13d) | 78d? → 87d? | 0% → 5% | 56d → 50d |  |  |
| 78 | Адаптация компонентов GUI из СМ4 для наложения на архитектуру см5 |  | 2013-08-05 → 2013-08-16 (+11d) | 11d → 20d |  | 44d → 99d |  |  |
| 80 | Разработка базовой архитектуры GUI на основе GWT-компонентов | 2013-07-22 A | 2013-07-24 A |  | 0% → 100% | 44d → none |  |  |
| 81 | Интеграция с JAAS/Аутентификация | 2013-07-31 A | 2013-08-06 A |  | 0% → 100% | 115d → none | 80, 84 → 80 | resources Андрей Карандей → Денис Митавский |
| 82 | Архитектура разметки главного экрана | 2013-07-25 → 2013-08-07 (+13d) | 2013-07-26 → 2013-08-08 (+13d) |  |  | 56d → 47d | 80 → 81 |  |
| 83 | **Панель навигации** | 2013-07-29 → 2013-08-09 (+11d) | 2013-08-13 → 2013-08-26 (+13d) |  |  | 56d → 47d |  |  |
| 84 | Проектирование - панель навигации | 2013-07-29 → 2013-08-09 (+11d) | 2013-07-30 → 2013-08-12 (+13d) |  |  | 56d → 47d |  |  |
| 85 | Разработка - панель навигации | 2013-08-06 → 2013-08-19 (+13d) | 2013-08-13 → 2013-08-26 (+13d) |  |  | 108d → 99d |  |  |
| 86 | GUI - архитектура плагинов/дочерних плагинов | 2013-07-31 → 2013-08-13 (+13d) | 2013-08-07 → 2013-08-20 (+13d) |  |  | 56d → 47d |  |  |
| 87 | GUI - отображение отчётов | 2013-08-07 → 2013-08-19 (+12d) | 2013-08-16 → 2013-08-28 (+12d) |  |  | 115d → 107d |  |  |
| 88 | **GUI - плагин отображения коллекций** | 2013-08-08 → 2013-08-21 (+13d) | 2013-08-21 → 2013-09-03 (+13d) |  |  | 56d → 47d |  |  |
| 89 | Проектирование | 2013-08-08 → 2013-08-21 (+13d) | 2013-08-09 → 2013-08-22 (+13d) |  |  | 56d → 47d |  |  |
| 90 | Разработка | 2013-08-14 → 2013-08-27 (+13d) | 2013-08-21 → 2013-09-03 (+13d) |  |  | 108d → 99d |  |  |
| 91 | **GUI - действия** | 2013-08-12 → 2013-08-23 (+11d) | 2013-08-29 → 2013-09-11 (+13d) |  |  | 56d → 47d |  |  |
| 92 | Проектирование | 2013-08-12 → 2013-08-23 (+11d) | 2013-08-13 → 2013-08-26 (+13d) |  |  | 56d → 47d |  |  |
| 93 | Разработка | 2013-08-22 → 2013-09-04 (+13d) | 2013-08-29 → 2013-09-11 (+13d) |  |  | 108d → 99d |  |  |
| 94 | **Формы встроенного GUI** | 2013-08-14 → 2013-08-27 (+13d) | 2013-09-13 → 2013-09-26 (+13d) |  |  | 56d → 47d |  |  |
| 95 | Конфигурация-архитектура | 2013-08-14 → 2013-08-27 (+13d) | 2013-08-16 → 2013-08-29 (+13d) |  |  | 56d → 47d |  |  |
| 96 | Маппинг на объекты | 2013-08-19 → 2013-08-30 (+11d) | 2013-08-20 → 2013-09-02 (+13d) |  |  | 115d → 106d |  |  |
| 97 | API GWT client-server | 2013-08-19 → 2013-08-30 (+11d) | 2013-08-28 → 2013-09-10 (+13d) |  |  | 56d → 47d |  |  |
| 98 | Реализация | 2013-08-29 → 2013-09-11 (+13d) | 2013-09-13 → 2013-09-26 (+13d) |  |  | 92d → 83d |  |  |
| 99 | **GUI - поиск** | 2013-08-29 → 2013-09-11 (+13d) | 2013-09-20 → 2013-10-03 (+13d) |  |  | 78d → 69d |  |  |
| 100 | GUI - поиск. Проектирование | 2013-08-29 → 2013-09-11 (+13d) | 2013-09-02 → 2013-09-13 (+11d) |  |  | 78d → 69d |  |  |
| 101 | GUI - поиск. Реализация | 2013-09-16 → 2013-09-27 (+11d) | 2013-09-20 → 2013-10-03 (+13d) |  |  | 92d → 83d |  |  |
| 102 | **GUI - виджеты разработка** | 2013-08-29 → 2013-09-11 (+13d) | 2013-11-06 → 2013-11-19 (+13d) |  |  | 56d → 47d |  |  |
| 103 | Дата/время | 2013-08-29 → 2013-09-11 (+13d) | 2013-08-29 → 2013-09-11 (+13d) |  |  | 108d → 99d |  |  |
| 104 | Остальные без особенностей стиля ст.лебедева (базовый набор) | 2013-08-29 → 2013-09-11 (+13d) | 2013-10-02 → 2013-10-15 (+13d) |  |  | 56d → 47d |  | resources none → Тимофей Билый; Алексей Львов |
| 105 | Остальные для стиля ст.лебедева | 2013-10-03 → 2013-10-16 (+13d) | 2013-11-06 → 2013-11-19 (+13d) |  |  | 59d → 50d |  | resources none → Андрей Карандей; Алексей Львов |
| 106 | **GUI - брендинг, стилизация, темы** | 2013-10-03 → 2013-10-16 (+13d) | 2013-10-09 → 2013-10-22 (+13d) |  |  | 56d → 47d |  |  |
| 107 | Концепция | 2013-10-03 → 2013-10-16 (+13d) | 2013-10-09 → 2013-10-22 (+13d) |  |  | 56d → 47d |  |  |
| 108 | Тестирование производительности | 2013-10-10 → 2013-10-23 (+13d) | 2013-11-13 → 2013-11-26 (+13d) |  |  | 56d → 47d |  |  |
| 112 | Уточнение состава и сроков работ | 2013-11-07 → 2013-11-20 (+13d) | 2013-11-08 → 2013-11-21 (+13d) |  |  | 59d → 50d |  |  |
| 124 | **Разработка** |  | 2014-03-20 → 2014-03-28 (+8d) | 203d → 209d | 3% → 7% | 33d → 27d |  |  |
| 125 | Контроль и корректировка технических решений "Архитектурный комитет" |  | 2014-03-20 → 2014-03-28 (+8d) | 203d → 208d | 10% → 20% | 33d → 27d |  |  |
| 126 | **Разработка серверной логики модуля CMJ** | 2013-08-27 → 2013-08-29 (+2d) | 2013-11-18 → 2013-11-20 (+2d) |  |  | 33d → 31d |  |  |
| 127 | Разработка схем документов модуля CMJ | 2013-08-27 → 2013-08-29 (+2d) | 2013-10-21 → 2013-10-23 (+2d) |  |  | 33d → 31d |  |  |
| 128 | Разработка ЖЦ процессов модуля (WF) | 2013-10-22 → 2013-10-24 (+2d) | 2013-11-18 → 2013-11-20 (+2d) |  |  | 33d → 31d |  |  |
| 129 | Разработка логики бизнес- действий модуля CMJ | 2013-08-27 → 2013-08-29 (+2d) | 2013-11-18 → 2013-11-20 (+2d) |  |  | 33d → 31d |  |  |
| 130 | Разработка процессов автоматизации для модуля CMJ | 2013-08-27 → 2013-08-29 (+2d) | 2013-10-21 → 2013-10-23 (+2d) |  |  | 91d → 89d |  |  |
| 131 | Разработка модели прав доступа (контекстные роли) | 2013-10-22 → 2013-10-24 (+2d) | 2013-11-18 → 2013-11-20 (+2d) |  |  | 71d → 69d |  |  |

| ID | Task | Start | Finish | Duration | Total float |
| --- | --- | --- | --- | --- | --- |
| 132 | **Разработка Форм для АРМ тематических администраторов** | 2013-11-06 → 2013-11-11 (+5d) | 2013-12-31 → 2014-01-03 (+3d) |  | 90d → 87d |
| 133 | **Подготовка работы со списками значений** | 2013-11-06 → 2013-11-11 (+5d) | 2013-12-31 → 2014-01-03 (+3d) |  | 90d → 87d |
| 134 | Разработка функционала учета организационно штатной структуры | 2013-11-06 → 2013-11-11 (+5d) | 2013-12-31 → 2014-01-03 (+3d) |  | 90d → 87d |
| 135 | Разработка функционала с рубрикаторами (сложные справочники) | 2013-11-06 → 2013-11-11 (+5d) | 2013-12-03 → 2013-12-06 (+3d) |  | 90d → 87d |
| 136 | Разработка функционала для работы с словарями данных (простые, линейные справочники) | 2013-12-04 → 2013-12-09 (+5d) | 2013-12-31 → 2014-01-03 (+3d) |  | 90d → 87d |
| 137 | Разработка форм для работы в GUI (настройки форм) | 2013-11-06 → 2013-11-11 (+5d) | 2013-11-26 → 2013-11-29 (+3d) |  | 110d → 107d |
| 138 | Разработка структуры рабочего места АРМ | 2013-11-27 → 2013-12-02 (+5d) | 2013-12-03 → 2013-12-06 (+3d) |  | 110d → 107d |
| 139 | Разработка специфичных для форм АРМ элементов GUI | 2013-11-06 → 2013-11-11 (+5d) | 2013-12-03 → 2013-12-06 (+3d) |  | 110d → 107d |
| 140 | Подготовка отчетов | 2013-11-19 → 2013-11-21 (+2d) | 2014-01-13 → 2014-01-15 (+2d) |  | 33d → 31d |
| 141 | Сопряжение с мобильным клиентом СМ4 | 2013-11-19 → 2013-11-21 (+2d) | 2014-01-27 → 2014-01-29 (+2d) |  | 71d → 69d |
| 142 | **Тестирование** | 2013-11-15 → 2013-11-27 (+12d) | 2014-03-20 → 2014-03-24 (+4d) | 90d? → 84d? | 33d → 31d |
| 143 | **Функциональное тестирование** | 2013-11-15 → 2013-11-27 (+12d) | 2014-02-27 → 2014-03-03 (+4d) | 75d? → 69d? | 48d → 46d |
| 144 | Подготовка ПМИ | 2013-11-15 → 2013-11-27 (+12d) | 2013-11-21 → 2013-12-03 (+12d) |  | 55d → 47d |
| 145 | Разработка "сценариев тестирования" | 2013-11-15 → 2013-11-27 (+12d) | 2013-12-05 → 2013-12-17 (+12d) |  | 60d → 52d |
| 146 | Разработка модели нагрузки для тестирования | 2013-11-22 → 2013-12-04 (+12d) | 2013-12-05 → 2013-12-17 (+12d) |  | 60d → 52d |
| 147 | Адаптация автоматизированных сценариев от СМ4 для создания нагрузки | 2013-11-22 → 2013-12-04 (+12d) | 2013-12-26 → 2014-01-07 (+12d) |  | 55d → 47d |
| 148 | **Проведение тестирования** | 2014-01-07 → 2014-01-09 (+2d) | 2014-02-27 → 2014-03-03 (+4d) |  | 38d → 36d |
| 149 | **Подготовка среды тестирования** | 2014-01-07 → 2014-01-09 (+2d) | 2014-01-27 → 2014-01-29 (+2d) |  | 38d → 36d |
| 150 | Разворачивание системы | 2014-01-07 → 2014-01-09 (+2d) | 2014-01-14 → 2014-01-16 (+2d) |  | 81d → 79d |
| 151 | Система готова для подключения инструментов мониторинга | 2014-01-14 → 2014-01-16 (+2d) | 2014-01-14 → 2014-01-16 (+2d) |  | 81d → 79d |
| 152 | Наполнение данными | 2014-01-14 → 2014-01-16 (+2d) | 2014-01-27 → 2014-01-29 (+2d) |  | 33d → 31d |
| 153 | Среда тестирования готова | 2014-01-27 → 2014-01-29 (+2d) | 2014-01-27 → 2014-01-29 (+2d) |  | 33d → 31d |
| 154 | Проведение тестирования | 2014-01-28 → 2014-01-30 (+2d) | 2014-02-10 → 2014-02-12 (+2d) |  | 33d → 31d |
| 155 | **Обработка результатов тестирования и внесение изменений в модуль** | 2014-02-07 → 2014-02-11 (+4d) | 2014-02-27 → 2014-03-03 (+4d) |  | 33d → 31d |
| 156 | Устранение замечаний по результатам функционального тестирования | 2014-02-07 → 2014-02-11 (+4d) | 2014-02-27 → 2014-03-03 (+4d) |  | 33d → 31d |
| 157 | Проверка устранения замечаний | 2014-02-20 → 2014-02-24 (+4d) | 2014-02-27 → 2014-03-03 (+4d) |  | 33d → 31d |
| 158 | **Нагрузочное тестирование** | 2014-02-10 → 2014-02-12 (+2d) | 2014-03-20 → 2014-03-24 (+4d) |  | 33d → 31d |
| 159 | Стенд для нагрузочного тестирования подготовлен | 2014-02-10 → 2014-02-12 (+2d) | 2014-02-10 → 2014-02-12 (+2d) |  | 46d → 44d |
| 160 | Проведения нагрузочного тестирования | 2014-02-28 → 2014-03-04 (+4d) | 2014-03-13 → 2014-03-17 (+4d) |  | 33d → 31d |
| 161 | Обработка результатов нагрузочного тестирования | 2014-03-14 → 2014-03-18 (+4d) | 2014-03-20 → 2014-03-24 (+4d) |  | 33d → 31d |
| 162 | Разработка модуля "Делопроизводство" завершена | 2014-03-20 → 2014-03-24 (+4d) | 2014-03-20 → 2014-03-24 (+4d) |  | 33d → 31d |
| 163 | **Подготовка документации** | 2013-11-15 → 2013-11-27 (+12d) | 2014-03-06 → 2014-03-18 (+12d) |  | 43d → 35d |
| 164 | Разработка документа "Концепция системы " | 2013-11-15 → 2013-11-27 (+12d) | 2014-01-09 → 2014-01-21 (+12d) |  | 43d → 35d |
| 165 | Разработка "Software Architecture Document" | 2014-01-10 → 2014-01-22 (+12d) | 2014-03-06 → 2014-03-18 (+12d) |  | 43d → 35d |
| 166 | Документы подготовлены | 2014-03-06 → 2014-03-18 (+12d) | 2014-03-06 → 2014-03-18 (+12d) |  | 43d → 35d |
| 167 | Разработка "Software Architecture Document" для модулей первой очереди | 2013-11-15 → 2013-11-27 (+12d) | 2013-12-12 → 2013-12-24 (+12d) |  | 103d → 95d |
| 168 | Документы подготовлены | 2013-12-12 → 2013-12-24 (+12d) | 2013-12-12 → 2013-12-24 (+12d) |  | 103d → 95d |
| 169 | **Проверка работоспособности решения - Организация демонстрации** | 2014-01-07 → 2014-01-09 (+2d) | 2014-02-10 → 2014-02-12 (+2d) |  | 61d → 59d |
| 170 | Подготовка стенда | 2014-01-07 → 2014-01-09 (+2d) | 2014-01-09 → 2014-01-13 (+4d) |  | 83d → 81d |
| 171 | Подготовка прототипа | 2014-01-07 → 2014-01-09 (+2d) | 2014-02-03 → 2014-02-05 (+2d) |  | 61d → 59d |
| 172 | Проведение демонстраций | 2014-02-04 → 2014-02-06 (+2d) | 2014-02-06 → 2014-02-10 (+4d) |  | 61d → 59d |
| 173 | Анализ результатов - выводы | 2014-02-07 → 2014-02-11 (+4d) | 2014-02-10 → 2014-02-12 (+2d) |  | 61d → 59d |

## Version 20 (saved 2013-08-09)

Note of the change: Merge branch 'master' of ssh://89.175.40.143/srv/repos/git/CM5

Last finish stays 2014-05-06. Complete tasks 30 → 28.

Added:

| ID | Task | Duration | Start | Finish | Predecessors | Constraint | Resources |
| --- | --- | --- | --- | --- | --- | --- | --- |
| 35 | Расширение CRUD для интеграции с CMJ | 5d | 2013-08-08 | 2013-08-14 |  | start no earlier than 2013-08-08 | Андрей Карандей |
| 47 | Проектирование функции "Наследование" | 2d | 2013-08-09 | 2013-08-12 |  | finish no earlier than 2013-08-12 | Андрей Пирожков |
| 48 | Разработка функции "Наследование" | 5d | 2013-08-13 | 2013-08-19 | 47 |  | Валерий Мацукевич |
| 60 | Реализация 2 | 10d | 2013-08-27 | 2013-09-10 | 58 |  | Влад Симоненко |

Changed:

| ID | Task | Start | Finish | Duration | Complete | Total float | Predecessors | Other |
| --- | --- | --- | --- | --- | --- | --- | --- | --- |
| 1 | **Разработка версии CM4/5** |  |  |  |  |  |  | was named Разработка второй версии CM4/5 |
| 39 | **Права доступа** |  | 2013-08-09 → 2013-08-16 (+7d) | 43d → 48d | 86% → 83% | 124d → 101d |  |  |
| 41 | Описание существующими декларативными средствами конфигурации |  | 2013-07-26 A → 2013-08-09 (+14d) | 9d → 19d | 100% → 85% | none → 101d |  |  |
| 42 | Автофильтрация |  | 2013-08-09 → 2013-08-16 (+7d) |  |  | 106d → 101d |  |  |
| 43 | **Workflow - интеграция с Activiti** |  |  |  | 30% → 29% |  |  |  |
| 44 | Проектирование |  | 2013-07-24 A → 2013-07-24 |  | 100% → 95% | none → 36d |  |  |
| 46 | **Наследование ???** | 2013-07-25 → 2013-08-09 (+15d) | 2013-08-06 → 2013-08-19 (+13d) | 9d → 7d |  | 93d → 84d |  |  |
| 49 | **Коллекции** |  | 2013-08-28 → 2013-09-09 (+12d) | 66d → 74d | 56% → 55% | 88d → 80d |  |  |
| 53 | ПКД | 2013-08-07 → 2013-08-20 (+13d) | 2013-08-28 → 2013-09-09 (+12d) | 14d → 15d |  | 88d → 80d |  |  |
| 54 | **Действия** | 2013-08-12 → 2013-08-26 (+14d) | 2013-09-11 → 2013-09-18 (+7d) | 23d → 18d |  | 101d → 96d |  |  |
| 55 | Концепция | 2013-08-12 → 2013-08-26 (+14d) | 2013-08-15 → 2013-08-29 (+14d) |  |  | 106d → 96d |  |  |
| 56 | Реализация | 2013-08-16 → 2013-08-30 (+14d) | 2013-09-11 → 2013-09-18 (+7d) | 19d → 14d |  | 101d → 96d |  |  |
| 57 | **Бизнес-объекты (иерархии доменных объектов)** |  | 2013-08-27 → 2013-09-10 (+14d) | 24d → 34.25d | 53% → 34% | 113d → 102.75d |  |  |
| 58 | Проектирование |  | 2013-07-30 A → 2013-08-27 (+28d) | 5d → 10d | 100% → 48% | none → 102.75d | 59SF → 59SF, 47 |  |
| 59 | Реализация1 |  | 2013-08-27 A | 10d → 3d | 30% → 100% | 113d → none |  | was named Реализация |
| 77 | **Работа с отчетами** | 2013-08-29 → 2013-09-10 (+12d) | 2013-09-30 → 2013-10-10 (+10d) |  |  | 88d → 80d |  |  |
| 78 | JDBC-драйвер для системы построения отчётов | 2013-08-29 → 2013-09-10 (+12d) | 2013-09-09 → 2013-09-19 (+10d) |  |  | 88d → 80d |  |  |
| 79 | Интеграция с Jasper Reports | 2013-09-10 → 2013-09-20 (+10d) | 2013-09-30 → 2013-10-10 (+10d) |  |  | 88d → 80d |  |  |

## Version 21 (saved 2013-08-14)

Note of the change: изменения за 12.08

Last finish stays 2014-05-06. Complete tasks 28 → 33.

Changed:

| ID | Task | Start | Finish | Duration | Complete | Total float | Predecessors | Other |
| --- | --- | --- | --- | --- | --- | --- | --- | --- |
| 1 | **Разработка версии CM4/5** |  |  |  | 13% → 15% |  |  |  |
| 4 | **Управление требованиями** |  |  |  | 6% → 27% |  |  |  |
| 6 | Формирование скоупа проекта _ верхний уровень |  | 2013-06-14 A |  | 73% → 100% | 54d → none |  |  |
| 7 | Скоуп на систему сформирован и утвержден | 2013-06-21 A | 2013-06-21 A |  | 0% → 100% | 54d → none |  |  |
| 8 | Сопровождение требований | 2013-06-24 A |  |  | 0% → 20% |  |  |  |
| 9 | **Создание модуля "Делопроизводство" (документоориентированная среда)** |  |  |  | 16% → 17% |  |  |  |
| 20 | **Проектирование и формирование ядра системы** |  | 2013-11-26 → 2013-11-27 (+1d) | 152d? → 153d? | 26% → 27% | 47d → 46d |  |  |
| 46 | **Наследование ???** | 2013-08-09 A |  |  | 0% → 29% |  |  |  |
| 47 | Проектирование функции "Наследование" | 2013-08-09 A | 2013-08-12 A |  | 0% → 100% | 84d → none |  |  |
| 57 | **Бизнес-объекты (иерархии доменных объектов)** |  | 2013-09-10 → 2013-08-30 (-11d) | 34.25d → 27.25d | 34% → 37% | 102.75d → 109.75d |  |  |
| 58 | Проектирование |  | 2013-08-27 → 2013-08-16 (-11d) | 10d → 8d | 48% → 59% | 102.75d → 109.75d |  |  |
| 60 | Реализация 2 | 2013-08-27 → 2013-08-16 (-11d) | 2013-09-10 → 2013-08-30 (-11d) |  |  | 102.75d → 109.75d |  |  |
| 61 | **Слой сопряжения GUI CM4** | 2013-06-25 → 2013-08-05 A (+41d) | 2013-11-19 → 2013-11-27 (+8d) | 106d → 83d |  | 52d → 46d |  |  |
| 62 | Решение принято и ресурсы достуны | 2013-07-31 → 2013-08-05 A (+5d) | 2013-07-31 → 2013-08-05 A (+5d) |  | 0% → 100% | 52d → none |  | was named Проектиирование выполнено и ресурсы достуны; constraint start no earlier than 2013-07-31 → start no earlier than 2013-08-05 |
| 63 | Реализация коннекторов к платформе | 2013-08-05 → 2013-08-08 (+3d) | 2013-11-08 → 2013-11-13 (+5d) |  |  | 52d → 46d | 65, 62FS+3d → 62FS+3d |  |
| 64 | Сопряжение - работа с вложениями | 2013-11-11 → 2013-11-14 (+3d) | 2013-11-19 → 2013-11-22 (+3d) |  |  | 52d → 46d |  |  |
| 65 | REST-протокол для АРМа - проектирование | 2013-06-25 → 2013-11-25 (+153d) | 2013-06-27 → 2013-11-27 (+153d) |  |  | 78d → 46d | 31 → 31, 64 |  |
| 66 | **Сервис работы с вложениями** |  | 2013-08-07 → 2013-08-09 A (+2d) | 20d → 22d | 99% → 100% | 119d → none |  |  |
| 71 | Чистка файлов в случае отката транзакции |  | 2013-08-07 → 2013-08-09 A (+2d) | 3d → 5d | 90% → 100% | 119d → none |  |  |
| 136 | **Разработка Форм для АРМ тематических администраторов** | 2013-11-11 → 2013-11-14 (+3d) | 2014-01-03 → 2014-01-08 (+5d) |  |  | 87d → 84d |  |  |
| 137 | **Подготовка работы со списками значений** | 2013-11-11 → 2013-11-14 (+3d) | 2014-01-03 → 2014-01-08 (+5d) |  |  | 87d → 84d |  |  |
| 138 | Разработка функционала учета организационно штатной структуры | 2013-11-11 → 2013-11-14 (+3d) | 2014-01-03 → 2014-01-08 (+5d) |  |  | 87d → 84d |  |  |
| 139 | Разработка функционала с рубрикаторами (сложные справочники) | 2013-11-11 → 2013-11-14 (+3d) | 2013-12-06 → 2013-12-11 (+5d) |  |  | 87d → 84d |  |  |
| 140 | Разработка функционала для работы с словарями данных (простые, линейные справочники) | 2013-12-09 → 2013-12-12 (+3d) | 2014-01-03 → 2014-01-08 (+5d) |  |  | 87d → 84d |  |  |
| 141 | Разработка форм для работы в GUI (настройки форм) | 2013-11-11 → 2013-11-14 (+3d) | 2013-11-29 → 2013-12-04 (+5d) |  |  | 107d → 104d |  |  |
| 142 | Разработка структуры рабочего места АРМ | 2013-12-02 → 2013-12-05 (+3d) | 2013-12-06 → 2013-12-11 (+5d) |  |  | 107d → 104d |  |  |
| 143 | Разработка специфичных для форм АРМ элементов GUI | 2013-11-11 → 2013-11-14 (+3d) | 2013-12-06 → 2013-12-11 (+5d) |  |  | 107d → 104d |  |  |
| 146 | **Тестирование** | 2013-11-27 → 2013-11-28 (+1d) |  | 84d? → 83d? |  |  |  |  |
| 147 | **Функциональное тестирование** | 2013-11-27 → 2013-11-28 (+1d) |  | 69d? → 68d? |  |  |  |  |
| 148 | Подготовка ПМИ | 2013-11-27 → 2013-11-28 (+1d) | 2013-12-03 → 2013-12-04 (+1d) |  |  | 47d → 46d |  |  |
| 149 | Разработка "сценариев тестирования" | 2013-11-27 → 2013-11-28 (+1d) | 2013-12-17 → 2013-12-18 (+1d) |  |  | 52d → 51d |  |  |
| 150 | Разработка модели нагрузки для тестирования | 2013-12-04 → 2013-12-05 (+1d) | 2013-12-17 → 2013-12-18 (+1d) |  |  | 52d → 51d |  |  |
| 151 | Адаптация автоматизированных сценариев от СМ4 для создания нагрузки | 2013-12-04 → 2013-12-05 (+1d) | 2014-01-07 → 2014-01-08 (+1d) |  |  | 47d → 46d |  |  |
| 167 | **Подготовка документации** | 2013-11-27 → 2013-11-28 (+1d) | 2014-03-18 → 2014-03-19 (+1d) |  |  | 35d → 34d |  |  |
| 168 | Разработка документа "Концепция системы " | 2013-11-27 → 2013-11-28 (+1d) | 2014-01-21 → 2014-01-22 (+1d) |  |  | 35d → 34d |  |  |
| 169 | Разработка "Software Architecture Document" | 2014-01-22 → 2014-01-23 (+1d) | 2014-03-18 → 2014-03-19 (+1d) |  |  | 35d → 34d |  |  |
| 170 | Документы подготовлены | 2014-03-18 → 2014-03-19 (+1d) | 2014-03-18 → 2014-03-19 (+1d) |  |  | 35d → 34d |  |  |
| 171 | Разработка "Software Architecture Document" для модулей первой очереди | 2013-11-27 → 2013-11-28 (+1d) | 2013-12-24 → 2013-12-25 (+1d) |  |  | 95d → 94d |  |  |
| 172 | Документы подготовлены | 2013-12-24 → 2013-12-25 (+1d) | 2013-12-24 → 2013-12-25 (+1d) |  |  | 95d → 94d |  |  |

## Version 22 (saved 2013-08-21)

Note of the change: Обновление плана

Last finish stays 2014-05-06. Complete tasks 33 → 35.

Added:

| ID | Task | Duration | Start | Finish | Predecessors | Resources |
| --- | --- | --- | --- | --- | --- | --- |
| 43 | Пересчёт прав доступа | 12d | 2013-08-19 | 2013-09-03 | 42 | Андрей Цветков |

Changed:

| ID | Task | Start | Finish | Duration | Complete | Total float | Predecessors | Other |
| --- | --- | --- | --- | --- | --- | --- | --- | --- |
| 1 | **Разработка версии CM4/5** |  |  |  | 15% → 16% |  |  |  |
| 15 | **Настройка инфраструктуры** |  |  |  | 47% → 67% | 21.6d → 0d |  |  |
| 19 | Автоматическое заполнение параметров JDBC через Maven | 2013-07-05 A | 2013-07-09 A |  | 0% → 100% | 21.6d → none |  |  |
| 20 | **Проектирование и формирование ядра системы** |  | 2013-11-27 → 2013-12-03 (+6d) | 153d? → 157d? |  | 46d → 42d |  |  |
| 28 | **DAO** |  | 2013-07-31 A |  | 84% → 100% | 77d → none |  |  |
| 33 | DAO - кэш уровня транзакции | 2013-07-25 A | 2013-07-31 A |  | 0% → 100% | 77d → none | 124 → 72 | resources Валерий Мацукевич → Влад Симоненко |
| 36 | Поддержка отсортированных дочерних бизнес-объектов | 2013-08-01 → 2013-08-21 (+20d) | 2013-08-07 → 2013-08-27 (+20d) |  |  | 77d → 63d | 33 → 49 |  |
| 39 | **Права доступа** |  | 2013-08-16 → 2013-09-03 (+18d) | 48d → 60d | 83% → 68% | 101d → 107d |  |  |
| 47 | **Наследование ???** |  | 2013-08-19 → 2013-08-20 (+1d) | 7d → 8d | 29% → 88% | 84d → 63d |  |  |
| 49 | Разработка функции "Наследование" | 2013-08-13 A | 2013-08-19 → 2013-08-20 (+1d) | 5d → 6d | 0% → 83% | 84d → 63d |  |  |
| 50 | **Коллекции** |  |  |  | 55% → 56% |  |  |  |
| 54 | ПКД | 2013-08-20 → 2013-08-21 (+1d) |  | 15d → 14d |  |  |  |  |
| 58 | **Бизнес-объекты (иерархии доменных объектов)** |  | 2013-08-30 → 2013-09-02 (+3d) | 27.25d → 28.25d |  | 109.75d → 108.75d |  |  |
| 60 | Реализация1 |  | 2013-08-27 A → 2013-08-02 A (-25d) |  |  |  |  |  |
| 61 | Реализация 2 |  | 2013-08-30 → 2013-09-02 (+3d) |  |  | 109.75d → 108.75d |  |  |
| 73 | **Поиск** |  | 2013-09-17 → 2013-09-18 (+1d) | 36d → 37d |  | 97d → 96d |  |  |
| 76 | Полнотекстовый поиск |  | 2013-09-09 → 2013-09-10 (+1d) |  |  | 97d → 96d |  |  |
| 77 | Расширенный поиск | 2013-09-10 → 2013-09-11 (+1d) | 2013-09-17 → 2013-09-18 (+1d) |  |  | 97d → 96d |  |  |
| 81 | **GUI** |  | 2013-11-19 → 2013-11-26 (+7d) | 87d? → 92d? |  | 50d → 45d |  |  |
| 83 | Адаптация компонентов GUI из СМ4 для наложения на архитектуру см5 |  | 2013-08-16 → 2013-09-09 (+24d) | 20d → 35d |  | 99d → 83d |  |  |
| 87 | Архитектура разметки главного экрана | 2013-08-07 A |  |  | 0% → 80% | 47d → 43d |  |  |
| 88 | **Панель навигации** |  | 2013-08-26 → 2013-09-17 (+22d) | 12d → 28d |  | 47d → 43d |  |  |
| 90 | Разработка - панель навигации | 2013-08-19 → 2013-09-10 (+22d) | 2013-08-26 → 2013-09-17 (+22d) |  |  | 99d → 83d |  |  |
| 91 | GUI - архитектура плагинов/дочерних плагинов. Базис |  | 2013-08-20 → 2013-08-27 (+7d) | 6d → 10d |  | 47d → 42d |  | was named GUI - архитектура плагинов/дочерних плагинов |
| 92 | GUI - отображение отчётов | 2013-08-19 → 2013-08-28 (+9d) | 2013-08-28 → 2013-09-06 (+9d) |  |  | 107d → 100d | 91FS-2d, 86 → 91 |  |
| 93 | **GUI - плагин отображения коллекций** | 2013-08-21 → 2013-08-28 (+7d) | 2013-09-03 → 2013-09-25 (+22d) | 10d → 21d |  | 47d → 42d |  |  |
| 94 | Проектирование | 2013-08-21 → 2013-08-28 (+7d) | 2013-08-22 → 2013-08-29 (+7d) |  |  | 47d → 42d |  |  |
| 95 | Разработка | 2013-08-27 → 2013-09-18 (+22d) | 2013-09-03 → 2013-09-25 (+22d) |  |  | 99d → 83d |  |  |
| 96 | **GUI - действия** | 2013-08-23 → 2013-08-30 (+7d) | 2013-09-11 → 2013-10-03 (+22d) | 14d → 25d |  | 47d → 42d |  |  |
| 97 | Проектирование | 2013-08-23 → 2013-08-30 (+7d) | 2013-08-26 → 2013-09-02 (+7d) |  |  | 47d → 42d |  |  |
| 98 | Разработка | 2013-09-04 → 2013-09-26 (+22d) | 2013-09-11 → 2013-10-03 (+22d) |  |  | 99d → 83d |  |  |
| 99 | **Формы встроенного GUI** | 2013-08-27 → 2013-09-03 (+7d) | 2013-09-26 → 2013-10-03 (+7d) |  |  | 47d → 42d |  |  |
| 100 | Конфигурация-архитектура | 2013-08-27 → 2013-09-03 (+7d) | 2013-08-29 → 2013-09-05 (+7d) |  |  | 47d → 42d |  |  |
| 101 | Маппинг на объекты | 2013-08-30 → 2013-09-09 (+10d) | 2013-09-02 → 2013-09-10 (+8d) |  |  | 106d → 100d |  |  |
| 102 | API GWT client-server | 2013-08-30 → 2013-09-06 (+7d) | 2013-09-10 → 2013-09-17 (+7d) |  |  | 47d → 42d |  |  |
| 103 | Реализация | 2013-09-11 → 2013-09-18 (+7d) | 2013-09-26 → 2013-10-03 (+7d) |  |  | 83d → 78d |  |  |
| 104 | **GUI - поиск** | 2013-09-11 → 2013-09-18 (+7d) | 2013-10-03 → 2013-10-10 (+7d) |  |  | 69d → 64d |  |  |
| 105 | GUI - поиск. Проектирование | 2013-09-11 → 2013-09-18 (+7d) | 2013-09-13 → 2013-09-20 (+7d) |  |  | 69d → 64d |  |  |
| 106 | GUI - поиск. Реализация | 2013-09-27 → 2013-10-04 (+7d) | 2013-10-03 → 2013-10-10 (+7d) |  |  | 83d → 78d |  |  |
| 107 | **GUI - виджеты разработка** | 2013-09-11 → 2013-09-18 (+7d) | 2013-11-19 → 2013-11-26 (+7d) |  |  | 47d → 42d |  |  |
| 108 | Дата/время | 2013-09-11 → 2013-09-18 (+7d) | 2013-09-11 → 2013-09-18 (+7d) |  |  | 99d → 94d |  |  |
| 109 | Остальные без особенностей стиля ст.лебедева (базовый набор) | 2013-09-11 → 2013-09-18 (+7d) | 2013-10-15 → 2013-10-22 (+7d) |  |  | 47d → 42d |  |  |
| 110 | Остальные для стиля ст.лебедева | 2013-10-16 → 2013-10-23 (+7d) | 2013-11-19 → 2013-11-26 (+7d) |  |  | 50d → 45d |  |  |
| 111 | **GUI - брендинг, стилизация, темы** | 2013-10-16 → 2013-10-23 (+7d) | 2013-10-22 → 2013-10-29 (+7d) |  |  | 47d → 42d |  |  |
| 112 | Концепция | 2013-10-16 → 2013-10-23 (+7d) | 2013-10-22 → 2013-10-29 (+7d) |  |  | 47d → 42d |  |  |
| 113 | Тестирование производительности | 2013-10-23 → 2013-10-30 (+7d) | 2013-11-26 → 2013-12-03 (+7d) |  |  | 47d → 42d |  |  |
| 114 | Версионность/аудит | 2013-08-08 → 2013-08-28 (+20d) | 2013-08-19 → 2013-09-06 (+18d) |  |  | 77d → 63d |  |  |
| 115 | Блокировки бизнес-объектов | 2013-08-20 → 2013-09-09 (+20d) | 2013-08-27 → 2013-09-16 (+20d) |  |  | 77d → 63d |  |  |
| 117 | Уточнение состава и сроков работ | 2013-11-20 → 2013-11-27 (+7d) | 2013-11-21 → 2013-11-28 (+7d) |  |  | 50d → 45d |  |  |
| 118 | Кросс-СУБД, поддержка Oracle | 2013-08-28 → 2013-09-17 (+20d) | 2013-09-17 → 2013-10-07 (+20d) |  |  | 77d → 63d |  |  |
| 119 | SQL-trace | 2013-09-18 → 2013-10-08 (+20d) | 2013-09-24 → 2013-10-14 (+20d) |  |  | 77d → 63d |  |  |
| 120 | Локализация (на уровне конфигурации) | 2013-09-25 → 2013-10-15 (+20d) | 2013-10-15 → 2013-11-04 (+20d) |  |  | 77d → 63d |  |  |
| 121 | **Интеграция с системой управления учетными записями** | 2013-08-28 → 2013-09-17 (+20d) | 2013-09-16 → 2013-10-04 (+18d) |  |  | 98d → 84d |  |  |
| 122 | Интеграция с ActiveDirectory | 2013-08-28 → 2013-09-17 (+20d) | 2013-09-16 → 2013-10-04 (+18d) |  |  | 98d → 84d |  |  |
| 126 | **Сервис для работы с системным журналом** |  | 2013-09-05 → 2013-09-06 (+1d) | 15d → 16d |  | 105d → 104d |  |  |
| 127 | Ведение журнала действий пользователей и действий с объектами системы |  | 2013-08-29 → 2013-08-30 (+1d) |  |  | 105d → 104d |  |  |
| 128 | Настройка уровня логирования | 2013-08-30 → 2013-09-02 (+3d) | 2013-09-05 → 2013-09-06 (+1d) |  |  | 105d → 104d |  |  |
| 147 | **Тестирование** | 2013-11-28 → 2013-12-04 (+6d) |  | 83d? → 79d? |  |  |  |  |
| 148 | **Функциональное тестирование** | 2013-11-28 → 2013-12-04 (+6d) |  | 68d? → 64d? |  | 46d → 42d |  |  |
| 149 | Подготовка ПМИ | 2013-11-28 → 2013-12-04 (+6d) | 2013-12-04 → 2013-12-10 (+6d) |  |  | 46d → 42d |  |  |
| 150 | Разработка "сценариев тестирования" | 2013-11-28 → 2013-12-04 (+6d) | 2013-12-18 → 2013-12-24 (+6d) |  |  | 51d → 47d |  |  |
| 151 | Разработка модели нагрузки для тестирования | 2013-12-05 → 2013-12-11 (+6d) | 2013-12-18 → 2013-12-24 (+6d) |  |  | 51d → 47d |  |  |
| 152 | Адаптация автоматизированных сценариев от СМ4 для создания нагрузки | 2013-12-05 → 2013-12-11 (+6d) | 2014-01-08 → 2014-01-14 (+6d) |  |  | 46d → 42d |  |  |
| 168 | **Подготовка документации** | 2013-11-28 → 2013-12-04 (+6d) | 2014-03-19 → 2014-03-25 (+6d) |  |  | 34d → 30d |  |  |
| 169 | Разработка документа "Концепция системы " | 2013-11-28 → 2013-12-04 (+6d) | 2014-01-22 → 2014-01-28 (+6d) |  |  | 34d → 30d |  |  |
| 170 | Разработка "Software Architecture Document" | 2014-01-23 → 2014-01-29 (+6d) | 2014-03-19 → 2014-03-25 (+6d) |  |  | 34d → 30d |  |  |
| 171 | Документы подготовлены | 2014-03-19 → 2014-03-25 (+6d) | 2014-03-19 → 2014-03-25 (+6d) |  |  | 34d → 30d |  |  |
| 172 | Разработка "Software Architecture Document" для модулей первой очереди | 2013-11-28 → 2013-12-04 (+6d) | 2013-12-25 → 2013-12-31 (+6d) |  |  | 94d → 90d |  |  |
| 173 | Документы подготовлены | 2013-12-25 → 2013-12-31 (+6d) | 2013-12-25 → 2013-12-31 (+6d) |  |  | 94d → 90d |  |  |

## Version 23 (saved 2013-08-22)

Note of the change: Merge branch 'master' of ssh://git.inttrust.ru/srv/repos/git/CM5

Last finish stays 2014-05-06. Complete tasks 35 → 39.

Changed:

| ID | Task | Start | Finish | Duration | Complete | Total float | Other |
| --- | --- | --- | --- | --- | --- | --- | --- |
| 1 | **Разработка версии CM4/5** |  |  |  | 16% → 17% |  |  |
| 9 | **Создание модуля "Делопроизводство" (документоориентированная среда)** |  | 2014-03-28 → 2014-04-28 (+31d) | 240d? → 260.25d? | 17% → 19% | 27d → 6.75d |  |
| 20 | **Проектирование и формирование ядра системы** |  | 2013-12-03 → 2014-01-06 (+34d) | 157d? → 180.25d? | 27% → 29% | 42d → 18.75d |  |
| 35 | Расширение CRUD для интеграции с CMJ | 2013-08-08 A | 2013-08-14 A |  | 0% → 100% | 121d → none |  |
| 39 | **Права доступа** |  |  |  | 68% → 76% |  |  |
| 40 | Права - оптимизация хранения (проектирование) |  | 2013-07-15 → 2013-07-23 (+8d) | 24d → 30d | 96% → 77% | 6.5d → 17.5d |  |
| 41 | Описание существующими декларативными средствами конфигурации |  | 2013-08-09 A |  | 85% → 100% | 0d → none |  |
| 42 | Автофильтрация |  | 2013-08-16 A |  | 50% → 100% | 101d → none |  |
| 43 | Пересчёт прав доступа | 2013-08-19 A |  |  | 0% → 15% |  |  |
| 47 | **Наследование ???** |  | 2013-08-20 A |  | 88% → 100% | 63d → none |  |
| 49 | Разработка функции "Наследование" |  | 2013-08-20 A |  | 83% → 100% | 63d → none |  |
| 62 | **Слой сопряжения GUI CM4** |  | 2013-11-27 → 2014-01-06 (+40d) | 83d → 110.25d | 0% → 7% | 46d → 18.75d |  |
| 64 | Реализация коннекторов к платформе | 2013-08-08 A | 2013-11-13 → 2013-12-23 (+40d) | 70d → 97.25d | 0% → 7% | 46d → 18.75d | resources Тугушев Илья [33%]; Роман Болотов; Глеб Наздрачев → Тугушев Илья [75%]; Глеб Наздрачев [75%] |
| 65 | Сопряжение - работа с вложениями | 2013-11-14 → 2013-12-23 (+39d) | 2013-11-22 → 2014-01-01 (+40d) |  |  | 46d → 18.75d |  |
| 66 | REST-протокол для АРМа - проектирование | 2013-11-25 → 2014-01-01 (+37d) | 2013-11-27 → 2014-01-06 (+40d) |  |  | 46d → 18.75d |  |
| 129 | **Разработка** |  |  |  | 7% → 8% |  |  |
| 130 | Контроль и корректировка технических решений "Архитектурный комитет" |  |  |  | 20% → 23% |  |  |
| 137 | **Разработка Форм для АРМ тематических администраторов** | 2013-11-14 → 2013-12-23 (+39d) | 2014-01-08 → 2014-02-17 (+40d) |  |  | 84d → 56.75d |  |
| 138 | **Подготовка работы со списками значений** | 2013-11-14 → 2013-12-23 (+39d) | 2014-01-08 → 2014-02-17 (+40d) |  |  | 84d → 56.75d |  |
| 139 | Разработка функционала учета организационно штатной структуры | 2013-11-14 → 2013-12-23 (+39d) | 2014-01-08 → 2014-02-17 (+40d) |  |  | 84d → 56.75d |  |
| 140 | Разработка функционала с рубрикаторами (сложные справочники) | 2013-11-14 → 2013-12-23 (+39d) | 2013-12-11 → 2014-01-20 (+40d) |  |  | 84d → 56.75d |  |
| 141 | Разработка функционала для работы с словарями данных (простые, линейные справочники) | 2013-12-12 → 2014-01-20 (+39d) | 2014-01-08 → 2014-02-17 (+40d) |  |  | 84d → 56.75d |  |
| 142 | Разработка форм для работы в GUI (настройки форм) | 2013-11-14 → 2013-12-23 (+39d) | 2013-12-04 → 2014-01-13 (+40d) |  |  | 104d → 76.75d |  |
| 143 | Разработка структуры рабочего места АРМ | 2013-12-05 → 2014-01-13 (+39d) | 2013-12-11 → 2014-01-20 (+40d) |  |  | 104d → 76.75d |  |
| 144 | Разработка специфичных для форм АРМ элементов GUI | 2013-11-14 → 2013-12-23 (+39d) | 2013-12-11 → 2014-01-20 (+40d) |  |  | 104d → 76.75d |  |
| 147 | **Тестирование** | 2013-12-04 → 2014-01-06 (+33d) | 2014-03-24 → 2014-04-10 (+17d) | 79d? → 68d? |  | 31d → 18.75d |  |
| 148 | **Функциональное тестирование** | 2013-12-04 → 2014-01-06 (+33d) | 2014-03-03 → 2014-03-20 (+17d) | 64d? → 53d? |  | 42d → 18.75d |  |
| 149 | Подготовка ПМИ | 2013-12-04 → 2014-01-06 (+33d) | 2013-12-10 → 2014-01-13 (+34d) |  |  | 42d → 18.75d |  |
| 150 | Разработка "сценариев тестирования" | 2013-12-04 → 2014-01-06 (+33d) | 2013-12-24 → 2014-01-27 (+34d) |  |  | 47d → 23.75d |  |
| 151 | Разработка модели нагрузки для тестирования | 2013-12-11 → 2014-01-13 (+33d) | 2013-12-24 → 2014-01-27 (+34d) |  |  | 47d → 23.75d |  |
| 152 | Адаптация автоматизированных сценариев от СМ4 для создания нагрузки | 2013-12-11 → 2014-01-13 (+33d) | 2014-01-14 → 2014-02-17 (+34d) |  |  | 42d → 18.75d |  |
| 153 | **Проведение тестирования** | 2014-01-09 → 2014-01-27 (+18d) | 2014-03-03 → 2014-03-20 (+17d) |  |  | 36d → 23.75d |  |
| 154 | **Подготовка среды тестирования** | 2014-01-09 → 2014-01-27 (+18d) | 2014-01-29 → 2014-02-10 (+12d) | 15d? → 10d? |  | 36d → 23.75d |  |
| 155 | Разворачивание системы | 2014-01-09 → 2014-01-27 (+18d) | 2014-01-16 → 2014-02-03 (+18d) |  |  | 79d → 66.75d |  |
| 156 | Система готова для подключения инструментов мониторинга | 2014-01-16 → 2014-02-03 (+18d) | 2014-01-16 → 2014-02-03 (+18d) |  |  | 79d → 66.75d |  |
| 157 | Наполнение данными | 2014-01-16 → 2014-01-27 (+11d) | 2014-01-29 → 2014-02-10 (+12d) |  |  | 31d → 23.75d |  |
| 158 | Среда тестирования готова | 2014-01-29 → 2014-02-17 (+19d) | 2014-01-29 → 2014-02-17 (+19d) |  |  | 31d → 18.75d |  |
| 159 | Проведение тестирования | 2014-01-30 → 2014-02-17 (+18d) | 2014-02-12 → 2014-03-03 (+19d) |  |  | 31d → 18.75d |  |
| 160 | **Обработка результатов тестирования и внесение изменений в модуль** | 2014-02-11 → 2014-02-27 (+16d) | 2014-03-03 → 2014-03-20 (+17d) |  |  | 31d → 18.75d |  |
| 161 | Устранение замечаний по результатам функционального тестирования | 2014-02-11 → 2014-02-27 (+16d) | 2014-03-03 → 2014-03-20 (+17d) |  |  | 31d → 18.75d |  |
| 162 | Проверка устранения замечаний | 2014-02-24 → 2014-03-12 (+16d) | 2014-03-03 → 2014-03-20 (+17d) |  |  | 31d → 18.75d |  |
| 163 | **Нагрузочное тестирование** | 2014-02-12 → 2014-03-03 (+19d) | 2014-03-24 → 2014-04-10 (+17d) |  |  | 31d → 18.75d |  |
| 164 | Стенд для нагрузочного тестирования подготовлен | 2014-02-12 → 2014-03-03 (+19d) | 2014-02-12 → 2014-03-03 (+19d) |  |  | 44d → 31.75d |  |
| 165 | Проведения нагрузочного тестирования | 2014-03-04 → 2014-03-20 (+16d) | 2014-03-17 → 2014-04-03 (+17d) |  |  | 31d → 18.75d |  |
| 166 | Обработка результатов нагрузочного тестирования | 2014-03-18 → 2014-04-03 (+16d) | 2014-03-24 → 2014-04-10 (+17d) |  |  | 31d → 18.75d |  |
| 167 | Разработка модуля "Делопроизводство" завершена | 2014-03-24 → 2014-04-10 (+17d) | 2014-03-24 → 2014-04-10 (+17d) |  |  | 31d → 18.75d |  |
| 168 | **Подготовка документации** | 2013-12-04 → 2014-01-06 (+33d) | 2014-03-25 → 2014-04-28 (+34d) |  |  | 30d → 6.75d |  |
| 169 | Разработка документа "Концепция системы " | 2013-12-04 → 2014-01-06 (+33d) | 2014-01-28 → 2014-03-03 (+34d) |  |  | 30d → 6.75d |  |
| 170 | Разработка "Software Architecture Document" | 2014-01-29 → 2014-03-03 (+33d) | 2014-03-25 → 2014-04-28 (+34d) |  |  | 30d → 6.75d |  |
| 171 | Документы подготовлены | 2014-03-25 → 2014-04-28 (+34d) | 2014-03-25 → 2014-04-28 (+34d) |  |  | 30d → 6.75d |  |
| 172 | Разработка "Software Architecture Document" для модулей первой очереди | 2013-12-04 → 2014-01-06 (+33d) | 2013-12-31 → 2014-02-03 (+34d) |  |  | 90d → 66.75d |  |
| 173 | Документы подготовлены | 2013-12-31 → 2014-02-03 (+34d) | 2013-12-31 → 2014-02-03 (+34d) |  |  | 90d → 66.75d |  |
| 174 | **Проверка работоспособности решения - Организация демонстрации** | 2014-01-09 → 2014-01-27 (+18d) | 2014-02-12 → 2014-03-03 (+19d) |  |  | 59d → 46.75d |  |
| 175 | Подготовка стенда | 2014-01-09 → 2014-01-27 (+18d) | 2014-01-13 → 2014-01-30 (+17d) |  |  | 81d → 68.75d |  |
| 176 | Подготовка прототипа | 2014-01-09 → 2014-01-27 (+18d) | 2014-02-05 → 2014-02-24 (+19d) |  |  | 59d → 46.75d |  |
| 177 | Проведение демонстраций | 2014-02-06 → 2014-02-24 (+18d) | 2014-02-10 → 2014-02-27 (+17d) |  |  | 59d → 46.75d |  |
| 178 | Анализ результатов - выводы | 2014-02-11 → 2014-02-27 (+16d) | 2014-02-12 → 2014-03-03 (+19d) |  |  | 59d → 46.75d |  |

## Version 24 (saved 2013-08-26)

Note of the change: Вехи для CMJ

Last finish stays 2014-05-06.

Added:

| ID | Task | Duration | Start | Finish | Constraint |
| --- | --- | --- | --- | --- | --- |
| 65 | Описание решения есть. Можно начинать разработку | 0d | 2013-08-28 | 2013-08-28 | start no earlier than 2013-08-28 |
| 66 | Проработка задания выполнена, можно привлекать разработчиков БТЛ | 0d | 2013-09-04 | 2013-09-04 | start no earlier than 2013-09-04 |

## Version 25 (saved 2013-09-02)

Note of the change: Обновление от 02.09.2013

Last finish 2014-05-06 → 2014-09-01 (+118d). Complete tasks 39 → 44.

Removed: 79 Расширенный поиск

Changed:

| ID | Task | Start | Finish | Duration | Complete | Total float | Other |
| --- | --- | --- | --- | --- | --- | --- | --- |
| 1 | **Разработка версии CM4/5** |  | 2014-05-06 → 2014-09-01 (+118d) | 267d? → 351d? | 17% → 24% |  |  |
| 3 | Управление проектом | 2013-04-22 A |  |  | 0% → 35% | 0d → 84d |  |
| 4 | **Управление требованиями** |  | 2014-02-19 → 2014-09-01 (+194d) | 193d → 331d | 27% → 19% | 54d → 0d |  |
| 8 | Сопровождение требований |  | 2014-02-19 → 2014-09-01 (+194d) | 173d → 311d | 20% → 15% | 54d → 0d | resources Эдуард Михайлов; Евгения Капустина [30%] → Эдуард Михайлов; Евгения Капустина |
| 9 | **Создание модуля "Делопроизводство" (документоориентированная среда)** |  | 2014-04-28 → 2014-05-01 (+3d) | 260.25d? → 264d? | 19% → 23% | 6.75d → 87d |  |
| 20 | **Проектирование и формирование ядра системы** |  |  |  | 29% → 38% | 18.75d → 102.75d |  |
| 39 | **Права доступа** |  | 2013-09-03 → 2013-09-10 (+7d) | 60d → 65d | 76% → 90% | 107d → 186d |  |
| 40 | Права - оптимизация хранения (проектирование) |  | 2013-07-23 A |  | 77% → 100% | 17.5d → none |  |
| 43 | Пересчёт прав доступа |  | 2013-09-03 → 2013-09-10 (+7d) | 12d → 17d | 15% → 55% | 107d → 102d |  |
| 44 | **Workflow - интеграция с Activiti** |  | 2013-08-28 → 2013-09-18 (+21d) | 59d → 74d | 29% → 19% | 31d → 100d |  |
| 57 | ПКД ???? |  |  |  |  | 80d → 164d | was named ПКД; resources Андрей Пирожков [50%]; Сергей Кашанский → none |
| 58 | **Бизнес-объекты (иерархии доменных объектов)** |  | 2013-09-02 → 2013-09-11 (+9d) | 28.25d → 35.25d | 37% → 32% | 108.75d → 185.75d |  |
| 61 | Реализация 2 |  | 2013-09-02 → 2013-09-11 (+9d) | 10d → 13d |  | 108.75d → 185.75d | resources Влад Симоненко → Андрей Пирожков |
| 62 | **Поиск** | 2013-07-29 A → 2013-07-30 A (+1d) | 2013-09-18 → 2013-10-15 (+27d) | 37d → 56d |  | 96d → 161d |  |
| 63 | Идея поиска оформлена | 2013-07-29 → 2013-09-09 (+42d) | 2013-07-29 → 2013-09-09 (+42d) |  |  | 33d → 87d | constraint finish no earlier than 2013-07-29 → finish no earlier than 2013-09-09 |
| 64 | Поиск |  | 2013-08-26 → 2013-09-24 (+29d) | 16d → 15d | 25% → 27% | 97d → 161d |  |
| 65 | Полнотекстовый поиск | 2013-08-13 → 2013-09-11 (+29d) | 2013-09-10 → 2013-10-15 (+35d) | 20d → 25d |  | 96d → 161d | resources Влад Симоненко → Валерий Мацукевич |
| 66 | **Слой сопряжения GUI CM4** |  |  |  | 7% → 18% | 18.75d → 102.75d |  |
| 68 | Реализация коннекторов к платформе |  |  |  | 7% → 20% | 18.75d → 102.75d | resources Тугушев Илья [75%]; Глеб Наздрачев [75%] → Тугушев Илья [75%]; Глеб Наздрачев |
| 69 | Описание решения есть. Можно начинать разработку | 2013-08-28 A | 2013-08-28 A |  | 0% → 100% | 112d → none |  |
| 70 | Проработка задания выполнена, можно привлекать разработчиков БТЛ | 2013-09-04 A |  |  | 0% → 50% | 107d → 191d |  |
| 82 | **GUI** |  | 2013-11-26 → 2013-12-03 (+7d) | 92d? → 97d? | 5% → 31% | 45d → 124d |  |
| 83 | Принято решение о применении GWT-компонентов | 2013-07-22 A | 2013-07-22 A |  | 0% → 100% | 84d → none |  |
| 84 | Адаптация компонентов GUI из СМ4 для наложения на архитектуру см5 | 2013-07-22 A | 2013-09-09 → 2013-09-16 (+7d) | 35d → 40d | 0% → 75% | 83d → 162d |  |
| 85 | Изучение GWT/Настройка CMJ 4 для дебага | 2013-08-05 A | 2013-08-08 A |  | 0% → 100% | 123d → none |  |
| 89 | **Панель навигации** | 2013-08-09 A | 2013-09-17 → 2013-09-24 (+7d) | 28d → 33d | 0% → 25% | 43d → 162d |  |
| 90 | Проектирование - панель навигации | 2013-08-09 A | 2013-08-12 A |  | 0% → 100% | 43d → none |  |
| 91 | Разработка - панель навигации | 2013-09-10 → 2013-09-17 (+7d) | 2013-09-17 → 2013-09-24 (+7d) |  |  | 83d → 162d |  |
| 92 | GUI - архитектура плагинов/дочерних плагинов. Базис | 2013-08-13 A | 2013-08-27 → 2013-09-03 (+7d) | 10d → 15d | 0% → 85% | 42d → 121d |  |
| 93 | GUI - отображение отчётов | 2013-08-28 → 2013-09-04 (+7d) | 2013-09-06 → 2013-09-13 (+7d) |  |  | 100d → 179d |  |
| 94 | **GUI - плагин отображения коллекций** | 2013-08-28 → 2013-09-04 (+7d) | 2013-09-25 → 2013-10-02 (+7d) |  |  | 42d → 121d |  |
| 95 | Проектирование | 2013-08-28 → 2013-09-04 (+7d) | 2013-08-29 → 2013-09-05 (+7d) |  |  | 42d → 121d |  |
| 96 | Разработка | 2013-09-18 → 2013-09-25 (+7d) | 2013-09-25 → 2013-10-02 (+7d) |  |  | 83d → 162d |  |
| 97 | **GUI - действия** | 2013-08-30 → 2013-09-06 (+7d) | 2013-10-03 → 2013-10-10 (+7d) |  |  | 42d → 121d |  |
| 98 | Проектирование | 2013-08-30 → 2013-09-06 (+7d) | 2013-09-02 → 2013-09-09 (+7d) |  |  | 42d → 121d |  |
| 99 | Разработка | 2013-09-26 → 2013-10-03 (+7d) | 2013-10-03 → 2013-10-10 (+7d) |  |  | 83d → 162d |  |
| 100 | **Формы встроенного GUI** | 2013-09-03 → 2013-09-10 (+7d) | 2013-10-03 → 2013-10-10 (+7d) |  |  | 42d → 121d |  |
| 101 | Конфигурация-архитектура | 2013-09-03 → 2013-09-10 (+7d) | 2013-09-05 → 2013-09-12 (+7d) |  |  | 42d → 121d |  |
| 102 | Маппинг на объекты | 2013-09-09 → 2013-09-16 (+7d) | 2013-09-10 → 2013-09-17 (+7d) |  |  | 100d → 179d |  |
| 103 | API GWT client-server | 2013-09-06 → 2013-09-13 (+7d) | 2013-09-17 → 2013-09-24 (+7d) |  |  | 42d → 121d |  |
| 104 | Реализация | 2013-09-18 → 2013-09-25 (+7d) | 2013-10-03 → 2013-10-10 (+7d) |  |  | 78d → 157d |  |
| 105 | **GUI - поиск** | 2013-09-18 → 2013-09-25 (+7d) | 2013-10-10 → 2013-10-17 (+7d) |  |  | 64d → 143d |  |
| 106 | GUI - поиск. Проектирование | 2013-09-18 → 2013-09-25 (+7d) | 2013-09-20 → 2013-09-27 (+7d) |  |  | 64d → 143d |  |
| 107 | GUI - поиск. Реализация | 2013-10-04 → 2013-10-11 (+7d) | 2013-10-10 → 2013-10-17 (+7d) |  |  | 78d → 157d |  |
| 108 | **GUI - виджеты разработка** | 2013-09-18 → 2013-09-25 (+7d) | 2013-11-26 → 2013-12-03 (+7d) |  |  | 42d → 121d |  |
| 109 | Дата/время | 2013-09-18 → 2013-09-25 (+7d) | 2013-09-18 → 2013-09-25 (+7d) |  |  | 94d → 173d |  |
| 110 | Остальные без особенностей стиля ст.лебедева (базовый набор) | 2013-09-18 → 2013-09-25 (+7d) | 2013-10-22 → 2013-10-29 (+7d) |  |  | 42d → 121d |  |
| 111 | Остальные для стиля ст.лебедева | 2013-10-23 → 2013-10-30 (+7d) | 2013-11-26 → 2013-12-03 (+7d) |  |  | 45d → 124d |  |
| 112 | **GUI - брендинг, стилизация, темы** | 2013-10-23 → 2013-10-30 (+7d) | 2013-10-29 → 2013-11-05 (+7d) |  |  | 42d → 121d |  |
| 113 | Концепция | 2013-10-23 → 2013-10-30 (+7d) | 2013-10-29 → 2013-11-05 (+7d) |  |  | 42d → 121d |  |
| 114 | Тестирование производительности | 2013-10-30 → 2013-11-06 (+7d) | 2013-12-03 → 2013-12-10 (+7d) |  |  | 42d → 121d |  |
| 117 | Описание структуры модуля Делопроизводство | 2013-07-30 → 2013-09-10 (+42d) | 2013-08-26 → 2013-10-07 (+42d) |  |  | 33d → 3d |  |
| 118 | Уточнение состава и сроков работ | 2013-11-27 → 2013-12-04 (+7d) | 2013-11-28 → 2013-12-05 (+7d) |  |  | 45d → 124d |  |
| 132 | **Разработка серверной логики модуля CMJ** | 2013-08-29 → 2013-10-08 (+40d) | 2013-11-20 → 2013-12-30 (+40d) |  |  | 31d → 87d |  |
| 133 | Разработка схем документов модуля CMJ | 2013-08-29 → 2013-10-08 (+40d) | 2013-10-23 → 2013-12-02 (+40d) |  |  | 31d → 3d |  |
| 134 | Разработка ЖЦ процессов модуля (WF) | 2013-10-24 → 2013-12-03 (+40d) | 2013-11-20 → 2013-12-30 (+40d) |  |  | 31d → 3d |  |
| 135 | Разработка логики бизнес- действий модуля CMJ | 2013-08-29 → 2013-10-08 (+40d) | 2013-11-20 → 2013-12-30 (+40d) |  |  | 31d → 3d |  |
| 136 | Разработка процессов автоматизации для модуля CMJ | 2013-08-29 → 2013-10-08 (+40d) | 2013-10-23 → 2013-12-02 (+40d) |  |  | 89d → 61d |  |
| 137 | Разработка модели прав доступа (контекстные роли) | 2013-10-24 → 2013-12-03 (+40d) | 2013-11-20 → 2013-12-30 (+40d) |  |  | 69d → 41d |  |
| 146 | Подготовка отчетов | 2013-11-21 → 2013-12-31 (+40d) | 2014-01-15 → 2014-02-24 (+40d) |  |  | 31d → 3d |  |
| 147 | Сопряжение с мобильным клиентом СМ4 | 2013-11-21 → 2013-12-31 (+40d) | 2014-01-29 → 2014-03-10 (+40d) |  |  | 69d → 41d |  |
| 148 | **Тестирование** |  | 2014-04-10 → 2014-05-01 (+21d) | 68d? → 83.75d? |  | 18.75d → 87d |  |
| 149 | **Функциональное тестирование** |  | 2014-03-20 → 2014-04-10 (+21d) | 53d? → 68.75d? |  | 18.75d → 102d |  |
| 154 | **Проведение тестирования** | 2014-01-27 → 2014-02-18 (+22d) | 2014-03-20 → 2014-04-10 (+21d) |  |  | 23.75d → 92d |  |
| 155 | **Подготовка среды тестирования** | 2014-01-27 → 2014-02-18 (+22d) | 2014-02-10 → 2014-03-10 (+28d) | 10d? → 15d? |  | 23.75d → 92d |  |
| 156 | Разворачивание системы | 2014-01-27 → 2014-02-18 (+22d) | 2014-02-03 → 2014-02-25 (+22d) |  |  | 66.75d → 135d |  |
| 157 | Система готова для подключения инструментов мониторинга | 2014-02-03 → 2014-02-25 (+22d) | 2014-02-03 → 2014-02-25 (+22d) |  |  | 66.75d → 51d |  |
| 158 | Наполнение данными | 2014-01-27 → 2014-02-25 (+29d) | 2014-02-10 → 2014-03-10 (+28d) |  |  | 23.75d → 3d |  |
| 159 | Среда тестирования готова | 2014-02-17 → 2014-03-10 (+21d) | 2014-02-17 → 2014-03-10 (+21d) |  |  | 18.75d → 3d |  |
| 160 | Проведение тестирования | 2014-02-17 → 2014-03-11 (+22d) | 2014-03-03 → 2014-03-24 (+21d) |  |  | 18.75d → 3d |  |

| ID | Task | Start | Finish | Total float |
| --- | --- | --- | --- | --- |
| 161 | **Обработка результатов тестирования и внесение изменений в модуль** | 2014-02-27 → 2014-03-21 (+22d) | 2014-03-20 → 2014-04-10 (+21d) | 18.75d → 87d |
| 162 | Устранение замечаний по результатам функционального тестирования | 2014-02-27 → 2014-03-21 (+22d) | 2014-03-20 → 2014-04-10 (+21d) | 18.75d → 3d |
| 163 | Проверка устранения замечаний | 2014-03-12 → 2014-04-03 (+22d) | 2014-03-20 → 2014-04-10 (+21d) | 18.75d → 3d |
| 164 | **Нагрузочное тестирование** | 2014-03-03 → 2014-03-24 (+21d) | 2014-04-10 → 2014-05-01 (+21d) | 18.75d → 87d |
| 165 | Стенд для нагрузочного тестирования подготовлен | 2014-03-03 → 2014-03-24 (+21d) | 2014-03-03 → 2014-03-24 (+21d) | 31.75d → 16d |
| 166 | Проведения нагрузочного тестирования | 2014-03-20 → 2014-04-11 (+22d) | 2014-04-03 → 2014-04-24 (+21d) | 18.75d → 3d |
| 167 | Обработка результатов нагрузочного тестирования | 2014-04-03 → 2014-04-25 (+22d) | 2014-04-10 → 2014-05-01 (+21d) | 18.75d → 3d |
| 168 | Разработка модуля "Делопроизводство" завершена | 2014-04-10 → 2014-05-01 (+21d) | 2014-04-10 → 2014-05-01 (+21d) | 18.75d → 3d |
| 175 | **Проверка работоспособности решения - Организация демонстрации** | 2014-01-27 → 2014-02-18 (+22d) | 2014-03-03 → 2014-03-24 (+21d) | 46.75d → 115d |
| 176 | Подготовка стенда | 2014-01-27 → 2014-02-18 (+22d) | 2014-01-30 → 2014-02-20 (+21d) | 68.75d → 53d |
| 177 | Подготовка прототипа | 2014-01-27 → 2014-02-18 (+22d) | 2014-02-24 → 2014-03-17 (+21d) | 46.75d → 31d |
| 178 | Проведение демонстраций | 2014-02-24 → 2014-03-18 (+22d) | 2014-02-27 → 2014-03-20 (+21d) | 46.75d → 31d |
| 179 | Анализ результатов - выводы | 2014-02-27 → 2014-03-21 (+22d) | 2014-03-03 → 2014-03-24 (+21d) | 46.75d → 31d |

## Version 26 (saved 2013-09-03)

Note of the change: Изменения от 0308

Last finish stays 2014-09-01.

Added:

| ID | Task | Duration | Start | Finish | Constraint |
| --- | --- | --- | --- | --- | --- |
| 71 | Рефакторинг СМ 4.2.1 выполнен | 0d | 2013-09-30 | 2013-09-30 | finish no earlier than 2013-09-30 |

Changed:

| ID | Task | Start | Finish | Duration | Complete | Total float | Predecessors | Other |
| --- | --- | --- | --- | --- | --- | --- | --- | --- |
| 9 | **Создание модуля "Делопроизводство" (документоориентированная среда)** |  |  |  | 23% → 24% |  |  |  |
| 70 | Проработка задания выполнена, можно привлекать разработчиков БТЛ | 2013-09-04 A → 2013-09-09 (+5d) | 2013-09-04 → 2013-09-09 (+5d) |  | 50% → 0% | 191d → 187d |  | constraint start no earlier than 2013-09-04 → finish no earlier than 2013-09-09 |
| 125 | **Расширение функций сервиса конфигурации** |  | 2013-08-15 → 2013-11-01 (+78d) | 28d → 84d |  | 189d → 133d | none → 120 |  |
| 126 | Расширяемость конфигурации |  | 2013-07-24 → 2013-10-10 (+78d) |  |  | 105d → 133d |  |  |
| 127 | Изменение и дополнение конфигурации системы | 2013-07-25 → 2013-10-11 (+78d) | 2013-08-15 → 2013-11-01 (+78d) |  |  | 105d → 133d |  |  |
| 128 | **Сервис для работы с системным журналом** | 2013-08-16 → 2013-11-04 (+80d) | 2013-09-06 → 2013-11-22 (+77d) | 16d → 15d |  | 188d → 133d |  |  |
| 129 | Ведение журнала действий пользователей и действий с объектами системы | 2013-08-16 → 2013-11-04 (+80d) | 2013-08-30 → 2013-11-15 (+77d) |  |  | 104d → 49d |  |  |
| 130 | Настройка уровня логирования | 2013-09-02 → 2013-11-18 (+77d) | 2013-09-06 → 2013-11-22 (+77d) |  |  | 104d → 49d |  |  |
| 131 | **Разработка** |  |  |  | 8% → 10% |  |  |  |
| 132 | Контроль и корректировка технических решений "Архитектурный комитет" |  |  |  | 23% → 28% | 27d → 111d |  |  |

## Version 27 (saved 2013-09-05)

Note of the change: обновление 04.09

Last finish stays 2014-09-01.

Added:

| ID | Task | Duration | Start | Finish | Constraint |
| --- | --- | --- | --- | --- | --- |
| 46 | готова постановка по БП | 0d | 2013-09-09 | 2013-09-09 | start no earlier than 2013-09-09 |

Removed: 61 Реализация 2

Changed:

| ID | Task | Start | Finish | Duration | Complete | Total float | Predecessors |
| --- | --- | --- | --- | --- | --- | --- | --- |
| 9 | **Создание модуля "Делопроизводство" (документоориентированная среда)** |  | 2014-05-01 → 2014-05-26 (+25d) | 264d? → 281d? |  | 87d → 70d |  |
| 44 | **Workflow - интеграция с Activiti** |  | 2013-09-18 → 2013-10-30 (+42d) | 74d → 104d | 19% → 20% | 100d → 70d |  |
| 47 | Разработка | 2013-07-25 → 2013-09-09 (+46d) | 2013-08-28 → 2013-10-04 (+37d) | 23d → 20d |  | 31d → 70d | 45 → 45, 46 |
| 48 | **Действия** | 2013-08-26 → 2013-10-07 (+42d) | 2013-09-18 → 2013-10-30 (+42d) |  |  | 100d → 70d | none → 47 |
| 49 | Концепция | 2013-08-26 → 2013-10-07 (+42d) | 2013-08-29 → 2013-10-10 (+42d) |  |  | 16d → 70d |  |
| 50 | Реализация | 2013-08-30 → 2013-10-11 (+42d) | 2013-09-18 → 2013-10-30 (+42d) |  |  | 16d → 70d |  |
| 131 | **Разработка** |  | 2014-03-28 → 2014-04-02 (+5d) | 209d → 212d |  | 111d → 108d |  |
| 133 | **Разработка серверной логики модуля CMJ** | 2013-10-08 → 2013-10-31 (+23d) | 2013-12-30 → 2014-01-22 (+23d) |  |  | 87d → 70d |  |
| 134 | Разработка схем документов модуля CMJ | 2013-10-08 → 2013-10-31 (+23d) | 2013-12-02 → 2013-12-25 (+23d) |  |  | 3d → 70d |  |
| 135 | Разработка ЖЦ процессов модуля (WF) | 2013-12-03 → 2013-12-26 (+23d) | 2013-12-30 → 2014-01-22 (+23d) |  |  | 3d → 70d |  |
| 136 | Разработка логики бизнес- действий модуля CMJ | 2013-10-08 → 2013-10-31 (+23d) | 2013-12-30 → 2014-01-22 (+23d) |  |  | 3d → 70d |  |
| 137 | Разработка процессов автоматизации для модуля CMJ | 2013-10-08 → 2013-10-31 (+23d) | 2013-12-02 → 2013-12-25 (+23d) |  |  | 61d → 128d |  |
| 138 | Разработка модели прав доступа (контекстные роли) | 2013-12-03 → 2013-12-26 (+23d) | 2013-12-30 → 2014-01-22 (+23d) |  |  | 41d → 108d |  |
| 147 | Подготовка отчетов | 2013-12-31 → 2014-01-23 (+23d) | 2014-02-24 → 2014-03-19 (+23d) |  |  | 3d → 70d |  |
| 148 | Сопряжение с мобильным клиентом СМ4 | 2013-12-31 → 2014-01-23 (+23d) | 2014-03-10 → 2014-04-02 (+23d) |  |  | 41d → 108d |  |
| 149 | **Тестирование** |  | 2014-05-01 → 2014-05-26 (+25d) | 83.75d? → 100.75d? |  | 87d → 70d |  |
| 150 | **Функциональное тестирование** |  | 2014-04-10 → 2014-05-05 (+25d) | 68.75d? → 85.75d? |  | 102d → 85d |  |
| 155 | **Проведение тестирования** | 2014-02-18 → 2014-03-13 (+23d) | 2014-04-10 → 2014-05-05 (+25d) |  |  | 92d → 75d |  |
| 156 | **Подготовка среды тестирования** | 2014-02-18 → 2014-03-13 (+23d) | 2014-03-10 → 2014-04-02 (+23d) |  |  | 92d → 75d |  |
| 157 | Разворачивание системы | 2014-02-18 → 2014-03-13 (+23d) | 2014-02-25 → 2014-03-20 (+23d) |  |  | 135d → 118d |  |
| 158 | Система готова для подключения инструментов мониторинга | 2014-02-25 → 2014-03-20 (+23d) | 2014-02-25 → 2014-03-20 (+23d) |  |  | 51d → 118d |  |
| 159 | Наполнение данными | 2014-02-25 → 2014-03-20 (+23d) | 2014-03-10 → 2014-04-02 (+23d) |  |  | 3d → 70d |  |
| 160 | Среда тестирования готова | 2014-03-10 → 2014-04-02 (+23d) | 2014-03-10 → 2014-04-02 (+23d) |  |  | 3d → 70d |  |
| 161 | Проведение тестирования | 2014-03-11 → 2014-04-03 (+23d) | 2014-03-24 → 2014-04-16 (+23d) |  |  | 3d → 70d |  |
| 162 | **Обработка результатов тестирования и внесение изменений в модуль** | 2014-03-21 → 2014-04-15 (+25d) | 2014-04-10 → 2014-05-05 (+25d) |  |  | 87d → 70d |  |
| 163 | Устранение замечаний по результатам функционального тестирования | 2014-03-21 → 2014-04-15 (+25d) | 2014-04-10 → 2014-05-05 (+25d) |  |  | 3d → 70d |  |
| 164 | Проверка устранения замечаний | 2014-04-03 → 2014-04-28 (+25d) | 2014-04-10 → 2014-05-05 (+25d) |  |  | 3d → 70d |  |
| 165 | **Нагрузочное тестирование** | 2014-03-24 → 2014-04-16 (+23d) | 2014-05-01 → 2014-05-26 (+25d) |  |  | 87d → 70d |  |
| 166 | Стенд для нагрузочного тестирования подготовлен | 2014-03-24 → 2014-04-16 (+23d) | 2014-03-24 → 2014-04-16 (+23d) |  |  | 16d → 83d |  |
| 167 | Проведения нагрузочного тестирования | 2014-04-11 → 2014-05-06 (+25d) | 2014-04-24 → 2014-05-19 (+25d) |  |  | 3d → 70d |  |
| 168 | Обработка результатов нагрузочного тестирования | 2014-04-25 → 2014-05-20 (+25d) | 2014-05-01 → 2014-05-26 (+25d) |  |  | 3d → 70d |  |
| 169 | Разработка модуля "Делопроизводство" завершена | 2014-05-01 → 2014-05-26 (+25d) | 2014-05-01 → 2014-05-26 (+25d) |  |  | 3d → 70d |  |
| 176 | **Проверка работоспособности решения - Организация демонстрации** | 2014-02-18 → 2014-03-13 (+23d) | 2014-03-24 → 2014-04-16 (+23d) |  |  | 115d → 98d |  |
| 177 | Подготовка стенда | 2014-02-18 → 2014-03-13 (+23d) | 2014-02-20 → 2014-03-17 (+25d) |  |  | 53d → 120d |  |
| 178 | Подготовка прототипа | 2014-02-18 → 2014-03-13 (+23d) | 2014-03-17 → 2014-04-09 (+23d) |  |  | 31d → 98d |  |
| 179 | Проведение демонстраций | 2014-03-18 → 2014-04-10 (+23d) | 2014-03-20 → 2014-04-14 (+25d) |  |  | 31d → 98d |  |
| 180 | Анализ результатов - выводы | 2014-03-21 → 2014-04-15 (+25d) | 2014-03-24 → 2014-04-16 (+23d) |  |  | 31d → 98d |  |

## Version 28 (saved 2013-09-11)

Note of the change: изменения за 0909

Last finish stays 2014-09-01.

Changed:

| ID | Task | Start | Finish | Total float | Other |
| --- | --- | --- | --- | --- | --- |
| 70 | Проработка задания выполнена, можно привлекать разработчиков БТЛ | 2013-09-09 → 2013-09-11 (+2d) | 2013-09-09 → 2013-09-11 (+2d) | 187d → 186d | constraint finish no earlier than 2013-09-09 → start no earlier than 2013-09-11 |

## Version 29 (saved 2013-09-17)

Note of the change: Обновление плана

Last finish stays 2014-09-01. Complete tasks 44 → 50.

Added:

| ID | Task | Duration | Start | Finish | Predecessors | Resources |
| --- | --- | --- | --- | --- | --- | --- |
| 95 | Базовая реализация архитектуры плагинов | 5d | 2013-09-04 A | 2013-09-10 A | 94 | Андрей Карандей |
| 108 | Реализация сохранения | 5d | 2013-09-19 | 2013-09-25 | 93, 106 | Андрей Карандей |
| 119 | Расширение функциональности DAO (требования CMJ4.1, базовые требования) | 30d | 2013-08-28 | 2013-10-08 | 36 | Валерий Мацукевич |
| 120 | Выделение конфигурации GUI в отдельные сущности, к изменению формата которых система не будет восприимчива | 9d | 2013-10-09 | 2013-10-21 | 119 | Валерий Мацукевич |
| 121 | Защита конфигурационных файлов от изменений | 5d | 2013-10-22 | 2013-10-28 | 120 | Валерий Мацукевич |

Changed:

| ID | Task | Start | Finish | Duration | Complete | Total float | Predecessors | Other |
| --- | --- | --- | --- | --- | --- | --- | --- | --- |
| 9 | **Создание модуля "Делопроизводство" (документоориентированная среда)** |  | 2014-05-26 → 2014-05-15 (-11d) | 281d? → 274d? |  | 70d → 77d |  |  |
| 20 | **Проектирование и формирование ядра системы** |  | 2014-01-06 → 2014-01-23 (+17d) | 180.25d? → 194d? |  | 102.75d → 89d |  |  |
| 44 | **Workflow - интеграция с Activiti** |  | 2013-10-30 → 2013-10-11 (-19d) | 104d → 91d |  | 70d → 83d |  |  |
| 47 | Разработка | 2013-09-09 → 2013-09-16 (+7d) | 2013-10-04 → 2013-10-11 (+7d) |  |  | 70d → 83d |  | constraint none → start no earlier than 2013-09-16; resources Андрей Пирожков [50%]; Сергей Кашанский → (БТЛ) Ларин |
| 48 | **Действия** | 2013-10-07 → 2013-09-18 (-19d) | 2013-10-30 → 2013-10-11 (-19d) |  |  | 70d → 83d | 47 → none |  |
| 49 | Концепция/Архитектура | 2013-10-07 → 2013-09-18 (-19d) | 2013-10-10 → 2013-09-23 (-17d) |  |  | 70d → 83d | 55, 42 → 106 | was named Концепция; constraint none → start no earlier than 2013-09-16; resources Андрей Пирожков [50%] → Денис Митавский |
| 50 | Реализация | 2013-10-11 → 2013-09-24 (-17d) | 2013-10-30 → 2013-10-11 (-19d) |  |  | 70d → 83d |  | resources Андрей Карандей; Андрей Пирожков [50%] → (БТЛ) Ларин |
| 84 | **GUI** | 2013-07-22 A → 2013-04-22 A (-91d) | 2013-12-03 → 2013-12-09 (+6d) | 97d? → 161d? | 31% → 41% | 124d → 120d |  |  |
| 90 | Архитектура разметки главного экрана |  | 2013-08-08 A |  | 80% → 100% | 207d → none |  |  |
| 91 | **Панель навигации** |  | 2013-09-24 → 2013-09-18 (-6d) | 33d → 29d | 25% → 85% | 162d → 173d |  |  |
| 93 | Разработка - панель навигации | 2013-09-17 → 2013-09-11 A (-6d) | 2013-09-24 → 2013-09-18 (-6d) |  | 0% → 80% | 162d → 173d | 92, 86 → 92, 95 | resources Алексей Львов → Андрей Карандей |
| 94 | GUI - архитектура плагинов/дочерних плагинов. Базис |  | 2013-09-03 A |  | 85% → 100% | 121d → none |  |  |
| 96 | GUI - отображение отчётов | 2013-09-04 → 2013-04-22 (-135d) | 2013-09-13 → 2013-05-06 (-130d) |  |  | 179d → 273d | 94 → none | resources Андрей Карандей → none |
| 97 | **GUI - плагин отображения коллекций** |  | 2013-10-02 → 2013-09-24 (-8d) | 21d → 15d |  | 121d → 1d |  |  |
| 99 | Разработка | 2013-09-25 → 2013-09-17 (-8d) | 2013-10-02 → 2013-09-24 (-8d) |  |  | 162d → 174d | 93 → 105 | resources Алексей Львов → Ярослав Бондарчук |
| 100 | **GUI - действия** | 2013-09-06 → 2013-04-22 A (-137d) | 2013-10-10 → 2013-09-09 (-31d) | 25d → 96d | 0% → 13% | 121d → 185d |  |  |
| 101 | Проектирование | 2013-09-06 A |  |  | 0% → 50% | 121d → 185d |  |  |
| 102 | Разработка | 2013-10-03 → 2013-04-22 (-164d) | 2013-10-10 → 2013-04-29 (-164d) |  |  | 162d → 275d | 99 → none | resources Алексей Львов → none |
| 103 | **Формы встроенного GUI** | 2013-09-10 A | 2013-10-10 → 2013-09-30 (-10d) | 23d → 15d | 0% → 38% | 121d → 170d |  |  |
| 104 | Конфигурация-архитектура | 2013-09-10 A | 2013-09-12 → 2013-09-10 A (-2d) | 3d → 1d | 0% → 100% | 121d → none |  |  |
| 105 | Маппинг на объекты | 2013-09-16 → 2013-09-13 A (-3d) | 2013-09-17 → 2013-09-16 A (-1d) |  | 0% → 100% | 179d → none | 104, 96 → 104 | resources Андрей Карандей → Ярослав Бондарчук |
| 106 | API GWT client-server | 2013-09-13 A | 2013-09-24 → 2013-09-17 A (-7d) | 8d → 3d | 0% → 100% | 121d → none |  |  |
| 107 | Реализация чтения | 2013-09-25 → 2013-09-24 (-1d) | 2013-10-10 → 2013-09-30 (-10d) | 12d → 5d |  | 157d → 117d | 106 → 49 | was named Реализация; resources Андрей Карандей → Денис Митавский |
| 109 | **GUI - поиск** | 2013-09-25 → 2013-10-01 (+6d) | 2013-10-17 → 2013-10-15 (-2d) | 17d → 11d |  | 143d → 159d |  |  |
| 110 | GUI - поиск. Проектирование | 2013-09-25 → 2013-10-01 (+6d) | 2013-09-27 → 2013-10-04 (+7d) | 3d → 4d |  | 143d → 138d | 106 → 107 |  |
| 111 | GUI - поиск. Реализация | 2013-10-11 → 2013-10-07 (-4d) | 2013-10-17 → 2013-10-15 (-2d) | 5d → 7d |  | 157d → 159d | 107 → 110 |  |
| 112 | **GUI - виджеты разработка** | 2013-09-25 → 2013-10-01 (+6d) | 2013-12-03 → 2013-12-09 (+6d) |  |  | 121d → 120d |  |  |
| 113 | Дата/время | 2013-09-25 → 2013-10-01 (+6d) | 2013-09-25 → 2013-10-01 (+6d) |  |  | 173d → 169d | 106 → 107 |  |
| 114 | Остальные без особенностей стиля ст.лебедева (базовый набор) | 2013-09-25 → 2013-10-01 (+6d) | 2013-10-29 → 2013-11-04 (+6d) |  |  | 121d → 117d | 106 → 107 |  |
| 115 | Остальные для стиля ст.лебедева | 2013-10-30 → 2013-11-05 (+6d) | 2013-12-03 → 2013-12-09 (+6d) |  |  | 124d → 120d |  |  |
| 116 | **GUI - брендинг, стилизация, темы** | 2013-10-30 → 2013-11-05 (+6d) | 2013-11-05 → 2013-11-11 (+6d) |  |  | 121d → 140d |  |  |
| 117 | Концепция | 2013-10-30 → 2013-11-05 (+6d) | 2013-11-05 → 2013-11-11 (+6d) |  |  | 121d → 117d |  |  |
| 118 | Тестирование производительности | 2013-11-06 → 2013-04-22 (-198d) | 2013-12-10 → 2013-05-31 (-193d) |  |  | 121d → 258d | 117 → none |  |
| 122 | Версионность/аудит | 2013-08-28 → 2013-10-29 (+62d) | 2013-09-06 → 2013-11-07 (+62d) |  |  | 63d → -109d | 36 → 121 |  |
| 123 | Блокировки бизнес-объектов | 2013-09-09 → 2013-11-08 (+60d) | 2013-09-16 → 2013-11-15 (+60d) |  |  | 63d → -109d |  |  |
| 125 | Уточнение состава и сроков работ | 2013-12-04 → 2013-12-10 (+6d) | 2013-12-05 → 2013-12-11 (+6d) |  |  | 124d → 120d |  |  |
| 126 | Кросс-СУБД, поддержка Oracle | 2013-09-17 → 2013-11-18 (+62d) | 2013-10-07 → 2013-12-06 (+60d) |  |  | 63d → -109d |  |  |
| 127 | SQL-trace | 2013-10-08 → 2013-12-09 (+62d) | 2013-10-14 → 2013-12-13 (+60d) |  |  | 147d → 103d |  |  |
| 128 | Локализация (на уровне конфигурации) | 2013-10-15 → 2013-12-16 (+62d) | 2013-11-04 → 2014-01-03 (+60d) |  |  | 147d → 103d |  |  |
| 129 | **Интеграция с системой управления учетными записями** | 2013-09-17 → 2013-11-18 (+62d) | 2013-10-04 → 2013-12-05 (+62d) |  |  | 168d → 124d |  |  |
| 130 | Интеграция с ActiveDirectory | 2013-09-17 → 2013-11-18 (+62d) | 2013-10-04 → 2013-12-05 (+62d) |  |  | 84d → 124d |  |  |
| 131 | **Расширение функций сервиса конфигурации** |  | 2013-11-01 → 2014-01-02 (+62d) | 84d → 128d |  | 133d → 89d |  |  |
| 132 | Расширяемость конфигурации |  | 2013-10-10 → 2013-12-11 (+62d) |  |  | 133d → 89d | 38 → none |  |
| 133 | Изменение и дополнение конфигурации системы | 2013-10-11 → 2013-12-12 (+62d) | 2013-11-01 → 2014-01-02 (+62d) |  |  | 133d → 89d |  |  |
| 134 | **Сервис для работы с системным журналом** | 2013-11-04 → 2014-01-03 (+60d) | 2013-11-22 → 2014-01-23 (+62d) |  |  | 133d → 89d |  |  |
| 135 | Ведение журнала действий пользователей и действий с объектами системы | 2013-11-04 → 2014-01-03 (+60d) | 2013-11-15 → 2014-01-16 (+62d) |  |  | 49d → 89d |  |  |
| 136 | Настройка уровня логирования | 2013-11-18 → 2014-01-17 (+60d) | 2013-11-22 → 2014-01-23 (+62d) |  |  | 49d → 89d |  |  |
| 137 | **Разработка** |  | 2014-04-02 → 2014-03-28 (-5d) | 212d → 209d |  | 108d → 111d |  |  |
| 139 | **Разработка серверной логики модуля CMJ** | 2013-10-31 → 2013-10-14 (-17d) | 2014-01-22 → 2014-01-03 (-19d) |  |  | 70d → 83d |  |  |
| 140 | Разработка схем документов модуля CMJ | 2013-10-31 → 2013-10-14 (-17d) | 2013-12-25 → 2013-12-06 (-19d) |  |  | 70d → 83d |  |  |
| 141 | Разработка ЖЦ процессов модуля (WF) | 2013-12-26 → 2013-12-09 (-17d) | 2014-01-22 → 2014-01-03 (-19d) |  |  | 70d → 83d |  |  |
| 142 | Разработка логики бизнес- действий модуля CMJ | 2013-10-31 → 2013-10-14 (-17d) | 2014-01-22 → 2014-01-03 (-19d) |  |  | 70d → 83d |  |  |
| 143 | Разработка процессов автоматизации для модуля CMJ | 2013-10-31 → 2013-10-14 (-17d) | 2013-12-25 → 2013-12-06 (-19d) |  |  | 128d → 141d |  |  |
| 144 | Разработка модели прав доступа (контекстные роли) | 2013-12-26 → 2013-12-09 (-17d) | 2014-01-22 → 2014-01-03 (-19d) |  |  | 108d → 121d |  |  |
| 153 | Подготовка отчетов | 2014-01-23 → 2014-01-06 (-17d) | 2014-03-19 → 2014-02-28 (-19d) |  |  | 70d → 83d |  |  |
| 154 | Сопряжение с мобильным клиентом СМ4 | 2014-01-23 → 2014-01-06 (-17d) | 2014-04-02 → 2014-03-14 (-19d) |  |  | 108d → 121d |  |  |
| 155 | **Тестирование** | 2014-01-06 → 2014-01-24 (+18d) | 2014-05-26 → 2014-05-07 (-19d) | 100.75d? → 74d? |  | 70d → 83d |  |  |
| 156 | **Функциональное тестирование** | 2014-01-06 → 2014-01-24 (+18d) | 2014-05-05 → 2014-04-16 (-19d) | 85.75d? → 59d? |  | 85d → 89d |  |  |
| 157 | Подготовка ПМИ | 2014-01-06 → 2014-01-24 (+18d) | 2014-01-13 → 2014-01-30 (+17d) |  |  | 18.75d → 89d |  |  |
| 158 | Разработка "сценариев тестирования" | 2014-01-06 → 2014-01-24 (+18d) | 2014-01-27 → 2014-02-13 (+17d) |  |  | 23.75d → 94d |  |  |
| 159 | Разработка модели нагрузки для тестирования | 2014-01-13 → 2014-01-31 (+18d) | 2014-01-27 → 2014-02-13 (+17d) |  |  | 23.75d → 94d |  |  |
| 160 | Адаптация автоматизированных сценариев от СМ4 для создания нагрузки | 2014-01-13 → 2014-01-31 (+18d) | 2014-02-17 → 2014-03-06 (+17d) |  |  | 18.75d → 89d |  |  |
| 161 | **Проведение тестирования** | 2014-03-13 → 2014-02-24 (-17d) | 2014-05-05 → 2014-04-16 (-19d) |  |  | 75d → 88d |  |  |
| 162 | **Подготовка среды тестирования** | 2014-03-13 → 2014-02-24 (-17d) | 2014-04-02 → 2014-03-14 (-19d) |  |  | 75d → 88d |  |  |
| 163 | Разворачивание системы | 2014-03-13 → 2014-02-24 (-17d) | 2014-03-20 → 2014-03-03 (-17d) |  |  | 118d → 131d |  |  |
| 164 | Система готова для подключения инструментов мониторинга | 2014-03-20 → 2014-03-03 (-17d) | 2014-03-20 → 2014-03-03 (-17d) |  |  | 118d → 131d |  |  |
| 165 | Наполнение данными | 2014-03-20 → 2014-03-03 (-17d) | 2014-04-02 → 2014-03-14 (-19d) |  |  | 70d → 83d |  |  |
| 166 | Среда тестирования готова | 2014-04-02 → 2014-03-14 (-19d) | 2014-04-02 → 2014-03-14 (-19d) |  |  | 70d → 83d |  |  |
| 167 | Проведение тестирования | 2014-04-03 → 2014-03-17 (-17d) | 2014-04-16 → 2014-03-28 (-19d) |  |  | 70d → 83d |  |  |
| 168 | **Обработка результатов тестирования и внесение изменений в модуль** | 2014-04-15 → 2014-03-27 (-19d) | 2014-05-05 → 2014-04-16 (-19d) |  |  | 70d → 83d |  |  |

| ID | Task | Start | Finish | Total float |
| --- | --- | --- | --- | --- |
| 169 | Устранение замечаний по результатам функционального тестирования | 2014-04-15 → 2014-03-27 (-19d) | 2014-05-05 → 2014-04-16 (-19d) | 70d → 83d |
| 170 | Проверка устранения замечаний | 2014-04-28 → 2014-04-09 (-19d) | 2014-05-05 → 2014-04-16 (-19d) | 70d → 83d |
| 171 | **Нагрузочное тестирование** | 2014-04-16 → 2014-03-28 (-19d) | 2014-05-26 → 2014-05-07 (-19d) | 70d → 83d |
| 172 | Стенд для нагрузочного тестирования подготовлен | 2014-04-16 → 2014-03-28 (-19d) | 2014-04-16 → 2014-03-28 (-19d) | 83d → 96d |
| 173 | Проведения нагрузочного тестирования | 2014-05-06 → 2014-04-17 (-19d) | 2014-05-19 → 2014-04-30 (-19d) | 70d → 83d |
| 174 | Обработка результатов нагрузочного тестирования | 2014-05-20 → 2014-05-01 (-19d) | 2014-05-26 → 2014-05-07 (-19d) | 70d → 83d |
| 175 | Разработка модуля "Делопроизводство" завершена | 2014-05-26 → 2014-05-07 (-19d) | 2014-05-26 → 2014-05-07 (-19d) | 70d → 83d |
| 176 | **Подготовка документации** | 2014-01-06 → 2014-01-24 (+18d) | 2014-04-28 → 2014-05-15 (+17d) | 90.75d → 77d |
| 177 | Разработка документа "Концепция системы " | 2014-01-06 → 2014-01-24 (+18d) | 2014-03-03 → 2014-03-20 (+17d) | 6.75d → 77d |
| 178 | Разработка "Software Architecture Document" | 2014-03-03 → 2014-03-21 (+18d) | 2014-04-28 → 2014-05-15 (+17d) | 6.75d → 77d |
| 179 | Документы подготовлены | 2014-04-28 → 2014-05-15 (+17d) | 2014-04-28 → 2014-05-15 (+17d) | 6.75d → 77d |
| 180 | Разработка "Software Architecture Document" для модулей первой очереди | 2014-01-06 → 2014-01-24 (+18d) | 2014-02-03 → 2014-02-20 (+17d) | 66.75d → 137d |
| 181 | Документы подготовлены | 2014-02-03 → 2014-02-20 (+17d) | 2014-02-03 → 2014-02-20 (+17d) | 66.75d → 137d |
| 182 | **Проверка работоспособности решения - Организация демонстрации** | 2014-03-13 → 2014-02-24 (-17d) | 2014-04-16 → 2014-03-28 (-19d) | 98d → 111d |
| 183 | Подготовка стенда | 2014-03-13 → 2014-02-24 (-17d) | 2014-03-17 → 2014-02-26 (-19d) | 120d → 133d |
| 184 | Подготовка прототипа | 2014-03-13 → 2014-02-24 (-17d) | 2014-04-09 → 2014-03-21 (-19d) | 98d → 111d |
| 185 | Проведение демонстраций | 2014-04-10 → 2014-03-24 (-17d) | 2014-04-14 → 2014-03-26 (-19d) | 98d → 111d |
| 186 | Анализ результатов - выводы | 2014-04-15 → 2014-03-27 (-19d) | 2014-04-16 → 2014-03-28 (-19d) | 98d → 111d |

## Version 30 (saved 2013-09-19)

Note of the change: обновление

Last finish stays 2014-09-01. Complete tasks 50 → 52.

Added:

| ID | Task | Duration | Start | Finish | Predecessors | Resources |
| --- | --- | --- | --- | --- | --- | --- |
| 62 | Подготовка описания по обновленным принциапам работы | 13d | 2013-08-16 A | 2013-09-11 A | 60 | Андрей Пирожков |

Changed:

| ID | Task | Finish | Complete | Total float |
| --- | --- | --- | --- | --- |
| 1 | **Разработка версии CM4/5** |  | 24% → 25% |  |
| 9 | **Создание модуля "Делопроизводство" (документоориентированная среда)** |  | 24% → 25% |  |
| 20 | **Проектирование и формирование ядра системы** |  | 38% → 40% |  |
| 59 | **Бизнес-объекты (иерархии доменных объектов)** | 2013-09-11 A | 32% → 100% | 185.75d → none |
| 60 | Проектирование | 2013-08-16 A | 59% → 100% | 190.75d → none |

## Version 31 (saved 2013-09-20)

Note of the change: новое о 20 сентября

Last finish 2014-09-01 → 2014-09-11 (+10d). Complete tasks 52 → 53.

Added:

| ID | Task | Duration | Start | Finish | Constraint | Resources |
| --- | --- | --- | --- | --- | --- | --- |
| 58 | Принято решение о работе с ПКД | 0d | 2013-10-01 | 2013-10-01 | start no earlier than 2013-10-01 | Денис Митавский [50%] |
| 74 | Структура хранения определена | 0d | 2013-10-28 | 2013-10-28 | finish no earlier than 2013-10-28 |  |
| 76 | Основные коннеторы реализованы | 0d | 2013-12-09 | 2013-12-09 | start no earlier than 2013-12-09 |  |
| 90 | Система готова к интеграции с модулем отчетов | 0d | 2013-09-30 | 2013-09-30 | start no earlier than 2013-09-30 | Денис Митавский [50%]; Андрей Цветков |
| 128 | **Дополнительные сервисы платформы** | 93d | 2013-08-28 | 2014-01-15 |  |  |

Removed: 175 Разработка модуля "Делопроизводство" завершена; 180 Разработка "Software Architecture Document" для модулей первой очереди; 181 Документы подготовлены

Changed:

| ID | Task | Start | Finish | Duration | Complete | Total float | Predecessors | Other |
| --- | --- | --- | --- | --- | --- | --- | --- | --- |
| 1 | **Разработка версии CM4/5** |  | 2014-09-01 → 2014-09-11 (+10d) |  | 25% → 26% |  |  |  |
| 3 | Управление проектом |  | 2014-05-06 → 2014-05-16 (+10d) |  |  |  |  |  |
| 4 | **Управление требованиями** |  | 2014-09-01 → 2014-09-11 (+10d) |  |  |  |  |  |
| 8 | Сопровождение требований |  | 2014-09-01 → 2014-09-11 (+10d) |  |  |  |  |  |
| 9 | **Создание модуля "Делопроизводство" (документоориентированная среда)** |  | 2014-05-15 → 2014-05-27 (+12d) |  | 25% → 26% |  |  |  |
| 20 | **Проектирование и формирование ядра системы** |  | 2014-01-23 → 2014-02-04 (+12d) |  |  |  |  |  |
| 54 | **Коллекции** |  | 2013-09-09 → 2013-10-18 (+39d) | 74d → 103d |  | 164d → 125d |  |  |
| 59 | ПКД ???? | 2013-08-21 → 2013-10-01 (+41d) | 2013-09-09 → 2013-10-18 (+39d) |  |  | 164d → 125d | 56, 51 → 56, 51, 58 | resources none → Валерий Мацукевич |
| 68 | **Слой сопряжения GUI CM4** |  | 2014-01-06 → 2014-01-16 (+10d) |  | 18% → 26% |  |  |  |
| 70 | Реализация коннекторов к платформе |  |  |  | 20% → 29% |  |  |  |
| 72 | Проработка задания выполнена, можно привлекать разработчиков БТЛ | 2013-09-11 → 2013-09-18 A (+7d) | 2013-09-11 → 2013-09-18 A (+7d) |  | 0% → 100% | 186d → none |  | constraint start no earlier than 2013-09-11 → start no earlier than 2013-09-18 |
| 75 | Сопряжение - работа с вложениями |  | 2014-01-01 → 2014-01-13 (+12d) |  |  |  |  |  |
| 77 | REST-протокол для АРМа - проектирование | 2014-01-01 → 2014-01-13 (+12d) | 2014-01-06 → 2014-01-16 (+10d) |  |  |  |  |  |
| 78 | **Проверка работоспособности решения - Организация демонстрации** | 2014-02-24 → 2013-12-09 (-77d) | 2014-03-28 → 2014-01-22 (-65d) |  |  | 111d → 98d | 171SS → 76 |  |
| 79 | Подготовка стенда | 2014-02-24 → 2013-12-09 (-77d) | 2014-02-26 → 2013-12-11 (-77d) |  |  | 133d → 120d |  |  |
| 80 | Подготовка прототипа | 2014-02-24 → 2013-12-09 (-77d) | 2014-03-21 → 2014-01-15 (-65d) |  |  | 111d → 98d |  |  |
| 81 | Проведение демонстраций | 2014-03-24 → 2014-01-16 (-67d) | 2014-03-26 → 2014-01-20 (-65d) |  |  | 111d → 98d |  |  |
| 82 | Анализ результатов - выводы | 2014-03-27 → 2014-01-21 (-65d) | 2014-03-28 → 2014-01-22 (-65d) |  |  | 111d → 98d |  |  |
| 89 | **Работа с отчетами** | 2013-09-10 → 2013-09-30 (+20d) | 2013-10-10 → 2013-12-04 (+55d) | 23d → 48d |  | 164d → 117d |  |  |
| 91 | JDBC-драйвер для системы построения отчётов | 2013-09-10 → 2013-10-21 (+41d) | 2013-09-19 → 2013-10-30 (+41d) |  |  | 164d → 125d | 59 → 59, 90 |  |
| 92 | Интеграция с Jasper Reports | 2013-09-20 → 2013-10-31 (+41d) | 2013-10-10 → 2013-11-20 (+41d) |  |  | 164d → 125d | 91 → 91, 74 |  |
| 93 | GUI - отображение отчётов | 2013-04-22 → 2013-11-21 (+213d) | 2013-05-06 → 2013-12-04 (+212d) | 8d → 10d |  | 273d → 125d | none → 92 |  |
| 94 | **GUI** |  |  |  | 41% → 43% |  |  |  |
| 127 | Тестирование производительности | 2013-04-22 → 2013-09-10 (+141d) | 2013-05-31 → 2013-10-14 (+136d) |  |  | 258d → 162d | none → 109 |  |
| 138 | Локализация (на уровне конфигурации) |  | 2014-01-03 → 2014-01-15 (+12d) |  |  |  |  |  |
| 141 | **Расширение функций сервиса конфигурации** |  | 2014-01-02 → 2014-01-14 (+12d) |  |  |  |  |  |
| 143 | Изменение и дополнение конфигурации системы |  | 2014-01-02 → 2014-01-14 (+12d) |  |  |  |  |  |
| 144 | **Сервис для работы с системным журналом** | 2014-01-03 → 2014-01-15 (+12d) | 2014-01-23 → 2014-02-04 (+12d) |  |  |  |  |  |
| 145 | Ведение журнала действий пользователей и действий с объектами системы | 2014-01-03 → 2014-01-15 (+12d) | 2014-01-16 → 2014-01-28 (+12d) |  |  |  |  |  |
| 146 | Настройка уровня логирования | 2014-01-17 → 2014-01-29 (+12d) | 2014-01-23 → 2014-02-04 (+12d) |  |  |  |  |  |
| 147 | **Разработка** |  | 2014-03-28 → 2014-04-09 (+12d) |  |  |  |  |  |
| 148 | Контроль и корректировка технических решений "Архитектурный комитет" |  | 2014-03-28 → 2014-04-09 (+12d) |  |  |  |  |  |
| 149 | **Разработка серверной логики модуля CMJ** |  | 2014-01-03 → 2014-01-15 (+12d) |  |  |  |  |  |
| 151 | Разработка ЖЦ процессов модуля (WF) |  | 2014-01-03 → 2014-01-15 (+12d) |  |  |  |  |  |
| 152 | Разработка логики бизнес- действий модуля CMJ |  | 2014-01-03 → 2014-01-15 (+12d) |  |  |  |  |  |
| 154 | Разработка модели прав доступа (контекстные роли) |  | 2014-01-03 → 2014-01-15 (+12d) |  |  |  |  |  |
| 155 | **Разработка Форм для АРМ тематических администраторов** |  | 2014-02-17 → 2014-02-27 (+10d) |  |  |  |  |  |
| 156 | **Подготовка работы со списками значений** |  | 2014-02-17 → 2014-02-27 (+10d) |  |  |  |  |  |
| 158 | Разработка функционала с рубрикаторами (сложные справочники) |  | 2014-01-20 → 2014-01-30 (+10d) |  |  |  |  |  |
| 159 | Разработка функционала для работы с словарями данных (простые, линейные справочники) | 2014-01-20 → 2014-01-30 (+10d) | 2014-02-17 → 2014-02-27 (+10d) |  |  |  |  |  |
| 160 | Разработка форм для работы в GUI (настройки форм) |  | 2014-01-13 → 2014-01-23 (+10d) |  |  |  |  |  |
| 161 | Разработка структуры рабочего места АРМ | 2014-01-13 → 2014-01-23 (+10d) | 2014-01-20 → 2014-01-30 (+10d) |  |  |  |  |  |
| 162 | Разработка специфичных для форм АРМ элементов GUI |  | 2014-01-20 → 2014-01-30 (+10d) |  |  |  |  |  |
| 163 | Подготовка отчетов | 2014-01-06 → 2014-01-16 (+10d) | 2014-02-28 → 2014-03-12 (+12d) |  |  |  | 150, 152, 151 → 150, 152, 151, 74 |  |
| 164 | Сопряжение с мобильным клиентом СМ4 | 2014-01-06 → 2014-01-16 (+10d) | 2014-03-14 → 2014-03-26 (+12d) |  |  |  |  |  |
| 165 | **Тестирование** | 2014-01-24 → 2014-02-05 (+12d) | 2014-05-07 → 2014-05-19 (+12d) |  |  |  |  |  |
| 166 | **Функциональное тестирование** | 2014-01-24 → 2014-02-05 (+12d) | 2014-04-16 → 2014-04-28 (+12d) |  |  |  |  |  |
| 167 | Подготовка ПМИ | 2014-01-24 → 2014-02-05 (+12d) | 2014-01-30 → 2014-02-11 (+12d) |  |  |  |  |  |
| 168 | Разработка "сценариев тестирования" | 2014-01-24 → 2014-02-05 (+12d) | 2014-02-13 → 2014-02-25 (+12d) |  |  |  |  |  |
| 169 | Разработка модели нагрузки для тестирования | 2014-01-31 → 2014-02-12 (+12d) | 2014-02-13 → 2014-02-25 (+12d) |  |  |  |  |  |
| 170 | Адаптация автоматизированных сценариев от СМ4 для создания нагрузки | 2014-01-31 → 2014-02-12 (+12d) | 2014-03-06 → 2014-03-18 (+12d) |  |  |  |  |  |
| 171 | **Проведение тестирования** | 2014-02-24 → 2014-03-06 (+10d) | 2014-04-16 → 2014-04-28 (+12d) |  |  |  |  |  |
| 172 | **Подготовка среды тестирования** | 2014-02-24 → 2014-03-06 (+10d) | 2014-03-14 → 2014-03-26 (+12d) |  |  |  |  |  |
| 173 | Разворачивание системы | 2014-02-24 → 2014-03-06 (+10d) | 2014-03-03 → 2014-03-13 (+10d) |  |  |  |  |  |
| 174 | Система готова для подключения инструментов мониторинга | 2014-03-03 → 2014-03-13 (+10d) | 2014-03-03 → 2014-03-13 (+10d) |  |  |  |  |  |
| 175 | Наполнение данными | 2014-03-03 → 2014-03-13 (+10d) | 2014-03-14 → 2014-03-26 (+12d) |  |  |  |  |  |
| 176 | Среда тестирования готова | 2014-03-14 → 2014-03-26 (+12d) | 2014-03-14 → 2014-03-26 (+12d) |  |  |  |  |  |
| 177 | Проведение тестирования | 2014-03-17 → 2014-03-27 (+10d) | 2014-03-28 → 2014-04-09 (+12d) |  |  |  |  |  |
| 178 | **Обработка результатов тестирования и внесение изменений в модуль** | 2014-03-27 → 2014-04-08 (+12d) | 2014-04-16 → 2014-04-28 (+12d) |  |  |  |  |  |
| 179 | Устранение замечаний по результатам функционального тестирования | 2014-03-27 → 2014-04-08 (+12d) | 2014-04-16 → 2014-04-28 (+12d) |  |  |  |  |  |
| 180 | Проверка устранения замечаний | 2014-04-09 → 2014-04-21 (+12d) | 2014-04-16 → 2014-04-28 (+12d) |  |  |  |  |  |
| 181 | **Нагрузочное тестирование** | 2014-03-28 → 2014-04-09 (+12d) | 2014-05-07 → 2014-05-19 (+12d) |  |  |  |  |  |
| 182 | Стенд для нагрузочного тестирования подготовлен | 2014-03-28 → 2014-04-09 (+12d) | 2014-03-28 → 2014-04-09 (+12d) |  |  |  |  |  |
| 183 | Проведения нагрузочного тестирования | 2014-04-17 → 2014-04-29 (+12d) | 2014-04-30 → 2014-05-12 (+12d) |  |  |  |  |  |
| 184 | Обработка результатов нагрузочного тестирования | 2014-05-01 → 2014-05-13 (+12d) | 2014-05-07 → 2014-05-19 (+12d) |  |  |  |  |  |
| 185 | **Подготовка документации** | 2014-01-24 → 2014-02-05 (+12d) | 2014-05-15 → 2014-05-27 (+12d) |  |  |  |  |  |
| 186 | Разработка документа "Концепция системы " | 2014-01-24 → 2014-02-05 (+12d) | 2014-03-20 → 2014-04-01 (+12d) |  |  |  |  |  |
| 187 | Разработка "Software Architecture Document" | 2014-03-21 → 2014-04-02 (+12d) | 2014-05-15 → 2014-05-27 (+12d) |  |  |  |  |  |
| 188 | Документы подготовлены | 2014-05-15 → 2014-05-27 (+12d) | 2014-05-15 → 2014-05-27 (+12d) |  |  |  |  |  |

## Version 32 (saved 2013-09-24)

Note of the change: уточнения по CMJ

Last finish stays 2014-09-11. Complete tasks 53 → 56.

Added:

| ID | Task | Duration | Start | Finish | Predecessors | Constraint | Resources |
| --- | --- | --- | --- | --- | --- | --- | --- |
| 75 | Проектирование завершено - готовность к интеграции | 0d | 2013-09-23 | 2013-09-23 |  | start no earlier than 2013-09-23 |  |
| 76 | **Интеграция с CMJ по Внутренним Документам** | 21d? | 2013-09-23 A | 2013-10-21 | 75 |  |  |
| 77 | MapperBuilder | 8d | 2013-09-23 | 2013-10-02 |  |  | Александр Власюк |
| 78 | Конфиг ДОП СС | 1d | 2013-09-25 A | 2013-09-26 A |  |  | Глеб Наздрачев [1%] |
| 79 | Mapper СС | 2d | 2013-10-03 | 2013-10-04 | 77, 78 |  | Александр Власюк |
| 80 | Конфиг ДОП Каталога | 3d? | 2013-09-24 | 2013-09-26 |  | start no earlier than 2013-09-24 | Глеб Наздрачев |
| 81 | Mapper Каталога | 2d | 2013-10-03 | 2013-10-04 | 77, 80 |  | Александр Власюк |
| 82 | Конфиг ДОП Портала | 3d? | 2013-09-25 | 2013-09-27 |  | start no earlier than 2013-09-25 | Тугушев Илья |
| 83 | Mapper Портала | 2d | 2013-10-07 | 2013-10-08 | 77, 82, 81 |  | Александр Власюк |
| 84 | Конфиг ДОП СО | 1d | 2013-09-23 A | 2013-09-23 A |  |  | Глеб Наздрачев [1%] |
| 85 | Maper СО | 2d | 2013-10-09 | 2013-10-10 | 77, 84, 83 |  | Александр Власюк |
| 86 | Конфиг ДОП ВнД | 3d? | 2013-09-27 | 2013-10-01 | 80 |  | Глеб Наздрачев |
| 87 | Mapper ВнД | 2d | 2013-10-11 | 2013-10-14 | 77, 86, 85 |  | Александр Власюк |
| 88 | Кофиг ДОП СпО | 1d | 2013-09-23 A | 2013-09-23 A |  |  | Глеб Наздрачев [1%] |
| 89 | Mapper СпО | 2d | 2013-10-15 | 2013-10-16 | 77, 88, 87 |  | Александр Власюк |
| 90 | Аутентификация | 3d? | 2013-09-30 | 2013-10-02 |  | start no earlier than 2013-09-30 | Влад Симоненко |
| 91 | Вложения | 3d? | 2013-10-03 | 2013-10-07 | 90 |  | Влад Симоненко |
| 92 | Форматированный текст | 3d? | 2013-10-08 | 2013-10-10 | 91 |  | Влад Симоненко |
| 93 | Настраиваемые коллекции | 3d? | 2013-10-02 | 2013-10-04 | 86 |  | Глеб Наздрачев |
| 94 | Адаптеры View, Databse, Document, Session | 13d | 2013-09-30 | 2013-10-16 |  | start no earlier than 2013-09-30 | (БТЛ) Олег Еренцов; (БТЛ) Дмитрий Лякин |
| 95 | **Разработка коллекций** | 12d? | 2013-09-30 | 2013-10-15 |  |  |  |
| 96 | Коллекции Портала | 3d? | 2013-09-30 | 2013-10-02 | 82 |  | Тугушев Илья |
| 97 | Коллекции СС | 3d? | 2013-10-07 | 2013-10-09 | 93 |  | Глеб Наздрачев |
| 98 | Коллекции Каталога | 3d? | 2013-10-10 | 2013-10-14 | 97 |  | Глеб Наздрачев |
| 99 | Коллекции СО | 3d? | 2013-10-03 | 2013-10-07 | 96 |  | Тугушев Илья |
| 100 | Коллекции ВнД | 3d? | 2013-10-08 | 2013-10-10 | 99 |  | Тугушев Илья |
| 101 | Коллекции СпО | 3d? | 2013-10-11 | 2013-10-15 | 100 |  | Тугушев Илья |
| 102 | ВнД | 0d | 2013-10-16 | 2013-10-16 | 97, 79, 98, 81, 96, 83, 99, 85, 100, 87, 101, 89, 90, 91, 92, 93, 94 |  |  |
| 103 | Объединение War | 1d | 2013-10-17 | 2013-10-17 | 102 |  | Тугушев Илья |
| 104 | **Инструмент заполнения** | 3d? | 2013-10-17 | 2013-10-21 | 102 |  |  |
| 105 | Инструмент заполнения Каталога | 3d? | 2013-10-17 | 2013-10-21 |  |  |  |
| 106 | Инструмент заполнения СС | 3d? | 2013-10-17 | 2013-10-21 |  |  |  |
| 107 | Инструмент заполнения Портала | 3d? | 2013-10-17 | 2013-10-21 |  |  |  |
| 108 | Инструмент заполнения СО | 3d? | 2013-10-17 | 2013-10-21 |  |  |  |
| 109 | Инструмент заполнения СпО | 3d? | 2013-10-17 | 2013-10-21 |  |  |  |

Changed:

| ID | Task | Start | Duration | Complete | Other |
| --- | --- | --- | --- | --- | --- |
| 1 | **Разработка версии CM4/5** |  |  | 26% → 25% |  |
| 9 | **Создание модуля "Делопроизводство" (документоориентированная среда)** |  |  | 26% → 24% |  |
| 20 | **Проектирование и формирование ядра системы** |  |  | 40% → 36% |  |
| 47 | Разработка |  |  |  | resources (БТЛ) Ларин → (БТЛ) Михаит Ларин |
| 50 | Реализация |  |  |  | resources (БТЛ) Ларин → (БТЛ) Михаит Ларин |
| 68 | **Слой сопряжения GUI CM4** |  | 110.25d → 110.25d? | 26% → 16% |  |
| 73 | Рефакторинг СМ 4.2.1 выполнен | 2013-09-30 A |  | 0% → 80% |  |

## Version 33 (saved 2013-09-25)

Note of the change: Измеены трудозатраты

Last finish stays 2014-09-11.

Added:

| ID | Task | Duration | Start | Finish | Predecessors | Constraint |
| --- | --- | --- | --- | --- | --- | --- |
| 94 | Задание по View и Session поставлена | 0d | 2013-09-30 | 2013-09-30 |  | start no earlier than 2013-09-30 |
| 96 | Задание по Database и Document поставлена | 0d | 2013-10-04 | 2013-10-04 | 94FS+5d |  |

Changed:

| ID | Task | Start | Finish | Duration | Complete | Total float | Predecessors | Other |
| --- | --- | --- | --- | --- | --- | --- | --- | --- |
| 47 | Разработка |  |  |  |  |  |  | resources (БТЛ) Михаит Ларин → (БТЛ) Михаил Ларин |
| 50 | Реализация |  |  |  |  |  |  | resources (БТЛ) Михаит Ларин → (БТЛ) Михаил Ларин |
| 68 | **Слой сопряжения GUI CM4** |  |  |  | 16% → 15% |  |  |  |
| 76 | **Интеграция с CMJ по Внутренним Документам** |  | 2013-10-21 → 2013-10-23 (+2d) | 21d? → 23d? |  | 157d → 155d |  |  |
| 80 | Конфиг ДОП Каталога |  | 2013-09-26 → 2013-09-27 (+1d) | 3d? → 3.75d? |  | 159d → 156d |  | resources Глеб Наздрачев → Глеб Наздрачев [80%] |
| 82 | Конфиг ДОП Портала |  | 2013-09-27 → 2013-09-30 (+3d) | 3d? → 3.75d? |  | 158d → 155d |  | resources Тугушев Илья → Тугушев Илья [80%] |
| 86 | Конфиг ДОП ВнД |  | 2013-10-01 → 2013-10-03 (+2d) | 3d? → 3.75d? |  | 159d → 156d |  | resources Глеб Наздрачев → Глеб Наздрачев [80%] |
| 93 | Настраиваемые коллекции | 2013-10-02 → 2013-10-03 (+1d) | 2013-10-04 → 2013-10-08 (+4d) |  |  | 159d → 156d |  |  |
| 95 | Адаптеры View, Databse, Document, Session |  |  |  |  |  | none → 94 | constraint start no earlier than 2013-09-30 → none |
| 97 | **Разработка коллекций** |  | 2013-10-15 → 2013-10-18 (+3d) | 12d? → 14.25d? |  | 158d → 155d |  |  |
| 98 | Коллекции Портала |  | 2013-10-02 → 2013-10-03 (+1d) |  |  | 158d → 155d |  |  |
| 99 | Коллекции СС | 2013-10-07 → 2013-10-08 (+1d) | 2013-10-09 → 2013-10-14 (+5d) | 3d? → 3.75d? |  | 159d → 156d |  | resources Глеб Наздрачев → Глеб Наздрачев [80%] |
| 100 | Коллекции Каталога | 2013-10-10 → 2013-10-14 (+4d) | 2013-10-14 → 2013-10-17 (+3d) | 3d? → 3.75d? |  | 159d → 156d |  | resources Глеб Наздрачев → Глеб Наздрачев [80%] |
| 101 | Коллекции СО |  | 2013-10-07 → 2013-10-09 (+2d) | 3d? → 3.75d? |  | 158d → 155d |  | resources Тугушев Илья → Тугушев Илья [80%] |
| 102 | Коллекции ВнД | 2013-10-08 → 2013-10-09 (+1d) | 2013-10-10 → 2013-10-15 (+5d) | 3d? → 3.75d? |  | 158d → 155d |  | resources Тугушев Илья → Тугушев Илья [80%] |
| 103 | Коллекции СпО | 2013-10-11 → 2013-10-15 (+4d) | 2013-10-15 → 2013-10-18 (+3d) | 3d? → 3.75d? |  | 158d → 155d |  | resources Тугушев Илья → Тугушев Илья [80%] |
| 104 | ВнД | 2013-10-16 → 2013-10-18 (+2d) | 2013-10-16 → 2013-10-18 (+2d) |  |  | 157d → 155d |  |  |
| 105 | Объединение War | 2013-10-17 → 2013-10-21 (+4d) | 2013-10-17 → 2013-10-21 (+4d) |  |  | 159d → 157d |  |  |
| 106 | **Инструмент заполнения** | 2013-10-17 → 2013-10-21 (+4d) | 2013-10-21 → 2013-10-23 (+2d) |  |  | 157d → 155d |  |  |
| 107 | Инструмент заполнения Каталога | 2013-10-17 → 2013-10-21 (+4d) | 2013-10-21 → 2013-10-23 (+2d) |  |  | 157d → 155d |  |  |
| 108 | Инструмент заполнения СС | 2013-10-17 → 2013-10-21 (+4d) | 2013-10-21 → 2013-10-23 (+2d) |  |  | 157d → 155d |  |  |
| 109 | Инструмент заполнения Портала | 2013-10-17 → 2013-10-21 (+4d) | 2013-10-21 → 2013-10-23 (+2d) |  |  | 157d → 155d |  |  |
| 110 | Инструмент заполнения СО | 2013-10-17 → 2013-10-21 (+4d) | 2013-10-21 → 2013-10-23 (+2d) |  |  | 157d → 155d |  |  |
| 111 | Инструмент заполнения СпО | 2013-10-17 → 2013-10-21 (+4d) | 2013-10-21 → 2013-10-23 (+2d) |  |  | 157d → 155d |  |  |

## Version 34 (saved 2013-09-26)

Note of the change: новое

Last finish stays 2014-09-11.

Added:

| ID | Task | Duration | Start | Finish | Predecessors | Constraint | Resources |
| --- | --- | --- | --- | --- | --- | --- | --- |
| 78 | Уточнение расширенной постановки по MapperBuilder выполнена | 0d | 2013-09-27 | 2013-09-27 |  | start no earlier than 2013-09-27 | Тугушев Илья [80%] |
| 95 | Builder коллекций | 10d | 2013-10-08 | 2013-10-21 | 93 |  | Влад Симоненко |
| 96 | **Конфигурация коллекций** | 1d? | 2013-10-03 | 2013-10-04 | 93 |  |  |
| 97 | Чтение конфигураций | 1d? | 2013-10-03 | 2013-10-04 |  |  |  |
| 98 | Получение коллекции платформы | 1d? | 2013-10-03 | 2013-10-04 |  |  |  |
| 99 | **Разработка адаптеров для Вн** | 17d | 2013-09-30 | 2013-10-22 |  |  |  |
| 102 | Разработка адаптеров database | 5d | 2013-10-09 | 2013-10-15 | 77 |  | Александр Власюк |
| 104 | Разработка адаптеров DOCUMENT | 5d | 2013-10-16 | 2013-10-22 | 102, 103 |  | Александр Власюк |
| 107 | Инструктаж по @-формулам проведен | 0d | 2013-10-04 | 2013-10-04 | 106, 101 |  | Тугушев Илья [80%] |

Changed:

| ID | Task | Start | Finish | Duration | Complete | Total float | Predecessors | Other |
| --- | --- | --- | --- | --- | --- | --- | --- | --- |
| 68 | **Слой сопряжения GUI CM4** |  |  |  | 15% → 14% |  |  |  |
| 76 | **Интеграция с CMJ по Внутренним Документам** |  | 2013-10-23 → 2013-11-01 (+9d) | 23d? → 30d? |  | 155d → 148d |  |  |
| 77 | MapperBuilder |  | 2013-10-02 → 2013-10-08 (+6d) | 8d → 12d |  | 157d → 155d |  |  |
| 80 | Mapper СС | 2013-10-03 → 2013-10-09 (+6d) | 2013-10-04 → 2013-10-10 (+6d) |  |  | 165d → 161d |  | resources Александр Власюк → Глеб Наздрачев [80%] |
| 82 | Mapper Каталога | 2013-10-03 → 2013-10-22 (+19d) | 2013-10-04 → 2013-10-23 (+19d) |  |  | 157d → 148d | 77, 81 → 77, 81, 94 | resources Александр Власюк → Глеб Наздрачев [80%] |
| 84 | Mapper Портала | 2013-10-07 → 2013-10-09 (+2d) | 2013-10-08 → 2013-10-10 (+2d) |  |  | 157d → 161d | 77, 83, 82 → 77, 83 | resources Александр Власюк → Тугушев Илья [80%] |
| 86 | Maper СО | 2013-10-09 → 2013-10-24 (+15d) | 2013-10-10 → 2013-10-25 (+15d) |  |  | 157d → 148d | 77, 85, 84 → 77, 82 | resources Александр Власюк → Глеб Наздрачев [80%] |
| 87 | Конфиг ДОП ВнД |  |  |  |  | 156d → 150.5d |  | resources Глеб Наздрачев [80%] → none |
| 88 | Mapper ВнД | 2013-10-11 → 2013-10-28 (+17d) | 2013-10-14 → 2013-10-29 (+15d) |  |  | 157d → 148d | 77, 87, 86 → 77, 86 | resources Александр Власюк → Глеб Наздрачев [80%] |
| 90 | Mapper СпО | 2013-10-15 → 2013-10-11 (-4d) | 2013-10-16 → 2013-10-15 (-1d) | 2d → 3d |  | 157d → 158d | 77, 89, 88 → 77, 84 | resources Александр Власюк → Тугушев Илья [80%] |
| 91 | Аутентификация |  | 2013-10-02 → 2013-10-01 (-1d) | 3d? → 2d |  | 161d → 148d |  |  |
| 92 | Вложения | 2013-10-03 → 2013-10-02 (-1d) | 2013-10-07 → 2013-10-03 (-4d) | 3d? → 2d |  | 161d → 148d |  |  |
| 93 | Форматированный текст | 2013-10-08 → 2013-10-04 (-4d) | 2013-10-10 → 2013-10-07 (-3d) | 3d? → 2d |  | 161d → 148d |  |  |
| 94 | **Настраиваемые коллекции** |  | 2013-10-08 → 2013-10-21 (+13d) | 3d? → 12.5d? |  | 156d → 148d | 87 → 81, 87 | resources Глеб Наздрачев → none |
| 100 | Задание по View и Session поставлена |  |  |  |  | 157d → 163d |  | resources none → Тугушев Илья [80%] |
| 101 | Адаптеры View, Session |  | 2013-10-16 → 2013-10-04 (-12d) | 13d → 5d |  | 157d → 165d |  | was named Адаптеры View, Databse, Document, Session |
| 103 | Задание по Database и Document поставлена |  |  |  |  | 168d → 163d |  | resources none → Тугушев Илья [80%] |
| 105 | **Разработка коллекций** |  | 2013-10-18 → 2013-10-14 (-4d) | 14.25d? → 10.2d |  | 155d → 159.05d |  |  |
| 106 | Коллекции Портала |  | 2013-10-03 → 2013-10-04 (+1d) | 3d? → 4d |  | 155d → 159.05d |  | resources Тугушев Илья → Тугушев Илья [80%] |
| 108 | Коллекции СС | 2013-10-08 → 2013-10-04 (-4d) | 2013-10-14 → 2013-10-09 (-5d) | 3.75d? → 3d |  | 156d → 159.05d | 94 → 106 | resources Глеб Наздрачев [80%] → (БТЛ) Олег Еренцов |
| 109 | Коллекции Каталога | 2013-10-14 → 2013-10-04 (-10d) | 2013-10-17 → 2013-10-09 (-8d) | 3.75d? → 3d |  | 156d → 159.05d | 108 → 106, 81 | resources Глеб Наздрачев [80%] → (БТЛ) Дмитрий Лякин |
| 110 | Коллекции СО | 2013-10-03 → 2013-10-04 (+1d) |  | 3.75d? → 3d |  | 155d → 162.25d | 106 → 106, 85 |  |
| 111 | Коллекции ВнД |  | 2013-10-15 → 2013-10-14 (-1d) | 3.75d? → 3.2d |  | 155d → 159.05d | 110 → 108 | resources Тугушев Илья [80%] → (БТЛ) Олег Еренцов |
| 112 | Коллекции СпО | 2013-10-15 → 2013-10-09 (-6d) | 2013-10-18 → 2013-10-14 (-4d) | 3.75d? → 3.2d |  | 155d → 159.05d | 111 → 109 | resources Тугушев Илья [80%] → (БТЛ) Дмитрий Лякин |
| 113 | ВнД | 2013-10-18 → 2013-10-29 (+11d) | 2013-10-18 → 2013-10-29 (+11d) |  |  | 155d → 148d |  |  |
| 114 | Объединение War | 2013-10-21 → 2013-10-30 (+9d) | 2013-10-21 → 2013-10-30 (+9d) |  |  | 157d → 150d |  |  |
| 115 | **Инструмент заполнения** | 2013-10-21 → 2013-10-30 (+9d) | 2013-10-23 → 2013-11-01 (+9d) |  |  | 155d → 148d |  |  |
| 116 | Инструмент заполнения Каталога | 2013-10-21 → 2013-10-30 (+9d) | 2013-10-23 → 2013-11-01 (+9d) |  |  | 155d → 148d |  |  |
| 117 | Инструмент заполнения СС | 2013-10-21 → 2013-10-30 (+9d) | 2013-10-23 → 2013-11-01 (+9d) |  |  | 155d → 148d |  |  |
| 118 | Инструмент заполнения Портала | 2013-10-21 → 2013-10-30 (+9d) | 2013-10-23 → 2013-11-01 (+9d) |  |  | 155d → 148d |  |  |
| 119 | Инструмент заполнения СО | 2013-10-21 → 2013-10-30 (+9d) | 2013-10-23 → 2013-11-01 (+9d) |  |  | 155d → 148d |  |  |
| 120 | Инструмент заполнения СпО | 2013-10-21 → 2013-10-30 (+9d) | 2013-10-23 → 2013-11-01 (+9d) |  |  | 155d → 148d |  |  |

## Version 35 (saved 2013-09-27)

Note of the change: Обновление

Last finish stays 2014-09-11.

Added:

| ID | Task | Duration | Start | Finish | Predecessors | Resources |
| --- | --- | --- | --- | --- | --- | --- |
| 97 | Типовая иерархия кастомных папок (3шт) | 1d | 2013-10-01 | 2013-10-02 |  | Глеб Наздрачев [80%] |
| 99 | Проверка работы | 1d? | 2013-10-03 | 2013-10-04 | 98 | Глеб Наздрачев [80%] |
| 100 | **Системные настройки** | 6d | 2013-10-15 | 2013-10-23 | 95 |  |
| 101 | XSD-схема XML-настроек | 3d | 2013-10-15 | 2013-10-18 |  | Влад Симоненко |
| 102 | Чтение через спец-Mapper | 3d | 2013-10-18 | 2013-10-23 | 101 | Влад Симоненко |

Removed: 97 Чтение конфигураций

Changed:

| ID | Task | Start | Finish | Duration | Total float | Predecessors | Other |
| --- | --- | --- | --- | --- | --- | --- | --- |
| 76 | **Интеграция с CMJ по Внутренним Документам** |  | 2013-11-01 → 2013-10-28 (-4d) | 30d? → 25.75d? | 148d → 152.25d |  |  |
| 82 | Mapper Каталога | 2013-10-22 → 2013-10-09 (-13d) | 2013-10-23 → 2013-10-10 (-13d) |  | 148d → 157d | 77, 81, 94 → 77, 81, 96 |  |
| 86 | Maper СО | 2013-10-24 → 2013-10-11 (-13d) | 2013-10-25 → 2013-10-14 (-11d) |  | 148d → 157d |  |  |
| 87 | Конфиг ДОП ВнД |  | 2013-10-03 → 2013-10-01 (-2d) | 3.75d? → 2d | 150.5d → 152.25d |  | resources none → Глеб Наздрачев [80%] |
| 88 | Mapper ВнД | 2013-10-28 → 2013-10-15 (-13d) | 2013-10-29 → 2013-10-16 (-13d) |  | 148d → 157d |  |  |
| 91 | Аутентификация | 2013-09-30 → 2013-10-15 (+15d) | 2013-10-01 → 2013-10-17 (+16d) |  | 148d → 152.25d | none → 95 |  |
| 92 | Вложения | 2013-10-02 → 2013-10-17 (+15d) | 2013-10-03 → 2013-10-21 (+18d) |  | 148d → 152.25d |  |  |
| 93 | Форматированный текст | 2013-10-04 → 2013-10-21 (+17d) | 2013-10-07 → 2013-10-23 (+16d) |  | 148d → 152.25d |  |  |
| 94 | **Настраиваемые коллекции** | 2013-10-03 → 2013-10-01 (-2d) | 2013-10-21 → 2013-10-15 (-6d) | 12.5d? → 10d? | 148d → 152.25d |  |  |
| 95 | Builder коллекций | 2013-10-08 → 2013-10-01 (-7d) | 2013-10-21 → 2013-10-15 (-6d) |  | 148d → 152.25d | 93 → none | constraint none → start no earlier than 2013-09-30 |
| 96 | **Конфигурация коллекций** | 2013-10-03 → 2013-10-01 (-2d) |  | 1d? → 3d? | 159.5d → 159.25d | 93 → 87, 93 |  |
| 98 | Системные настройки для ВнД | 2013-10-03 → 2013-10-02 (-1d) | 2013-10-04 → 2013-10-03 (-1d) |  | 159.5d → 159.25d | none → 97 | was named Получение коллекции платформы; resources none → Глеб Наздрачев [80%] |
| 117 | ВнД | 2013-10-29 → 2013-10-23 (-6d) | 2013-10-29 → 2013-10-23 (-6d) |  | 148d → 152.25d |  |  |
| 118 | Объединение War | 2013-10-30 → 2013-10-23 (-7d) | 2013-10-30 → 2013-10-24 (-6d) |  | 150d → 154.25d |  |  |
| 119 | **Инструмент заполнения** | 2013-10-30 → 2013-10-23 (-7d) | 2013-11-01 → 2013-10-28 (-4d) |  | 148d → 152.25d |  |  |
| 120 | Инструмент заполнения Каталога | 2013-10-30 → 2013-10-23 (-7d) | 2013-11-01 → 2013-10-28 (-4d) |  | 148d → 152.25d |  |  |
| 121 | Инструмент заполнения СС | 2013-10-30 → 2013-10-23 (-7d) | 2013-11-01 → 2013-10-28 (-4d) |  | 148d → 152.25d |  |  |
| 122 | Инструмент заполнения Портала | 2013-10-30 → 2013-10-23 (-7d) | 2013-11-01 → 2013-10-28 (-4d) |  | 148d → 152.25d |  |  |
| 123 | Инструмент заполнения СО | 2013-10-30 → 2013-10-23 (-7d) | 2013-11-01 → 2013-10-28 (-4d) |  | 148d → 152.25d |  |  |
| 124 | Инструмент заполнения СпО | 2013-10-30 → 2013-10-23 (-7d) | 2013-11-01 → 2013-10-28 (-4d) |  | 148d → 152.25d |  |  |

## Version 36 (saved 2013-09-30)

Last finish stays 2014-09-11.

Added:

| ID | Task | Duration | Start | Finish | Predecessors | Resources |
| --- | --- | --- | --- | --- | --- | --- |
| 98 | Mapper папок | 3d | 2013-10-09 | 2013-10-14 | 97 | Александр Власюк |

Changed:

| ID | Task | Start | Finish | Duration | Total float | Predecessors | Other |
| --- | --- | --- | --- | --- | --- | --- | --- |
| 70 | Реализация коннекторов к платформе |  |  |  |  |  | resources Тугушев Илья [75%]; Глеб Наздрачев → Тугушев Илья [75%]; Глеб Ноздрачев |
| 77 | MapperBuilder |  | 2013-10-08 → 2013-10-03 (-5d) | 12d → 9d | 156d → 159d |  | constraint none → finish no earlier than 2013-10-01 |
| 79 | Конфиг ДОП СС |  |  |  |  |  | resources Глеб Наздрачев [1%] → Глеб Ноздрачев [1%] |
| 80 | Mapper СС | 2013-10-09 → 2013-10-04 (-5d) | 2013-10-10 → 2013-10-07 (-3d) |  | 161d → 164d |  | resources Глеб Наздрачев [80%] → Глеб Ноздрачев [80%] |
| 81 | Конфиг ДОП Каталога |  |  |  |  |  | resources Глеб Наздрачев [80%] → Глеб Ноздрачев [80%] |
| 82 | Mapper Каталога | 2013-10-09 → 2013-10-04 (-5d) | 2013-10-10 → 2013-10-07 (-3d) |  | 157d → 160d |  | resources Глеб Наздрачев [80%] → Глеб Ноздрачев [80%] |
| 84 | Mapper Портала | 2013-10-09 → 2013-10-04 (-5d) | 2013-10-10 → 2013-10-07 (-3d) |  | 158d → 161d |  |  |
| 85 | Конфиг ДОП СО |  |  |  |  |  | resources Глеб Наздрачев [1%] → Глеб Ноздрачев [1%] |
| 86 | Maper СО | 2013-10-11 → 2013-10-08 (-3d) | 2013-10-14 → 2013-10-09 (-5d) |  | 157d → 160d |  | resources Глеб Наздрачев [80%] → Глеб Ноздрачев [80%] |
| 87 | Конфиг ДОП ВнД |  |  |  |  |  | resources Глеб Наздрачев [80%] → Глеб Ноздрачев [80%] |
| 88 | Mapper ВнД | 2013-10-15 → 2013-10-10 (-5d) | 2013-10-16 → 2013-10-11 (-5d) |  | 157d → 160d |  | resources Глеб Наздрачев [80%] → Глеб Ноздрачев [80%] |
| 89 | Кофиг ДОП СпО |  |  |  |  |  | resources Глеб Наздрачев [1%] → Глеб Ноздрачев [1%] |
| 90 | Mapper СпО | 2013-10-11 → 2013-10-08 (-3d) | 2013-10-15 → 2013-10-10 (-5d) |  | 158d → 161d |  |  |
| 95 | **Системные настройки** | 2013-10-15 → 2013-10-01 (-14d) | 2013-10-23 → 2013-10-14 (-9d) | 6d → 9d | 155.25d → 158.25d | 99 → none |  |
| 96 | XSD-схема XML-настроек | 2013-10-15 → 2013-10-01 (-14d) | 2013-10-18 → 2013-10-04 (-14d) |  | 155.25d → 158.25d |  | resources Влад Симоненко → Александр Власюк |
| 97 | Чтение XML настроек через спец-Mapper | 2013-10-18 → 2013-10-04 (-14d) | 2013-10-23 → 2013-10-09 (-14d) |  | 155.25d → 158.25d |  | was named Чтение через спец-Mapper; resources Влад Симоненко → Александр Власюк |
| 100 | **Конфигурация коллекций** |  | 2013-10-04 → 2013-10-03 (-1d) | 3d? → 2d? | 159.25d → 160.25d |  |  |
| 101 | Типовая иерархия кастомных папок (3шт) |  |  |  | 159.25d → 160.25d |  | resources Глеб Наздрачев [80%] → Глеб Ноздрачев [80%] |
| 102 | Системные настройки для ВнД |  |  |  | 159.25d → 160.25d |  | resources Глеб Наздрачев [80%] → Глеб Ноздрачев [80%] |
| 103 | Проверка работы | 2013-10-03 → 2013-10-14 (+11d) | 2013-10-04 → 2013-10-15 (+11d) |  | 159.25d → 158.25d | 102 → 100, 95 | resources Глеб Наздрачев [80%] → Глеб Ноздрачев [80%] |
| 104 | **Разработка адаптеров для Вн** |  | 2013-10-22 → 2013-10-17 (-5d) | 17d → 14d | 156d → 159d |  |  |
| 107 | Разработка адаптеров database | 2013-10-09 → 2013-10-04 (-5d) | 2013-10-15 → 2013-10-10 (-5d) |  | 156d → 159d |  |  |
| 109 | Разработка адаптеров DOCUMENT | 2013-10-16 → 2013-10-11 (-5d) | 2013-10-22 → 2013-10-17 (-5d) |  | 156d → 159d |  |  |

## Version 37 (saved 2013-10-01)

Last finish stays 2014-09-11. Complete tasks 56 → 57.

Changed:

| ID | Task | Start | Finish | Complete | Total float |
| --- | --- | --- | --- | --- | --- |
| 68 | **Слой сопряжения GUI CM4** |  |  | 14% → 16% |  |
| 76 | **Интеграция с CMJ по Внутренним Документам** |  |  | 3% → 6% |  |
| 81 | Конфиг ДОП Каталога | 2013-09-24 A | 2013-09-27 A | 0% → 100% | 157.25d → none |

## Version 38 (saved 2013-10-04)

Note of the change: актуализация

Last finish stays 2014-09-11.

Changed:

| ID | Task | Other |
| --- | --- | --- |
| 106 | Адаптеры View, Session | resources (БТЛ) Олег Еренцов; (БТЛ) Дмитрий Лякин → (БТЛ) Олег Еренцов; (БТЛ)Сергей Степыгин |

## Version 39 (saved 2013-10-08)

Note of the change: актуализация работ

Last finish stays 2014-09-11. Complete tasks 57 → 63.

Added:

| ID | Task | Duration | Start | Finish | Predecessors | Constraint | Resources |
| --- | --- | --- | --- | --- | --- | --- | --- |
| 107 | Разработка логики адаптеров view&session | 6d | 2013-10-08 | 2013-10-15 | 106 |  | (БТЛ) Олег Еренцов; (БТЛ)Сергей Степыгин |
| 108 | Разработка архитектуры дя адаптеров database | 5d | 2013-09-30 | 2013-10-04 | 105 |  | Тугушев Илья [80%] |
| 128 | **Интеграция с CMJ по Входящим документам** | 31d? | 2013-11-04 | 2013-12-17 | 76 |  |  |
| 129 | Конфиг ДОП | 6d | 2013-11-04 | 2013-11-12 |  |  | Глеб Ноздрачев [1%] |
| 130 | Mapper | 6d | 2013-11-12 | 2013-11-20 | 129 |  | Глеб Ноздрачев [80%] |
| 131 | **Настраиваемые коллекции** | 5d? | 2013-11-20 | 2013-11-27 | 130 |  |  |
| 132 | **Конфигурация коллекций** | 4d | 2013-11-20 | 2013-11-26 |  |  |  |
| 133 | Типовая иерархия кастомных папок (3шт) | 2d | 2013-11-20 | 2013-11-22 |  |  | Глеб Ноздрачев [80%] |
| 134 | Системные настройки для Вх | 2d | 2013-11-22 | 2013-11-26 | 133 |  | Глеб Ноздрачев [80%] |
| 135 | Проверка работы | 1d? | 2013-11-26 | 2013-11-27 | 132 |  | Глеб Ноздрачев [80%] |
| 136 | **Разработка адаптеров для Вх** | 10d | 2013-11-20 | 2013-12-04 | 130 |  |  |
| 137 | Задание поставлено | 0d | 2013-11-20 | 2013-11-20 |  | start no earlier than 2013-09-30 | Тугушев Илья [80%] |
| 138 | Разработка архитектуры дя адаптеров | 5d | 2013-11-20 | 2013-11-27 | 137 |  | Тугушев Илья [80%] |
| 139 | Разработка адаптеров | 5d | 2013-11-27 | 2013-12-04 | 138 |  | Александр Власюк |
| 140 | **Разработка коллекций** | 9d | 2013-12-04 | 2013-12-17 | 136 |  |  |
| 141 | Коллекции | 9d | 2013-12-04 | 2013-12-17 |  |  | (БТЛ) Олег Еренцов |
| 142 | Вх | 0d | 2013-12-17 | 2013-12-17 | 130, 131, 141 |  |  |
| 143 | **Интеграция с CMJ по Исходящие документам** | 31d? | 2013-12-17 | 2014-02-10 | 128 |  |  |
| 144 | Конфиг ДОП | 6d | 2013-12-17 | 2013-12-25 |  |  | Глеб Ноздрачев [1%] |
| 145 | Mapper | 6d | 2013-12-25 | 2014-01-14 | 144 |  | Глеб Ноздрачев [80%] |
| 146 | **Настраиваемые коллекции** | 5d? | 2014-01-14 | 2014-01-21 | 145 |  |  |
| 147 | **Конфигурация коллекций** | 4d | 2014-01-14 | 2014-01-20 |  |  |  |
| 148 | Типовая иерархия кастомных папок (3шт) | 2d | 2014-01-14 | 2014-01-16 |  |  | Глеб Ноздрачев [80%] |
| 149 | Системные настройки для Исх | 2d | 2014-01-16 | 2014-01-20 | 148 |  | Глеб Ноздрачев [80%] |
| 150 | Проверка работы | 1d? | 2014-01-20 | 2014-01-21 | 147 |  | Глеб Ноздрачев [80%] |
| 151 | **Разработка адаптеров для Исх** | 10d | 2014-01-14 | 2014-01-28 | 145 |  |  |
| 152 | Задание поставлено | 0d | 2014-01-14 | 2014-01-14 |  | start no earlier than 2013-09-30 | Тугушев Илья [80%] |
| 153 | Разработка архитектуры дя адаптеров | 5d | 2014-01-14 | 2014-01-21 | 152 |  | Тугушев Илья [80%] |
| 154 | Разработка адаптеров | 5d | 2014-01-21 | 2014-01-28 | 153 |  | Александр Власюк |
| 155 | **Разработка коллекций** | 9d | 2014-01-28 | 2014-02-10 | 151 |  |  |
| 156 | Коллекции | 9d | 2014-01-28 | 2014-02-10 |  |  | (БТЛ) Олег Еренцов |
| 157 | Исх | 0d | 2014-02-10 | 2014-02-10 | 145, 146, 156 |  |  |

Removed: 126 Сопряжение - работа с вложениями; 201 Разработка схем документов модуля CMJ; 202 Разработка ЖЦ процессов модуля (WF); 203 Разработка логики бизнес- действий модуля CMJ; 204 Разработка процессов автоматизации для модуля CMJ; 205 Разработка модели прав доступа (контекстные роли)

Changed:

| ID | Task | Start | Finish | Duration | Complete | Total float | Predecessors | Other |
| --- | --- | --- | --- | --- | --- | --- | --- | --- |
| 1 | **Разработка версии CM4/5** |  |  |  | 25% → 29% |  |  |  |
| 9 | **Создание модуля "Делопроизводство" (документоориентированная среда)** |  | 2014-05-27 → 2014-06-02 (+6d) | 274d? → 277.2d? | 24% → 30% | 77d → 73.8d |  |  |
| 20 | **Проектирование и формирование ядра системы** |  | 2014-02-04 → 2014-02-10 (+6d) | 194d? → 197.2d? | 36% → 39% | 89d → 85.8d |  |  |
| 44 | **Workflow - интеграция с Activiti** |  | 2013-10-11 A |  | 20% → 100% | 83d → none |  |  |
| 45 | Проектирование |  | 2013-07-24 A |  | 95% → 100% | 120d → none |  |  |
| 46 | готова постановка по БП | 2013-09-09 A | 2013-09-09 A |  | 0% → 100% | 88d → none |  |  |
| 47 | Разработка | 2013-09-16 A | 2013-10-11 A |  | 0% → 100% | 83d → none |  |  |
| 48 | **Действия** | 2013-09-18 A | 2013-10-11 A |  | 0% → 100% | 83d → none |  |  |
| 49 | Концепция/Архитектура | 2013-09-18 A | 2013-09-23 A |  | 0% → 100% | 83d → none |  |  |
| 50 | Реализация | 2013-09-24 A | 2013-10-11 A |  | 0% → 100% | 83d → none |  |  |
| 68 | **Слой сопряжения GUI CM4** | 2013-08-05 A → 2013-06-25 A (-41d) | 2014-01-16 → 2014-02-10 (+25d) | 110.25d? → 156.2d? | 16% → 12% | 102.75d → 85.8d |  |  |
| 76 | **Интеграция с CMJ по Внутренним Документам** |  | 2013-10-28 → 2013-11-04 (+7d) | 25.75d? → 30.2d? | 6% → 5% | 152.25d → 147.8d |  |  |
| 78 | Уточнение расширенной постановки по MapperBuilder выполнена | 2013-09-27 A | 2013-09-27 A |  | 0% → 100% | 174d → none |  |  |
| 96 | XSD-схема XML-настроек |  |  |  |  | 158.25d → 41.5d |  | resources Александр Власюк → Влад Симоненко |
| 97 | Чтение XML настроек через спец-Mapper |  |  |  |  | 158.25d → 41.5d |  | resources Александр Власюк → Влад Симоненко |
| 98 | Mapper папок |  |  |  |  | 158.25d → 41.5d |  | resources Александр Власюк → Влад Симоненко |
| 100 | **Конфигурация коллекций** |  |  |  |  | 160.25d → 43.5d | 87, 93 → 87 |  |
| 104 | **Разработка адаптеров для Вн** | 2013-09-30 A | 2013-10-17 → 2013-10-15 (-2d) | 14d → 12d |  | 159d → 161d |  |  |
| 105 | Задание по View и Session поставлена | 2013-09-30 A |  |  | 0% → 85% | 163d → 0d |  |  |
| 106 | Адаптеры View, Session проектирование |  | 2013-10-04 → 2013-10-07 (+3d) | 5d → 6d |  | 165d → 31.05d |  | was named Адаптеры View, Session |
| 109 | Разработка адаптеров database | 2013-10-04 → 2013-10-07 (+3d) | 2013-10-10 → 2013-10-11 (+1d) |  |  | 159d → 163d | 77 → 108 |  |
| 111 | Разработка адаптеров DOCUMENT | 2013-10-11 → 2013-10-07 (-4d) | 2013-10-17 → 2013-10-11 (-6d) |  |  | 159d → 163d | 109, 110 → 108, 110 |  |
| 112 | **Разработка коллекций** | 2013-09-30 → 2013-10-16 (+16d) | 2013-10-14 → 2013-10-30 (+16d) |  |  | 159.05d → 31.05d | none → 107 |  |
| 113 | Коллекции Портала | 2013-09-30 → 2013-10-16 (+16d) | 2013-10-04 → 2013-10-21 (+17d) |  |  | 159.05d → 31.05d |  |  |
| 114 | Инструктаж по @-формулам проведен | 2013-10-04 → 2013-10-21 (+17d) | 2013-10-04 → 2013-10-21 (+17d) |  |  | 168d → 157d |  |  |
| 115 | Коллекции СС | 2013-10-04 → 2013-10-22 (+18d) | 2013-10-09 → 2013-10-24 (+15d) |  |  | 159.05d → 31.05d |  |  |
| 116 | Коллекции Каталога | 2013-10-04 → 2013-10-22 (+18d) | 2013-10-09 → 2013-10-24 (+15d) |  |  | 159.05d → 31.05d |  |  |
| 117 | Коллекции СО | 2013-10-04 → 2013-10-22 (+18d) | 2013-10-09 → 2013-10-24 (+15d) |  |  | 162.25d → 34.25d |  |  |
| 118 | Коллекции ВнД | 2013-10-09 → 2013-10-25 (+16d) | 2013-10-14 → 2013-10-30 (+16d) |  |  | 159.05d → 31.05d |  |  |
| 119 | Коллекции СпО | 2013-10-09 → 2013-10-25 (+16d) | 2013-10-14 → 2013-10-30 (+16d) |  |  | 159.05d → 31.05d |  |  |
| 120 | ВнД | 2013-10-23 → 2013-10-30 (+7d) | 2013-10-23 → 2013-10-30 (+7d) |  |  | 152.25d → 31.05d |  |  |
| 121 | Объединение War | 2013-10-23 → 2013-10-30 (+7d) | 2013-10-24 → 2013-10-31 (+7d) |  |  | 154.25d → 33.05d |  |  |
| 122 | **Инструмент заполнения** | 2013-10-23 → 2013-10-30 (+7d) | 2013-10-28 → 2013-11-04 (+7d) |  |  | 152.25d → 31.05d |  |  |
| 123 | Инструмент заполнения Каталога | 2013-10-23 → 2013-10-30 (+7d) | 2013-10-28 → 2013-11-04 (+7d) |  |  | 152.25d → 31.05d |  |  |
| 124 | Инструмент заполнения СС | 2013-10-23 → 2013-10-30 (+7d) | 2013-10-28 → 2013-11-04 (+7d) |  |  | 152.25d → 31.05d |  |  |
| 125 | Инструмент заполнения Портала | 2013-10-23 → 2013-10-30 (+7d) | 2013-10-28 → 2013-11-04 (+7d) |  |  | 152.25d → 31.05d |  |  |
| 126 | Инструмент заполнения СО | 2013-10-23 → 2013-10-30 (+7d) | 2013-10-28 → 2013-11-04 (+7d) |  |  | 152.25d → 31.05d |  |  |
| 127 | Инструмент заполнения СпО | 2013-10-23 → 2013-10-30 (+7d) | 2013-10-28 → 2013-11-04 (+7d) |  |  | 152.25d → 31.05d |  |  |
| 159 | REST-протокол для АРМа - проектирование | 2014-01-13 → 2013-06-25 (-202d) | 2014-01-16 → 2013-06-27 (-203d) |  |  | 102.75d → 239d | 31, Сопряжение - работа с вложениями → 31 |  |
| 209 | Тестирование производительности | 2013-09-10 A |  |  | 0% → 80% |  |  | resources Денис Митавский; Валерий Мацукевич → (БТЛ)Сергей Степыгин; (БТЛ) Дмитрий Лякин |
| 229 | **Разработка** |  |  |  | 10% → 17% |  |  |  |
| 230 | Контроль и корректировка технических решений "Архитектурный комитет" |  |  |  | 28% → 38% |  |  |  |
| 231 | Разработка серверной логики модуля CMJ |  | 2014-01-15 → 2013-12-06 (-40d) | 60d → 40d |  | 83d → 141d |  |  |
| 238 | Разработка структуры рабочего места АРМ |  |  |  |  |  | Разработка схем документов модуля CMJ, 237 → 237 |  |
| 240 | Подготовка отчетов | 2014-01-16 → 2013-10-29 (-79d) | 2014-03-12 → 2013-12-23 (-79d) |  |  | 83d → 132d | Разработка схем документов модуля CMJ, Разработка логики бизнес- действий модуля CMJ, Разработка ЖЦ процессов модуля (WF), 74 → 74 |  |
| 241 | Сопряжение с мобильным клиентом СМ4 | 2014-01-16 → 2013-12-09 (-38d) | 2014-03-26 → 2014-02-26 (-28d) |  |  | 121d → 141d |  |  |
| 242 | **Тестирование** | 2014-02-05 → 2014-02-10 (+5d) | 2014-05-19 → 2014-05-15 (-4d) | 74d? → 68d? |  | 83d → 85.8d |  |  |
| 243 | **Функциональное тестирование** | 2014-02-05 → 2014-02-10 (+5d) | 2014-04-28 → 2014-04-24 (-4d) | 59d? → 53d? |  | 89d → 85.8d |  |  |
| 244 | Подготовка ПМИ | 2014-02-05 → 2014-02-10 (+5d) | 2014-02-11 → 2014-02-17 (+6d) |  |  | 89d → 85.8d |  |  |
| 245 | Разработка "сценариев тестирования" | 2014-02-05 → 2014-02-10 (+5d) | 2014-02-25 → 2014-03-03 (+6d) |  |  | 94d → 90.8d |  |  |
| 246 | Разработка модели нагрузки для тестирования | 2014-02-12 → 2014-02-17 (+5d) | 2014-02-25 → 2014-03-03 (+6d) |  |  | 94d → 90.8d |  |  |
| 247 | Адаптация автоматизированных сценариев от СМ4 для создания нагрузки | 2014-02-12 → 2014-02-17 (+5d) | 2014-03-18 → 2014-03-24 (+6d) |  |  | 89d → 85.8d |  |  |
| 248 | **Проведение тестирования** | 2014-03-06 → 2014-03-03 (-3d) | 2014-04-28 → 2014-04-24 (-4d) |  |  | 88d → 90.8d |  |  |
| 249 | **Подготовка среды тестирования** | 2014-03-06 → 2014-03-03 (-3d) | 2014-03-26 → 2014-03-17 (-9d) | 15d? → 10d? |  | 88d → 90.8d |  |  |
| 250 | Разворачивание системы | 2014-03-06 → 2014-03-03 (-3d) | 2014-03-13 → 2014-03-10 (-3d) |  |  | 131d → 133.8d |  |  |
| 251 | Система готова для подключения инструментов мониторинга | 2014-03-13 → 2014-03-10 (-3d) | 2014-03-13 → 2014-03-10 (-3d) |  |  | 131d → 133.8d |  |  |
| 252 | Наполнение данными | 2014-03-13 → 2014-03-03 (-10d) | 2014-03-26 → 2014-03-17 (-9d) |  |  | 83d → 90.8d |  |  |
| 253 | Среда тестирования готова | 2014-03-26 → 2014-03-24 (-2d) | 2014-03-26 → 2014-03-24 (-2d) |  |  | 83d → 85.8d |  |  |
| 254 | Проведение тестирования | 2014-03-27 → 2014-03-24 (-3d) | 2014-04-09 → 2014-04-07 (-2d) |  |  | 83d → 85.8d |  |  |
| 255 | **Обработка результатов тестирования и внесение изменений в модуль** | 2014-04-08 → 2014-04-03 (-5d) | 2014-04-28 → 2014-04-24 (-4d) |  |  | 83d → 85.8d |  |  |
| 256 | Устранение замечаний по результатам функционального тестирования | 2014-04-08 → 2014-04-03 (-5d) | 2014-04-28 → 2014-04-24 (-4d) |  |  | 83d → 85.8d |  |  |
| 257 | Проверка устранения замечаний | 2014-04-21 → 2014-04-16 (-5d) | 2014-04-28 → 2014-04-24 (-4d) |  |  | 83d → 85.8d |  |  |
| 258 | **Нагрузочное тестирование** | 2014-04-09 → 2014-04-07 (-2d) | 2014-05-19 → 2014-05-15 (-4d) |  |  | 83d → 85.8d |  |  |
| 259 | Стенд для нагрузочного тестирования подготовлен | 2014-04-09 → 2014-04-07 (-2d) | 2014-04-09 → 2014-04-07 (-2d) |  |  | 96d → 98.8d |  |  |
| 260 | Проведения нагрузочного тестирования | 2014-04-29 → 2014-04-24 (-5d) | 2014-05-12 → 2014-05-08 (-4d) |  |  | 83d → 85.8d |  |  |
| 261 | Обработка результатов нагрузочного тестирования | 2014-05-13 → 2014-05-08 (-5d) | 2014-05-19 → 2014-05-15 (-4d) |  |  | 83d → 85.8d |  |  |
| 262 | **Подготовка документации** | 2014-02-05 → 2014-02-10 (+5d) | 2014-05-27 → 2014-06-02 (+6d) |  |  | 77d → 73.8d |  |  |
| 263 | Разработка документа "Концепция системы " | 2014-02-05 → 2014-02-10 (+5d) | 2014-04-01 → 2014-04-07 (+6d) |  |  | 77d → 73.8d |  |  |
| 264 | Разработка "Software Architecture Document" | 2014-04-02 → 2014-04-07 (+5d) | 2014-05-27 → 2014-06-02 (+6d) |  |  | 77d → 73.8d |  |  |
| 265 | Документы подготовлены | 2014-05-27 → 2014-06-02 (+6d) | 2014-05-27 → 2014-06-02 (+6d) |  |  | 77d → 73.8d |  |  |

## Version 40 (saved 2013-10-09)

Note of the change: обновление

Last finish stays 2014-09-11.

Added:

| ID | Task | Duration | Start | Finish | Predecessors | Constraint | Resources |
| --- | --- | --- | --- | --- | --- | --- | --- |
| 128 | **Интеграция с CMJ по сервису согласования** | 31d? | 2013-11-04 | 2013-12-17 | 76 |  |  |
| 129 | Конфиг ДОП | 6d | 2013-11-04 | 2013-11-12 |  |  | Глеб Ноздрачев [1%] |
| 130 | Mapper | 6d | 2013-11-12 | 2013-11-20 | 129 |  | Глеб Ноздрачев [80%] |
| 131 | **Настраиваемые коллекции** | 5d? | 2013-11-20 | 2013-11-27 | 130 |  |  |
| 132 | **Конфигурация коллекций** | 4d | 2013-11-20 | 2013-11-26 |  |  |  |
| 133 | Типовая иерархия кастомных папок (3шт) | 2d | 2013-11-20 | 2013-11-22 |  |  | Глеб Ноздрачев [80%] |
| 134 | Системные настройки для СрвСогл | 2d | 2013-11-22 | 2013-11-26 | 133 |  | Глеб Ноздрачев [80%] |
| 135 | Проверка работы | 1d? | 2013-11-26 | 2013-11-27 | 132 |  | Глеб Ноздрачев [80%] |
| 136 | **Разработка адаптеров для СрвСогл** | 10d | 2013-11-20 | 2013-12-04 | 130 |  |  |
| 137 | Задание поставлено | 0d | 2013-11-20 | 2013-11-20 |  | start no earlier than 2013-09-30 | Тугушев Илья [80%] |
| 138 | Разработка архитектуры дя адаптеров | 5d | 2013-11-20 | 2013-11-27 | 137 |  | Тугушев Илья [80%] |
| 139 | Разработка адаптеров | 5d | 2013-11-27 | 2013-12-04 | 138 |  | Александр Власюк |
| 140 | **Разработка коллекций** | 9d | 2013-12-04 | 2013-12-17 | 136 |  |  |
| 141 | Коллекции | 9d | 2013-12-04 | 2013-12-17 |  |  | (БТЛ) Олег Еренцов |
| 142 | Интеграция по СрвСогл выполнена | 0d | 2013-12-17 | 2013-12-17 | 130, 131, 141 |  |  |
| 158 | **Интеграция с CMJ по ОРД** | 31d? | 2013-11-04 | 2013-12-17 | 76 |  |  |
| 159 | Конфиг ДОП | 6d | 2013-11-04 | 2013-11-12 |  |  | Глеб Ноздрачев [1%] |
| 160 | Mapper | 6d | 2013-11-12 | 2013-11-20 | 159 |  | Глеб Ноздрачев [80%] |
| 161 | **Настраиваемые коллекции** | 5d? | 2013-11-20 | 2013-11-27 | 160 |  |  |
| 162 | **Конфигурация коллекций** | 4d | 2013-11-20 | 2013-11-26 |  |  |  |
| 163 | Типовая иерархия кастомных папок (3шт) | 2d | 2013-11-20 | 2013-11-22 |  |  | Глеб Ноздрачев [80%] |
| 164 | Системные настройки для ОРД | 2d | 2013-11-22 | 2013-11-26 | 163 |  | Глеб Ноздрачев [80%] |
| 165 | Проверка работы | 1d? | 2013-11-26 | 2013-11-27 | 162 |  | Глеб Ноздрачев [80%] |
| 166 | **Разработка адаптеров для ОРД** | 10d | 2013-11-20 | 2013-12-04 | 160 |  |  |
| 167 | Задание поставлено | 0d | 2013-11-20 | 2013-11-20 |  | start no earlier than 2013-09-30 | Тугушев Илья [80%] |
| 168 | Разработка архитектуры дя адаптеров | 5d | 2013-11-20 | 2013-11-27 | 167 |  | Тугушев Илья [80%] |
| 169 | Разработка адаптеров | 5d | 2013-11-27 | 2013-12-04 | 168 |  | Александр Власюк |
| 170 | **Разработка коллекций** | 9d | 2013-12-04 | 2013-12-17 | 166 |  |  |
| 171 | Коллекции | 9d | 2013-12-04 | 2013-12-17 |  |  | (БТЛ) Олег Еренцов |
| 172 | Интеграция по ОРД выполнена | 0d | 2013-12-17 | 2013-12-17 | 160, 161, 171 |  |  |
| 188 | **Интеграция с CMJ по самостоятельным поручениям** | 31d? | 2013-11-04 | 2013-12-17 | 76 |  |  |
| 189 | Конфиг ДОП | 6d | 2013-11-04 | 2013-11-12 |  |  | Глеб Ноздрачев [1%] |
| 190 | Mapper | 6d | 2013-11-12 | 2013-11-20 | 189 |  | Глеб Ноздрачев [80%] |
| 191 | **Настраиваемые коллекции** | 5d? | 2013-11-20 | 2013-11-27 | 190 |  |  |
| 192 | **Конфигурация коллекций** | 4d | 2013-11-20 | 2013-11-26 |  |  |  |
| 193 | Типовая иерархия кастомных папок (3шт) | 2d | 2013-11-20 | 2013-11-22 |  |  | Глеб Ноздрачев [80%] |
| 194 | Системные настройки для Поручений | 2d | 2013-11-22 | 2013-11-26 | 193 |  | Глеб Ноздрачев [80%] |
| 195 | Проверка работы | 1d? | 2013-11-26 | 2013-11-27 | 192 |  | Глеб Ноздрачев [80%] |
| 196 | **Разработка адаптеров для Поручений** | 10d | 2013-11-20 | 2013-12-04 | 190 |  |  |
| 197 | Задание поставлено | 0d | 2013-11-20 | 2013-11-20 |  | start no earlier than 2013-09-30 | Тугушев Илья [80%] |
| 198 | Разработка архитектуры дя адаптеров | 5d | 2013-11-20 | 2013-11-27 | 197 |  | Тугушев Илья [80%] |
| 199 | Разработка адаптеров | 5d | 2013-11-27 | 2013-12-04 | 198 |  | Александр Власюк |
| 200 | **Разработка коллекций** | 9d | 2013-12-04 | 2013-12-17 | 196 |  |  |
| 201 | Коллекции | 9d | 2013-12-04 | 2013-12-17 |  |  | (БТЛ) Олег Еренцов |
| 202 | Интеграция по Поручений выполнена | 0d | 2013-12-17 | 2013-12-17 | 190, 191, 201 |  |  |
| 203 | **Интеграция с CMJ по ОГ** | 31d? | 2013-11-04 | 2013-12-17 | 76 |  |  |
| 204 | Конфиг ДОП | 6d | 2013-11-04 | 2013-11-12 |  |  | Глеб Ноздрачев [1%] |
| 205 | Mapper | 6d | 2013-11-12 | 2013-11-20 | 204 |  | Глеб Ноздрачев [80%] |
| 206 | **Настраиваемые коллекции** | 5d? | 2013-11-20 | 2013-11-27 | 205 |  |  |
| 207 | **Конфигурация коллекций** | 4d | 2013-11-20 | 2013-11-26 |  |  |  |
| 208 | Типовая иерархия кастомных папок (3шт) | 2d | 2013-11-20 | 2013-11-22 |  |  | Глеб Ноздрачев [80%] |
| 209 | Системные настройки для ОГ | 2d | 2013-11-22 | 2013-11-26 | 208 |  | Глеб Ноздрачев [80%] |
| 210 | Проверка работы | 1d? | 2013-11-26 | 2013-11-27 | 207 |  | Глеб Ноздрачев [80%] |
| 211 | **Разработка адаптеров для ОГ** | 10d | 2013-11-20 | 2013-12-04 | 205 |  |  |
| 212 | Задание поставлено | 0d | 2013-11-20 | 2013-11-20 |  | start no earlier than 2013-09-30 | Тугушев Илья [80%] |
| 213 | Разработка архитектуры дя адаптеров | 5d | 2013-11-20 | 2013-11-27 | 212 |  | Тугушев Илья [80%] |
| 214 | Разработка адаптеров | 5d | 2013-11-27 | 2013-12-04 | 213 |  | Александр Власюк |
| 215 | **Разработка коллекций** | 9d | 2013-12-04 | 2013-12-17 | 211 |  |  |
| 216 | Коллекции | 9d | 2013-12-04 | 2013-12-17 |  |  | (БТЛ) Олег Еренцов |
| 217 | Интеграция по ОГ выполнена | 0d | 2013-12-17 | 2013-12-17 | 205, 206, 216 |  |  |
| 218 | **Интеграция с CMJ по "Кейсам"** | 31d? | 2013-11-04 | 2013-12-17 | 76 |  |  |
| 219 | Конфиг ДОП | 6d | 2013-11-04 | 2013-11-12 |  |  | Глеб Ноздрачев [1%] |
| 220 | Mapper | 6d | 2013-11-12 | 2013-11-20 | 219 |  | Глеб Ноздрачев [80%] |
| 221 | **Настраиваемые коллекции** | 5d? | 2013-11-20 | 2013-11-27 | 220 |  |  |
| 222 | **Конфигурация коллекций** | 4d | 2013-11-20 | 2013-11-26 |  |  |  |
| 223 | Типовая иерархия кастомных папок (3шт) | 2d | 2013-11-20 | 2013-11-22 |  |  | Глеб Ноздрачев [80%] |
| 224 | Системные настройки для Кейс | 2d | 2013-11-22 | 2013-11-26 | 223 |  | Глеб Ноздрачев [80%] |
| 225 | Проверка работы | 1d? | 2013-11-26 | 2013-11-27 | 222 |  | Глеб Ноздрачев [80%] |
| 226 | **Разработка адаптеров для Кейс** | 10d | 2013-11-20 | 2013-12-04 | 220 |  |  |
| 227 | Задание поставлено | 0d | 2013-11-20 | 2013-11-20 |  | start no earlier than 2013-09-30 | Тугушев Илья [80%] |
| 228 | Разработка архитектуры дя адаптеров | 5d | 2013-11-20 | 2013-11-27 | 227 |  | Тугушев Илья [80%] |
| 229 | Разработка адаптеров | 5d | 2013-11-27 | 2013-12-04 | 228 |  | Александр Власюк |
| 230 | **Разработка коллекций** | 9d | 2013-12-04 | 2013-12-17 | 226 |  |  |
| 231 | Коллекции | 9d | 2013-12-04 | 2013-12-17 |  |  | (БТЛ) Олег Еренцов |
| 232 | Интеграция по Кейс выполнена | 0d | 2013-12-17 | 2013-12-17 | 220, 221, 231 |  |  |
| 233 | **Интеграция с CMJ по Договорам** | 31d? | 2013-11-04 | 2013-12-17 | 76 |  |  |
| 234 | Конфиг ДОП | 6d | 2013-11-04 | 2013-11-12 |  |  | Глеб Ноздрачев [1%] |
| 235 | Mapper | 6d | 2013-11-12 | 2013-11-20 | 234 |  | Глеб Ноздрачев [80%] |
| 236 | **Настраиваемые коллекции** | 5d? | 2013-11-20 | 2013-11-27 | 235 |  |  |
| 237 | **Конфигурация коллекций** | 4d | 2013-11-20 | 2013-11-26 |  |  |  |
| 238 | Типовая иерархия кастомных папок (3шт) | 2d | 2013-11-20 | 2013-11-22 |  |  | Глеб Ноздрачев [80%] |
| 239 | Системные настройки для Дгв | 2d | 2013-11-22 | 2013-11-26 | 238 |  | Глеб Ноздрачев [80%] |
| 240 | Проверка работы | 1d? | 2013-11-26 | 2013-11-27 | 237 |  | Глеб Ноздрачев [80%] |
| 241 | **Разработка адаптеров для Дгв** | 10d | 2013-11-20 | 2013-12-04 | 235 |  |  |
| 242 | Задание поставлено | 0d | 2013-11-20 | 2013-11-20 |  | start no earlier than 2013-09-30 | Тугушев Илья [80%] |
| 243 | Разработка архитектуры дя адаптеров | 5d | 2013-11-20 | 2013-11-27 | 242 |  | Тугушев Илья [80%] |
| 244 | Разработка адаптеров | 5d | 2013-11-27 | 2013-12-04 | 243 |  | Александр Власюк |
| 245 | **Разработка коллекций** | 9d | 2013-12-04 | 2013-12-17 | 241 |  |  |
| 246 | Коллекции | 9d | 2013-12-04 | 2013-12-17 |  |  | (БТЛ) Олег Еренцов |
| 247 | Интеграция по Дгв выполнена | 0d | 2013-12-17 | 2013-12-17 | 235, 236, 246 |  |  |
| 248 | **Интеграция с CMJ по Заседаниям** | 31d? | 2013-11-04 | 2013-12-17 | 76 |  |  |
| 249 | Конфиг ДОП | 6d | 2013-11-04 | 2013-11-12 |  |  | Глеб Ноздрачев [1%] |
| 250 | Mapper | 6d | 2013-11-12 | 2013-11-20 | 249 |  | Глеб Ноздрачев [80%] |
| 251 | **Настраиваемые коллекции** | 5d? | 2013-11-20 | 2013-11-27 | 250 |  |  |
| 252 | **Конфигурация коллекций** | 4d | 2013-11-20 | 2013-11-26 |  |  |  |
| 253 | Типовая иерархия кастомных папок (3шт) | 2d | 2013-11-20 | 2013-11-22 |  |  | Глеб Ноздрачев [80%] |
| 254 | Системные настройки для Зсд | 2d | 2013-11-22 | 2013-11-26 | 253 |  | Глеб Ноздрачев [80%] |
| 255 | Проверка работы | 1d? | 2013-11-26 | 2013-11-27 | 252 |  | Глеб Ноздрачев [80%] |
| 256 | **Разработка адаптеров для Зсд** | 10d | 2013-11-20 | 2013-12-04 | 250 |  |  |
| 257 | Задание поставлено | 0d | 2013-11-20 | 2013-11-20 |  | start no earlier than 2013-09-30 | Тугушев Илья [80%] |
| 258 | Разработка архитектуры дя адаптеров | 5d | 2013-11-20 | 2013-11-27 | 257 |  | Тугушев Илья [80%] |
| 259 | Разработка адаптеров | 5d | 2013-11-27 | 2013-12-04 | 258 |  | Александр Власюк |
| 260 | **Разработка коллекций** | 9d | 2013-12-04 | 2013-12-17 | 256 |  |  |
| 261 | Коллекции | 9d | 2013-12-04 | 2013-12-17 |  |  | (БТЛ) Олег Еренцов |
| 262 | Интеграция по Зсд выполнена | 0d | 2013-12-17 | 2013-12-17 | 250, 251, 261 |  |  |
| 263 | **Интеграция с CMJ по Обсуждениям и ознакомлениям** | 31d? | 2013-11-04 | 2013-12-17 | 76 |  |  |
| 264 | Конфиг ДОП | 6d | 2013-11-04 | 2013-11-12 |  |  | Глеб Ноздрачев [1%] |
| 265 | Mapper | 6d | 2013-11-12 | 2013-11-20 | 264 |  | Глеб Ноздрачев [80%] |
| 266 | **Настраиваемые коллекции** | 5d? | 2013-11-20 | 2013-11-27 | 265 |  |  |
| 267 | **Конфигурация коллекций** | 4d | 2013-11-20 | 2013-11-26 |  |  |  |
| 268 | Типовая иерархия кастомных папок (3шт) | 2d | 2013-11-20 | 2013-11-22 |  |  | Глеб Ноздрачев [80%] |
| 269 | Системные настройки для ОО | 2d | 2013-11-22 | 2013-11-26 | 268 |  | Глеб Ноздрачев [80%] |
| 270 | Проверка работы | 1d? | 2013-11-26 | 2013-11-27 | 267 |  | Глеб Ноздрачев [80%] |
| 271 | **Разработка адаптеров для ОО** | 10d | 2013-11-20 | 2013-12-04 | 265 |  |  |
| 272 | Задание поставлено | 0d | 2013-11-20 | 2013-11-20 |  | start no earlier than 2013-09-30 | Тугушев Илья [80%] |
| 273 | Разработка архитектуры дя адаптеров | 5d | 2013-11-20 | 2013-11-27 | 272 |  | Тугушев Илья [80%] |
| 274 | Разработка адаптеров | 5d | 2013-11-27 | 2013-12-04 | 273 |  | Александр Власюк |
| 275 | **Разработка коллекций** | 9d | 2013-12-04 | 2013-12-17 | 271 |  |  |
| 276 | Коллекции | 9d | 2013-12-04 | 2013-12-17 |  |  | (БТЛ) Олег Еренцов |
| 277 | Интеграция по ОО выполнена | 0d | 2013-12-17 | 2013-12-17 | 265, 266, 276 |  |  |
| 278 | **Интеграция с CMJ по Формированию дел** | 31d? | 2013-11-04 | 2013-12-17 | 76 |  |  |
| 279 | Конфиг ДОП | 6d | 2013-11-04 | 2013-11-12 |  |  | Глеб Ноздрачев [1%] |
| 280 | Mapper | 6d | 2013-11-12 | 2013-11-20 | 279 |  | Глеб Ноздрачев [80%] |
| 281 | **Настраиваемые коллекции** | 5d? | 2013-11-20 | 2013-11-27 | 280 |  |  |
| 282 | **Конфигурация коллекций** | 4d | 2013-11-20 | 2013-11-26 |  |  |  |
| 283 | Типовая иерархия кастомных папок (3шт) | 2d | 2013-11-20 | 2013-11-22 |  |  | Глеб Ноздрачев [80%] |
| 284 | Системные настройки для ФД | 2d | 2013-11-22 | 2013-11-26 | 283 |  | Глеб Ноздрачев [80%] |
| 285 | Проверка работы | 1d? | 2013-11-26 | 2013-11-27 | 282 |  | Глеб Ноздрачев [80%] |
| 286 | **Разработка адаптеров для ФД** | 10d | 2013-11-20 | 2013-12-04 | 280 |  |  |
| 287 | Задание поставлено | 0d | 2013-11-20 | 2013-11-20 |  | start no earlier than 2013-09-30 | Тугушев Илья [80%] |
| 288 | Разработка архитектуры дя адаптеров | 5d | 2013-11-20 | 2013-11-27 | 287 |  | Тугушев Илья [80%] |
| 289 | Разработка адаптеров | 5d | 2013-11-27 | 2013-12-04 | 288 |  | Александр Власюк |
| 290 | **Разработка коллекций** | 9d | 2013-12-04 | 2013-12-17 | 286 |  |  |
| 291 | Коллекции | 9d | 2013-12-04 | 2013-12-17 |  |  | (БТЛ) Олег Еренцов |
| 292 | Интеграция по ФД выполнена | 0d | 2013-12-17 | 2013-12-17 | 280, 281, 291 |  |  |

Changed:

| ID | Task | Start | Finish | Duration | Complete | Total float | Predecessors | Other |
| --- | --- | --- | --- | --- | --- | --- | --- | --- |
| 1 | **Разработка версии CM4/5** |  |  |  | 29% → 25% |  |  |  |
| 9 | **Создание модуля "Делопроизводство" (документоориентированная среда)** |  |  |  | 30% → 25% |  |  |  |
| 20 | **Проектирование и формирование ядра системы** |  |  |  | 39% → 30% |  |  |  |
| 60 | **Бизнес-объекты (иерархии доменных объектов)** |  | 2013-09-11 A → 2013-10-10 (+29d) | 35.25d → 56.25d | 100% → 90% | none → 164.75d |  |  |
| 63 | Подготовка описания по обновленным принциапам работы |  | 2013-09-11 A → 2013-10-10 (+29d) | 13d → 24d | 100% → 85% | none → 164.75d |  |  |
| 64 | **Поиск** |  | 2013-10-15 → 2013-10-29 (+14d) | 56d → 66d | 10% → 9% | 161d → 151d |  |  |
| 66 | Поиск |  | 2013-09-24 → 2013-10-08 (+14d) | 15d → 22d | 27% → 18% | 161d → 151d |  |  |
| 67 | Полнотекстовый поиск | 2013-09-11 → 2013-09-25 (+14d) | 2013-10-15 → 2013-10-29 (+14d) |  |  | 161d → 151d |  |  |
| 68 | **Слой сопряжения CMJ server (CM4)** |  |  |  | 12% → 6% |  |  | was named Слой сопряжения GUI CM4 |
| 105 | Задание по View и Session поставлена |  | 2013-09-30 A |  | 85% → 100% | 0d → none |  |  |
| 157 | Интеграция по Вх выполнена |  |  |  |  | 31.05d → 85.8d |  | was named Вх |
| 173 | **Интеграция с CMJ по Исходящие документам** |  |  |  |  |  | 143 → 143, 158 |  |
| 187 | Интеграция по Исх выполнена |  |  |  |  |  |  | was named Исх |
| 365 | Контроль и корректировка технических решений "Архитектурный комитет" |  |  | 208d → 209d |  |  |  | resources Тугушев Илья [20%]; Андрей Пирожков [20%]; Денис Митавский [20%]; WEB-дизайнер [20%]; Аналитик [20%]; Владимир Панов [50%] → Тугушев Илья [20%]; Андрей Пирожков [23.2%]; Денис Митавский [20%]; WEB-дизайнер [20%]; Аналитик [20%]; Владимир Панов [50%] |
| 397 | **Подготовка документации** |  |  | 80d → 80d? |  |  |  |  |

## Version 41 (saved 2013-10-10)

Note of the change: актуализация сроков

Last finish stays 2014-09-11.

Changed:

| ID | Task | Finish | Duration | Total float |
| --- | --- | --- | --- | --- |
| 111 | Разработка адаптеров DOCUMENT | 2013-10-11 → 2013-10-15 (+4d) | 5d → 7d | 101d → 99d |

## Version 42 (saved 2013-10-14)

Note of the change: обновления

Last finish stays 2014-09-11.

Changed:

| ID | Task | Start | Finish | Duration | Total float | Other |
| --- | --- | --- | --- | --- | --- | --- |
| 9 | **Создание модуля "Делопроизводство" (документоориентированная среда)** |  | 2014-06-02 → 2014-06-09 (+7d) | 277.2d? → 282.2d? | 73.8d → 68.8d |  |
| 20 | **Проектирование и формирование ядра системы** |  | 2014-02-10 → 2014-02-17 (+7d) | 197.2d? → 202.2d? | 85.8d → 80.8d |  |
| 68 | **Слой сопряжения CMJ server (CM4)** |  | 2014-02-10 → 2014-02-17 (+7d) | 156.2d? → 161.2d? | 85.8d → 80.8d |  |
| 70 | Реализация коннекторов к платформе |  |  |  |  | resources Тугушев Илья [75%]; Глеб Ноздрачев → none |
| 76 | **Интеграция с CMJ по Внутренним Документам** |  | 2013-11-04 → 2013-11-11 (+7d) | 30.2d? → 35.2d? | 85.8d → 80.8d |  |
| 104 | **Разработка адаптеров для Вн** |  | 2013-10-15 → 2013-10-22 (+7d) | 12d → 17d | 99d → 94d |  |
| 106 | Адаптеры View, Session проектирование |  | 2013-10-07 → 2013-10-14 (+7d) | 6d → 11d | 85.8d → 80.8d |  |
| 107 | Разработка логики адаптеров view&session | 2013-10-08 → 2013-10-15 (+7d) | 2013-10-15 → 2013-10-22 (+7d) |  | 85.8d → 80.8d |  |
| 112 | **Разработка коллекций** | 2013-10-16 → 2013-10-23 (+7d) | 2013-10-30 → 2013-11-06 (+7d) |  | 85.8d → 80.8d |  |
| 113 | Коллекции Портала | 2013-10-16 → 2013-10-23 (+7d) | 2013-10-21 → 2013-10-28 (+7d) |  | 85.8d → 80.8d |  |
| 114 | Инструктаж по @-формулам проведен | 2013-10-21 → 2013-10-28 (+7d) | 2013-10-21 → 2013-10-28 (+7d) |  | 95d → 90d |  |
| 115 | Коллекции СС | 2013-10-22 → 2013-10-29 (+7d) | 2013-10-24 → 2013-10-31 (+7d) |  | 85.8d → 80.8d |  |
| 116 | Коллекции Каталога | 2013-10-22 → 2013-10-29 (+7d) | 2013-10-24 → 2013-10-31 (+7d) |  | 85.8d → 80.8d |  |
| 117 | Коллекции СО | 2013-10-22 → 2013-10-29 (+7d) | 2013-10-24 → 2013-10-31 (+7d) |  | 89d → 84d |  |
| 118 | Коллекции ВнД | 2013-10-25 → 2013-11-01 (+7d) | 2013-10-30 → 2013-11-06 (+7d) |  | 85.8d → 80.8d |  |
| 119 | Коллекции СпО | 2013-10-25 → 2013-11-01 (+7d) | 2013-10-30 → 2013-11-06 (+7d) |  | 85.8d → 80.8d |  |
| 120 | ВнД | 2013-10-30 → 2013-11-06 (+7d) | 2013-10-30 → 2013-11-06 (+7d) |  | 85.8d → 80.8d |  |
| 121 | Объединение War | 2013-10-30 → 2013-11-06 (+7d) | 2013-10-31 → 2013-11-07 (+7d) |  | 87.8d → 82.8d |  |
| 122 | **Инструмент заполнения** | 2013-10-30 → 2013-11-06 (+7d) | 2013-11-04 → 2013-11-11 (+7d) |  | 85.8d → 80.8d |  |
| 123 | Инструмент заполнения Каталога | 2013-10-30 → 2013-11-06 (+7d) | 2013-11-04 → 2013-11-11 (+7d) |  | 85.8d → 80.8d |  |
| 124 | Инструмент заполнения СС | 2013-10-30 → 2013-11-06 (+7d) | 2013-11-04 → 2013-11-11 (+7d) |  | 85.8d → 80.8d |  |
| 125 | Инструмент заполнения Портала | 2013-10-30 → 2013-11-06 (+7d) | 2013-11-04 → 2013-11-11 (+7d) |  | 85.8d → 80.8d |  |
| 126 | Инструмент заполнения СО | 2013-10-30 → 2013-11-06 (+7d) | 2013-11-04 → 2013-11-11 (+7d) |  | 85.8d → 80.8d |  |
| 127 | Инструмент заполнения СпО | 2013-10-30 → 2013-11-06 (+7d) | 2013-11-04 → 2013-11-11 (+7d) |  | 85.8d → 80.8d |  |
| 128 | **Интеграция с CMJ по сервису согласования** | 2013-11-04 → 2013-11-11 (+7d) | 2013-12-17 → 2013-12-24 (+7d) |  | 116.8d → 111.8d |  |
| 129 | Конфиг ДОП | 2013-11-04 → 2013-11-11 (+7d) | 2013-11-12 → 2013-11-19 (+7d) |  | 116.8d → 111.8d |  |
| 130 | Mapper | 2013-11-12 → 2013-11-19 (+7d) | 2013-11-20 → 2013-11-27 (+7d) |  | 116.8d → 111.8d |  |
| 131 | **Настраиваемые коллекции** | 2013-11-20 → 2013-11-27 (+7d) | 2013-11-27 → 2013-12-04 (+7d) |  | 130.8d → 125.8d |  |
| 132 | **Конфигурация коллекций** | 2013-11-20 → 2013-11-27 (+7d) | 2013-11-26 → 2013-12-03 (+7d) |  | 130.8d → 125.8d |  |
| 133 | Типовая иерархия кастомных папок (3шт) | 2013-11-20 → 2013-11-27 (+7d) | 2013-11-22 → 2013-11-29 (+7d) |  | 130.8d → 125.8d |  |
| 134 | Системные настройки для СрвСогл | 2013-11-22 → 2013-11-29 (+7d) | 2013-11-26 → 2013-12-03 (+7d) |  | 130.8d → 125.8d |  |
| 135 | Проверка работы | 2013-11-26 → 2013-12-03 (+7d) | 2013-11-27 → 2013-12-04 (+7d) |  | 130.8d → 125.8d |  |
| 136 | **Разработка адаптеров для СрвСогл** | 2013-11-20 → 2013-11-27 (+7d) | 2013-12-04 → 2013-12-11 (+7d) |  | 116.8d → 111.8d |  |
| 137 | Задание поставлено | 2013-11-20 → 2013-11-27 (+7d) | 2013-11-20 → 2013-11-27 (+7d) |  | 116.8d → 111.8d |  |
| 138 | Разработка архитектуры дя адаптеров | 2013-11-20 → 2013-11-27 (+7d) | 2013-11-27 → 2013-12-04 (+7d) |  | 116.8d → 111.8d |  |
| 139 | Разработка адаптеров | 2013-11-27 → 2013-12-04 (+7d) | 2013-12-04 → 2013-12-11 (+7d) |  | 116.8d → 111.8d |  |
| 140 | **Разработка коллекций** | 2013-12-04 → 2013-12-11 (+7d) | 2013-12-17 → 2013-12-24 (+7d) |  | 116.8d → 111.8d |  |
| 141 | Коллекции | 2013-12-04 → 2013-12-11 (+7d) | 2013-12-17 → 2013-12-24 (+7d) |  | 116.8d → 111.8d |  |
| 142 | Интеграция по СрвСогл выполнена | 2013-12-17 → 2013-12-24 (+7d) | 2013-12-17 → 2013-12-24 (+7d) |  | 116.8d → 111.8d |  |
| 143 | **Интеграция с CMJ по Входящим документам** | 2013-11-04 → 2013-11-11 (+7d) | 2013-12-17 → 2013-12-24 (+7d) |  | 85.8d → 80.8d |  |
| 144 | Конфиг ДОП | 2013-11-04 → 2013-11-11 (+7d) | 2013-11-12 → 2013-11-19 (+7d) |  | 85.8d → 80.8d |  |
| 145 | Mapper | 2013-11-12 → 2013-11-19 (+7d) | 2013-11-20 → 2013-11-27 (+7d) |  | 85.8d → 80.8d |  |
| 146 | **Настраиваемые коллекции** | 2013-11-20 → 2013-11-27 (+7d) | 2013-11-27 → 2013-12-04 (+7d) |  | 99.8d → 94.8d |  |
| 147 | **Конфигурация коллекций** | 2013-11-20 → 2013-11-27 (+7d) | 2013-11-26 → 2013-12-03 (+7d) |  | 99.8d → 94.8d |  |
| 148 | Типовая иерархия кастомных папок (3шт) | 2013-11-20 → 2013-11-27 (+7d) | 2013-11-22 → 2013-11-29 (+7d) |  | 99.8d → 94.8d |  |
| 149 | Системные настройки для Вх | 2013-11-22 → 2013-11-29 (+7d) | 2013-11-26 → 2013-12-03 (+7d) |  | 99.8d → 94.8d |  |
| 150 | Проверка работы | 2013-11-26 → 2013-12-03 (+7d) | 2013-11-27 → 2013-12-04 (+7d) |  | 99.8d → 94.8d |  |
| 151 | **Разработка адаптеров для Вх** | 2013-11-20 → 2013-11-27 (+7d) | 2013-12-04 → 2013-12-11 (+7d) |  | 85.8d → 80.8d |  |
| 152 | Задание поставлено | 2013-11-20 → 2013-11-27 (+7d) | 2013-11-20 → 2013-11-27 (+7d) |  | 85.8d → 80.8d |  |
| 153 | Разработка архитектуры дя адаптеров | 2013-11-20 → 2013-11-27 (+7d) | 2013-11-27 → 2013-12-04 (+7d) |  | 85.8d → 80.8d |  |
| 154 | Разработка адаптеров | 2013-11-27 → 2013-12-04 (+7d) | 2013-12-04 → 2013-12-11 (+7d) |  | 85.8d → 80.8d |  |
| 155 | **Разработка коллекций** | 2013-12-04 → 2013-12-11 (+7d) | 2013-12-17 → 2013-12-24 (+7d) |  | 85.8d → 80.8d |  |
| 156 | Коллекции | 2013-12-04 → 2013-12-11 (+7d) | 2013-12-17 → 2013-12-24 (+7d) |  | 85.8d → 80.8d |  |
| 157 | Интеграция по Вх выполнена | 2013-12-17 → 2013-12-24 (+7d) | 2013-12-17 → 2013-12-24 (+7d) |  | 85.8d → 80.8d |  |
| 158 | **Интеграция с CMJ по ОРД** | 2013-11-04 → 2013-11-11 (+7d) | 2013-12-17 → 2013-12-24 (+7d) |  | 85.8d → 80.8d |  |
| 159 | Конфиг ДОП | 2013-11-04 → 2013-11-11 (+7d) | 2013-11-12 → 2013-11-19 (+7d) |  | 85.8d → 80.8d |  |
| 160 | Mapper | 2013-11-12 → 2013-11-19 (+7d) | 2013-11-20 → 2013-11-27 (+7d) |  | 85.8d → 80.8d |  |
| 161 | **Настраиваемые коллекции** | 2013-11-20 → 2013-11-27 (+7d) | 2013-11-27 → 2013-12-04 (+7d) |  | 99.8d → 94.8d |  |
| 162 | **Конфигурация коллекций** | 2013-11-20 → 2013-11-27 (+7d) | 2013-11-26 → 2013-12-03 (+7d) |  | 99.8d → 94.8d |  |
| 163 | Типовая иерархия кастомных папок (3шт) | 2013-11-20 → 2013-11-27 (+7d) | 2013-11-22 → 2013-11-29 (+7d) |  | 99.8d → 94.8d |  |
| 164 | Системные настройки для ОРД | 2013-11-22 → 2013-11-29 (+7d) | 2013-11-26 → 2013-12-03 (+7d) |  | 99.8d → 94.8d |  |
| 165 | Проверка работы | 2013-11-26 → 2013-12-03 (+7d) | 2013-11-27 → 2013-12-04 (+7d) |  | 99.8d → 94.8d |  |
| 166 | **Разработка адаптеров для ОРД** | 2013-11-20 → 2013-11-27 (+7d) | 2013-12-04 → 2013-12-11 (+7d) |  | 85.8d → 80.8d |  |
| 167 | Задание поставлено | 2013-11-20 → 2013-11-27 (+7d) | 2013-11-20 → 2013-11-27 (+7d) |  | 85.8d → 80.8d |  |
| 168 | Разработка архитектуры дя адаптеров | 2013-11-20 → 2013-11-27 (+7d) | 2013-11-27 → 2013-12-04 (+7d) |  | 85.8d → 80.8d |  |
| 169 | Разработка адаптеров | 2013-11-27 → 2013-12-04 (+7d) | 2013-12-04 → 2013-12-11 (+7d) |  | 85.8d → 80.8d |  |
| 170 | **Разработка коллекций** | 2013-12-04 → 2013-12-11 (+7d) | 2013-12-17 → 2013-12-24 (+7d) |  | 85.8d → 80.8d |  |
| 171 | Коллекции | 2013-12-04 → 2013-12-11 (+7d) | 2013-12-17 → 2013-12-24 (+7d) |  | 85.8d → 80.8d |  |
| 172 | Интеграция по ОРД выполнена | 2013-12-17 → 2013-12-24 (+7d) | 2013-12-17 → 2013-12-24 (+7d) |  | 85.8d → 80.8d |  |
| 173 | **Интеграция с CMJ по Исходящие документам** | 2013-12-17 → 2013-12-24 (+7d) | 2014-02-10 → 2014-02-17 (+7d) |  | 85.8d → 80.8d |  |

| ID | Task | Start | Finish | Total float |
| --- | --- | --- | --- | --- |
| 174 | Конфиг ДОП | 2013-12-17 → 2013-12-24 (+7d) | 2013-12-25 → 2014-01-13 (+19d) | 85.8d → 80.8d |
| 175 | Mapper | 2013-12-25 → 2014-01-13 (+19d) | 2014-01-14 → 2014-01-21 (+7d) | 85.8d → 80.8d |
| 176 | **Настраиваемые коллекции** | 2014-01-14 → 2014-01-21 (+7d) | 2014-01-21 → 2014-01-28 (+7d) | 99.8d → 94.8d |
| 177 | **Конфигурация коллекций** | 2014-01-14 → 2014-01-21 (+7d) | 2014-01-20 → 2014-01-27 (+7d) | 99.8d → 94.8d |
| 178 | Типовая иерархия кастомных папок (3шт) | 2014-01-14 → 2014-01-21 (+7d) | 2014-01-16 → 2014-01-23 (+7d) | 99.8d → 94.8d |
| 179 | Системные настройки для Исх | 2014-01-16 → 2014-01-23 (+7d) | 2014-01-20 → 2014-01-27 (+7d) | 99.8d → 94.8d |
| 180 | Проверка работы | 2014-01-20 → 2014-01-27 (+7d) | 2014-01-21 → 2014-01-28 (+7d) | 99.8d → 94.8d |
| 181 | **Разработка адаптеров для Исх** | 2014-01-14 → 2014-01-21 (+7d) | 2014-01-28 → 2014-02-04 (+7d) | 85.8d → 80.8d |
| 182 | Задание поставлено | 2014-01-14 → 2014-01-21 (+7d) | 2014-01-14 → 2014-01-21 (+7d) | 85.8d → 80.8d |
| 183 | Разработка архитектуры дя адаптеров | 2014-01-14 → 2014-01-21 (+7d) | 2014-01-21 → 2014-01-28 (+7d) | 85.8d → 80.8d |
| 184 | Разработка адаптеров | 2014-01-21 → 2014-01-28 (+7d) | 2014-01-28 → 2014-02-04 (+7d) | 85.8d → 80.8d |
| 185 | **Разработка коллекций** | 2014-01-28 → 2014-02-04 (+7d) | 2014-02-10 → 2014-02-17 (+7d) | 85.8d → 80.8d |
| 186 | Коллекции | 2014-01-28 → 2014-02-04 (+7d) | 2014-02-10 → 2014-02-17 (+7d) | 85.8d → 80.8d |
| 187 | Интеграция по Исх выполнена | 2014-02-10 → 2014-02-17 (+7d) | 2014-02-10 → 2014-02-17 (+7d) | 85.8d → 80.8d |
| 188 | **Интеграция с CMJ по самостоятельным поручениям** | 2013-11-04 → 2013-11-11 (+7d) | 2013-12-17 → 2013-12-24 (+7d) | 116.8d → 111.8d |
| 189 | Конфиг ДОП | 2013-11-04 → 2013-11-11 (+7d) | 2013-11-12 → 2013-11-19 (+7d) | 116.8d → 111.8d |
| 190 | Mapper | 2013-11-12 → 2013-11-19 (+7d) | 2013-11-20 → 2013-11-27 (+7d) | 116.8d → 111.8d |
| 191 | **Настраиваемые коллекции** | 2013-11-20 → 2013-11-27 (+7d) | 2013-11-27 → 2013-12-04 (+7d) | 130.8d → 125.8d |
| 192 | **Конфигурация коллекций** | 2013-11-20 → 2013-11-27 (+7d) | 2013-11-26 → 2013-12-03 (+7d) | 130.8d → 125.8d |
| 193 | Типовая иерархия кастомных папок (3шт) | 2013-11-20 → 2013-11-27 (+7d) | 2013-11-22 → 2013-11-29 (+7d) | 130.8d → 125.8d |
| 194 | Системные настройки для Поручений | 2013-11-22 → 2013-11-29 (+7d) | 2013-11-26 → 2013-12-03 (+7d) | 130.8d → 125.8d |
| 195 | Проверка работы | 2013-11-26 → 2013-12-03 (+7d) | 2013-11-27 → 2013-12-04 (+7d) | 130.8d → 125.8d |
| 196 | **Разработка адаптеров для Поручений** | 2013-11-20 → 2013-11-27 (+7d) | 2013-12-04 → 2013-12-11 (+7d) | 116.8d → 111.8d |
| 197 | Задание поставлено | 2013-11-20 → 2013-11-27 (+7d) | 2013-11-20 → 2013-11-27 (+7d) | 116.8d → 111.8d |
| 198 | Разработка архитектуры дя адаптеров | 2013-11-20 → 2013-11-27 (+7d) | 2013-11-27 → 2013-12-04 (+7d) | 116.8d → 111.8d |
| 199 | Разработка адаптеров | 2013-11-27 → 2013-12-04 (+7d) | 2013-12-04 → 2013-12-11 (+7d) | 116.8d → 111.8d |
| 200 | **Разработка коллекций** | 2013-12-04 → 2013-12-11 (+7d) | 2013-12-17 → 2013-12-24 (+7d) | 116.8d → 111.8d |
| 201 | Коллекции | 2013-12-04 → 2013-12-11 (+7d) | 2013-12-17 → 2013-12-24 (+7d) | 116.8d → 111.8d |
| 202 | Интеграция по Поручений выполнена | 2013-12-17 → 2013-12-24 (+7d) | 2013-12-17 → 2013-12-24 (+7d) | 116.8d → 111.8d |
| 203 | **Интеграция с CMJ по ОГ** | 2013-11-04 → 2013-11-11 (+7d) | 2013-12-17 → 2013-12-24 (+7d) | 116.8d → 111.8d |
| 204 | Конфиг ДОП | 2013-11-04 → 2013-11-11 (+7d) | 2013-11-12 → 2013-11-19 (+7d) | 116.8d → 111.8d |
| 205 | Mapper | 2013-11-12 → 2013-11-19 (+7d) | 2013-11-20 → 2013-11-27 (+7d) | 116.8d → 111.8d |
| 206 | **Настраиваемые коллекции** | 2013-11-20 → 2013-11-27 (+7d) | 2013-11-27 → 2013-12-04 (+7d) | 130.8d → 125.8d |
| 207 | **Конфигурация коллекций** | 2013-11-20 → 2013-11-27 (+7d) | 2013-11-26 → 2013-12-03 (+7d) | 130.8d → 125.8d |
| 208 | Типовая иерархия кастомных папок (3шт) | 2013-11-20 → 2013-11-27 (+7d) | 2013-11-22 → 2013-11-29 (+7d) | 130.8d → 125.8d |
| 209 | Системные настройки для ОГ | 2013-11-22 → 2013-11-29 (+7d) | 2013-11-26 → 2013-12-03 (+7d) | 130.8d → 125.8d |
| 210 | Проверка работы | 2013-11-26 → 2013-12-03 (+7d) | 2013-11-27 → 2013-12-04 (+7d) | 130.8d → 125.8d |
| 211 | **Разработка адаптеров для ОГ** | 2013-11-20 → 2013-11-27 (+7d) | 2013-12-04 → 2013-12-11 (+7d) | 116.8d → 111.8d |
| 212 | Задание поставлено | 2013-11-20 → 2013-11-27 (+7d) | 2013-11-20 → 2013-11-27 (+7d) | 116.8d → 111.8d |
| 213 | Разработка архитектуры дя адаптеров | 2013-11-20 → 2013-11-27 (+7d) | 2013-11-27 → 2013-12-04 (+7d) | 116.8d → 111.8d |
| 214 | Разработка адаптеров | 2013-11-27 → 2013-12-04 (+7d) | 2013-12-04 → 2013-12-11 (+7d) | 116.8d → 111.8d |
| 215 | **Разработка коллекций** | 2013-12-04 → 2013-12-11 (+7d) | 2013-12-17 → 2013-12-24 (+7d) | 116.8d → 111.8d |
| 216 | Коллекции | 2013-12-04 → 2013-12-11 (+7d) | 2013-12-17 → 2013-12-24 (+7d) | 116.8d → 111.8d |
| 217 | Интеграция по ОГ выполнена | 2013-12-17 → 2013-12-24 (+7d) | 2013-12-17 → 2013-12-24 (+7d) | 116.8d → 111.8d |
| 218 | **Интеграция с CMJ по "Кейсам"** | 2013-11-04 → 2013-11-11 (+7d) | 2013-12-17 → 2013-12-24 (+7d) | 116.8d → 111.8d |
| 219 | Конфиг ДОП | 2013-11-04 → 2013-11-11 (+7d) | 2013-11-12 → 2013-11-19 (+7d) | 116.8d → 111.8d |
| 220 | Mapper | 2013-11-12 → 2013-11-19 (+7d) | 2013-11-20 → 2013-11-27 (+7d) | 116.8d → 111.8d |
| 221 | **Настраиваемые коллекции** | 2013-11-20 → 2013-11-27 (+7d) | 2013-11-27 → 2013-12-04 (+7d) | 130.8d → 125.8d |
| 222 | **Конфигурация коллекций** | 2013-11-20 → 2013-11-27 (+7d) | 2013-11-26 → 2013-12-03 (+7d) | 130.8d → 125.8d |
| 223 | Типовая иерархия кастомных папок (3шт) | 2013-11-20 → 2013-11-27 (+7d) | 2013-11-22 → 2013-11-29 (+7d) | 130.8d → 125.8d |
| 224 | Системные настройки для Кейс | 2013-11-22 → 2013-11-29 (+7d) | 2013-11-26 → 2013-12-03 (+7d) | 130.8d → 125.8d |
| 225 | Проверка работы | 2013-11-26 → 2013-12-03 (+7d) | 2013-11-27 → 2013-12-04 (+7d) | 130.8d → 125.8d |
| 226 | **Разработка адаптеров для Кейс** | 2013-11-20 → 2013-11-27 (+7d) | 2013-12-04 → 2013-12-11 (+7d) | 116.8d → 111.8d |
| 227 | Задание поставлено | 2013-11-20 → 2013-11-27 (+7d) | 2013-11-20 → 2013-11-27 (+7d) | 116.8d → 111.8d |
| 228 | Разработка архитектуры дя адаптеров | 2013-11-20 → 2013-11-27 (+7d) | 2013-11-27 → 2013-12-04 (+7d) | 116.8d → 111.8d |
| 229 | Разработка адаптеров | 2013-11-27 → 2013-12-04 (+7d) | 2013-12-04 → 2013-12-11 (+7d) | 116.8d → 111.8d |
| 230 | **Разработка коллекций** | 2013-12-04 → 2013-12-11 (+7d) | 2013-12-17 → 2013-12-24 (+7d) | 116.8d → 111.8d |
| 231 | Коллекции | 2013-12-04 → 2013-12-11 (+7d) | 2013-12-17 → 2013-12-24 (+7d) | 116.8d → 111.8d |
| 232 | Интеграция по Кейс выполнена | 2013-12-17 → 2013-12-24 (+7d) | 2013-12-17 → 2013-12-24 (+7d) | 116.8d → 111.8d |
| 233 | **Интеграция с CMJ по Договорам** | 2013-11-04 → 2013-11-11 (+7d) | 2013-12-17 → 2013-12-24 (+7d) | 116.8d → 111.8d |
| 234 | Конфиг ДОП | 2013-11-04 → 2013-11-11 (+7d) | 2013-11-12 → 2013-11-19 (+7d) | 116.8d → 111.8d |
| 235 | Mapper | 2013-11-12 → 2013-11-19 (+7d) | 2013-11-20 → 2013-11-27 (+7d) | 116.8d → 111.8d |
| 236 | **Настраиваемые коллекции** | 2013-11-20 → 2013-11-27 (+7d) | 2013-11-27 → 2013-12-04 (+7d) | 130.8d → 125.8d |
| 237 | **Конфигурация коллекций** | 2013-11-20 → 2013-11-27 (+7d) | 2013-11-26 → 2013-12-03 (+7d) | 130.8d → 125.8d |
| 238 | Типовая иерархия кастомных папок (3шт) | 2013-11-20 → 2013-11-27 (+7d) | 2013-11-22 → 2013-11-29 (+7d) | 130.8d → 125.8d |
| 239 | Системные настройки для Дгв | 2013-11-22 → 2013-11-29 (+7d) | 2013-11-26 → 2013-12-03 (+7d) | 130.8d → 125.8d |
| 240 | Проверка работы | 2013-11-26 → 2013-12-03 (+7d) | 2013-11-27 → 2013-12-04 (+7d) | 130.8d → 125.8d |
| 241 | **Разработка адаптеров для Дгв** | 2013-11-20 → 2013-11-27 (+7d) | 2013-12-04 → 2013-12-11 (+7d) | 116.8d → 111.8d |
| 242 | Задание поставлено | 2013-11-20 → 2013-11-27 (+7d) | 2013-11-20 → 2013-11-27 (+7d) | 116.8d → 111.8d |
| 243 | Разработка архитектуры дя адаптеров | 2013-11-20 → 2013-11-27 (+7d) | 2013-11-27 → 2013-12-04 (+7d) | 116.8d → 111.8d |

| ID | Task | Start | Finish | Total float |
| --- | --- | --- | --- | --- |
| 244 | Разработка адаптеров | 2013-11-27 → 2013-12-04 (+7d) | 2013-12-04 → 2013-12-11 (+7d) | 116.8d → 111.8d |
| 245 | **Разработка коллекций** | 2013-12-04 → 2013-12-11 (+7d) | 2013-12-17 → 2013-12-24 (+7d) | 116.8d → 111.8d |
| 246 | Коллекции | 2013-12-04 → 2013-12-11 (+7d) | 2013-12-17 → 2013-12-24 (+7d) | 116.8d → 111.8d |
| 247 | Интеграция по Дгв выполнена | 2013-12-17 → 2013-12-24 (+7d) | 2013-12-17 → 2013-12-24 (+7d) | 116.8d → 111.8d |
| 248 | **Интеграция с CMJ по Заседаниям** | 2013-11-04 → 2013-11-11 (+7d) | 2013-12-17 → 2013-12-24 (+7d) | 116.8d → 111.8d |
| 249 | Конфиг ДОП | 2013-11-04 → 2013-11-11 (+7d) | 2013-11-12 → 2013-11-19 (+7d) | 116.8d → 111.8d |
| 250 | Mapper | 2013-11-12 → 2013-11-19 (+7d) | 2013-11-20 → 2013-11-27 (+7d) | 116.8d → 111.8d |
| 251 | **Настраиваемые коллекции** | 2013-11-20 → 2013-11-27 (+7d) | 2013-11-27 → 2013-12-04 (+7d) | 130.8d → 125.8d |
| 252 | **Конфигурация коллекций** | 2013-11-20 → 2013-11-27 (+7d) | 2013-11-26 → 2013-12-03 (+7d) | 130.8d → 125.8d |
| 253 | Типовая иерархия кастомных папок (3шт) | 2013-11-20 → 2013-11-27 (+7d) | 2013-11-22 → 2013-11-29 (+7d) | 130.8d → 125.8d |
| 254 | Системные настройки для Зсд | 2013-11-22 → 2013-11-29 (+7d) | 2013-11-26 → 2013-12-03 (+7d) | 130.8d → 125.8d |
| 255 | Проверка работы | 2013-11-26 → 2013-12-03 (+7d) | 2013-11-27 → 2013-12-04 (+7d) | 130.8d → 125.8d |
| 256 | **Разработка адаптеров для Зсд** | 2013-11-20 → 2013-11-27 (+7d) | 2013-12-04 → 2013-12-11 (+7d) | 116.8d → 111.8d |
| 257 | Задание поставлено | 2013-11-20 → 2013-11-27 (+7d) | 2013-11-20 → 2013-11-27 (+7d) | 116.8d → 111.8d |
| 258 | Разработка архитектуры дя адаптеров | 2013-11-20 → 2013-11-27 (+7d) | 2013-11-27 → 2013-12-04 (+7d) | 116.8d → 111.8d |
| 259 | Разработка адаптеров | 2013-11-27 → 2013-12-04 (+7d) | 2013-12-04 → 2013-12-11 (+7d) | 116.8d → 111.8d |
| 260 | **Разработка коллекций** | 2013-12-04 → 2013-12-11 (+7d) | 2013-12-17 → 2013-12-24 (+7d) | 116.8d → 111.8d |
| 261 | Коллекции | 2013-12-04 → 2013-12-11 (+7d) | 2013-12-17 → 2013-12-24 (+7d) | 116.8d → 111.8d |
| 262 | Интеграция по Зсд выполнена | 2013-12-17 → 2013-12-24 (+7d) | 2013-12-17 → 2013-12-24 (+7d) | 116.8d → 111.8d |
| 263 | **Интеграция с CMJ по Обсуждениям и ознакомлениям** | 2013-11-04 → 2013-11-11 (+7d) | 2013-12-17 → 2013-12-24 (+7d) | 116.8d → 111.8d |
| 264 | Конфиг ДОП | 2013-11-04 → 2013-11-11 (+7d) | 2013-11-12 → 2013-11-19 (+7d) | 116.8d → 111.8d |
| 265 | Mapper | 2013-11-12 → 2013-11-19 (+7d) | 2013-11-20 → 2013-11-27 (+7d) | 116.8d → 111.8d |
| 266 | **Настраиваемые коллекции** | 2013-11-20 → 2013-11-27 (+7d) | 2013-11-27 → 2013-12-04 (+7d) | 130.8d → 125.8d |
| 267 | **Конфигурация коллекций** | 2013-11-20 → 2013-11-27 (+7d) | 2013-11-26 → 2013-12-03 (+7d) | 130.8d → 125.8d |
| 268 | Типовая иерархия кастомных папок (3шт) | 2013-11-20 → 2013-11-27 (+7d) | 2013-11-22 → 2013-11-29 (+7d) | 130.8d → 125.8d |
| 269 | Системные настройки для ОО | 2013-11-22 → 2013-11-29 (+7d) | 2013-11-26 → 2013-12-03 (+7d) | 130.8d → 125.8d |
| 270 | Проверка работы | 2013-11-26 → 2013-12-03 (+7d) | 2013-11-27 → 2013-12-04 (+7d) | 130.8d → 125.8d |
| 271 | **Разработка адаптеров для ОО** | 2013-11-20 → 2013-11-27 (+7d) | 2013-12-04 → 2013-12-11 (+7d) | 116.8d → 111.8d |
| 272 | Задание поставлено | 2013-11-20 → 2013-11-27 (+7d) | 2013-11-20 → 2013-11-27 (+7d) | 116.8d → 111.8d |
| 273 | Разработка архитектуры дя адаптеров | 2013-11-20 → 2013-11-27 (+7d) | 2013-11-27 → 2013-12-04 (+7d) | 116.8d → 111.8d |
| 274 | Разработка адаптеров | 2013-11-27 → 2013-12-04 (+7d) | 2013-12-04 → 2013-12-11 (+7d) | 116.8d → 111.8d |
| 275 | **Разработка коллекций** | 2013-12-04 → 2013-12-11 (+7d) | 2013-12-17 → 2013-12-24 (+7d) | 116.8d → 111.8d |
| 276 | Коллекции | 2013-12-04 → 2013-12-11 (+7d) | 2013-12-17 → 2013-12-24 (+7d) | 116.8d → 111.8d |
| 277 | Интеграция по ОО выполнена | 2013-12-17 → 2013-12-24 (+7d) | 2013-12-17 → 2013-12-24 (+7d) | 116.8d → 111.8d |
| 278 | **Интеграция с CMJ по Формированию дел** | 2013-11-04 → 2013-11-11 (+7d) | 2013-12-17 → 2013-12-24 (+7d) | 116.8d → 111.8d |
| 279 | Конфиг ДОП | 2013-11-04 → 2013-11-11 (+7d) | 2013-11-12 → 2013-11-19 (+7d) | 116.8d → 111.8d |
| 280 | Mapper | 2013-11-12 → 2013-11-19 (+7d) | 2013-11-20 → 2013-11-27 (+7d) | 116.8d → 111.8d |
| 281 | **Настраиваемые коллекции** | 2013-11-20 → 2013-11-27 (+7d) | 2013-11-27 → 2013-12-04 (+7d) | 130.8d → 125.8d |
| 282 | **Конфигурация коллекций** | 2013-11-20 → 2013-11-27 (+7d) | 2013-11-26 → 2013-12-03 (+7d) | 130.8d → 125.8d |
| 283 | Типовая иерархия кастомных папок (3шт) | 2013-11-20 → 2013-11-27 (+7d) | 2013-11-22 → 2013-11-29 (+7d) | 130.8d → 125.8d |
| 284 | Системные настройки для ФД | 2013-11-22 → 2013-11-29 (+7d) | 2013-11-26 → 2013-12-03 (+7d) | 130.8d → 125.8d |
| 285 | Проверка работы | 2013-11-26 → 2013-12-03 (+7d) | 2013-11-27 → 2013-12-04 (+7d) | 130.8d → 125.8d |
| 286 | **Разработка адаптеров для ФД** | 2013-11-20 → 2013-11-27 (+7d) | 2013-12-04 → 2013-12-11 (+7d) | 116.8d → 111.8d |
| 287 | Задание поставлено | 2013-11-20 → 2013-11-27 (+7d) | 2013-11-20 → 2013-11-27 (+7d) | 116.8d → 111.8d |
| 288 | Разработка архитектуры дя адаптеров | 2013-11-20 → 2013-11-27 (+7d) | 2013-11-27 → 2013-12-04 (+7d) | 116.8d → 111.8d |
| 289 | Разработка адаптеров | 2013-11-27 → 2013-12-04 (+7d) | 2013-12-04 → 2013-12-11 (+7d) | 116.8d → 111.8d |
| 290 | **Разработка коллекций** | 2013-12-04 → 2013-12-11 (+7d) | 2013-12-17 → 2013-12-24 (+7d) | 116.8d → 111.8d |
| 291 | Коллекции | 2013-12-04 → 2013-12-11 (+7d) | 2013-12-17 → 2013-12-24 (+7d) | 116.8d → 111.8d |
| 292 | Интеграция по ФД выполнена | 2013-12-17 → 2013-12-24 (+7d) | 2013-12-17 → 2013-12-24 (+7d) | 116.8d → 111.8d |
| 377 | **Тестирование** | 2014-02-10 → 2014-02-17 (+7d) | 2014-05-15 → 2014-05-22 (+7d) | 85.8d → 80.8d |
| 378 | **Функциональное тестирование** | 2014-02-10 → 2014-02-17 (+7d) | 2014-04-24 → 2014-05-01 (+7d) | 85.8d → 80.8d |
| 379 | Подготовка ПМИ | 2014-02-10 → 2014-02-17 (+7d) | 2014-02-17 → 2014-02-24 (+7d) | 85.8d → 80.8d |
| 380 | Разработка "сценариев тестирования" | 2014-02-10 → 2014-02-17 (+7d) | 2014-03-03 → 2014-03-10 (+7d) | 90.8d → 85.8d |
| 381 | Разработка модели нагрузки для тестирования | 2014-02-17 → 2014-02-24 (+7d) | 2014-03-03 → 2014-03-10 (+7d) | 90.8d → 85.8d |
| 382 | Адаптация автоматизированных сценариев от СМ4 для создания нагрузки | 2014-02-17 → 2014-02-24 (+7d) | 2014-03-24 → 2014-03-31 (+7d) | 85.8d → 80.8d |
| 383 | **Проведение тестирования** | 2014-03-03 → 2014-03-10 (+7d) | 2014-04-24 → 2014-05-01 (+7d) | 90.8d → 85.8d |
| 384 | **Подготовка среды тестирования** | 2014-03-03 → 2014-03-10 (+7d) | 2014-03-17 → 2014-03-24 (+7d) | 90.8d → 85.8d |
| 385 | Разворачивание системы | 2014-03-03 → 2014-03-10 (+7d) | 2014-03-10 → 2014-03-17 (+7d) | 133.8d → 128.8d |
| 386 | Система готова для подключения инструментов мониторинга | 2014-03-10 → 2014-03-17 (+7d) | 2014-03-10 → 2014-03-17 (+7d) | 133.8d → 128.8d |
| 387 | Наполнение данными | 2014-03-03 → 2014-03-10 (+7d) | 2014-03-17 → 2014-03-24 (+7d) | 90.8d → 85.8d |
| 388 | Среда тестирования готова | 2014-03-24 → 2014-03-31 (+7d) | 2014-03-24 → 2014-03-31 (+7d) | 85.8d → 80.8d |
| 389 | Проведение тестирования | 2014-03-24 → 2014-03-31 (+7d) | 2014-04-07 → 2014-04-14 (+7d) | 85.8d → 80.8d |
| 390 | **Обработка результатов тестирования и внесение изменений в модуль** | 2014-04-03 → 2014-04-10 (+7d) | 2014-04-24 → 2014-05-01 (+7d) | 85.8d → 80.8d |
| 391 | Устранение замечаний по результатам функционального тестирования | 2014-04-03 → 2014-04-10 (+7d) | 2014-04-24 → 2014-05-01 (+7d) | 85.8d → 80.8d |
| 392 | Проверка устранения замечаний | 2014-04-16 → 2014-04-23 (+7d) | 2014-04-24 → 2014-05-01 (+7d) | 85.8d → 80.8d |
| 393 | **Нагрузочное тестирование** | 2014-04-07 → 2014-04-14 (+7d) | 2014-05-15 → 2014-05-22 (+7d) | 85.8d → 80.8d |
| 394 | Стенд для нагрузочного тестирования подготовлен | 2014-04-07 → 2014-04-14 (+7d) | 2014-04-07 → 2014-04-14 (+7d) | 98.8d → 93.8d |
| 395 | Проведения нагрузочного тестирования | 2014-04-24 → 2014-05-01 (+7d) | 2014-05-08 → 2014-05-15 (+7d) | 85.8d → 80.8d |
| 396 | Обработка результатов нагрузочного тестирования | 2014-05-08 → 2014-05-15 (+7d) | 2014-05-15 → 2014-05-22 (+7d) | 85.8d → 80.8d |
| 397 | **Подготовка документации** | 2014-02-10 → 2014-02-17 (+7d) | 2014-06-02 → 2014-06-09 (+7d) | 73.8d → 68.8d |

| ID | Task | Start | Finish | Total float |
| --- | --- | --- | --- | --- |
| 398 | Разработка документа "Концепция системы " | 2014-02-10 → 2014-02-17 (+7d) | 2014-04-07 → 2014-04-14 (+7d) | 73.8d → 68.8d |
| 399 | Разработка "Software Architecture Document" | 2014-04-07 → 2014-04-14 (+7d) | 2014-06-02 → 2014-06-09 (+7d) | 73.8d → 68.8d |
| 400 | Документы подготовлены | 2014-06-02 → 2014-06-09 (+7d) | 2014-06-02 → 2014-06-09 (+7d) | 73.8d → 68.8d |

## Version 43 (saved 2013-10-15)

Note of the change: Форматирование диаграммы Ганта в плане работ

Last finish stays 2014-09-11.

Changed:

| ID | Task | Start | Finish | Duration | Total float |
| --- | --- | --- | --- | --- | --- |
| 9 | **Создание модуля "Делопроизводство" (документоориентированная среда)** |  | 2014-06-09 → 2014-06-02 (-7d) | 282.2d? → 277.2d? | 68.8d → 73.8d |
| 20 | **Проектирование и формирование ядра системы** |  | 2014-02-17 → 2014-02-10 (-7d) | 202.2d? → 197.2d? | 80.8d → 85.8d |
| 68 | **Слой сопряжения CMJ server (CM4)** |  | 2014-02-17 → 2014-02-10 (-7d) | 161.2d? → 156.2d? | 80.8d → 85.8d |
| 76 | **Интеграция с CMJ по Внутренним Документам** |  | 2013-11-11 → 2013-11-04 (-7d) | 35.2d? → 30.2d? | 80.8d → 85.8d |
| 104 | **Разработка адаптеров для Вн** |  | 2013-10-22 → 2013-10-15 (-7d) | 17d → 12d | 94d → 99d |
| 106 | Адаптеры View, Session проектирование |  | 2013-10-14 → 2013-10-07 (-7d) | 11d → 6d | 80.8d → 85.8d |
| 107 | Разработка логики адаптеров view&session | 2013-10-15 → 2013-10-08 (-7d) | 2013-10-22 → 2013-10-15 (-7d) |  | 80.8d → 85.8d |
| 112 | **Разработка коллекций** | 2013-10-23 → 2013-10-16 (-7d) | 2013-11-06 → 2013-10-30 (-7d) |  | 80.8d → 85.8d |
| 113 | Коллекции Портала | 2013-10-23 → 2013-10-16 (-7d) | 2013-10-28 → 2013-10-21 (-7d) |  | 80.8d → 85.8d |
| 114 | Инструктаж по @-формулам проведен | 2013-10-28 → 2013-10-21 (-7d) | 2013-10-28 → 2013-10-21 (-7d) |  | 90d → 95d |
| 115 | Коллекции СС | 2013-10-29 → 2013-10-22 (-7d) | 2013-10-31 → 2013-10-24 (-7d) |  | 80.8d → 85.8d |
| 116 | Коллекции Каталога | 2013-10-29 → 2013-10-22 (-7d) | 2013-10-31 → 2013-10-24 (-7d) |  | 80.8d → 85.8d |
| 117 | Коллекции СО | 2013-10-29 → 2013-10-22 (-7d) | 2013-10-31 → 2013-10-24 (-7d) |  | 84d → 89d |
| 118 | Коллекции ВнД | 2013-11-01 → 2013-10-25 (-7d) | 2013-11-06 → 2013-10-30 (-7d) |  | 80.8d → 85.8d |
| 119 | Коллекции СпО | 2013-11-01 → 2013-10-25 (-7d) | 2013-11-06 → 2013-10-30 (-7d) |  | 80.8d → 85.8d |
| 120 | ВнД | 2013-11-06 → 2013-10-30 (-7d) | 2013-11-06 → 2013-10-30 (-7d) |  | 80.8d → 85.8d |
| 121 | Объединение War | 2013-11-06 → 2013-10-30 (-7d) | 2013-11-07 → 2013-10-31 (-7d) |  | 82.8d → 87.8d |
| 122 | **Инструмент заполнения** | 2013-11-06 → 2013-10-30 (-7d) | 2013-11-11 → 2013-11-04 (-7d) |  | 80.8d → 85.8d |
| 123 | Инструмент заполнения Каталога | 2013-11-06 → 2013-10-30 (-7d) | 2013-11-11 → 2013-11-04 (-7d) |  | 80.8d → 85.8d |
| 124 | Инструмент заполнения СС | 2013-11-06 → 2013-10-30 (-7d) | 2013-11-11 → 2013-11-04 (-7d) |  | 80.8d → 85.8d |
| 125 | Инструмент заполнения Портала | 2013-11-06 → 2013-10-30 (-7d) | 2013-11-11 → 2013-11-04 (-7d) |  | 80.8d → 85.8d |
| 126 | Инструмент заполнения СО | 2013-11-06 → 2013-10-30 (-7d) | 2013-11-11 → 2013-11-04 (-7d) |  | 80.8d → 85.8d |
| 127 | Инструмент заполнения СпО | 2013-11-06 → 2013-10-30 (-7d) | 2013-11-11 → 2013-11-04 (-7d) |  | 80.8d → 85.8d |
| 128 | **Интеграция с CMJ по сервису согласования** | 2013-11-11 → 2013-11-04 (-7d) | 2013-12-24 → 2013-12-17 (-7d) |  | 111.8d → 116.8d |
| 129 | Конфиг ДОП | 2013-11-11 → 2013-11-04 (-7d) | 2013-11-19 → 2013-11-12 (-7d) |  | 111.8d → 116.8d |
| 130 | Mapper | 2013-11-19 → 2013-11-12 (-7d) | 2013-11-27 → 2013-11-20 (-7d) |  | 111.8d → 116.8d |
| 131 | **Настраиваемые коллекции** | 2013-11-27 → 2013-11-20 (-7d) | 2013-12-04 → 2013-11-27 (-7d) |  | 125.8d → 130.8d |
| 132 | **Конфигурация коллекций** | 2013-11-27 → 2013-11-20 (-7d) | 2013-12-03 → 2013-11-26 (-7d) |  | 125.8d → 130.8d |
| 133 | Типовая иерархия кастомных папок (3шт) | 2013-11-27 → 2013-11-20 (-7d) | 2013-11-29 → 2013-11-22 (-7d) |  | 125.8d → 130.8d |
| 134 | Системные настройки для СрвСогл | 2013-11-29 → 2013-11-22 (-7d) | 2013-12-03 → 2013-11-26 (-7d) |  | 125.8d → 130.8d |
| 135 | Проверка работы | 2013-12-03 → 2013-11-26 (-7d) | 2013-12-04 → 2013-11-27 (-7d) |  | 125.8d → 130.8d |
| 136 | **Разработка адаптеров для СрвСогл** | 2013-11-27 → 2013-11-20 (-7d) | 2013-12-11 → 2013-12-04 (-7d) |  | 111.8d → 116.8d |
| 137 | Задание поставлено | 2013-11-27 → 2013-11-20 (-7d) | 2013-11-27 → 2013-11-20 (-7d) |  | 111.8d → 116.8d |
| 138 | Разработка архитектуры дя адаптеров | 2013-11-27 → 2013-11-20 (-7d) | 2013-12-04 → 2013-11-27 (-7d) |  | 111.8d → 116.8d |
| 139 | Разработка адаптеров | 2013-12-04 → 2013-11-27 (-7d) | 2013-12-11 → 2013-12-04 (-7d) |  | 111.8d → 116.8d |
| 140 | **Разработка коллекций** | 2013-12-11 → 2013-12-04 (-7d) | 2013-12-24 → 2013-12-17 (-7d) |  | 111.8d → 116.8d |
| 141 | Коллекции | 2013-12-11 → 2013-12-04 (-7d) | 2013-12-24 → 2013-12-17 (-7d) |  | 111.8d → 116.8d |
| 142 | Интеграция по СрвСогл выполнена | 2013-12-24 → 2013-12-17 (-7d) | 2013-12-24 → 2013-12-17 (-7d) |  | 111.8d → 116.8d |
| 143 | **Интеграция с CMJ по Входящим документам** | 2013-11-11 → 2013-11-04 (-7d) | 2013-12-24 → 2013-12-17 (-7d) |  | 80.8d → 85.8d |
| 144 | Конфиг ДОП | 2013-11-11 → 2013-11-04 (-7d) | 2013-11-19 → 2013-11-12 (-7d) |  | 80.8d → 85.8d |
| 145 | Mapper | 2013-11-19 → 2013-11-12 (-7d) | 2013-11-27 → 2013-11-20 (-7d) |  | 80.8d → 85.8d |
| 146 | **Настраиваемые коллекции** | 2013-11-27 → 2013-11-20 (-7d) | 2013-12-04 → 2013-11-27 (-7d) |  | 94.8d → 99.8d |
| 147 | **Конфигурация коллекций** | 2013-11-27 → 2013-11-20 (-7d) | 2013-12-03 → 2013-11-26 (-7d) |  | 94.8d → 99.8d |
| 148 | Типовая иерархия кастомных папок (3шт) | 2013-11-27 → 2013-11-20 (-7d) | 2013-11-29 → 2013-11-22 (-7d) |  | 94.8d → 99.8d |
| 149 | Системные настройки для Вх | 2013-11-29 → 2013-11-22 (-7d) | 2013-12-03 → 2013-11-26 (-7d) |  | 94.8d → 99.8d |
| 150 | Проверка работы | 2013-12-03 → 2013-11-26 (-7d) | 2013-12-04 → 2013-11-27 (-7d) |  | 94.8d → 99.8d |
| 151 | **Разработка адаптеров для Вх** | 2013-11-27 → 2013-11-20 (-7d) | 2013-12-11 → 2013-12-04 (-7d) |  | 80.8d → 85.8d |
| 152 | Задание поставлено | 2013-11-27 → 2013-11-20 (-7d) | 2013-11-27 → 2013-11-20 (-7d) |  | 80.8d → 85.8d |
| 153 | Разработка архитектуры дя адаптеров | 2013-11-27 → 2013-11-20 (-7d) | 2013-12-04 → 2013-11-27 (-7d) |  | 80.8d → 85.8d |
| 154 | Разработка адаптеров | 2013-12-04 → 2013-11-27 (-7d) | 2013-12-11 → 2013-12-04 (-7d) |  | 80.8d → 85.8d |
| 155 | **Разработка коллекций** | 2013-12-11 → 2013-12-04 (-7d) | 2013-12-24 → 2013-12-17 (-7d) |  | 80.8d → 85.8d |
| 156 | Коллекции | 2013-12-11 → 2013-12-04 (-7d) | 2013-12-24 → 2013-12-17 (-7d) |  | 80.8d → 85.8d |
| 157 | Интеграция по Вх выполнена | 2013-12-24 → 2013-12-17 (-7d) | 2013-12-24 → 2013-12-17 (-7d) |  | 80.8d → 85.8d |
| 158 | **Интеграция с CMJ по ОРД** | 2013-11-11 → 2013-11-04 (-7d) | 2013-12-24 → 2013-12-17 (-7d) |  | 80.8d → 85.8d |
| 159 | Конфиг ДОП | 2013-11-11 → 2013-11-04 (-7d) | 2013-11-19 → 2013-11-12 (-7d) |  | 80.8d → 85.8d |
| 160 | Mapper | 2013-11-19 → 2013-11-12 (-7d) | 2013-11-27 → 2013-11-20 (-7d) |  | 80.8d → 85.8d |
| 161 | **Настраиваемые коллекции** | 2013-11-27 → 2013-11-20 (-7d) | 2013-12-04 → 2013-11-27 (-7d) |  | 94.8d → 99.8d |
| 162 | **Конфигурация коллекций** | 2013-11-27 → 2013-11-20 (-7d) | 2013-12-03 → 2013-11-26 (-7d) |  | 94.8d → 99.8d |
| 163 | Типовая иерархия кастомных папок (3шт) | 2013-11-27 → 2013-11-20 (-7d) | 2013-11-29 → 2013-11-22 (-7d) |  | 94.8d → 99.8d |
| 164 | Системные настройки для ОРД | 2013-11-29 → 2013-11-22 (-7d) | 2013-12-03 → 2013-11-26 (-7d) |  | 94.8d → 99.8d |
| 165 | Проверка работы | 2013-12-03 → 2013-11-26 (-7d) | 2013-12-04 → 2013-11-27 (-7d) |  | 94.8d → 99.8d |
| 166 | **Разработка адаптеров для ОРД** | 2013-11-27 → 2013-11-20 (-7d) | 2013-12-11 → 2013-12-04 (-7d) |  | 80.8d → 85.8d |
| 167 | Задание поставлено | 2013-11-27 → 2013-11-20 (-7d) | 2013-11-27 → 2013-11-20 (-7d) |  | 80.8d → 85.8d |
| 168 | Разработка архитектуры дя адаптеров | 2013-11-27 → 2013-11-20 (-7d) | 2013-12-04 → 2013-11-27 (-7d) |  | 80.8d → 85.8d |
| 169 | Разработка адаптеров | 2013-12-04 → 2013-11-27 (-7d) | 2013-12-11 → 2013-12-04 (-7d) |  | 80.8d → 85.8d |
| 170 | **Разработка коллекций** | 2013-12-11 → 2013-12-04 (-7d) | 2013-12-24 → 2013-12-17 (-7d) |  | 80.8d → 85.8d |
| 171 | Коллекции | 2013-12-11 → 2013-12-04 (-7d) | 2013-12-24 → 2013-12-17 (-7d) |  | 80.8d → 85.8d |
| 172 | Интеграция по ОРД выполнена | 2013-12-24 → 2013-12-17 (-7d) | 2013-12-24 → 2013-12-17 (-7d) |  | 80.8d → 85.8d |
| 173 | **Интеграция с CMJ по Исходящие документам** | 2013-12-24 → 2013-12-17 (-7d) | 2014-02-17 → 2014-02-10 (-7d) |  | 80.8d → 85.8d |
| 174 | Конфиг ДОП | 2013-12-24 → 2013-12-17 (-7d) | 2014-01-13 → 2013-12-25 (-19d) |  | 80.8d → 85.8d |

| ID | Task | Start | Finish | Total float |
| --- | --- | --- | --- | --- |
| 175 | Mapper | 2014-01-13 → 2013-12-25 (-19d) | 2014-01-21 → 2014-01-14 (-7d) | 80.8d → 85.8d |
| 176 | **Настраиваемые коллекции** | 2014-01-21 → 2014-01-14 (-7d) | 2014-01-28 → 2014-01-21 (-7d) | 94.8d → 99.8d |
| 177 | **Конфигурация коллекций** | 2014-01-21 → 2014-01-14 (-7d) | 2014-01-27 → 2014-01-20 (-7d) | 94.8d → 99.8d |
| 178 | Типовая иерархия кастомных папок (3шт) | 2014-01-21 → 2014-01-14 (-7d) | 2014-01-23 → 2014-01-16 (-7d) | 94.8d → 99.8d |
| 179 | Системные настройки для Исх | 2014-01-23 → 2014-01-16 (-7d) | 2014-01-27 → 2014-01-20 (-7d) | 94.8d → 99.8d |
| 180 | Проверка работы | 2014-01-27 → 2014-01-20 (-7d) | 2014-01-28 → 2014-01-21 (-7d) | 94.8d → 99.8d |
| 181 | **Разработка адаптеров для Исх** | 2014-01-21 → 2014-01-14 (-7d) | 2014-02-04 → 2014-01-28 (-7d) | 80.8d → 85.8d |
| 182 | Задание поставлено | 2014-01-21 → 2014-01-14 (-7d) | 2014-01-21 → 2014-01-14 (-7d) | 80.8d → 85.8d |
| 183 | Разработка архитектуры дя адаптеров | 2014-01-21 → 2014-01-14 (-7d) | 2014-01-28 → 2014-01-21 (-7d) | 80.8d → 85.8d |
| 184 | Разработка адаптеров | 2014-01-28 → 2014-01-21 (-7d) | 2014-02-04 → 2014-01-28 (-7d) | 80.8d → 85.8d |
| 185 | **Разработка коллекций** | 2014-02-04 → 2014-01-28 (-7d) | 2014-02-17 → 2014-02-10 (-7d) | 80.8d → 85.8d |
| 186 | Коллекции | 2014-02-04 → 2014-01-28 (-7d) | 2014-02-17 → 2014-02-10 (-7d) | 80.8d → 85.8d |
| 187 | Интеграция по Исх выполнена | 2014-02-17 → 2014-02-10 (-7d) | 2014-02-17 → 2014-02-10 (-7d) | 80.8d → 85.8d |
| 188 | **Интеграция с CMJ по самостоятельным поручениям** | 2013-11-11 → 2013-11-04 (-7d) | 2013-12-24 → 2013-12-17 (-7d) | 111.8d → 116.8d |
| 189 | Конфиг ДОП | 2013-11-11 → 2013-11-04 (-7d) | 2013-11-19 → 2013-11-12 (-7d) | 111.8d → 116.8d |
| 190 | Mapper | 2013-11-19 → 2013-11-12 (-7d) | 2013-11-27 → 2013-11-20 (-7d) | 111.8d → 116.8d |
| 191 | **Настраиваемые коллекции** | 2013-11-27 → 2013-11-20 (-7d) | 2013-12-04 → 2013-11-27 (-7d) | 125.8d → 130.8d |
| 192 | **Конфигурация коллекций** | 2013-11-27 → 2013-11-20 (-7d) | 2013-12-03 → 2013-11-26 (-7d) | 125.8d → 130.8d |
| 193 | Типовая иерархия кастомных папок (3шт) | 2013-11-27 → 2013-11-20 (-7d) | 2013-11-29 → 2013-11-22 (-7d) | 125.8d → 130.8d |
| 194 | Системные настройки для Поручений | 2013-11-29 → 2013-11-22 (-7d) | 2013-12-03 → 2013-11-26 (-7d) | 125.8d → 130.8d |
| 195 | Проверка работы | 2013-12-03 → 2013-11-26 (-7d) | 2013-12-04 → 2013-11-27 (-7d) | 125.8d → 130.8d |
| 196 | **Разработка адаптеров для Поручений** | 2013-11-27 → 2013-11-20 (-7d) | 2013-12-11 → 2013-12-04 (-7d) | 111.8d → 116.8d |
| 197 | Задание поставлено | 2013-11-27 → 2013-11-20 (-7d) | 2013-11-27 → 2013-11-20 (-7d) | 111.8d → 116.8d |
| 198 | Разработка архитектуры дя адаптеров | 2013-11-27 → 2013-11-20 (-7d) | 2013-12-04 → 2013-11-27 (-7d) | 111.8d → 116.8d |
| 199 | Разработка адаптеров | 2013-12-04 → 2013-11-27 (-7d) | 2013-12-11 → 2013-12-04 (-7d) | 111.8d → 116.8d |
| 200 | **Разработка коллекций** | 2013-12-11 → 2013-12-04 (-7d) | 2013-12-24 → 2013-12-17 (-7d) | 111.8d → 116.8d |
| 201 | Коллекции | 2013-12-11 → 2013-12-04 (-7d) | 2013-12-24 → 2013-12-17 (-7d) | 111.8d → 116.8d |
| 202 | Интеграция по Поручений выполнена | 2013-12-24 → 2013-12-17 (-7d) | 2013-12-24 → 2013-12-17 (-7d) | 111.8d → 116.8d |
| 203 | **Интеграция с CMJ по ОГ** | 2013-11-11 → 2013-11-04 (-7d) | 2013-12-24 → 2013-12-17 (-7d) | 111.8d → 116.8d |
| 204 | Конфиг ДОП | 2013-11-11 → 2013-11-04 (-7d) | 2013-11-19 → 2013-11-12 (-7d) | 111.8d → 116.8d |
| 205 | Mapper | 2013-11-19 → 2013-11-12 (-7d) | 2013-11-27 → 2013-11-20 (-7d) | 111.8d → 116.8d |
| 206 | **Настраиваемые коллекции** | 2013-11-27 → 2013-11-20 (-7d) | 2013-12-04 → 2013-11-27 (-7d) | 125.8d → 130.8d |
| 207 | **Конфигурация коллекций** | 2013-11-27 → 2013-11-20 (-7d) | 2013-12-03 → 2013-11-26 (-7d) | 125.8d → 130.8d |
| 208 | Типовая иерархия кастомных папок (3шт) | 2013-11-27 → 2013-11-20 (-7d) | 2013-11-29 → 2013-11-22 (-7d) | 125.8d → 130.8d |
| 209 | Системные настройки для ОГ | 2013-11-29 → 2013-11-22 (-7d) | 2013-12-03 → 2013-11-26 (-7d) | 125.8d → 130.8d |
| 210 | Проверка работы | 2013-12-03 → 2013-11-26 (-7d) | 2013-12-04 → 2013-11-27 (-7d) | 125.8d → 130.8d |
| 211 | **Разработка адаптеров для ОГ** | 2013-11-27 → 2013-11-20 (-7d) | 2013-12-11 → 2013-12-04 (-7d) | 111.8d → 116.8d |
| 212 | Задание поставлено | 2013-11-27 → 2013-11-20 (-7d) | 2013-11-27 → 2013-11-20 (-7d) | 111.8d → 116.8d |
| 213 | Разработка архитектуры дя адаптеров | 2013-11-27 → 2013-11-20 (-7d) | 2013-12-04 → 2013-11-27 (-7d) | 111.8d → 116.8d |
| 214 | Разработка адаптеров | 2013-12-04 → 2013-11-27 (-7d) | 2013-12-11 → 2013-12-04 (-7d) | 111.8d → 116.8d |
| 215 | **Разработка коллекций** | 2013-12-11 → 2013-12-04 (-7d) | 2013-12-24 → 2013-12-17 (-7d) | 111.8d → 116.8d |
| 216 | Коллекции | 2013-12-11 → 2013-12-04 (-7d) | 2013-12-24 → 2013-12-17 (-7d) | 111.8d → 116.8d |
| 217 | Интеграция по ОГ выполнена | 2013-12-24 → 2013-12-17 (-7d) | 2013-12-24 → 2013-12-17 (-7d) | 111.8d → 116.8d |
| 218 | **Интеграция с CMJ по "Кейсам"** | 2013-11-11 → 2013-11-04 (-7d) | 2013-12-24 → 2013-12-17 (-7d) | 111.8d → 116.8d |
| 219 | Конфиг ДОП | 2013-11-11 → 2013-11-04 (-7d) | 2013-11-19 → 2013-11-12 (-7d) | 111.8d → 116.8d |
| 220 | Mapper | 2013-11-19 → 2013-11-12 (-7d) | 2013-11-27 → 2013-11-20 (-7d) | 111.8d → 116.8d |
| 221 | **Настраиваемые коллекции** | 2013-11-27 → 2013-11-20 (-7d) | 2013-12-04 → 2013-11-27 (-7d) | 125.8d → 130.8d |
| 222 | **Конфигурация коллекций** | 2013-11-27 → 2013-11-20 (-7d) | 2013-12-03 → 2013-11-26 (-7d) | 125.8d → 130.8d |
| 223 | Типовая иерархия кастомных папок (3шт) | 2013-11-27 → 2013-11-20 (-7d) | 2013-11-29 → 2013-11-22 (-7d) | 125.8d → 130.8d |
| 224 | Системные настройки для Кейс | 2013-11-29 → 2013-11-22 (-7d) | 2013-12-03 → 2013-11-26 (-7d) | 125.8d → 130.8d |
| 225 | Проверка работы | 2013-12-03 → 2013-11-26 (-7d) | 2013-12-04 → 2013-11-27 (-7d) | 125.8d → 130.8d |
| 226 | **Разработка адаптеров для Кейс** | 2013-11-27 → 2013-11-20 (-7d) | 2013-12-11 → 2013-12-04 (-7d) | 111.8d → 116.8d |
| 227 | Задание поставлено | 2013-11-27 → 2013-11-20 (-7d) | 2013-11-27 → 2013-11-20 (-7d) | 111.8d → 116.8d |
| 228 | Разработка архитектуры дя адаптеров | 2013-11-27 → 2013-11-20 (-7d) | 2013-12-04 → 2013-11-27 (-7d) | 111.8d → 116.8d |
| 229 | Разработка адаптеров | 2013-12-04 → 2013-11-27 (-7d) | 2013-12-11 → 2013-12-04 (-7d) | 111.8d → 116.8d |
| 230 | **Разработка коллекций** | 2013-12-11 → 2013-12-04 (-7d) | 2013-12-24 → 2013-12-17 (-7d) | 111.8d → 116.8d |
| 231 | Коллекции | 2013-12-11 → 2013-12-04 (-7d) | 2013-12-24 → 2013-12-17 (-7d) | 111.8d → 116.8d |
| 232 | Интеграция по Кейс выполнена | 2013-12-24 → 2013-12-17 (-7d) | 2013-12-24 → 2013-12-17 (-7d) | 111.8d → 116.8d |
| 233 | **Интеграция с CMJ по Договорам** | 2013-11-11 → 2013-11-04 (-7d) | 2013-12-24 → 2013-12-17 (-7d) | 111.8d → 116.8d |
| 234 | Конфиг ДОП | 2013-11-11 → 2013-11-04 (-7d) | 2013-11-19 → 2013-11-12 (-7d) | 111.8d → 116.8d |
| 235 | Mapper | 2013-11-19 → 2013-11-12 (-7d) | 2013-11-27 → 2013-11-20 (-7d) | 111.8d → 116.8d |
| 236 | **Настраиваемые коллекции** | 2013-11-27 → 2013-11-20 (-7d) | 2013-12-04 → 2013-11-27 (-7d) | 125.8d → 130.8d |
| 237 | **Конфигурация коллекций** | 2013-11-27 → 2013-11-20 (-7d) | 2013-12-03 → 2013-11-26 (-7d) | 125.8d → 130.8d |
| 238 | Типовая иерархия кастомных папок (3шт) | 2013-11-27 → 2013-11-20 (-7d) | 2013-11-29 → 2013-11-22 (-7d) | 125.8d → 130.8d |
| 239 | Системные настройки для Дгв | 2013-11-29 → 2013-11-22 (-7d) | 2013-12-03 → 2013-11-26 (-7d) | 125.8d → 130.8d |
| 240 | Проверка работы | 2013-12-03 → 2013-11-26 (-7d) | 2013-12-04 → 2013-11-27 (-7d) | 125.8d → 130.8d |
| 241 | **Разработка адаптеров для Дгв** | 2013-11-27 → 2013-11-20 (-7d) | 2013-12-11 → 2013-12-04 (-7d) | 111.8d → 116.8d |
| 242 | Задание поставлено | 2013-11-27 → 2013-11-20 (-7d) | 2013-11-27 → 2013-11-20 (-7d) | 111.8d → 116.8d |
| 243 | Разработка архитектуры дя адаптеров | 2013-11-27 → 2013-11-20 (-7d) | 2013-12-04 → 2013-11-27 (-7d) | 111.8d → 116.8d |
| 244 | Разработка адаптеров | 2013-12-04 → 2013-11-27 (-7d) | 2013-12-11 → 2013-12-04 (-7d) | 111.8d → 116.8d |

| ID | Task | Start | Finish | Total float |
| --- | --- | --- | --- | --- |
| 245 | **Разработка коллекций** | 2013-12-11 → 2013-12-04 (-7d) | 2013-12-24 → 2013-12-17 (-7d) | 111.8d → 116.8d |
| 246 | Коллекции | 2013-12-11 → 2013-12-04 (-7d) | 2013-12-24 → 2013-12-17 (-7d) | 111.8d → 116.8d |
| 247 | Интеграция по Дгв выполнена | 2013-12-24 → 2013-12-17 (-7d) | 2013-12-24 → 2013-12-17 (-7d) | 111.8d → 116.8d |
| 248 | **Интеграция с CMJ по Заседаниям** | 2013-11-11 → 2013-11-04 (-7d) | 2013-12-24 → 2013-12-17 (-7d) | 111.8d → 116.8d |
| 249 | Конфиг ДОП | 2013-11-11 → 2013-11-04 (-7d) | 2013-11-19 → 2013-11-12 (-7d) | 111.8d → 116.8d |
| 250 | Mapper | 2013-11-19 → 2013-11-12 (-7d) | 2013-11-27 → 2013-11-20 (-7d) | 111.8d → 116.8d |
| 251 | **Настраиваемые коллекции** | 2013-11-27 → 2013-11-20 (-7d) | 2013-12-04 → 2013-11-27 (-7d) | 125.8d → 130.8d |
| 252 | **Конфигурация коллекций** | 2013-11-27 → 2013-11-20 (-7d) | 2013-12-03 → 2013-11-26 (-7d) | 125.8d → 130.8d |
| 253 | Типовая иерархия кастомных папок (3шт) | 2013-11-27 → 2013-11-20 (-7d) | 2013-11-29 → 2013-11-22 (-7d) | 125.8d → 130.8d |
| 254 | Системные настройки для Зсд | 2013-11-29 → 2013-11-22 (-7d) | 2013-12-03 → 2013-11-26 (-7d) | 125.8d → 130.8d |
| 255 | Проверка работы | 2013-12-03 → 2013-11-26 (-7d) | 2013-12-04 → 2013-11-27 (-7d) | 125.8d → 130.8d |
| 256 | **Разработка адаптеров для Зсд** | 2013-11-27 → 2013-11-20 (-7d) | 2013-12-11 → 2013-12-04 (-7d) | 111.8d → 116.8d |
| 257 | Задание поставлено | 2013-11-27 → 2013-11-20 (-7d) | 2013-11-27 → 2013-11-20 (-7d) | 111.8d → 116.8d |
| 258 | Разработка архитектуры дя адаптеров | 2013-11-27 → 2013-11-20 (-7d) | 2013-12-04 → 2013-11-27 (-7d) | 111.8d → 116.8d |
| 259 | Разработка адаптеров | 2013-12-04 → 2013-11-27 (-7d) | 2013-12-11 → 2013-12-04 (-7d) | 111.8d → 116.8d |
| 260 | **Разработка коллекций** | 2013-12-11 → 2013-12-04 (-7d) | 2013-12-24 → 2013-12-17 (-7d) | 111.8d → 116.8d |
| 261 | Коллекции | 2013-12-11 → 2013-12-04 (-7d) | 2013-12-24 → 2013-12-17 (-7d) | 111.8d → 116.8d |
| 262 | Интеграция по Зсд выполнена | 2013-12-24 → 2013-12-17 (-7d) | 2013-12-24 → 2013-12-17 (-7d) | 111.8d → 116.8d |
| 263 | **Интеграция с CMJ по Обсуждениям и ознакомлениям** | 2013-11-11 → 2013-11-04 (-7d) | 2013-12-24 → 2013-12-17 (-7d) | 111.8d → 116.8d |
| 264 | Конфиг ДОП | 2013-11-11 → 2013-11-04 (-7d) | 2013-11-19 → 2013-11-12 (-7d) | 111.8d → 116.8d |
| 265 | Mapper | 2013-11-19 → 2013-11-12 (-7d) | 2013-11-27 → 2013-11-20 (-7d) | 111.8d → 116.8d |
| 266 | **Настраиваемые коллекции** | 2013-11-27 → 2013-11-20 (-7d) | 2013-12-04 → 2013-11-27 (-7d) | 125.8d → 130.8d |
| 267 | **Конфигурация коллекций** | 2013-11-27 → 2013-11-20 (-7d) | 2013-12-03 → 2013-11-26 (-7d) | 125.8d → 130.8d |
| 268 | Типовая иерархия кастомных папок (3шт) | 2013-11-27 → 2013-11-20 (-7d) | 2013-11-29 → 2013-11-22 (-7d) | 125.8d → 130.8d |
| 269 | Системные настройки для ОО | 2013-11-29 → 2013-11-22 (-7d) | 2013-12-03 → 2013-11-26 (-7d) | 125.8d → 130.8d |
| 270 | Проверка работы | 2013-12-03 → 2013-11-26 (-7d) | 2013-12-04 → 2013-11-27 (-7d) | 125.8d → 130.8d |
| 271 | **Разработка адаптеров для ОО** | 2013-11-27 → 2013-11-20 (-7d) | 2013-12-11 → 2013-12-04 (-7d) | 111.8d → 116.8d |
| 272 | Задание поставлено | 2013-11-27 → 2013-11-20 (-7d) | 2013-11-27 → 2013-11-20 (-7d) | 111.8d → 116.8d |
| 273 | Разработка архитектуры дя адаптеров | 2013-11-27 → 2013-11-20 (-7d) | 2013-12-04 → 2013-11-27 (-7d) | 111.8d → 116.8d |
| 274 | Разработка адаптеров | 2013-12-04 → 2013-11-27 (-7d) | 2013-12-11 → 2013-12-04 (-7d) | 111.8d → 116.8d |
| 275 | **Разработка коллекций** | 2013-12-11 → 2013-12-04 (-7d) | 2013-12-24 → 2013-12-17 (-7d) | 111.8d → 116.8d |
| 276 | Коллекции | 2013-12-11 → 2013-12-04 (-7d) | 2013-12-24 → 2013-12-17 (-7d) | 111.8d → 116.8d |
| 277 | Интеграция по ОО выполнена | 2013-12-24 → 2013-12-17 (-7d) | 2013-12-24 → 2013-12-17 (-7d) | 111.8d → 116.8d |
| 278 | **Интеграция с CMJ по Формированию дел** | 2013-11-11 → 2013-11-04 (-7d) | 2013-12-24 → 2013-12-17 (-7d) | 111.8d → 116.8d |
| 279 | Конфиг ДОП | 2013-11-11 → 2013-11-04 (-7d) | 2013-11-19 → 2013-11-12 (-7d) | 111.8d → 116.8d |
| 280 | Mapper | 2013-11-19 → 2013-11-12 (-7d) | 2013-11-27 → 2013-11-20 (-7d) | 111.8d → 116.8d |
| 281 | **Настраиваемые коллекции** | 2013-11-27 → 2013-11-20 (-7d) | 2013-12-04 → 2013-11-27 (-7d) | 125.8d → 130.8d |
| 282 | **Конфигурация коллекций** | 2013-11-27 → 2013-11-20 (-7d) | 2013-12-03 → 2013-11-26 (-7d) | 125.8d → 130.8d |
| 283 | Типовая иерархия кастомных папок (3шт) | 2013-11-27 → 2013-11-20 (-7d) | 2013-11-29 → 2013-11-22 (-7d) | 125.8d → 130.8d |
| 284 | Системные настройки для ФД | 2013-11-29 → 2013-11-22 (-7d) | 2013-12-03 → 2013-11-26 (-7d) | 125.8d → 130.8d |
| 285 | Проверка работы | 2013-12-03 → 2013-11-26 (-7d) | 2013-12-04 → 2013-11-27 (-7d) | 125.8d → 130.8d |
| 286 | **Разработка адаптеров для ФД** | 2013-11-27 → 2013-11-20 (-7d) | 2013-12-11 → 2013-12-04 (-7d) | 111.8d → 116.8d |
| 287 | Задание поставлено | 2013-11-27 → 2013-11-20 (-7d) | 2013-11-27 → 2013-11-20 (-7d) | 111.8d → 116.8d |
| 288 | Разработка архитектуры дя адаптеров | 2013-11-27 → 2013-11-20 (-7d) | 2013-12-04 → 2013-11-27 (-7d) | 111.8d → 116.8d |
| 289 | Разработка адаптеров | 2013-12-04 → 2013-11-27 (-7d) | 2013-12-11 → 2013-12-04 (-7d) | 111.8d → 116.8d |
| 290 | **Разработка коллекций** | 2013-12-11 → 2013-12-04 (-7d) | 2013-12-24 → 2013-12-17 (-7d) | 111.8d → 116.8d |
| 291 | Коллекции | 2013-12-11 → 2013-12-04 (-7d) | 2013-12-24 → 2013-12-17 (-7d) | 111.8d → 116.8d |
| 292 | Интеграция по ФД выполнена | 2013-12-24 → 2013-12-17 (-7d) | 2013-12-24 → 2013-12-17 (-7d) | 111.8d → 116.8d |
| 377 | **Тестирование** | 2014-02-17 → 2014-02-10 (-7d) | 2014-05-22 → 2014-05-15 (-7d) | 80.8d → 85.8d |
| 378 | **Функциональное тестирование** | 2014-02-17 → 2014-02-10 (-7d) | 2014-05-01 → 2014-04-24 (-7d) | 80.8d → 85.8d |
| 379 | Подготовка ПМИ | 2014-02-17 → 2014-02-10 (-7d) | 2014-02-24 → 2014-02-17 (-7d) | 80.8d → 85.8d |
| 380 | Разработка "сценариев тестирования" | 2014-02-17 → 2014-02-10 (-7d) | 2014-03-10 → 2014-03-03 (-7d) | 85.8d → 90.8d |
| 381 | Разработка модели нагрузки для тестирования | 2014-02-24 → 2014-02-17 (-7d) | 2014-03-10 → 2014-03-03 (-7d) | 85.8d → 90.8d |
| 382 | Адаптация автоматизированных сценариев от СМ4 для создания нагрузки | 2014-02-24 → 2014-02-17 (-7d) | 2014-03-31 → 2014-03-24 (-7d) | 80.8d → 85.8d |
| 383 | **Проведение тестирования** | 2014-03-10 → 2014-03-03 (-7d) | 2014-05-01 → 2014-04-24 (-7d) | 85.8d → 90.8d |
| 384 | **Подготовка среды тестирования** | 2014-03-10 → 2014-03-03 (-7d) | 2014-03-24 → 2014-03-17 (-7d) | 85.8d → 90.8d |
| 385 | Разворачивание системы | 2014-03-10 → 2014-03-03 (-7d) | 2014-03-17 → 2014-03-10 (-7d) | 128.8d → 133.8d |
| 386 | Система готова для подключения инструментов мониторинга | 2014-03-17 → 2014-03-10 (-7d) | 2014-03-17 → 2014-03-10 (-7d) | 128.8d → 133.8d |
| 387 | Наполнение данными | 2014-03-10 → 2014-03-03 (-7d) | 2014-03-24 → 2014-03-17 (-7d) | 85.8d → 90.8d |
| 388 | Среда тестирования готова | 2014-03-31 → 2014-03-24 (-7d) | 2014-03-31 → 2014-03-24 (-7d) | 80.8d → 85.8d |
| 389 | Проведение тестирования | 2014-03-31 → 2014-03-24 (-7d) | 2014-04-14 → 2014-04-07 (-7d) | 80.8d → 85.8d |
| 390 | **Обработка результатов тестирования и внесение изменений в модуль** | 2014-04-10 → 2014-04-03 (-7d) | 2014-05-01 → 2014-04-24 (-7d) | 80.8d → 85.8d |
| 391 | Устранение замечаний по результатам функционального тестирования | 2014-04-10 → 2014-04-03 (-7d) | 2014-05-01 → 2014-04-24 (-7d) | 80.8d → 85.8d |
| 392 | Проверка устранения замечаний | 2014-04-23 → 2014-04-16 (-7d) | 2014-05-01 → 2014-04-24 (-7d) | 80.8d → 85.8d |
| 393 | **Нагрузочное тестирование** | 2014-04-14 → 2014-04-07 (-7d) | 2014-05-22 → 2014-05-15 (-7d) | 80.8d → 85.8d |
| 394 | Стенд для нагрузочного тестирования подготовлен | 2014-04-14 → 2014-04-07 (-7d) | 2014-04-14 → 2014-04-07 (-7d) | 93.8d → 98.8d |
| 395 | Проведения нагрузочного тестирования | 2014-05-01 → 2014-04-24 (-7d) | 2014-05-15 → 2014-05-08 (-7d) | 80.8d → 85.8d |
| 396 | Обработка результатов нагрузочного тестирования | 2014-05-15 → 2014-05-08 (-7d) | 2014-05-22 → 2014-05-15 (-7d) | 80.8d → 85.8d |
| 397 | **Подготовка документации** | 2014-02-17 → 2014-02-10 (-7d) | 2014-06-09 → 2014-06-02 (-7d) | 68.8d → 73.8d |
| 398 | Разработка документа "Концепция системы " | 2014-02-17 → 2014-02-10 (-7d) | 2014-04-14 → 2014-04-07 (-7d) | 68.8d → 73.8d |

| ID | Task | Start | Finish | Total float |
| --- | --- | --- | --- | --- |
| 399 | Разработка "Software Architecture Document" | 2014-04-14 → 2014-04-07 (-7d) | 2014-06-09 → 2014-06-02 (-7d) | 68.8d → 73.8d |
| 400 | Документы подготовлены | 2014-06-09 → 2014-06-02 (-7d) | 2014-06-09 → 2014-06-02 (-7d) | 68.8d → 73.8d |

## Version 44 (saved 2013-10-18)

Note of the change: обновление

Last finish stays 2014-09-11.

Added:

| ID | Task | Duration | Start | Finish | Predecessors | Constraint |
| --- | --- | --- | --- | --- | --- | --- |
| 129 | Определен исполнитель по составлению конфигураций | 0d | 2013-10-15 | 2013-10-15 |  | start no earlier than 2013-10-15 |
| 130 | Проектирование и получение оценки работ | 2d | 2013-10-16 | 2013-10-17 | 129 | start no earlier than 2013-10-16 |
| 138 | Конфигурация для модуля "Договора" получена | 0d | 2013-11-07 | 2013-11-07 | 137 |  |

Changed:

| ID | Task | Start | Finish | Duration | Total float | Predecessors | Other |
| --- | --- | --- | --- | --- | --- | --- | --- |
| 9 | **Создание модуля "Делопроизводство" (документоориентированная среда)** |  | 2014-06-02 → 2014-05-27 (-6d) | 277.2d? → 274d? | 73.8d → 77d |  |  |
| 20 | **Проектирование и формирование ядра системы** |  | 2014-02-10 → 2014-02-04 (-6d) | 197.2d? → 194d? | 85.8d → 89d |  |  |
| 68 | **Слой сопряжения CMJ server (CM4)** |  | 2014-02-10 → 2013-12-24 (-48d) | 156.2d? → 130.2d? | 85.8d → 111.8d |  |  |
| 76 | **Интеграция с CMJ по Внутренним Документам** |  | 2013-11-04 → 2013-11-11 (+7d) | 30.2d? → 35.2d? | 85.8d → 111.8d |  |  |
| 104 | **Разработка адаптеров для Вн** |  | 2013-10-15 → 2013-10-22 (+7d) | 12d → 17d | 99d → 125d |  |  |
| 106 | Адаптеры View, Session проектирование |  | 2013-10-07 → 2013-10-14 (+7d) | 6d → 11d | 85.8d → 111.8d |  |  |
| 107 | Разработка логики адаптеров view&session | 2013-10-08 → 2013-10-15 (+7d) | 2013-10-15 → 2013-10-22 (+7d) |  | 85.8d → 111.8d |  |  |
| 112 | **Разработка коллекций** | 2013-10-16 → 2013-10-23 (+7d) | 2013-10-30 → 2013-11-06 (+7d) |  | 85.8d → 111.8d |  |  |
| 113 | Коллекции Портала | 2013-10-16 → 2013-10-23 (+7d) | 2013-10-21 → 2013-10-28 (+7d) |  | 85.8d → 111.8d |  |  |
| 114 | Инструктаж по @-формулам проведен | 2013-10-21 → 2013-10-28 (+7d) | 2013-10-21 → 2013-10-28 (+7d) |  | 95d → 121d |  |  |
| 115 | Коллекции СС | 2013-10-22 → 2013-10-29 (+7d) | 2013-10-24 → 2013-10-31 (+7d) |  | 85.8d → 111.8d |  |  |
| 116 | Коллекции Каталога | 2013-10-22 → 2013-10-29 (+7d) | 2013-10-24 → 2013-10-31 (+7d) |  | 85.8d → 111.8d |  |  |
| 117 | Коллекции СО | 2013-10-22 → 2013-10-29 (+7d) | 2013-10-24 → 2013-10-31 (+7d) |  | 89d → 115d |  |  |
| 118 | Коллекции ВнД | 2013-10-25 → 2013-11-01 (+7d) | 2013-10-30 → 2013-11-06 (+7d) |  | 85.8d → 111.8d |  |  |
| 119 | Коллекции СпО | 2013-10-25 → 2013-11-01 (+7d) | 2013-10-30 → 2013-11-06 (+7d) |  | 85.8d → 111.8d |  |  |
| 120 | ВнД | 2013-10-30 → 2013-11-06 (+7d) | 2013-10-30 → 2013-11-06 (+7d) |  | 85.8d → 111.8d |  |  |
| 121 | Объединение War | 2013-10-30 → 2013-11-06 (+7d) | 2013-10-31 → 2013-11-07 (+7d) |  | 87.8d → 113.8d |  |  |
| 122 | **Инструмент заполнения** | 2013-10-30 → 2013-11-06 (+7d) | 2013-11-04 → 2013-11-11 (+7d) |  | 85.8d → 111.8d |  |  |
| 123 | Инструмент заполнения Каталога | 2013-10-30 → 2013-11-06 (+7d) | 2013-11-04 → 2013-11-11 (+7d) |  | 85.8d → 111.8d |  |  |
| 124 | Инструмент заполнения СС | 2013-10-30 → 2013-11-06 (+7d) | 2013-11-04 → 2013-11-11 (+7d) |  | 85.8d → 111.8d |  |  |
| 125 | Инструмент заполнения Портала | 2013-10-30 → 2013-11-06 (+7d) | 2013-11-04 → 2013-11-11 (+7d) |  | 85.8d → 111.8d |  |  |
| 126 | Инструмент заполнения СО | 2013-10-30 → 2013-11-06 (+7d) | 2013-11-04 → 2013-11-11 (+7d) |  | 85.8d → 111.8d |  |  |
| 127 | Инструмент заполнения СпО | 2013-10-30 → 2013-11-06 (+7d) | 2013-11-04 → 2013-11-11 (+7d) |  | 85.8d → 111.8d |  |  |
| 128 | **Интеграция с CMJ по Договорам** | 2013-11-04 → 2013-10-15 (-20d) | 2013-12-17 → 2013-11-25 (-22d) | 31d? → 30d | 116.8d → 114.2d | 76 → none |  |
| 131 | Конфиг ДОП | 2013-11-04 → 2013-10-15 (-20d) | 2013-11-12 → 2013-10-22 (-21d) |  | 116.8d → 114.2d | none → 129 | resources Глеб Ноздрачев [1%] → Евгений Баланенко |
| 132 | Mapper | 2013-11-12 → 2013-10-23 (-20d) | 2013-11-20 → 2013-10-29 (-22d) | 6d → 5d | 116.8d → 114.2d |  | resources Глеб Ноздрачев [80%] → Евгений Баланенко |
| 133 | **Настраиваемые коллекции** | 2013-11-20 → 2013-10-30 (-21d) | 2013-11-27 → 2013-11-07 (-20d) | 5d? → 7d | 130.8d → 114.2d |  |  |
| 134 | **Конфигурация коллекций** | 2013-11-20 → 2013-10-30 (-21d) | 2013-11-26 → 2013-11-06 (-20d) | 4d → 6d | 130.8d → 114.2d |  |  |
| 135 | Типовая иерархия кастомных папок (3шт) | 2013-11-20 → 2013-10-30 (-21d) | 2013-11-22 → 2013-11-04 (-18d) | 2d → 4d | 130.8d → 114.2d |  | resources Глеб Ноздрачев [80%] → Евгений Баланенко |
| 136 | Системные настройки для Дгв | 2013-11-22 → 2013-11-05 (-17d) | 2013-11-26 → 2013-11-06 (-20d) |  | 130.8d → 114.2d |  | resources Глеб Ноздрачев [80%] → Евгений Баланенко |
| 137 | Проверка работы | 2013-11-26 → 2013-11-07 (-19d) | 2013-11-27 → 2013-11-07 (-20d) | 1d? → 1d | 130.8d → 114.2d |  | resources Глеб Ноздрачев [80%] → Евгений Баланенко |
| 139 | **Разработка адаптеров для Дгв** | 2013-11-20 → 2013-10-29 (-22d) | 2013-12-04 → 2013-11-12 (-22d) |  | 116.8d → 132d |  |  |
| 140 | Задание поставлено | 2013-11-20 → 2013-10-29 (-22d) | 2013-11-20 → 2013-10-29 (-22d) |  | 116.8d → 132d |  |  |
| 141 | Разработка архитектуры дя адаптеров | 2013-11-20 → 2013-10-30 (-21d) | 2013-11-27 → 2013-11-05 (-22d) |  | 116.8d → 132d |  | resources Тугушев Илья [80%] → (БТЛ) Олег Еренцов |
| 142 | Разработка адаптеров | 2013-11-27 → 2013-11-06 (-21d) | 2013-12-04 → 2013-11-12 (-22d) |  | 116.8d → 132d |  | resources Александр Власюк → (БТЛ) Олег Еренцов |
| 143 | **Разработка коллекций** | 2013-12-04 → 2013-11-13 (-21d) | 2013-12-17 → 2013-11-25 (-22d) |  | 116.8d → 132d |  |  |
| 144 | Коллекции | 2013-12-04 → 2013-11-13 (-21d) | 2013-12-17 → 2013-11-25 (-22d) |  | 116.8d → 132d |  |  |
| 145 | Интеграция по Дгв выполнена | 2013-12-17 → 2013-11-25 (-22d) | 2013-12-17 → 2013-11-25 (-22d) |  | 116.8d → 132d |  |  |
| 146 | **Интеграция с CMJ по Входящим документам** | 2013-11-04 → 2013-11-11 (+7d) | 2013-12-17 → 2013-12-20 (+3d) | 31d? → 29.8d? | 85.8d → 113d |  |  |
| 147 | Конфиг ДОП | 2013-11-04 → 2013-11-11 (+7d) | 2013-11-12 → 2013-11-19 (+7d) |  | 85.8d → 113d | none → 138 | resources Глеб Ноздрачев [1%] → Евгений Баланенко |
| 148 | Mapper | 2013-11-12 → 2013-11-19 (+7d) | 2013-11-20 → 2013-11-25 (+5d) | 6d → 4.8d | 85.8d → 113d |  | resources Глеб Ноздрачев [80%] → Евгений Баланенко |
| 149 | **Настраиваемые коллекции** | 2013-11-20 → 2013-11-26 (+6d) | 2013-11-27 → 2013-12-02 (+5d) |  | 99.8d → 127d |  |  |
| 150 | **Конфигурация коллекций** | 2013-11-20 → 2013-11-26 (+6d) | 2013-11-26 → 2013-11-29 (+3d) |  | 99.8d → 127d |  |  |
| 151 | Типовая иерархия кастомных папок (3шт) | 2013-11-20 → 2013-11-26 (+6d) | 2013-11-22 → 2013-11-27 (+5d) |  | 99.8d → 127d |  | resources Глеб Ноздрачев [80%] → Евгений Баланенко |
| 152 | Системные настройки для Вх | 2013-11-22 → 2013-11-28 (+6d) | 2013-11-26 → 2013-11-29 (+3d) |  | 99.8d → 127d |  | resources Глеб Ноздрачев [80%] → Евгений Баланенко |
| 153 | Проверка работы | 2013-11-26 → 2013-12-02 (+6d) | 2013-11-27 → 2013-12-02 (+5d) |  | 99.8d → 127d |  | resources Глеб Ноздрачев [80%] → Евгений Баланенко |
| 154 | **Разработка адаптеров для Вх** | 2013-11-20 → 2013-11-25 (+5d) | 2013-12-04 → 2013-12-09 (+5d) |  | 85.8d → 113d |  |  |
| 155 | Задание поставлено | 2013-11-20 → 2013-11-25 (+5d) | 2013-11-20 → 2013-11-25 (+5d) |  | 85.8d → 113d |  |  |
| 156 | Разработка архитектуры дя адаптеров | 2013-11-20 → 2013-11-26 (+6d) | 2013-11-27 → 2013-12-02 (+5d) |  | 85.8d → 113d |  |  |
| 157 | Разработка адаптеров | 2013-11-27 → 2013-12-03 (+6d) | 2013-12-04 → 2013-12-09 (+5d) |  | 85.8d → 113d |  |  |
| 158 | **Разработка коллекций** | 2013-12-04 → 2013-12-10 (+6d) | 2013-12-17 → 2013-12-20 (+3d) |  | 85.8d → 113d |  |  |
| 159 | Коллекции | 2013-12-04 → 2013-12-10 (+6d) | 2013-12-17 → 2013-12-20 (+3d) |  | 85.8d → 113d |  |  |
| 160 | Интеграция по Вх выполнена | 2013-12-17 → 2013-12-20 (+3d) | 2013-12-17 → 2013-12-20 (+3d) |  | 85.8d → 113d |  |  |
| 161 | **Интеграция с CMJ по ОРД** | 2013-11-04 → 2013-11-11 (+7d) | 2013-12-17 → 2013-12-24 (+7d) |  | 85.8d → 111.8d |  |  |
| 162 | Конфиг ДОП | 2013-11-04 → 2013-11-11 (+7d) | 2013-11-12 → 2013-11-19 (+7d) |  | 85.8d → 111.8d |  |  |
| 163 | Mapper | 2013-11-12 → 2013-11-19 (+7d) | 2013-11-20 → 2013-11-27 (+7d) |  | 85.8d → 111.8d |  |  |
| 164 | **Настраиваемые коллекции** | 2013-11-20 → 2013-11-27 (+7d) | 2013-11-27 → 2013-12-04 (+7d) |  | 99.8d → 125.8d |  |  |
| 165 | **Конфигурация коллекций** | 2013-11-20 → 2013-11-27 (+7d) | 2013-11-26 → 2013-12-03 (+7d) |  | 99.8d → 125.8d |  |  |
| 166 | Типовая иерархия кастомных папок (3шт) | 2013-11-20 → 2013-11-27 (+7d) | 2013-11-22 → 2013-11-29 (+7d) |  | 99.8d → 125.8d |  |  |
| 167 | Системные настройки для ОРД | 2013-11-22 → 2013-11-29 (+7d) | 2013-11-26 → 2013-12-03 (+7d) |  | 99.8d → 125.8d |  |  |
| 168 | Проверка работы | 2013-11-26 → 2013-12-03 (+7d) | 2013-11-27 → 2013-12-04 (+7d) |  | 99.8d → 125.8d |  |  |
| 169 | **Разработка адаптеров для ОРД** | 2013-11-20 → 2013-11-27 (+7d) | 2013-12-04 → 2013-12-11 (+7d) |  | 85.8d → 111.8d |  |  |
| 170 | Задание поставлено | 2013-11-20 → 2013-11-27 (+7d) | 2013-11-20 → 2013-11-27 (+7d) |  | 85.8d → 111.8d |  |  |
| 171 | Разработка архитектуры дя адаптеров | 2013-11-20 → 2013-11-27 (+7d) | 2013-11-27 → 2013-12-04 (+7d) |  | 85.8d → 111.8d |  |  |
| 172 | Разработка адаптеров | 2013-11-27 → 2013-12-04 (+7d) | 2013-12-04 → 2013-12-11 (+7d) |  | 85.8d → 111.8d |  |  |
| 173 | **Разработка коллекций** | 2013-12-04 → 2013-12-11 (+7d) | 2013-12-17 → 2013-12-24 (+7d) |  | 85.8d → 111.8d |  |  |
| 174 | Коллекции | 2013-12-04 → 2013-12-11 (+7d) | 2013-12-17 → 2013-12-24 (+7d) |  | 85.8d → 111.8d |  |  |
| 175 | Интеграция по ОРД выполнена | 2013-12-17 → 2013-12-24 (+7d) | 2013-12-17 → 2013-12-24 (+7d) |  | 85.8d → 80.8d |  |  |
| 176 | **Интеграция с CMJ по "Кейсам"** | 2013-11-04 → 2013-11-11 (+7d) | 2013-12-17 → 2013-12-24 (+7d) |  | 116.8d → 111.8d |  |  |
| 177 | Конфиг ДОП | 2013-11-04 → 2013-11-11 (+7d) | 2013-11-12 → 2013-11-19 (+7d) |  | 116.8d → 111.8d |  |  |

| ID | Task | Start | Finish | Total float | Predecessors |
| --- | --- | --- | --- | --- | --- |
| 178 | Mapper | 2013-11-12 → 2013-11-19 (+7d) | 2013-11-20 → 2013-11-27 (+7d) | 116.8d → 111.8d |  |
| 179 | **Настраиваемые коллекции** | 2013-11-20 → 2013-11-27 (+7d) | 2013-11-27 → 2013-12-04 (+7d) | 130.8d → 125.8d |  |
| 180 | **Конфигурация коллекций** | 2013-11-20 → 2013-11-27 (+7d) | 2013-11-26 → 2013-12-03 (+7d) | 130.8d → 125.8d |  |
| 181 | Типовая иерархия кастомных папок (3шт) | 2013-11-20 → 2013-11-27 (+7d) | 2013-11-22 → 2013-11-29 (+7d) | 130.8d → 125.8d |  |
| 182 | Системные настройки для Кейс | 2013-11-22 → 2013-11-29 (+7d) | 2013-11-26 → 2013-12-03 (+7d) | 130.8d → 125.8d |  |
| 183 | Проверка работы | 2013-11-26 → 2013-12-03 (+7d) | 2013-11-27 → 2013-12-04 (+7d) | 130.8d → 125.8d |  |
| 184 | **Разработка адаптеров для Кейс** | 2013-11-20 → 2013-11-27 (+7d) | 2013-12-04 → 2013-12-11 (+7d) | 116.8d → 111.8d |  |
| 185 | Задание поставлено | 2013-11-20 → 2013-11-27 (+7d) | 2013-11-20 → 2013-11-27 (+7d) | 116.8d → 111.8d |  |
| 186 | Разработка архитектуры дя адаптеров | 2013-11-20 → 2013-11-27 (+7d) | 2013-11-27 → 2013-12-04 (+7d) | 116.8d → 111.8d |  |
| 187 | Разработка адаптеров | 2013-11-27 → 2013-12-04 (+7d) | 2013-12-04 → 2013-12-11 (+7d) | 116.8d → 111.8d |  |
| 188 | **Разработка коллекций** | 2013-12-04 → 2013-12-11 (+7d) | 2013-12-17 → 2013-12-24 (+7d) | 116.8d → 111.8d |  |
| 189 | Коллекции | 2013-12-04 → 2013-12-11 (+7d) | 2013-12-17 → 2013-12-24 (+7d) | 116.8d → 111.8d |  |
| 190 | Интеграция по Кейс выполнена | 2013-12-17 → 2013-12-24 (+7d) | 2013-12-17 → 2013-12-24 (+7d) | 116.8d → 111.8d |  |
| 191 | **Интеграция с CMJ по Исходящие документам** | 2013-12-17 → 2013-11-06 (-41d) | 2014-02-10 → 2013-12-19 (-53d) | 85.8d → 114.8d | 146, 161 → 120 |
| 192 | Конфиг ДОП | 2013-12-17 → 2013-11-06 (-41d) | 2013-12-25 → 2013-11-14 (-41d) | 85.8d → 114.8d |  |
| 193 | Mapper | 2013-12-25 → 2013-11-14 (-41d) | 2014-01-14 → 2013-11-22 (-53d) | 85.8d → 114.8d |  |
| 194 | **Настраиваемые коллекции** | 2014-01-14 → 2013-11-22 (-53d) | 2014-01-21 → 2013-11-29 (-53d) | 99.8d → 128.8d |  |
| 195 | **Конфигурация коллекций** | 2014-01-14 → 2013-11-22 (-53d) | 2014-01-20 → 2013-11-28 (-53d) | 99.8d → 128.8d |  |
| 196 | Типовая иерархия кастомных папок (3шт) | 2014-01-14 → 2013-11-22 (-53d) | 2014-01-16 → 2013-11-26 (-51d) | 99.8d → 128.8d |  |
| 197 | Системные настройки для Исх | 2014-01-16 → 2013-11-26 (-51d) | 2014-01-20 → 2013-11-28 (-53d) | 99.8d → 128.8d |  |
| 198 | Проверка работы | 2014-01-20 → 2013-11-28 (-53d) | 2014-01-21 → 2013-11-29 (-53d) | 99.8d → 128.8d |  |
| 199 | **Разработка адаптеров для Исх** | 2014-01-14 → 2013-11-22 (-53d) | 2014-01-28 → 2013-12-06 (-53d) | 85.8d → 114.8d |  |
| 200 | Задание поставлено | 2014-01-14 → 2013-11-22 (-53d) | 2014-01-14 → 2013-11-22 (-53d) | 85.8d → 114.8d |  |
| 201 | Разработка архитектуры дя адаптеров | 2014-01-14 → 2013-11-22 (-53d) | 2014-01-21 → 2013-11-29 (-53d) | 85.8d → 114.8d |  |
| 202 | Разработка адаптеров | 2014-01-21 → 2013-11-29 (-53d) | 2014-01-28 → 2013-12-06 (-53d) | 85.8d → 114.8d |  |
| 203 | **Разработка коллекций** | 2014-01-28 → 2013-12-06 (-53d) | 2014-02-10 → 2013-12-19 (-53d) | 85.8d → 114.8d |  |
| 204 | Коллекции | 2014-01-28 → 2013-12-06 (-53d) | 2014-02-10 → 2013-12-19 (-53d) | 85.8d → 114.8d |  |
| 205 | Интеграция по Исх выполнена | 2014-02-10 → 2013-12-19 (-53d) | 2014-02-10 → 2013-12-19 (-53d) | 85.8d → 114.8d |  |
| 206 | **Интеграция с CMJ по самостоятельным поручениям** | 2013-11-04 → 2013-11-11 (+7d) | 2013-12-17 → 2013-12-24 (+7d) | 116.8d → 111.8d |  |
| 207 | Конфиг ДОП | 2013-11-04 → 2013-11-11 (+7d) | 2013-11-12 → 2013-11-19 (+7d) | 116.8d → 111.8d |  |
| 208 | Mapper | 2013-11-12 → 2013-11-19 (+7d) | 2013-11-20 → 2013-11-27 (+7d) | 116.8d → 111.8d |  |
| 209 | **Настраиваемые коллекции** | 2013-11-20 → 2013-11-27 (+7d) | 2013-11-27 → 2013-12-04 (+7d) | 130.8d → 125.8d |  |
| 210 | **Конфигурация коллекций** | 2013-11-20 → 2013-11-27 (+7d) | 2013-11-26 → 2013-12-03 (+7d) | 130.8d → 125.8d |  |
| 211 | Типовая иерархия кастомных папок (3шт) | 2013-11-20 → 2013-11-27 (+7d) | 2013-11-22 → 2013-11-29 (+7d) | 130.8d → 125.8d |  |
| 212 | Системные настройки для Поручений | 2013-11-22 → 2013-11-29 (+7d) | 2013-11-26 → 2013-12-03 (+7d) | 130.8d → 125.8d |  |
| 213 | Проверка работы | 2013-11-26 → 2013-12-03 (+7d) | 2013-11-27 → 2013-12-04 (+7d) | 130.8d → 125.8d |  |
| 214 | **Разработка адаптеров для Поручений** | 2013-11-20 → 2013-11-27 (+7d) | 2013-12-04 → 2013-12-11 (+7d) | 116.8d → 111.8d |  |
| 215 | Задание поставлено | 2013-11-20 → 2013-11-27 (+7d) | 2013-11-20 → 2013-11-27 (+7d) | 116.8d → 111.8d |  |
| 216 | Разработка архитектуры дя адаптеров | 2013-11-20 → 2013-11-27 (+7d) | 2013-11-27 → 2013-12-04 (+7d) | 116.8d → 111.8d |  |
| 217 | Разработка адаптеров | 2013-11-27 → 2013-12-04 (+7d) | 2013-12-04 → 2013-12-11 (+7d) | 116.8d → 111.8d |  |
| 218 | **Разработка коллекций** | 2013-12-04 → 2013-12-11 (+7d) | 2013-12-17 → 2013-12-24 (+7d) | 116.8d → 111.8d |  |
| 219 | Коллекции | 2013-12-04 → 2013-12-11 (+7d) | 2013-12-17 → 2013-12-24 (+7d) | 116.8d → 111.8d |  |
| 220 | Интеграция по Поручений выполнена | 2013-12-17 → 2013-12-24 (+7d) | 2013-12-17 → 2013-12-24 (+7d) | 116.8d → 111.8d |  |
| 221 | **Интеграция с CMJ по ОГ** | 2013-11-04 → 2013-11-11 (+7d) | 2013-12-17 → 2013-12-24 (+7d) | 116.8d → 111.8d |  |
| 222 | Конфиг ДОП | 2013-11-04 → 2013-11-11 (+7d) | 2013-11-12 → 2013-11-19 (+7d) | 116.8d → 111.8d |  |
| 223 | Mapper | 2013-11-12 → 2013-11-19 (+7d) | 2013-11-20 → 2013-11-27 (+7d) | 116.8d → 111.8d |  |
| 224 | **Настраиваемые коллекции** | 2013-11-20 → 2013-11-27 (+7d) | 2013-11-27 → 2013-12-04 (+7d) | 130.8d → 125.8d |  |
| 225 | **Конфигурация коллекций** | 2013-11-20 → 2013-11-27 (+7d) | 2013-11-26 → 2013-12-03 (+7d) | 130.8d → 125.8d |  |
| 226 | Типовая иерархия кастомных папок (3шт) | 2013-11-20 → 2013-11-27 (+7d) | 2013-11-22 → 2013-11-29 (+7d) | 130.8d → 125.8d |  |
| 227 | Системные настройки для ОГ | 2013-11-22 → 2013-11-29 (+7d) | 2013-11-26 → 2013-12-03 (+7d) | 130.8d → 125.8d |  |
| 228 | Проверка работы | 2013-11-26 → 2013-12-03 (+7d) | 2013-11-27 → 2013-12-04 (+7d) | 130.8d → 125.8d |  |
| 229 | **Разработка адаптеров для ОГ** | 2013-11-20 → 2013-11-27 (+7d) | 2013-12-04 → 2013-12-11 (+7d) | 116.8d → 111.8d |  |
| 230 | Задание поставлено | 2013-11-20 → 2013-11-27 (+7d) | 2013-11-20 → 2013-11-27 (+7d) | 116.8d → 111.8d |  |
| 231 | Разработка архитектуры дя адаптеров | 2013-11-20 → 2013-11-27 (+7d) | 2013-11-27 → 2013-12-04 (+7d) | 116.8d → 111.8d |  |
| 232 | Разработка адаптеров | 2013-11-27 → 2013-12-04 (+7d) | 2013-12-04 → 2013-12-11 (+7d) | 116.8d → 111.8d |  |
| 233 | **Разработка коллекций** | 2013-12-04 → 2013-12-11 (+7d) | 2013-12-17 → 2013-12-24 (+7d) | 116.8d → 111.8d |  |
| 234 | Коллекции | 2013-12-04 → 2013-12-11 (+7d) | 2013-12-17 → 2013-12-24 (+7d) | 116.8d → 111.8d |  |
| 235 | Интеграция по ОГ выполнена | 2013-12-17 → 2013-12-24 (+7d) | 2013-12-17 → 2013-12-24 (+7d) | 116.8d → 111.8d |  |
| 236 | **Интеграция с CMJ по Заседаниям** | 2013-11-04 → 2013-11-11 (+7d) | 2013-12-17 → 2013-12-24 (+7d) | 116.8d → 111.8d |  |
| 237 | Конфиг ДОП | 2013-11-04 → 2013-11-11 (+7d) | 2013-11-12 → 2013-11-19 (+7d) | 116.8d → 111.8d |  |
| 238 | Mapper | 2013-11-12 → 2013-11-19 (+7d) | 2013-11-20 → 2013-11-27 (+7d) | 116.8d → 111.8d |  |
| 239 | **Настраиваемые коллекции** | 2013-11-20 → 2013-11-27 (+7d) | 2013-11-27 → 2013-12-04 (+7d) | 130.8d → 125.8d |  |
| 240 | **Конфигурация коллекций** | 2013-11-20 → 2013-11-27 (+7d) | 2013-11-26 → 2013-12-03 (+7d) | 130.8d → 125.8d |  |
| 241 | Типовая иерархия кастомных папок (3шт) | 2013-11-20 → 2013-11-27 (+7d) | 2013-11-22 → 2013-11-29 (+7d) | 130.8d → 125.8d |  |
| 242 | Системные настройки для Зсд | 2013-11-22 → 2013-11-29 (+7d) | 2013-11-26 → 2013-12-03 (+7d) | 130.8d → 125.8d |  |
| 243 | Проверка работы | 2013-11-26 → 2013-12-03 (+7d) | 2013-11-27 → 2013-12-04 (+7d) | 130.8d → 125.8d |  |
| 244 | **Разработка адаптеров для Зсд** | 2013-11-20 → 2013-11-27 (+7d) | 2013-12-04 → 2013-12-11 (+7d) | 116.8d → 111.8d |  |
| 245 | Задание поставлено | 2013-11-20 → 2013-11-27 (+7d) | 2013-11-20 → 2013-11-27 (+7d) | 116.8d → 111.8d |  |
| 246 | Разработка архитектуры дя адаптеров | 2013-11-20 → 2013-11-27 (+7d) | 2013-11-27 → 2013-12-04 (+7d) | 116.8d → 111.8d |  |
| 247 | Разработка адаптеров | 2013-11-27 → 2013-12-04 (+7d) | 2013-12-04 → 2013-12-11 (+7d) | 116.8d → 111.8d |  |

| ID | Task | Start | Finish | Duration | Total float |
| --- | --- | --- | --- | --- | --- |
| 248 | **Разработка коллекций** | 2013-12-04 → 2013-12-11 (+7d) | 2013-12-17 → 2013-12-24 (+7d) |  | 116.8d → 111.8d |
| 249 | Коллекции | 2013-12-04 → 2013-12-11 (+7d) | 2013-12-17 → 2013-12-24 (+7d) |  | 116.8d → 111.8d |
| 250 | Интеграция по Зсд выполнена | 2013-12-17 → 2013-12-24 (+7d) | 2013-12-17 → 2013-12-24 (+7d) |  | 116.8d → 111.8d |
| 251 | **Интеграция с CMJ по Обсуждениям и ознакомлениям** | 2013-11-04 → 2013-11-11 (+7d) | 2013-12-17 → 2013-12-24 (+7d) |  | 116.8d → 111.8d |
| 252 | Конфиг ДОП | 2013-11-04 → 2013-11-11 (+7d) | 2013-11-12 → 2013-11-19 (+7d) |  | 116.8d → 111.8d |
| 253 | Mapper | 2013-11-12 → 2013-11-19 (+7d) | 2013-11-20 → 2013-11-27 (+7d) |  | 116.8d → 111.8d |
| 254 | **Настраиваемые коллекции** | 2013-11-20 → 2013-11-27 (+7d) | 2013-11-27 → 2013-12-04 (+7d) |  | 130.8d → 125.8d |
| 255 | **Конфигурация коллекций** | 2013-11-20 → 2013-11-27 (+7d) | 2013-11-26 → 2013-12-03 (+7d) |  | 130.8d → 125.8d |
| 256 | Типовая иерархия кастомных папок (3шт) | 2013-11-20 → 2013-11-27 (+7d) | 2013-11-22 → 2013-11-29 (+7d) |  | 130.8d → 125.8d |
| 257 | Системные настройки для ОО | 2013-11-22 → 2013-11-29 (+7d) | 2013-11-26 → 2013-12-03 (+7d) |  | 130.8d → 125.8d |
| 258 | Проверка работы | 2013-11-26 → 2013-12-03 (+7d) | 2013-11-27 → 2013-12-04 (+7d) |  | 130.8d → 125.8d |
| 259 | **Разработка адаптеров для ОО** | 2013-11-20 → 2013-11-27 (+7d) | 2013-12-04 → 2013-12-11 (+7d) |  | 116.8d → 111.8d |
| 260 | Задание поставлено | 2013-11-20 → 2013-11-27 (+7d) | 2013-11-20 → 2013-11-27 (+7d) |  | 116.8d → 111.8d |
| 261 | Разработка архитектуры дя адаптеров | 2013-11-20 → 2013-11-27 (+7d) | 2013-11-27 → 2013-12-04 (+7d) |  | 116.8d → 111.8d |
| 262 | Разработка адаптеров | 2013-11-27 → 2013-12-04 (+7d) | 2013-12-04 → 2013-12-11 (+7d) |  | 116.8d → 111.8d |
| 263 | **Разработка коллекций** | 2013-12-04 → 2013-12-11 (+7d) | 2013-12-17 → 2013-12-24 (+7d) |  | 116.8d → 111.8d |
| 264 | Коллекции | 2013-12-04 → 2013-12-11 (+7d) | 2013-12-17 → 2013-12-24 (+7d) |  | 116.8d → 111.8d |
| 265 | Интеграция по ОО выполнена | 2013-12-17 → 2013-12-24 (+7d) | 2013-12-17 → 2013-12-24 (+7d) |  | 116.8d → 111.8d |
| 266 | **Интеграция с CMJ по сервису согласования** | 2013-11-04 → 2013-11-11 (+7d) | 2013-12-17 → 2013-12-24 (+7d) |  | 116.8d → 111.8d |
| 267 | Конфиг ДОП | 2013-11-04 → 2013-11-11 (+7d) | 2013-11-12 → 2013-11-19 (+7d) |  | 116.8d → 111.8d |
| 268 | Mapper | 2013-11-12 → 2013-11-19 (+7d) | 2013-11-20 → 2013-11-27 (+7d) |  | 116.8d → 111.8d |
| 269 | **Настраиваемые коллекции** | 2013-11-20 → 2013-11-27 (+7d) | 2013-11-27 → 2013-12-04 (+7d) |  | 130.8d → 125.8d |
| 270 | **Конфигурация коллекций** | 2013-11-20 → 2013-11-27 (+7d) | 2013-11-26 → 2013-12-03 (+7d) |  | 130.8d → 125.8d |
| 271 | Типовая иерархия кастомных папок (3шт) | 2013-11-20 → 2013-11-27 (+7d) | 2013-11-22 → 2013-11-29 (+7d) |  | 130.8d → 125.8d |
| 272 | Системные настройки для СрвСогл | 2013-11-22 → 2013-11-29 (+7d) | 2013-11-26 → 2013-12-03 (+7d) |  | 130.8d → 125.8d |
| 273 | Проверка работы | 2013-11-26 → 2013-12-03 (+7d) | 2013-11-27 → 2013-12-04 (+7d) |  | 130.8d → 125.8d |
| 274 | **Разработка адаптеров для СрвСогл** | 2013-11-20 → 2013-11-27 (+7d) | 2013-12-04 → 2013-12-11 (+7d) |  | 116.8d → 111.8d |
| 275 | Задание поставлено | 2013-11-20 → 2013-11-27 (+7d) | 2013-11-20 → 2013-11-27 (+7d) |  | 116.8d → 111.8d |
| 276 | Разработка архитектуры дя адаптеров | 2013-11-20 → 2013-11-27 (+7d) | 2013-11-27 → 2013-12-04 (+7d) |  | 116.8d → 111.8d |
| 277 | Разработка адаптеров | 2013-11-27 → 2013-12-04 (+7d) | 2013-12-04 → 2013-12-11 (+7d) |  | 116.8d → 111.8d |
| 278 | **Разработка коллекций** | 2013-12-04 → 2013-12-11 (+7d) | 2013-12-17 → 2013-12-24 (+7d) |  | 116.8d → 111.8d |
| 279 | Коллекции | 2013-12-04 → 2013-12-11 (+7d) | 2013-12-17 → 2013-12-24 (+7d) |  | 116.8d → 111.8d |
| 280 | Интеграция по СрвСогл выполнена | 2013-12-17 → 2013-12-24 (+7d) | 2013-12-17 → 2013-12-24 (+7d) |  | 116.8d → 111.8d |
| 281 | **Интеграция с CMJ по Формированию дел** | 2013-11-04 → 2013-11-11 (+7d) | 2013-12-17 → 2013-12-24 (+7d) |  | 116.8d → 111.8d |
| 282 | Конфиг ДОП | 2013-11-04 → 2013-11-11 (+7d) | 2013-11-12 → 2013-11-19 (+7d) |  | 116.8d → 111.8d |
| 283 | Mapper | 2013-11-12 → 2013-11-19 (+7d) | 2013-11-20 → 2013-11-27 (+7d) |  | 116.8d → 111.8d |
| 284 | **Настраиваемые коллекции** | 2013-11-20 → 2013-11-27 (+7d) | 2013-11-27 → 2013-12-04 (+7d) |  | 130.8d → 125.8d |
| 285 | **Конфигурация коллекций** | 2013-11-20 → 2013-11-27 (+7d) | 2013-11-26 → 2013-12-03 (+7d) |  | 130.8d → 125.8d |
| 286 | Типовая иерархия кастомных папок (3шт) | 2013-11-20 → 2013-11-27 (+7d) | 2013-11-22 → 2013-11-29 (+7d) |  | 130.8d → 125.8d |
| 287 | Системные настройки для ФД | 2013-11-22 → 2013-11-29 (+7d) | 2013-11-26 → 2013-12-03 (+7d) |  | 130.8d → 125.8d |
| 288 | Проверка работы | 2013-11-26 → 2013-12-03 (+7d) | 2013-11-27 → 2013-12-04 (+7d) |  | 130.8d → 125.8d |
| 289 | **Разработка адаптеров для ФД** | 2013-11-20 → 2013-11-27 (+7d) | 2013-12-04 → 2013-12-11 (+7d) |  | 116.8d → 111.8d |
| 290 | Задание поставлено | 2013-11-20 → 2013-11-27 (+7d) | 2013-11-20 → 2013-11-27 (+7d) |  | 116.8d → 111.8d |
| 291 | Разработка архитектуры дя адаптеров | 2013-11-20 → 2013-11-27 (+7d) | 2013-11-27 → 2013-12-04 (+7d) |  | 116.8d → 111.8d |
| 292 | Разработка адаптеров | 2013-11-27 → 2013-12-04 (+7d) | 2013-12-04 → 2013-12-11 (+7d) |  | 116.8d → 111.8d |
| 293 | **Разработка коллекций** | 2013-12-04 → 2013-12-11 (+7d) | 2013-12-17 → 2013-12-24 (+7d) |  | 116.8d → 111.8d |
| 294 | Коллекции | 2013-12-04 → 2013-12-11 (+7d) | 2013-12-17 → 2013-12-24 (+7d) |  | 116.8d → 111.8d |
| 295 | Интеграция по ФД выполнена | 2013-12-17 → 2013-12-24 (+7d) | 2013-12-17 → 2013-12-24 (+7d) |  | 116.8d → 111.8d |
| 309 | **Работа с отчетами** |  | 2013-12-04 → 2013-12-06 (+2d) | 48d → 50d | 125d → 123d |
| 312 | Интеграция с Jasper Reports |  | 2013-11-20 → 2013-11-22 (+2d) | 15d → 17d | 125d → 123d |
| 313 | GUI - отображение отчётов | 2013-11-21 → 2013-11-25 (+4d) | 2013-12-04 → 2013-12-06 (+2d) |  | 125d → 123d |
| 345 | **GUI - брендинг, стилизация, темы** |  | 2013-11-11 → 2013-11-13 (+2d) | 5d → 7d | 140d → 138d |
| 346 | Концепция |  | 2013-11-11 → 2013-11-13 (+2d) |  | 140d → 138d |
| 380 | **Тестирование** | 2014-02-10 → 2014-02-05 (-5d) | 2014-05-15 → 2014-05-09 (-6d) |  | 85.8d → 89d |
| 381 | **Функциональное тестирование** | 2014-02-10 → 2014-02-05 (-5d) | 2014-04-24 → 2014-04-18 (-6d) |  | 85.8d → 89d |
| 382 | Подготовка ПМИ | 2014-02-10 → 2014-02-05 (-5d) | 2014-02-17 → 2014-02-11 (-6d) |  | 85.8d → 89d |
| 383 | Разработка "сценариев тестирования" | 2014-02-10 → 2014-02-05 (-5d) | 2014-03-03 → 2014-02-25 (-6d) |  | 90.8d → 94d |
| 384 | Разработка модели нагрузки для тестирования | 2014-02-17 → 2014-02-12 (-5d) | 2014-03-03 → 2014-02-25 (-6d) |  | 90.8d → 94d |
| 385 | Адаптация автоматизированных сценариев от СМ4 для создания нагрузки | 2014-02-17 → 2014-02-12 (-5d) | 2014-03-24 → 2014-03-18 (-6d) |  | 85.8d → 89d |
| 386 | **Проведение тестирования** | 2014-03-03 → 2014-02-26 (-5d) | 2014-04-24 → 2014-04-18 (-6d) |  | 90.8d → 94d |
| 387 | **Подготовка среды тестирования** | 2014-03-03 → 2014-02-26 (-5d) | 2014-03-17 → 2014-03-11 (-6d) |  | 90.8d → 94d |
| 388 | Разворачивание системы | 2014-03-03 → 2014-02-26 (-5d) | 2014-03-10 → 2014-03-04 (-6d) |  | 133.8d → 137d |
| 389 | Система готова для подключения инструментов мониторинга | 2014-03-10 → 2014-03-04 (-6d) | 2014-03-10 → 2014-03-04 (-6d) |  | 133.8d → 137d |
| 390 | Наполнение данными | 2014-03-03 → 2014-02-26 (-5d) | 2014-03-17 → 2014-03-11 (-6d) |  | 90.8d → 94d |
| 391 | Среда тестирования готова | 2014-03-24 → 2014-03-18 (-6d) | 2014-03-24 → 2014-03-18 (-6d) |  | 85.8d → 89d |
| 392 | Проведение тестирования | 2014-03-24 → 2014-03-19 (-5d) | 2014-04-07 → 2014-04-01 (-6d) |  | 85.8d → 89d |
| 393 | **Обработка результатов тестирования и внесение изменений в модуль** | 2014-04-03 → 2014-03-31 (-3d) | 2014-04-24 → 2014-04-18 (-6d) |  | 85.8d → 89d |
| 394 | Устранение замечаний по результатам функционального тестирования | 2014-04-03 → 2014-03-31 (-3d) | 2014-04-24 → 2014-04-18 (-6d) |  | 85.8d → 89d |
| 395 | Проверка устранения замечаний | 2014-04-16 → 2014-04-11 (-5d) | 2014-04-24 → 2014-04-18 (-6d) |  | 85.8d → 89d |
| 396 | **Нагрузочное тестирование** | 2014-04-07 → 2014-04-01 (-6d) | 2014-05-15 → 2014-05-09 (-6d) |  | 85.8d → 89d |

| ID | Task | Start | Finish | Duration | Total float |
| --- | --- | --- | --- | --- | --- |
| 397 | Стенд для нагрузочного тестирования подготовлен | 2014-04-07 → 2014-04-01 (-6d) | 2014-04-07 → 2014-04-01 (-6d) |  | 98.8d → 102d |
| 398 | Проведения нагрузочного тестирования | 2014-04-24 → 2014-04-21 (-3d) | 2014-05-08 → 2014-05-02 (-6d) |  | 85.8d → 89d |
| 399 | Обработка результатов нагрузочного тестирования | 2014-05-08 → 2014-05-05 (-3d) | 2014-05-15 → 2014-05-09 (-6d) |  | 85.8d → 89d |
| 400 | **Подготовка документации** | 2014-02-10 → 2014-02-05 (-5d) | 2014-06-02 → 2014-05-27 (-6d) | 80d? → 80d | 73.8d → 77d |
| 401 | Разработка документа "Концепция системы " | 2014-02-10 → 2014-02-05 (-5d) | 2014-04-07 → 2014-04-01 (-6d) |  | 73.8d → 77d |
| 402 | Разработка "Software Architecture Document" | 2014-04-07 → 2014-04-02 (-5d) | 2014-06-02 → 2014-05-27 (-6d) |  | 73.8d → 77d |
| 403 | Документы подготовлены | 2014-06-02 → 2014-05-27 (-6d) | 2014-06-02 → 2014-05-27 (-6d) |  | 73.8d → 77d |

## Version 45 (saved 2013-10-23)

Note of the change: обновления

Last finish stays 2014-09-11.

Added:

| ID | Task | Duration | Start | Finish | Constraint | Resources |
| --- | --- | --- | --- | --- | --- | --- |
| 113 | Описание полей представлений | 1d | 2013-10-23 | 2013-10-23 |  | Евгений Баланенко |
| 238 | Получена версия CM4.X c WF движком | 0d | 2013-11-27 | 2013-11-27 | start no earlier than 2013-11-27 |  |
| 312 | Определен состав отчетов | 0d | 2013-11-01 | 2013-11-01 | start no earlier than 2013-11-01 |  |

Changed:

| ID | Task | Start | Finish | Duration | Complete | Total float | Predecessors |
| --- | --- | --- | --- | --- | --- | --- | --- |
| 1 | **Разработка версии CM4/5** |  |  |  | 25% → 26% |  |  |
| 9 | **Создание модуля "Делопроизводство" (документоориентированная среда)** |  | 2014-05-27 → 2014-06-24 (+28d) | 274d? → 294d? | 25% → 26% | 77d → 57d |  |
| 20 | **Проектирование и формирование ядра системы** |  | 2014-02-04 → 2014-03-04 (+28d) | 194d? → 214d? |  | 89d → 69d |  |
| 68 | **Слой сопряжения CMJ server (CM4)** |  | 2013-12-24 → 2014-03-04 (+70d) | 130.2d? → 173d? | 6% → 7% | 111.8d → 69d |  |
| 76 | **Интеграция с CMJ по Внутренним Документам** |  |  |  | 5% → 8% |  |  |
| 94 | **Настраиваемые коллекции** | 2013-10-01 A |  |  | 0% → 16% | 121.25d → 96.25d |  |
| 99 | Builder коллекций | 2013-10-01 A |  |  | 0% → 35% | 121.25d → 90.25d |  |
| 116 | Коллекции СС |  |  |  |  | 111.8d → 80.8d | 114 → 114, 113 |
| 129 | **Интеграция с CMJ по Договорам** | 2013-10-15 A |  |  | 0% → 14% | 114.2d → 132d |  |
| 132 | Конфиг ДОП | 2013-10-15 A |  |  | 0% → 90% |  |  |
| 237 | **Интеграция с CMJ по сервису согласования** | 2013-11-11 → 2013-11-27 (+16d) | 2013-12-24 → 2014-01-20 (+27d) |  |  | 111.8d → 69d |  |
| 239 | Конфиг ДОП | 2013-11-11 → 2013-11-27 (+16d) | 2013-11-19 → 2013-12-04 (+15d) |  |  | 111.8d → 69d | none → 238 |
| 240 | Mapper | 2013-11-19 → 2013-12-05 (+16d) | 2013-11-27 → 2013-12-12 (+15d) |  |  | 111.8d → 69d |  |
| 241 | **Настраиваемые коллекции** | 2013-11-27 → 2013-12-13 (+16d) | 2013-12-04 → 2013-12-19 (+15d) |  |  | 125.8d → 83d |  |
| 242 | **Конфигурация коллекций** | 2013-11-27 → 2013-12-13 (+16d) | 2013-12-03 → 2013-12-18 (+15d) |  |  | 125.8d → 83d |  |
| 243 | Типовая иерархия кастомных папок (3шт) | 2013-11-27 → 2013-12-13 (+16d) | 2013-11-29 → 2013-12-16 (+17d) |  |  | 125.8d → 83d |  |
| 244 | Системные настройки для СрвСогл | 2013-11-29 → 2013-12-17 (+18d) | 2013-12-03 → 2013-12-18 (+15d) |  |  | 125.8d → 83d |  |
| 245 | Проверка работы | 2013-12-03 → 2013-12-19 (+16d) | 2013-12-04 → 2013-12-19 (+15d) |  |  | 125.8d → 83d |  |
| 246 | **Разработка адаптеров для СрвСогл** | 2013-11-27 → 2013-12-12 (+15d) | 2013-12-11 → 2013-12-26 (+15d) |  |  | 111.8d → 69d |  |
| 247 | Задание поставлено | 2013-11-27 → 2013-12-12 (+15d) | 2013-11-27 → 2013-12-12 (+15d) |  |  | 111.8d → 69d |  |
| 248 | Разработка архитектуры дя адаптеров | 2013-11-27 → 2013-12-13 (+16d) | 2013-12-04 → 2013-12-19 (+15d) |  |  | 111.8d → 69d |  |
| 249 | Разработка адаптеров | 2013-12-04 → 2013-12-20 (+16d) | 2013-12-11 → 2013-12-26 (+15d) |  |  | 111.8d → 69d |  |
| 250 | **Разработка коллекций** | 2013-12-11 → 2013-12-27 (+16d) | 2013-12-24 → 2014-01-20 (+27d) |  |  | 111.8d → 69d |  |
| 251 | Коллекции | 2013-12-11 → 2013-12-27 (+16d) | 2013-12-24 → 2014-01-20 (+27d) |  |  | 111.8d → 69d |  |
| 252 | Интеграция по СрвСогл выполнена | 2013-12-24 → 2014-01-20 (+27d) | 2013-12-24 → 2014-01-20 (+27d) |  |  | 111.8d → 69d |  |
| 253 | **Интеграция с CMJ по Заседаниям** | 2013-11-11 → 2014-01-21 (+71d) | 2013-12-24 → 2014-03-04 (+70d) |  |  | 111.8d → 69d | 76 → 76, 237 |
| 254 | Конфиг ДОП | 2013-11-11 → 2014-01-21 (+71d) | 2013-11-19 → 2014-01-28 (+70d) |  |  | 111.8d → 69d |  |
| 255 | Mapper | 2013-11-19 → 2014-01-29 (+71d) | 2013-11-27 → 2014-02-05 (+70d) |  |  | 111.8d → 69d |  |
| 256 | **Настраиваемые коллекции** | 2013-11-27 → 2014-02-06 (+71d) | 2013-12-04 → 2014-02-12 (+70d) |  |  | 125.8d → 83d |  |
| 257 | **Конфигурация коллекций** | 2013-11-27 → 2014-02-06 (+71d) | 2013-12-03 → 2014-02-11 (+70d) |  |  | 125.8d → 83d |  |
| 258 | Типовая иерархия кастомных папок (3шт) | 2013-11-27 → 2014-02-06 (+71d) | 2013-11-29 → 2014-02-07 (+70d) |  |  | 125.8d → 83d |  |
| 259 | Системные настройки для Зсд | 2013-11-29 → 2014-02-10 (+73d) | 2013-12-03 → 2014-02-11 (+70d) |  |  | 125.8d → 83d |  |
| 260 | Проверка работы | 2013-12-03 → 2014-02-12 (+71d) | 2013-12-04 → 2014-02-12 (+70d) |  |  | 125.8d → 83d |  |
| 261 | **Разработка адаптеров для Зсд** | 2013-11-27 → 2014-02-05 (+70d) | 2013-12-11 → 2014-02-19 (+70d) |  |  | 111.8d → 69d |  |
| 262 | Задание поставлено | 2013-11-27 → 2014-02-05 (+70d) | 2013-11-27 → 2014-02-05 (+70d) |  |  | 111.8d → 69d |  |
| 263 | Разработка архитектуры дя адаптеров | 2013-11-27 → 2014-02-06 (+71d) | 2013-12-04 → 2014-02-12 (+70d) |  |  | 111.8d → 69d |  |
| 264 | Разработка адаптеров | 2013-12-04 → 2014-02-13 (+71d) | 2013-12-11 → 2014-02-19 (+70d) |  |  | 111.8d → 69d |  |
| 265 | **Разработка коллекций** | 2013-12-11 → 2014-02-20 (+71d) | 2013-12-24 → 2014-03-04 (+70d) |  |  | 111.8d → 69d |  |
| 266 | Коллекции | 2013-12-11 → 2014-02-20 (+71d) | 2013-12-24 → 2014-03-04 (+70d) |  |  | 111.8d → 69d |  |
| 267 | Интеграция по Зсд выполнена | 2013-12-24 → 2014-03-04 (+70d) | 2013-12-24 → 2014-03-04 (+70d) |  |  | 111.8d → 69d |  |
| 311 | **Работа с отчетами** | 2013-09-30 → 2013-11-01 (+32d) | 2013-12-06 → 2013-12-19 (+13d) | 50d → 35d |  | 123d → 114d |  |
| 313 | Система готова к интеграции с модулем отчетов | 2013-09-30 → 2013-11-01 (+32d) | 2013-09-30 → 2013-11-01 (+32d) |  |  | 140d → 116d | none → 312 |
| 314 | JDBC-драйвер для системы построения отчётов | 2013-10-21 → 2013-11-01 (+11d) | 2013-10-30 → 2013-11-14 (+15d) | 8d → 10d |  | 125d → 114d |  |
| 315 | Интеграция с Jasper Reports | 2013-10-31 → 2013-11-15 (+15d) | 2013-11-22 → 2013-12-05 (+13d) | 17d → 15d |  | 123d → 114d |  |
| 316 | GUI - отображение отчётов | 2013-11-25 → 2013-12-06 (+11d) | 2013-12-06 → 2013-12-19 (+13d) |  |  | 123d → 114d |  |
| 383 | **Тестирование** | 2014-02-05 → 2014-03-05 (+28d) | 2014-05-09 → 2014-06-06 (+28d) |  |  | 89d → 69d |  |
| 384 | **Функциональное тестирование** | 2014-02-05 → 2014-03-05 (+28d) | 2014-04-18 → 2014-05-16 (+28d) |  |  | 89d → 69d |  |
| 385 | Подготовка ПМИ | 2014-02-05 → 2014-03-05 (+28d) | 2014-02-11 → 2014-03-11 (+28d) |  |  | 89d → 69d |  |
| 386 | Разработка "сценариев тестирования" | 2014-02-05 → 2014-03-05 (+28d) | 2014-02-25 → 2014-03-25 (+28d) |  |  | 94d → 74d |  |
| 387 | Разработка модели нагрузки для тестирования | 2014-02-12 → 2014-03-12 (+28d) | 2014-02-25 → 2014-03-25 (+28d) |  |  | 94d → 74d |  |
| 388 | Адаптация автоматизированных сценариев от СМ4 для создания нагрузки | 2014-02-12 → 2014-03-12 (+28d) | 2014-03-18 → 2014-04-15 (+28d) |  |  | 89d → 69d |  |
| 389 | **Проведение тестирования** | 2014-02-26 → 2014-03-26 (+28d) | 2014-04-18 → 2014-05-16 (+28d) |  |  | 94d → 74d |  |
| 390 | **Подготовка среды тестирования** | 2014-02-26 → 2014-03-26 (+28d) | 2014-03-11 → 2014-04-08 (+28d) |  |  | 94d → 74d |  |
| 391 | Разворачивание системы | 2014-02-26 → 2014-03-26 (+28d) | 2014-03-04 → 2014-04-01 (+28d) |  |  | 137d → 117d |  |
| 392 | Система готова для подключения инструментов мониторинга | 2014-03-04 → 2014-04-01 (+28d) | 2014-03-04 → 2014-04-01 (+28d) |  |  | 137d → 117d |  |
| 393 | Наполнение данными | 2014-02-26 → 2014-03-26 (+28d) | 2014-03-11 → 2014-04-08 (+28d) |  |  | 94d → 74d |  |
| 394 | Среда тестирования готова | 2014-03-18 → 2014-04-15 (+28d) | 2014-03-18 → 2014-04-15 (+28d) |  |  | 89d → 69d |  |
| 395 | Проведение тестирования | 2014-03-19 → 2014-04-16 (+28d) | 2014-04-01 → 2014-04-29 (+28d) |  |  | 89d → 69d |  |
| 396 | **Обработка результатов тестирования и внесение изменений в модуль** | 2014-03-31 → 2014-04-28 (+28d) | 2014-04-18 → 2014-05-16 (+28d) |  |  | 89d → 69d |  |
| 397 | Устранение замечаний по результатам функционального тестирования | 2014-03-31 → 2014-04-28 (+28d) | 2014-04-18 → 2014-05-16 (+28d) |  |  | 89d → 69d |  |
| 398 | Проверка устранения замечаний | 2014-04-11 → 2014-05-09 (+28d) | 2014-04-18 → 2014-05-16 (+28d) |  |  | 89d → 69d |  |
| 399 | **Нагрузочное тестирование** | 2014-04-01 → 2014-04-29 (+28d) | 2014-05-09 → 2014-06-06 (+28d) |  |  | 89d → 69d |  |
| 400 | Стенд для нагрузочного тестирования подготовлен | 2014-04-01 → 2014-04-29 (+28d) | 2014-04-01 → 2014-04-29 (+28d) |  |  | 102d → 82d |  |
| 401 | Проведения нагрузочного тестирования | 2014-04-21 → 2014-05-19 (+28d) | 2014-05-02 → 2014-05-30 (+28d) |  |  | 89d → 69d |  |
| 402 | Обработка результатов нагрузочного тестирования | 2014-05-05 → 2014-06-02 (+28d) | 2014-05-09 → 2014-06-06 (+28d) |  |  | 89d → 69d |  |
| 403 | **Подготовка документации** | 2014-02-05 → 2014-03-05 (+28d) | 2014-05-27 → 2014-06-24 (+28d) |  |  | 77d → 57d |  |
| 404 | Разработка документа "Концепция системы " | 2014-02-05 → 2014-03-05 (+28d) | 2014-04-01 → 2014-04-29 (+28d) |  |  | 77d → 57d |  |
| 405 | Разработка "Software Architecture Document" | 2014-04-02 → 2014-04-30 (+28d) | 2014-05-27 → 2014-06-24 (+28d) |  |  | 77d → 57d |  |
| 406 | Документы подготовлены | 2014-05-27 → 2014-06-24 (+28d) | 2014-05-27 → 2014-06-24 (+28d) |  |  | 77d → 57d |  |

## Version 46 (saved 2013-10-31)

Note of the change: изменения за конец октября

Last finish stays 2014-09-11.

Changed:

| ID | Task | Start | Finish | Total float | Other |
| --- | --- | --- | --- | --- | --- |
| 113 | Описание полей представлений | 2013-10-23 → 2013-10-28 (+5d) | 2013-10-23 → 2013-10-28 (+5d) | 83.8d → 80.8d | constraint none → finish no earlier than 2013-10-28 |

## Version 47 (saved 2013-11-05)

Last finish stays 2014-09-11. Complete tasks 63 → 72.

Changed:

| ID | Task | Start | Finish | Duration | Complete | Total float | Predecessors | Other |
| --- | --- | --- | --- | --- | --- | --- | --- | --- |
| 1 | **Разработка версии CM4/5** |  |  |  | 26% → 29% |  |  |  |
| 9 | **Создание модуля "Делопроизводство" (документоориентированная среда)** |  |  |  | 26% → 29% |  |  |  |
| 20 | **Проектирование и формирование ядра системы** |  |  |  | 30% → 36% |  |  |  |
| 64 | **Поиск** |  | 2013-10-29 → 2013-12-11 (+43d) | 66d → 97d | 9% → 6% | 151d → 120d |  |  |
| 66 | Поиск |  | 2013-10-08 → 2013-11-06 (+29d) | 22d → 43d | 18% → 9% | 151d → 120d |  |  |
| 67 | Полнотекстовый поиск | 2013-09-25 → 2013-11-07 (+43d) | 2013-10-29 → 2013-12-11 (+43d) |  |  | 151d → 120d | 65, 66FS-10d → 65, 66 | constraint none → start no earlier than 2013-11-05 |
| 68 | **Слой сопряжения CMJ server (CM4)** |  |  |  | 7% → 21% |  |  |  |
| 73 | Рефакторинг СМ 4.2.1 выполнен |  | 2013-09-30 A |  | 80% → 100% | 172d → none |  |  |
| 74 | Структура хранения определена | 2013-10-28 A | 2013-10-28 A |  | 0% → 100% | 127d → none |  |  |
| 76 | **Интеграция с CMJ по Внутренним Документам** |  | 2013-11-11 → 2013-11-18 (+7d) | 35.2d? → 40.2d? | 8% → 60% | 111.8d → 75.8d |  |  |
| 77 | MapperBuilder | 2013-09-23 A | 2013-10-03 → 2013-10-30 A (+27d) | 9d → 28d | 0% → 100% | 98d → none |  |  |
| 80 | Mapper СС | 2013-10-04 → 2013-10-31 (+27d) | 2013-10-07 → 2013-11-01 (+25d) |  |  | 102d → 83d |  |  |
| 82 | Mapper Каталога | 2013-10-04 → 2013-10-31 (+27d) | 2013-10-07 → 2013-11-01 (+25d) |  |  | 98d → 78d |  |  |
| 83 | Конфиг ДОП Портала |  | 2013-09-30 → 2013-09-27 (-3d) | 3.75d? → 3d? |  | 97.05d → 96.8d |  | resources Тугушев Илья [80%] → Евгений Баланенко |
| 84 | Mapper Портала | 2013-10-04 → 2013-10-31 (+27d) | 2013-10-07 → 2013-11-01 (+25d) |  |  | 99d → 80d |  |  |
| 86 | Maper СО | 2013-10-08 → 2013-11-04 (+27d) | 2013-10-09 → 2013-11-05 (+27d) |  |  | 98d → 78d |  |  |
| 88 | Mapper ВнД | 2013-10-10 → 2013-11-06 (+27d) | 2013-10-11 → 2013-11-08 (+28d) | 2d → 3d |  | 98d → 78d |  | resources Глеб Ноздрачев [80%] → Александр Власюк |
| 90 | Mapper СпО | 2013-10-08 → 2013-11-04 (+27d) | 2013-10-10 → 2013-11-06 (+27d) |  |  | 99d → 80d |  |  |
| 91 | Аутентификация | 2013-10-15 → 2013-10-29 (+14d) | 2013-10-17 → 2013-10-31 (+14d) |  |  | 90.25d → 80.25d |  |  |
| 92 | Вложения | 2013-10-17 → 2013-10-31 (+14d) | 2013-10-21 → 2013-11-04 (+14d) |  |  | 90.25d → 80.25d |  |  |
| 93 | Форматированный текст | 2013-10-21 → 2013-11-04 (+14d) | 2013-10-23 → 2013-11-06 (+14d) |  |  | 90.25d → 80.25d |  |  |
| 94 | **Настраиваемые коллекции** |  | 2013-10-15 → 2013-11-12 (+28d) | 10d? → 30d? | 16% → 63% | 96.25d → 76.25d |  |  |
| 95 | **Системные настройки** | 2013-10-01 A | 2013-10-14 → 2013-11-11 (+28d) | 9d → 29d | 0% → 69% | 96.25d → 76.25d |  |  |
| 96 | Builder коллекций |  | 2013-10-15 → 2013-10-29 A (+14d) | 10d → 20d | 35% → 100% | 90.25d → none |  |  |
| 97 | XSD-схема XML-настроек | 2013-10-01 → 2013-10-29 (+28d) | 2013-10-04 → 2013-11-01 (+28d) |  |  | 96.25d → 76.25d | none → 96 |  |
| 98 | Чтение XML настроек через спец-Mapper | 2013-10-04 → 2013-11-01 (+28d) | 2013-10-09 → 2013-11-06 (+28d) |  |  | 96.25d → 76.25d |  |  |
| 99 | Mapper папок | 2013-10-09 → 2013-11-06 (+28d) | 2013-10-14 → 2013-11-11 (+28d) |  |  | 96.25d → 76.25d |  |  |
| 103 | Проверка работы | 2013-10-14 → 2013-11-11 (+28d) | 2013-10-15 → 2013-11-12 (+28d) |  |  | 96.25d → 76.25d |  |  |
| 104 | **Разработка адаптеров для Вн** |  | 2013-10-22 → 2013-10-28 (+6d) | 17d → 21d | 0% → 99% | 125d → 90d |  |  |
| 106 | Адаптеры View, Session проектирование | 2013-09-30 A | 2013-10-14 A |  | 0% → 100% | 80.8d → none |  |  |
| 107 | Разработка логики адаптеров view&session | 2013-10-15 A | 2013-10-22 → 2013-10-28 A (+6d) | 6d → 10d | 0% → 100% | 80.8d → none |  |  |
| 108 | Разработка архитектуры дя адаптеров database | 2013-09-30 A |  |  | 0% → 90% | 130d → 106d |  |  |
| 109 | Разработка адаптеров database | 2013-10-07 A | 2013-10-11 → 2013-10-25 A (+14d) | 5d → 15d | 0% → 100% | 132d → none |  |  |
| 111 | Разработка адаптеров DOCUMENT | 2013-10-07 A | 2013-10-15 → 2013-10-25 A (+10d) | 7d → 15d | 0% → 100% | 130d → none | 108, 110 → 108 |  |
| 112 | **Разработка коллекций** | 2013-10-23 → 2013-10-29 A (+6d) | 2013-11-06 → 2013-11-13 (+7d) | 10.2d → 11.2d | 0% → 4% | 80.8d → 78.8d |  |  |
| 113 | Описание полей документов Вн | 2013-10-28 → 2013-10-29 A (+1d) | 2013-10-28 → 2013-10-30 (+2d) | 1d → 2d | 0% → 50% | 80.8d → 78.8d |  | was named Описание полей представлений |
| 114 | Коллекции Портала | 2013-10-23 → 2013-10-29 (+6d) | 2013-10-28 → 2013-11-04 (+7d) | 4d → 5d |  | 80.8d → 75.8d |  | resources Тугушев Илья [80%] → Евгений Баланенко |
| 115 | Инструктаж по @-формулам проведен | 2013-10-28 → 2013-11-04 (+7d) | 2013-10-28 → 2013-11-04 (+7d) |  |  | 121d → 85d |  |  |
| 116 | Коллекции СС | 2013-10-29 → 2013-11-05 (+7d) | 2013-10-31 → 2013-11-07 (+7d) |  |  | 80.8d → 75.8d |  |  |
| 117 | Коллекции Каталога | 2013-10-29 → 2013-11-05 (+7d) | 2013-10-31 → 2013-11-07 (+7d) |  |  | 80.8d → 75.8d |  |  |
| 118 | Коллекции СО | 2013-10-29 → 2013-11-05 (+7d) | 2013-10-31 → 2013-11-07 (+7d) |  |  | 84d → 79d |  |  |
| 119 | Коллекции ВнД | 2013-11-01 → 2013-11-08 (+7d) | 2013-11-06 → 2013-11-13 (+7d) |  |  | 80.8d → 75.8d |  |  |
| 120 | Коллекции СпО | 2013-11-01 → 2013-11-08 (+7d) | 2013-11-06 → 2013-11-13 (+7d) |  |  | 80.8d → 75.8d |  |  |
| 121 | ВнД | 2013-11-06 → 2013-11-13 (+7d) | 2013-11-06 → 2013-11-13 (+7d) |  |  | 80.8d → 75.8d |  |  |
| 122 | Объединение War | 2013-11-06 → 2013-11-13 (+7d) | 2013-11-07 → 2013-11-14 (+7d) |  |  | 82.8d → 77.8d |  |  |
| 123 | **Инструмент заполнения** | 2013-11-06 → 2013-11-13 (+7d) | 2013-11-11 → 2013-11-18 (+7d) |  |  | 80.8d → 75.8d |  |  |
| 124 | Инструмент заполнения Каталога | 2013-11-06 → 2013-11-13 (+7d) | 2013-11-11 → 2013-11-18 (+7d) |  |  | 80.8d → 75.8d |  |  |
| 125 | Инструмент заполнения СС | 2013-11-06 → 2013-11-13 (+7d) | 2013-11-11 → 2013-11-18 (+7d) |  |  | 80.8d → 75.8d |  |  |
| 126 | Инструмент заполнения Портала | 2013-11-06 → 2013-11-13 (+7d) | 2013-11-11 → 2013-11-18 (+7d) |  |  | 80.8d → 75.8d |  |  |
| 127 | Инструмент заполнения СО | 2013-11-06 → 2013-11-13 (+7d) | 2013-11-11 → 2013-11-18 (+7d) |  |  | 80.8d → 75.8d |  |  |
| 128 | Инструмент заполнения СпО | 2013-11-06 → 2013-11-13 (+7d) | 2013-11-11 → 2013-11-18 (+7d) |  |  | 80.8d → 75.8d |  |  |
| 129 | **Интеграция с CMJ по Договорам** |  |  |  | 14% → 15% |  |  |  |
| 132 | Конфиг ДОП |  | 2013-10-22 A |  | 90% → 100% | 114.2d → none |  |  |
| 147 | **Интеграция с CMJ по Входящим документам** | 2013-11-11 → 2013-11-18 (+7d) | 2013-12-20 → 2013-12-27 (+7d) |  |  | 113d → 108d |  |  |
| 148 | Конфиг ДОП | 2013-11-11 → 2013-11-18 (+7d) | 2013-11-19 → 2013-11-26 (+7d) |  |  | 113d → 108d |  |  |
| 149 | Mapper | 2013-11-19 → 2013-11-26 (+7d) | 2013-11-25 → 2013-12-02 (+7d) |  |  | 113d → 108d |  |  |
| 150 | **Настраиваемые коллекции** | 2013-11-26 → 2013-12-03 (+7d) | 2013-12-02 → 2013-12-09 (+7d) |  |  | 127d → 122d |  |  |
| 151 | **Конфигурация коллекций** | 2013-11-26 → 2013-12-03 (+7d) | 2013-11-29 → 2013-12-06 (+7d) |  |  | 127d → 122d |  |  |
| 152 | Типовая иерархия кастомных папок (3шт) | 2013-11-26 → 2013-12-03 (+7d) | 2013-11-27 → 2013-12-04 (+7d) |  |  | 127d → 122d |  |  |
| 153 | Системные настройки для Вх | 2013-11-28 → 2013-12-05 (+7d) | 2013-11-29 → 2013-12-06 (+7d) |  |  | 127d → 122d |  |  |
| 154 | Проверка работы | 2013-12-02 → 2013-12-09 (+7d) | 2013-12-02 → 2013-12-09 (+7d) |  |  | 127d → 122d |  |  |
| 155 | **Разработка адаптеров для Вх** | 2013-11-25 → 2013-12-02 (+7d) | 2013-12-09 → 2013-12-16 (+7d) |  |  | 113d → 108d |  |  |
| 156 | Задание поставлено | 2013-11-25 → 2013-12-02 (+7d) | 2013-11-25 → 2013-12-02 (+7d) |  |  | 113d → 108d |  |  |
| 157 | Разработка архитектуры дя адаптеров | 2013-11-26 → 2013-12-03 (+7d) | 2013-12-02 → 2013-12-09 (+7d) |  |  | 113d → 108d |  |  |
| 158 | Разработка адаптеров | 2013-12-03 → 2013-12-10 (+7d) | 2013-12-09 → 2013-12-16 (+7d) |  |  | 113d → 108d |  |  |
| 159 | **Разработка коллекций** | 2013-12-10 → 2013-12-17 (+7d) | 2013-12-20 → 2013-12-27 (+7d) |  |  | 113d → 108d |  |  |
| 160 | Коллекции | 2013-12-10 → 2013-12-17 (+7d) | 2013-12-20 → 2013-12-27 (+7d) |  |  | 113d → 108d |  |  |
| 161 | Интеграция по Вх выполнена | 2013-12-20 → 2013-12-27 (+7d) | 2013-12-20 → 2013-12-27 (+7d) |  |  | 113d → 108d |  |  |
| 162 | **Интеграция с CMJ по ОРД** | 2013-11-11 → 2013-11-18 (+7d) | 2013-12-24 → 2014-01-10 (+17d) |  |  | 111.8d → 106.8d |  |  |
| 163 | Конфиг ДОП | 2013-11-11 → 2013-11-18 (+7d) | 2013-11-19 → 2013-11-26 (+7d) |  |  | 111.8d → 106.8d |  |  |

| ID | Task | Start | Finish | Total float |
| --- | --- | --- | --- | --- |
| 164 | Mapper | 2013-11-19 → 2013-11-26 (+7d) | 2013-11-27 → 2013-12-04 (+7d) | 111.8d → 106.8d |
| 165 | **Настраиваемые коллекции** | 2013-11-27 → 2013-12-04 (+7d) | 2013-12-04 → 2013-12-11 (+7d) | 125.8d → 120.8d |
| 166 | **Конфигурация коллекций** | 2013-11-27 → 2013-12-04 (+7d) | 2013-12-03 → 2013-12-10 (+7d) | 125.8d → 120.8d |
| 167 | Типовая иерархия кастомных папок (3шт) | 2013-11-27 → 2013-12-04 (+7d) | 2013-11-29 → 2013-12-06 (+7d) | 125.8d → 120.8d |
| 168 | Системные настройки для ОРД | 2013-11-29 → 2013-12-06 (+7d) | 2013-12-03 → 2013-12-10 (+7d) | 125.8d → 120.8d |
| 169 | Проверка работы | 2013-12-03 → 2013-12-10 (+7d) | 2013-12-04 → 2013-12-11 (+7d) | 125.8d → 120.8d |
| 170 | **Разработка адаптеров для ОРД** | 2013-11-27 → 2013-12-04 (+7d) | 2013-12-11 → 2013-12-18 (+7d) | 111.8d → 106.8d |
| 171 | Задание поставлено | 2013-11-27 → 2013-12-04 (+7d) | 2013-11-27 → 2013-12-04 (+7d) | 111.8d → 106.8d |
| 172 | Разработка архитектуры дя адаптеров | 2013-11-27 → 2013-12-04 (+7d) | 2013-12-04 → 2013-12-11 (+7d) | 111.8d → 106.8d |
| 173 | Разработка адаптеров | 2013-12-04 → 2013-12-11 (+7d) | 2013-12-11 → 2013-12-18 (+7d) | 111.8d → 106.8d |
| 174 | **Разработка коллекций** | 2013-12-11 → 2013-12-18 (+7d) | 2013-12-24 → 2014-01-10 (+17d) | 111.8d → 106.8d |
| 175 | Коллекции | 2013-12-11 → 2013-12-18 (+7d) | 2013-12-24 → 2014-01-10 (+17d) | 111.8d → 106.8d |
| 176 | Интеграция по ОРД выполнена | 2013-12-24 → 2014-01-10 (+17d) | 2013-12-24 → 2014-01-10 (+17d) | 80.8d → 106.8d |
| 177 | **Интеграция с CMJ по "Кейсам"** | 2013-11-11 → 2013-11-18 (+7d) | 2013-12-24 → 2014-01-10 (+17d) | 111.8d → 106.8d |
| 178 | Конфиг ДОП | 2013-11-11 → 2013-11-18 (+7d) | 2013-11-19 → 2013-11-26 (+7d) | 111.8d → 106.8d |
| 179 | Mapper | 2013-11-19 → 2013-11-26 (+7d) | 2013-11-27 → 2013-12-04 (+7d) | 111.8d → 106.8d |
| 180 | **Настраиваемые коллекции** | 2013-11-27 → 2013-12-04 (+7d) | 2013-12-04 → 2013-12-11 (+7d) | 125.8d → 120.8d |
| 181 | **Конфигурация коллекций** | 2013-11-27 → 2013-12-04 (+7d) | 2013-12-03 → 2013-12-10 (+7d) | 125.8d → 120.8d |
| 182 | Типовая иерархия кастомных папок (3шт) | 2013-11-27 → 2013-12-04 (+7d) | 2013-11-29 → 2013-12-06 (+7d) | 125.8d → 120.8d |
| 183 | Системные настройки для Кейс | 2013-11-29 → 2013-12-06 (+7d) | 2013-12-03 → 2013-12-10 (+7d) | 125.8d → 120.8d |
| 184 | Проверка работы | 2013-12-03 → 2013-12-10 (+7d) | 2013-12-04 → 2013-12-11 (+7d) | 125.8d → 120.8d |
| 185 | **Разработка адаптеров для Кейс** | 2013-11-27 → 2013-12-04 (+7d) | 2013-12-11 → 2013-12-18 (+7d) | 111.8d → 106.8d |
| 186 | Задание поставлено | 2013-11-27 → 2013-12-04 (+7d) | 2013-11-27 → 2013-12-04 (+7d) | 111.8d → 106.8d |
| 187 | Разработка архитектуры дя адаптеров | 2013-11-27 → 2013-12-04 (+7d) | 2013-12-04 → 2013-12-11 (+7d) | 111.8d → 106.8d |
| 188 | Разработка адаптеров | 2013-12-04 → 2013-12-11 (+7d) | 2013-12-11 → 2013-12-18 (+7d) | 111.8d → 106.8d |
| 189 | **Разработка коллекций** | 2013-12-11 → 2013-12-18 (+7d) | 2013-12-24 → 2014-01-10 (+17d) | 111.8d → 106.8d |
| 190 | Коллекции | 2013-12-11 → 2013-12-18 (+7d) | 2013-12-24 → 2014-01-10 (+17d) | 111.8d → 106.8d |
| 191 | Интеграция по Кейс выполнена | 2013-12-24 → 2014-01-10 (+17d) | 2013-12-24 → 2014-01-10 (+17d) | 111.8d → 106.8d |
| 192 | **Интеграция с CMJ по Исходящие документам** | 2013-11-06 → 2013-11-13 (+7d) | 2013-12-19 → 2013-12-26 (+7d) | 114.8d → 109.8d |
| 193 | Конфиг ДОП | 2013-11-06 → 2013-11-13 (+7d) | 2013-11-14 → 2013-11-21 (+7d) | 114.8d → 109.8d |
| 194 | Mapper | 2013-11-14 → 2013-11-21 (+7d) | 2013-11-22 → 2013-11-29 (+7d) | 114.8d → 109.8d |
| 195 | **Настраиваемые коллекции** | 2013-11-22 → 2013-11-29 (+7d) | 2013-11-29 → 2013-12-06 (+7d) | 128.8d → 123.8d |
| 196 | **Конфигурация коллекций** | 2013-11-22 → 2013-11-29 (+7d) | 2013-11-28 → 2013-12-05 (+7d) | 128.8d → 123.8d |
| 197 | Типовая иерархия кастомных папок (3шт) | 2013-11-22 → 2013-11-29 (+7d) | 2013-11-26 → 2013-12-03 (+7d) | 128.8d → 123.8d |
| 198 | Системные настройки для Исх | 2013-11-26 → 2013-12-03 (+7d) | 2013-11-28 → 2013-12-05 (+7d) | 128.8d → 123.8d |
| 199 | Проверка работы | 2013-11-28 → 2013-12-05 (+7d) | 2013-11-29 → 2013-12-06 (+7d) | 128.8d → 123.8d |
| 200 | **Разработка адаптеров для Исх** | 2013-11-22 → 2013-11-29 (+7d) | 2013-12-06 → 2013-12-13 (+7d) | 114.8d → 109.8d |
| 201 | Задание поставлено | 2013-11-22 → 2013-11-29 (+7d) | 2013-11-22 → 2013-11-29 (+7d) | 114.8d → 109.8d |
| 202 | Разработка архитектуры дя адаптеров | 2013-11-22 → 2013-11-29 (+7d) | 2013-11-29 → 2013-12-06 (+7d) | 114.8d → 109.8d |
| 203 | Разработка адаптеров | 2013-11-29 → 2013-12-06 (+7d) | 2013-12-06 → 2013-12-13 (+7d) | 114.8d → 109.8d |
| 204 | **Разработка коллекций** | 2013-12-06 → 2013-12-13 (+7d) | 2013-12-19 → 2013-12-26 (+7d) | 114.8d → 109.8d |
| 205 | Коллекции | 2013-12-06 → 2013-12-13 (+7d) | 2013-12-19 → 2013-12-26 (+7d) | 114.8d → 109.8d |
| 206 | Интеграция по Исх выполнена | 2013-12-19 → 2013-12-26 (+7d) | 2013-12-19 → 2013-12-26 (+7d) | 114.8d → 109.8d |
| 207 | **Интеграция с CMJ по самостоятельным поручениям** | 2013-11-11 → 2013-11-18 (+7d) | 2013-12-24 → 2014-01-10 (+17d) | 111.8d → 106.8d |
| 208 | Конфиг ДОП | 2013-11-11 → 2013-11-18 (+7d) | 2013-11-19 → 2013-11-26 (+7d) | 111.8d → 106.8d |
| 209 | Mapper | 2013-11-19 → 2013-11-26 (+7d) | 2013-11-27 → 2013-12-04 (+7d) | 111.8d → 106.8d |
| 210 | **Настраиваемые коллекции** | 2013-11-27 → 2013-12-04 (+7d) | 2013-12-04 → 2013-12-11 (+7d) | 125.8d → 120.8d |
| 211 | **Конфигурация коллекций** | 2013-11-27 → 2013-12-04 (+7d) | 2013-12-03 → 2013-12-10 (+7d) | 125.8d → 120.8d |
| 212 | Типовая иерархия кастомных папок (3шт) | 2013-11-27 → 2013-12-04 (+7d) | 2013-11-29 → 2013-12-06 (+7d) | 125.8d → 120.8d |
| 213 | Системные настройки для Поручений | 2013-11-29 → 2013-12-06 (+7d) | 2013-12-03 → 2013-12-10 (+7d) | 125.8d → 120.8d |
| 214 | Проверка работы | 2013-12-03 → 2013-12-10 (+7d) | 2013-12-04 → 2013-12-11 (+7d) | 125.8d → 120.8d |
| 215 | **Разработка адаптеров для Поручений** | 2013-11-27 → 2013-12-04 (+7d) | 2013-12-11 → 2013-12-18 (+7d) | 111.8d → 106.8d |
| 216 | Задание поставлено | 2013-11-27 → 2013-12-04 (+7d) | 2013-11-27 → 2013-12-04 (+7d) | 111.8d → 106.8d |
| 217 | Разработка архитектуры дя адаптеров | 2013-11-27 → 2013-12-04 (+7d) | 2013-12-04 → 2013-12-11 (+7d) | 111.8d → 106.8d |
| 218 | Разработка адаптеров | 2013-12-04 → 2013-12-11 (+7d) | 2013-12-11 → 2013-12-18 (+7d) | 111.8d → 106.8d |
| 219 | **Разработка коллекций** | 2013-12-11 → 2013-12-18 (+7d) | 2013-12-24 → 2014-01-10 (+17d) | 111.8d → 106.8d |
| 220 | Коллекции | 2013-12-11 → 2013-12-18 (+7d) | 2013-12-24 → 2014-01-10 (+17d) | 111.8d → 106.8d |
| 221 | Интеграция по Поручений выполнена | 2013-12-24 → 2014-01-10 (+17d) | 2013-12-24 → 2014-01-10 (+17d) | 111.8d → 106.8d |
| 222 | **Интеграция с CMJ по ОГ** | 2013-11-11 → 2013-11-18 (+7d) | 2013-12-24 → 2014-01-10 (+17d) | 111.8d → 106.8d |
| 223 | Конфиг ДОП | 2013-11-11 → 2013-11-18 (+7d) | 2013-11-19 → 2013-11-26 (+7d) | 111.8d → 106.8d |
| 224 | Mapper | 2013-11-19 → 2013-11-26 (+7d) | 2013-11-27 → 2013-12-04 (+7d) | 111.8d → 106.8d |
| 225 | **Настраиваемые коллекции** | 2013-11-27 → 2013-12-04 (+7d) | 2013-12-04 → 2013-12-11 (+7d) | 125.8d → 120.8d |
| 226 | **Конфигурация коллекций** | 2013-11-27 → 2013-12-04 (+7d) | 2013-12-03 → 2013-12-10 (+7d) | 125.8d → 120.8d |
| 227 | Типовая иерархия кастомных папок (3шт) | 2013-11-27 → 2013-12-04 (+7d) | 2013-11-29 → 2013-12-06 (+7d) | 125.8d → 120.8d |
| 228 | Системные настройки для ОГ | 2013-11-29 → 2013-12-06 (+7d) | 2013-12-03 → 2013-12-10 (+7d) | 125.8d → 120.8d |
| 229 | Проверка работы | 2013-12-03 → 2013-12-10 (+7d) | 2013-12-04 → 2013-12-11 (+7d) | 125.8d → 120.8d |
| 230 | **Разработка адаптеров для ОГ** | 2013-11-27 → 2013-12-04 (+7d) | 2013-12-11 → 2013-12-18 (+7d) | 111.8d → 106.8d |
| 231 | Задание поставлено | 2013-11-27 → 2013-12-04 (+7d) | 2013-11-27 → 2013-12-04 (+7d) | 111.8d → 106.8d |
| 232 | Разработка архитектуры дя адаптеров | 2013-11-27 → 2013-12-04 (+7d) | 2013-12-04 → 2013-12-11 (+7d) | 111.8d → 106.8d |
| 233 | Разработка адаптеров | 2013-12-04 → 2013-12-11 (+7d) | 2013-12-11 → 2013-12-18 (+7d) | 111.8d → 106.8d |

| ID | Task | Start | Finish | Total float |
| --- | --- | --- | --- | --- |
| 234 | **Разработка коллекций** | 2013-12-11 → 2013-12-18 (+7d) | 2013-12-24 → 2014-01-10 (+17d) | 111.8d → 106.8d |
| 235 | Коллекции | 2013-12-11 → 2013-12-18 (+7d) | 2013-12-24 → 2014-01-10 (+17d) | 111.8d → 106.8d |
| 236 | Интеграция по ОГ выполнена | 2013-12-24 → 2014-01-10 (+17d) | 2013-12-24 → 2014-01-10 (+17d) | 111.8d → 106.8d |
| 268 | **Интеграция с CMJ по Обсуждениям и ознакомлениям** | 2013-11-11 → 2013-11-18 (+7d) | 2013-12-24 → 2014-01-10 (+17d) | 111.8d → 106.8d |
| 269 | Конфиг ДОП | 2013-11-11 → 2013-11-18 (+7d) | 2013-11-19 → 2013-11-26 (+7d) | 111.8d → 106.8d |
| 270 | Mapper | 2013-11-19 → 2013-11-26 (+7d) | 2013-11-27 → 2013-12-04 (+7d) | 111.8d → 106.8d |
| 271 | **Настраиваемые коллекции** | 2013-11-27 → 2013-12-04 (+7d) | 2013-12-04 → 2013-12-11 (+7d) | 125.8d → 120.8d |
| 272 | **Конфигурация коллекций** | 2013-11-27 → 2013-12-04 (+7d) | 2013-12-03 → 2013-12-10 (+7d) | 125.8d → 120.8d |
| 273 | Типовая иерархия кастомных папок (3шт) | 2013-11-27 → 2013-12-04 (+7d) | 2013-11-29 → 2013-12-06 (+7d) | 125.8d → 120.8d |
| 274 | Системные настройки для ОО | 2013-11-29 → 2013-12-06 (+7d) | 2013-12-03 → 2013-12-10 (+7d) | 125.8d → 120.8d |
| 275 | Проверка работы | 2013-12-03 → 2013-12-10 (+7d) | 2013-12-04 → 2013-12-11 (+7d) | 125.8d → 120.8d |
| 276 | **Разработка адаптеров для ОО** | 2013-11-27 → 2013-12-04 (+7d) | 2013-12-11 → 2013-12-18 (+7d) | 111.8d → 106.8d |
| 277 | Задание поставлено | 2013-11-27 → 2013-12-04 (+7d) | 2013-11-27 → 2013-12-04 (+7d) | 111.8d → 106.8d |
| 278 | Разработка архитектуры дя адаптеров | 2013-11-27 → 2013-12-04 (+7d) | 2013-12-04 → 2013-12-11 (+7d) | 111.8d → 106.8d |
| 279 | Разработка адаптеров | 2013-12-04 → 2013-12-11 (+7d) | 2013-12-11 → 2013-12-18 (+7d) | 111.8d → 106.8d |
| 280 | **Разработка коллекций** | 2013-12-11 → 2013-12-18 (+7d) | 2013-12-24 → 2014-01-10 (+17d) | 111.8d → 106.8d |
| 281 | Коллекции | 2013-12-11 → 2013-12-18 (+7d) | 2013-12-24 → 2014-01-10 (+17d) | 111.8d → 106.8d |
| 282 | Интеграция по ОО выполнена | 2013-12-24 → 2014-01-10 (+17d) | 2013-12-24 → 2014-01-10 (+17d) | 111.8d → 106.8d |
| 283 | **Интеграция с CMJ по Формированию дел** | 2013-11-11 → 2013-11-18 (+7d) | 2013-12-24 → 2014-01-10 (+17d) | 111.8d → 106.8d |
| 284 | Конфиг ДОП | 2013-11-11 → 2013-11-18 (+7d) | 2013-11-19 → 2013-11-26 (+7d) | 111.8d → 106.8d |
| 285 | Mapper | 2013-11-19 → 2013-11-26 (+7d) | 2013-11-27 → 2013-12-04 (+7d) | 111.8d → 106.8d |
| 286 | **Настраиваемые коллекции** | 2013-11-27 → 2013-12-04 (+7d) | 2013-12-04 → 2013-12-11 (+7d) | 125.8d → 120.8d |
| 287 | **Конфигурация коллекций** | 2013-11-27 → 2013-12-04 (+7d) | 2013-12-03 → 2013-12-10 (+7d) | 125.8d → 120.8d |
| 288 | Типовая иерархия кастомных папок (3шт) | 2013-11-27 → 2013-12-04 (+7d) | 2013-11-29 → 2013-12-06 (+7d) | 125.8d → 120.8d |
| 289 | Системные настройки для ФД | 2013-11-29 → 2013-12-06 (+7d) | 2013-12-03 → 2013-12-10 (+7d) | 125.8d → 120.8d |
| 290 | Проверка работы | 2013-12-03 → 2013-12-10 (+7d) | 2013-12-04 → 2013-12-11 (+7d) | 125.8d → 120.8d |
| 291 | **Разработка адаптеров для ФД** | 2013-11-27 → 2013-12-04 (+7d) | 2013-12-11 → 2013-12-18 (+7d) | 111.8d → 106.8d |
| 292 | Задание поставлено | 2013-11-27 → 2013-12-04 (+7d) | 2013-11-27 → 2013-12-04 (+7d) | 111.8d → 106.8d |
| 293 | Разработка архитектуры дя адаптеров | 2013-11-27 → 2013-12-04 (+7d) | 2013-12-04 → 2013-12-11 (+7d) | 111.8d → 106.8d |
| 294 | Разработка адаптеров | 2013-12-04 → 2013-12-11 (+7d) | 2013-12-11 → 2013-12-18 (+7d) | 111.8d → 106.8d |
| 295 | **Разработка коллекций** | 2013-12-11 → 2013-12-18 (+7d) | 2013-12-24 → 2014-01-10 (+17d) | 111.8d → 106.8d |
| 296 | Коллекции | 2013-12-11 → 2013-12-18 (+7d) | 2013-12-24 → 2014-01-10 (+17d) | 111.8d → 106.8d |
| 297 | Интеграция по ФД выполнена | 2013-12-24 → 2014-01-10 (+17d) | 2013-12-24 → 2014-01-10 (+17d) | 111.8d → 106.8d |

## Version 48 (saved 2013-11-06)

Last finish stays 2014-09-11.

Added:

| ID | Task | Duration | Start | Finish | Predecessors | Resources |
| --- | --- | --- | --- | --- | --- | --- |
| 124 | **Заливка данных для демонстрации** | 4d | 2013-11-13 | 2013-11-19 |  |  |
| 125 | Подготовка задачи | 1d | 2013-11-13 | 2013-11-14 |  | Тугушев Илья [80%] |
| 126 | Написание скриптов заливки | 3d | 2013-11-14 | 2013-11-19 | 125 | Евгений Сафроненко |

Changed:

| ID | Task | Start | Finish | Duration | Complete | Total float |
| --- | --- | --- | --- | --- | --- | --- |
| 76 | **Интеграция с CMJ по Внутренним Документам** |  | 2013-11-18 → 2013-11-19 (+1d) | 40.2d? → 41.2d? | 60% → 59% | 75.8d → 74.8d |
| 123 | **Инструмент заполнения** |  | 2013-11-18 → 2013-11-19 (+1d) | 3d? → 4d? |  | 75.8d → 74.8d |
| 150 | **Интеграция с CMJ по Входящим документам** | 2013-11-18 → 2013-11-19 (+1d) | 2013-12-27 → 2014-01-09 (+13d) |  |  | 108d → 107d |
| 151 | Конфиг ДОП | 2013-11-18 → 2013-11-19 (+1d) | 2013-11-26 → 2013-11-27 (+1d) |  |  | 108d → 107d |
| 152 | Mapper | 2013-11-26 → 2013-11-27 (+1d) | 2013-12-02 → 2013-12-03 (+1d) |  |  | 108d → 107d |
| 153 | **Настраиваемые коллекции** | 2013-12-03 → 2013-12-04 (+1d) | 2013-12-09 → 2013-12-10 (+1d) |  |  | 122d → 121d |
| 154 | **Конфигурация коллекций** | 2013-12-03 → 2013-12-04 (+1d) | 2013-12-06 → 2013-12-09 (+3d) |  |  | 122d → 121d |
| 155 | Типовая иерархия кастомных папок (3шт) | 2013-12-03 → 2013-12-04 (+1d) | 2013-12-04 → 2013-12-05 (+1d) |  |  | 122d → 121d |
| 156 | Системные настройки для Вх | 2013-12-05 → 2013-12-06 (+1d) | 2013-12-06 → 2013-12-09 (+3d) |  |  | 122d → 121d |
| 157 | Проверка работы | 2013-12-09 → 2013-12-10 (+1d) | 2013-12-09 → 2013-12-10 (+1d) |  |  | 122d → 121d |
| 158 | **Разработка адаптеров для Вх** | 2013-12-02 → 2013-12-03 (+1d) | 2013-12-16 → 2013-12-17 (+1d) |  |  | 108d → 107d |
| 159 | Задание поставлено | 2013-12-02 → 2013-12-03 (+1d) | 2013-12-02 → 2013-12-03 (+1d) |  |  | 108d → 107d |
| 160 | Разработка архитектуры дя адаптеров | 2013-12-03 → 2013-12-04 (+1d) | 2013-12-09 → 2013-12-10 (+1d) |  |  | 108d → 107d |
| 161 | Разработка адаптеров | 2013-12-10 → 2013-12-11 (+1d) | 2013-12-16 → 2013-12-17 (+1d) |  |  | 108d → 107d |
| 162 | **Разработка коллекций** | 2013-12-17 → 2013-12-18 (+1d) | 2013-12-27 → 2014-01-09 (+13d) |  |  | 108d → 107d |
| 163 | Коллекции | 2013-12-17 → 2013-12-18 (+1d) | 2013-12-27 → 2014-01-09 (+13d) |  |  | 108d → 107d |
| 164 | Интеграция по Вх выполнена | 2013-12-27 → 2014-01-09 (+13d) | 2013-12-27 → 2014-01-09 (+13d) |  |  | 108d → 107d |
| 165 | **Интеграция с CMJ по ОРД** | 2013-11-18 → 2013-11-19 (+1d) | 2014-01-10 → 2014-01-13 (+3d) |  |  | 106.8d → 105.8d |
| 166 | Конфиг ДОП | 2013-11-18 → 2013-11-19 (+1d) | 2013-11-26 → 2013-11-27 (+1d) |  |  | 106.8d → 105.8d |
| 167 | Mapper | 2013-11-26 → 2013-11-27 (+1d) | 2013-12-04 → 2013-12-05 (+1d) |  |  | 106.8d → 105.8d |
| 168 | **Настраиваемые коллекции** | 2013-12-04 → 2013-12-05 (+1d) | 2013-12-11 → 2013-12-12 (+1d) |  |  | 120.8d → 119.8d |
| 169 | **Конфигурация коллекций** | 2013-12-04 → 2013-12-05 (+1d) | 2013-12-10 → 2013-12-11 (+1d) |  |  | 120.8d → 119.8d |
| 170 | Типовая иерархия кастомных папок (3шт) | 2013-12-04 → 2013-12-05 (+1d) | 2013-12-06 → 2013-12-09 (+3d) |  |  | 120.8d → 119.8d |
| 171 | Системные настройки для ОРД | 2013-12-06 → 2013-12-09 (+3d) | 2013-12-10 → 2013-12-11 (+1d) |  |  | 120.8d → 119.8d |
| 172 | Проверка работы | 2013-12-10 → 2013-12-11 (+1d) | 2013-12-11 → 2013-12-12 (+1d) |  |  | 120.8d → 119.8d |
| 173 | **Разработка адаптеров для ОРД** | 2013-12-04 → 2013-12-05 (+1d) | 2013-12-18 → 2013-12-19 (+1d) |  |  | 106.8d → 105.8d |
| 174 | Задание поставлено | 2013-12-04 → 2013-12-05 (+1d) | 2013-12-04 → 2013-12-05 (+1d) |  |  | 106.8d → 105.8d |
| 175 | Разработка архитектуры дя адаптеров | 2013-12-04 → 2013-12-05 (+1d) | 2013-12-11 → 2013-12-12 (+1d) |  |  | 106.8d → 105.8d |
| 176 | Разработка адаптеров | 2013-12-11 → 2013-12-12 (+1d) | 2013-12-18 → 2013-12-19 (+1d) |  |  | 106.8d → 105.8d |
| 177 | **Разработка коллекций** | 2013-12-18 → 2013-12-19 (+1d) | 2014-01-10 → 2014-01-13 (+3d) |  |  | 106.8d → 105.8d |
| 178 | Коллекции | 2013-12-18 → 2013-12-19 (+1d) | 2014-01-10 → 2014-01-13 (+3d) |  |  | 106.8d → 105.8d |
| 179 | Интеграция по ОРД выполнена | 2014-01-10 → 2014-01-13 (+3d) | 2014-01-10 → 2014-01-13 (+3d) |  |  | 106.8d → 105.8d |
| 180 | **Интеграция с CMJ по "Кейсам"** | 2013-11-18 → 2013-11-19 (+1d) | 2014-01-10 → 2014-01-13 (+3d) |  |  | 106.8d → 105.8d |
| 181 | Конфиг ДОП | 2013-11-18 → 2013-11-19 (+1d) | 2013-11-26 → 2013-11-27 (+1d) |  |  | 106.8d → 105.8d |
| 182 | Mapper | 2013-11-26 → 2013-11-27 (+1d) | 2013-12-04 → 2013-12-05 (+1d) |  |  | 106.8d → 105.8d |
| 183 | **Настраиваемые коллекции** | 2013-12-04 → 2013-12-05 (+1d) | 2013-12-11 → 2013-12-12 (+1d) |  |  | 120.8d → 119.8d |
| 184 | **Конфигурация коллекций** | 2013-12-04 → 2013-12-05 (+1d) | 2013-12-10 → 2013-12-11 (+1d) |  |  | 120.8d → 119.8d |
| 185 | Типовая иерархия кастомных папок (3шт) | 2013-12-04 → 2013-12-05 (+1d) | 2013-12-06 → 2013-12-09 (+3d) |  |  | 120.8d → 119.8d |
| 186 | Системные настройки для Кейс | 2013-12-06 → 2013-12-09 (+3d) | 2013-12-10 → 2013-12-11 (+1d) |  |  | 120.8d → 119.8d |
| 187 | Проверка работы | 2013-12-10 → 2013-12-11 (+1d) | 2013-12-11 → 2013-12-12 (+1d) |  |  | 120.8d → 119.8d |
| 188 | **Разработка адаптеров для Кейс** | 2013-12-04 → 2013-12-05 (+1d) | 2013-12-18 → 2013-12-19 (+1d) |  |  | 106.8d → 105.8d |
| 189 | Задание поставлено | 2013-12-04 → 2013-12-05 (+1d) | 2013-12-04 → 2013-12-05 (+1d) |  |  | 106.8d → 105.8d |
| 190 | Разработка архитектуры дя адаптеров | 2013-12-04 → 2013-12-05 (+1d) | 2013-12-11 → 2013-12-12 (+1d) |  |  | 106.8d → 105.8d |
| 191 | Разработка адаптеров | 2013-12-11 → 2013-12-12 (+1d) | 2013-12-18 → 2013-12-19 (+1d) |  |  | 106.8d → 105.8d |
| 192 | **Разработка коллекций** | 2013-12-18 → 2013-12-19 (+1d) | 2014-01-10 → 2014-01-13 (+3d) |  |  | 106.8d → 105.8d |
| 193 | Коллекции | 2013-12-18 → 2013-12-19 (+1d) | 2014-01-10 → 2014-01-13 (+3d) |  |  | 106.8d → 105.8d |
| 194 | Интеграция по Кейс выполнена | 2014-01-10 → 2014-01-13 (+3d) | 2014-01-10 → 2014-01-13 (+3d) |  |  | 106.8d → 105.8d |
| 210 | **Интеграция с CMJ по самостоятельным поручениям** | 2013-11-18 → 2013-11-19 (+1d) | 2014-01-10 → 2014-01-13 (+3d) |  |  | 106.8d → 105.8d |
| 211 | Конфиг ДОП | 2013-11-18 → 2013-11-19 (+1d) | 2013-11-26 → 2013-11-27 (+1d) |  |  | 106.8d → 105.8d |
| 212 | Mapper | 2013-11-26 → 2013-11-27 (+1d) | 2013-12-04 → 2013-12-05 (+1d) |  |  | 106.8d → 105.8d |
| 213 | **Настраиваемые коллекции** | 2013-12-04 → 2013-12-05 (+1d) | 2013-12-11 → 2013-12-12 (+1d) |  |  | 120.8d → 119.8d |
| 214 | **Конфигурация коллекций** | 2013-12-04 → 2013-12-05 (+1d) | 2013-12-10 → 2013-12-11 (+1d) |  |  | 120.8d → 119.8d |
| 215 | Типовая иерархия кастомных папок (3шт) | 2013-12-04 → 2013-12-05 (+1d) | 2013-12-06 → 2013-12-09 (+3d) |  |  | 120.8d → 119.8d |
| 216 | Системные настройки для Поручений | 2013-12-06 → 2013-12-09 (+3d) | 2013-12-10 → 2013-12-11 (+1d) |  |  | 120.8d → 119.8d |
| 217 | Проверка работы | 2013-12-10 → 2013-12-11 (+1d) | 2013-12-11 → 2013-12-12 (+1d) |  |  | 120.8d → 119.8d |
| 218 | **Разработка адаптеров для Поручений** | 2013-12-04 → 2013-12-05 (+1d) | 2013-12-18 → 2013-12-19 (+1d) |  |  | 106.8d → 105.8d |
| 219 | Задание поставлено | 2013-12-04 → 2013-12-05 (+1d) | 2013-12-04 → 2013-12-05 (+1d) |  |  | 106.8d → 105.8d |
| 220 | Разработка архитектуры дя адаптеров | 2013-12-04 → 2013-12-05 (+1d) | 2013-12-11 → 2013-12-12 (+1d) |  |  | 106.8d → 105.8d |
| 221 | Разработка адаптеров | 2013-12-11 → 2013-12-12 (+1d) | 2013-12-18 → 2013-12-19 (+1d) |  |  | 106.8d → 105.8d |
| 222 | **Разработка коллекций** | 2013-12-18 → 2013-12-19 (+1d) | 2014-01-10 → 2014-01-13 (+3d) |  |  | 106.8d → 105.8d |
| 223 | Коллекции | 2013-12-18 → 2013-12-19 (+1d) | 2014-01-10 → 2014-01-13 (+3d) |  |  | 106.8d → 105.8d |
| 224 | Интеграция по Поручений выполнена | 2014-01-10 → 2014-01-13 (+3d) | 2014-01-10 → 2014-01-13 (+3d) |  |  | 106.8d → 105.8d |
| 225 | **Интеграция с CMJ по ОГ** | 2013-11-18 → 2013-11-19 (+1d) | 2014-01-10 → 2014-01-13 (+3d) |  |  | 106.8d → 105.8d |
| 226 | Конфиг ДОП | 2013-11-18 → 2013-11-19 (+1d) | 2013-11-26 → 2013-11-27 (+1d) |  |  | 106.8d → 105.8d |
| 227 | Mapper | 2013-11-26 → 2013-11-27 (+1d) | 2013-12-04 → 2013-12-05 (+1d) |  |  | 106.8d → 105.8d |
| 228 | **Настраиваемые коллекции** | 2013-12-04 → 2013-12-05 (+1d) | 2013-12-11 → 2013-12-12 (+1d) |  |  | 120.8d → 119.8d |
| 229 | **Конфигурация коллекций** | 2013-12-04 → 2013-12-05 (+1d) | 2013-12-10 → 2013-12-11 (+1d) |  |  | 120.8d → 119.8d |
| 230 | Типовая иерархия кастомных папок (3шт) | 2013-12-04 → 2013-12-05 (+1d) | 2013-12-06 → 2013-12-09 (+3d) |  |  | 120.8d → 119.8d |
| 231 | Системные настройки для ОГ | 2013-12-06 → 2013-12-09 (+3d) | 2013-12-10 → 2013-12-11 (+1d) |  |  | 120.8d → 119.8d |
| 232 | Проверка работы | 2013-12-10 → 2013-12-11 (+1d) | 2013-12-11 → 2013-12-12 (+1d) |  |  | 120.8d → 119.8d |

| ID | Task | Start | Finish | Total float |
| --- | --- | --- | --- | --- |
| 233 | **Разработка адаптеров для ОГ** | 2013-12-04 → 2013-12-05 (+1d) | 2013-12-18 → 2013-12-19 (+1d) | 106.8d → 105.8d |
| 234 | Задание поставлено | 2013-12-04 → 2013-12-05 (+1d) | 2013-12-04 → 2013-12-05 (+1d) | 106.8d → 105.8d |
| 235 | Разработка архитектуры дя адаптеров | 2013-12-04 → 2013-12-05 (+1d) | 2013-12-11 → 2013-12-12 (+1d) | 106.8d → 105.8d |
| 236 | Разработка адаптеров | 2013-12-11 → 2013-12-12 (+1d) | 2013-12-18 → 2013-12-19 (+1d) | 106.8d → 105.8d |
| 237 | **Разработка коллекций** | 2013-12-18 → 2013-12-19 (+1d) | 2014-01-10 → 2014-01-13 (+3d) | 106.8d → 105.8d |
| 238 | Коллекции | 2013-12-18 → 2013-12-19 (+1d) | 2014-01-10 → 2014-01-13 (+3d) | 106.8d → 105.8d |
| 239 | Интеграция по ОГ выполнена | 2014-01-10 → 2014-01-13 (+3d) | 2014-01-10 → 2014-01-13 (+3d) | 106.8d → 105.8d |
| 271 | **Интеграция с CMJ по Обсуждениям и ознакомлениям** | 2013-11-18 → 2013-11-19 (+1d) | 2014-01-10 → 2014-01-13 (+3d) | 106.8d → 105.8d |
| 272 | Конфиг ДОП | 2013-11-18 → 2013-11-19 (+1d) | 2013-11-26 → 2013-11-27 (+1d) | 106.8d → 105.8d |
| 273 | Mapper | 2013-11-26 → 2013-11-27 (+1d) | 2013-12-04 → 2013-12-05 (+1d) | 106.8d → 105.8d |
| 274 | **Настраиваемые коллекции** | 2013-12-04 → 2013-12-05 (+1d) | 2013-12-11 → 2013-12-12 (+1d) | 120.8d → 119.8d |
| 275 | **Конфигурация коллекций** | 2013-12-04 → 2013-12-05 (+1d) | 2013-12-10 → 2013-12-11 (+1d) | 120.8d → 119.8d |
| 276 | Типовая иерархия кастомных папок (3шт) | 2013-12-04 → 2013-12-05 (+1d) | 2013-12-06 → 2013-12-09 (+3d) | 120.8d → 119.8d |
| 277 | Системные настройки для ОО | 2013-12-06 → 2013-12-09 (+3d) | 2013-12-10 → 2013-12-11 (+1d) | 120.8d → 119.8d |
| 278 | Проверка работы | 2013-12-10 → 2013-12-11 (+1d) | 2013-12-11 → 2013-12-12 (+1d) | 120.8d → 119.8d |
| 279 | **Разработка адаптеров для ОО** | 2013-12-04 → 2013-12-05 (+1d) | 2013-12-18 → 2013-12-19 (+1d) | 106.8d → 105.8d |
| 280 | Задание поставлено | 2013-12-04 → 2013-12-05 (+1d) | 2013-12-04 → 2013-12-05 (+1d) | 106.8d → 105.8d |
| 281 | Разработка архитектуры дя адаптеров | 2013-12-04 → 2013-12-05 (+1d) | 2013-12-11 → 2013-12-12 (+1d) | 106.8d → 105.8d |
| 282 | Разработка адаптеров | 2013-12-11 → 2013-12-12 (+1d) | 2013-12-18 → 2013-12-19 (+1d) | 106.8d → 105.8d |
| 283 | **Разработка коллекций** | 2013-12-18 → 2013-12-19 (+1d) | 2014-01-10 → 2014-01-13 (+3d) | 106.8d → 105.8d |
| 284 | Коллекции | 2013-12-18 → 2013-12-19 (+1d) | 2014-01-10 → 2014-01-13 (+3d) | 106.8d → 105.8d |
| 285 | Интеграция по ОО выполнена | 2014-01-10 → 2014-01-13 (+3d) | 2014-01-10 → 2014-01-13 (+3d) | 106.8d → 105.8d |
| 286 | **Интеграция с CMJ по Формированию дел** | 2013-11-18 → 2013-11-19 (+1d) | 2014-01-10 → 2014-01-13 (+3d) | 106.8d → 105.8d |
| 287 | Конфиг ДОП | 2013-11-18 → 2013-11-19 (+1d) | 2013-11-26 → 2013-11-27 (+1d) | 106.8d → 105.8d |
| 288 | Mapper | 2013-11-26 → 2013-11-27 (+1d) | 2013-12-04 → 2013-12-05 (+1d) | 106.8d → 105.8d |
| 289 | **Настраиваемые коллекции** | 2013-12-04 → 2013-12-05 (+1d) | 2013-12-11 → 2013-12-12 (+1d) | 120.8d → 119.8d |
| 290 | **Конфигурация коллекций** | 2013-12-04 → 2013-12-05 (+1d) | 2013-12-10 → 2013-12-11 (+1d) | 120.8d → 119.8d |
| 291 | Типовая иерархия кастомных папок (3шт) | 2013-12-04 → 2013-12-05 (+1d) | 2013-12-06 → 2013-12-09 (+3d) | 120.8d → 119.8d |
| 292 | Системные настройки для ФД | 2013-12-06 → 2013-12-09 (+3d) | 2013-12-10 → 2013-12-11 (+1d) | 120.8d → 119.8d |
| 293 | Проверка работы | 2013-12-10 → 2013-12-11 (+1d) | 2013-12-11 → 2013-12-12 (+1d) | 120.8d → 119.8d |
| 294 | **Разработка адаптеров для ФД** | 2013-12-04 → 2013-12-05 (+1d) | 2013-12-18 → 2013-12-19 (+1d) | 106.8d → 105.8d |
| 295 | Задание поставлено | 2013-12-04 → 2013-12-05 (+1d) | 2013-12-04 → 2013-12-05 (+1d) | 106.8d → 105.8d |
| 296 | Разработка архитектуры дя адаптеров | 2013-12-04 → 2013-12-05 (+1d) | 2013-12-11 → 2013-12-12 (+1d) | 106.8d → 105.8d |
| 297 | Разработка адаптеров | 2013-12-11 → 2013-12-12 (+1d) | 2013-12-18 → 2013-12-19 (+1d) | 106.8d → 105.8d |
| 298 | **Разработка коллекций** | 2013-12-18 → 2013-12-19 (+1d) | 2014-01-10 → 2014-01-13 (+3d) | 106.8d → 105.8d |
| 299 | Коллекции | 2013-12-18 → 2013-12-19 (+1d) | 2014-01-10 → 2014-01-13 (+3d) | 106.8d → 105.8d |
| 300 | Интеграция по ФД выполнена | 2014-01-10 → 2014-01-13 (+3d) | 2014-01-10 → 2014-01-13 (+3d) | 106.8d → 105.8d |

## Version 49 (saved 2013-11-19)

Note of the change: от 20

Last finish stays 2014-09-11.

Added:

| ID | Task | Duration | Start | Finish | Predecessors | Resources |
| --- | --- | --- | --- | --- | --- | --- |
| 122 | **Адаптация CMJ-server** | 2d | 2013-11-20 | 2013-11-21 | 121 |  |
| 123 | Подмена РБД для CMJ-Server | 2d | 2013-11-20 | 2013-11-21 |  | Андрей Карандей |
| 124 | Имплементация аналогов @-функций для Sochi-server | 2d | 2013-11-20 | 2013-11-21 |  | (БТЛ) Михаил Ларин |

Changed:

| ID | Task | Start | Finish | Duration | Complete | Total float |
| --- | --- | --- | --- | --- | --- | --- |
| 1 | **Разработка версии CM4/5** |  |  |  | 29% → 28% |  |
| 20 | **Проектирование и формирование ядра системы** |  |  |  | 36% → 35% |  |
| 76 | **Интеграция с CMJ по Внутренним Документам** |  | 2013-11-19 → 2013-11-25 (+6d) | 41.2d? → 46d? | 59% → 54% | 74.8d → 70d |
| 112 | **Разработка коллекций** |  | 2013-11-13 → 2013-11-19 (+6d) | 11.2d → 16d | 4% → 3% | 78.8d → 74d |
| 116 | Коллекции СС |  | 2013-11-07 → 2013-11-11 (+4d) | 3d → 5d |  | 75.8d → 70d |
| 117 | Коллекции Каталога |  | 2013-11-07 → 2013-11-11 (+4d) | 3d → 5d |  | 75.8d → 70d |
| 118 | Коллекции СО |  | 2013-11-07 → 2013-11-11 (+4d) | 3d → 5d |  | 79d → 76d |
| 119 | Коллекции ВнД | 2013-11-08 → 2013-11-12 (+4d) | 2013-11-13 → 2013-11-19 (+6d) | 3.2d → 6d |  | 75.8d → 70d |
| 120 | Коллекции СпО | 2013-11-08 → 2013-11-12 (+4d) | 2013-11-13 → 2013-11-19 (+6d) | 3.2d → 6d |  | 75.8d → 70d |
| 121 | ВнД | 2013-11-13 → 2013-11-19 (+6d) | 2013-11-13 → 2013-11-19 (+6d) |  |  | 75.8d → 70d |
| 125 | Объединение War | 2013-11-13 → 2013-11-20 (+7d) | 2013-11-14 → 2013-11-20 (+6d) |  |  | 77.8d → 73d |
| 126 | **Инструмент заполнения** | 2013-11-13 → 2013-11-20 (+7d) | 2013-11-19 → 2013-11-25 (+6d) |  |  | 74.8d → 70d |
| 127 | **Заливка данных для демонстрации** | 2013-11-13 → 2013-11-20 (+7d) | 2013-11-19 → 2013-11-25 (+6d) |  |  | 74.8d → 70d |
| 128 | Подготовка задачи | 2013-11-13 → 2013-11-20 (+7d) | 2013-11-14 → 2013-11-20 (+6d) |  |  | 74.8d → 70d |
| 129 | Написание скриптов заливки | 2013-11-14 → 2013-11-21 (+7d) | 2013-11-19 → 2013-11-25 (+6d) |  |  | 74.8d → 70d |
| 130 | Инструмент заполнения Каталога | 2013-11-13 → 2013-11-20 (+7d) | 2013-11-18 → 2013-11-22 (+4d) |  |  | 75.8d → 71d |
| 131 | Инструмент заполнения СС | 2013-11-13 → 2013-11-20 (+7d) | 2013-11-18 → 2013-11-22 (+4d) |  |  | 75.8d → 71d |
| 132 | Инструмент заполнения Портала | 2013-11-13 → 2013-11-20 (+7d) | 2013-11-18 → 2013-11-22 (+4d) |  |  | 75.8d → 71d |
| 133 | Инструмент заполнения СО | 2013-11-13 → 2013-11-20 (+7d) | 2013-11-18 → 2013-11-22 (+4d) |  |  | 75.8d → 71d |
| 134 | Инструмент заполнения СпО | 2013-11-13 → 2013-11-20 (+7d) | 2013-11-18 → 2013-11-22 (+4d) |  |  | 75.8d → 71d |
| 153 | **Интеграция с CMJ по Входящим документам** | 2013-11-19 → 2013-11-26 (+7d) | 2014-01-09 → 2014-01-16 (+7d) |  |  | 107d → 102.2d |
| 154 | Конфиг ДОП | 2013-11-19 → 2013-11-26 (+7d) | 2013-11-27 → 2013-12-03 (+6d) |  |  | 107d → 102.2d |
| 155 | Mapper | 2013-11-27 → 2013-12-04 (+7d) | 2013-12-03 → 2013-12-10 (+7d) |  |  | 107d → 102.2d |
| 156 | **Настраиваемые коллекции** | 2013-12-04 → 2013-12-10 (+6d) | 2013-12-10 → 2013-12-17 (+7d) |  |  | 121d → 116.2d |
| 157 | **Конфигурация коллекций** | 2013-12-04 → 2013-12-10 (+6d) | 2013-12-09 → 2013-12-16 (+7d) |  |  | 121d → 116.2d |
| 158 | Типовая иерархия кастомных папок (3шт) | 2013-12-04 → 2013-12-10 (+6d) | 2013-12-05 → 2013-12-12 (+7d) |  |  | 121d → 116.2d |
| 159 | Системные настройки для Вх | 2013-12-06 → 2013-12-12 (+6d) | 2013-12-09 → 2013-12-16 (+7d) |  |  | 121d → 116.2d |
| 160 | Проверка работы | 2013-12-10 → 2013-12-16 (+6d) | 2013-12-10 → 2013-12-17 (+7d) |  |  | 121d → 116.2d |
| 161 | **Разработка адаптеров для Вх** | 2013-12-03 → 2013-12-10 (+7d) | 2013-12-17 → 2013-12-24 (+7d) |  |  | 107d → 102.2d |
| 162 | Задание поставлено | 2013-12-03 → 2013-12-10 (+7d) | 2013-12-03 → 2013-12-10 (+7d) |  |  | 107d → 102.2d |
| 163 | Разработка архитектуры дя адаптеров | 2013-12-04 → 2013-12-10 (+6d) | 2013-12-10 → 2013-12-17 (+7d) |  |  | 107d → 102.2d |
| 164 | Разработка адаптеров | 2013-12-11 → 2013-12-17 (+6d) | 2013-12-17 → 2013-12-24 (+7d) |  |  | 107d → 102.2d |
| 165 | **Разработка коллекций** | 2013-12-18 → 2013-12-24 (+6d) | 2014-01-09 → 2014-01-16 (+7d) |  |  | 107d → 102.2d |
| 166 | Коллекции | 2013-12-18 → 2013-12-24 (+6d) | 2014-01-09 → 2014-01-16 (+7d) |  |  | 107d → 102.2d |
| 167 | Интеграция по Вх выполнена | 2014-01-09 → 2014-01-16 (+7d) | 2014-01-09 → 2014-01-16 (+7d) |  |  | 107d → 102.2d |
| 168 | **Интеграция с CMJ по ОРД** | 2013-11-19 → 2013-11-26 (+7d) | 2014-01-13 → 2014-01-17 (+4d) |  |  | 105.8d → 101d |
| 169 | Конфиг ДОП | 2013-11-19 → 2013-11-26 (+7d) | 2013-11-27 → 2013-12-03 (+6d) |  |  | 105.8d → 101d |
| 170 | Mapper | 2013-11-27 → 2013-12-04 (+7d) | 2013-12-05 → 2013-12-11 (+6d) |  |  | 105.8d → 101d |
| 171 | **Настраиваемые коллекции** | 2013-12-05 → 2013-12-12 (+7d) | 2013-12-12 → 2013-12-18 (+6d) |  |  | 119.8d → 115d |
| 172 | **Конфигурация коллекций** | 2013-12-05 → 2013-12-12 (+7d) | 2013-12-11 → 2013-12-17 (+6d) |  |  | 119.8d → 115d |
| 173 | Типовая иерархия кастомных папок (3шт) | 2013-12-05 → 2013-12-12 (+7d) | 2013-12-09 → 2013-12-13 (+4d) |  |  | 119.8d → 115d |
| 174 | Системные настройки для ОРД | 2013-12-09 → 2013-12-16 (+7d) | 2013-12-11 → 2013-12-17 (+6d) |  |  | 119.8d → 115d |
| 175 | Проверка работы | 2013-12-11 → 2013-12-18 (+7d) | 2013-12-12 → 2013-12-18 (+6d) |  |  | 119.8d → 115d |
| 176 | **Разработка адаптеров для ОРД** | 2013-12-05 → 2013-12-11 (+6d) | 2013-12-19 → 2013-12-25 (+6d) |  |  | 105.8d → 101d |
| 177 | Задание поставлено | 2013-12-05 → 2013-12-11 (+6d) | 2013-12-05 → 2013-12-11 (+6d) |  |  | 105.8d → 101d |
| 178 | Разработка архитектуры дя адаптеров | 2013-12-05 → 2013-12-12 (+7d) | 2013-12-12 → 2013-12-18 (+6d) |  |  | 105.8d → 101d |
| 179 | Разработка адаптеров | 2013-12-12 → 2013-12-19 (+7d) | 2013-12-19 → 2013-12-25 (+6d) |  |  | 105.8d → 101d |
| 180 | **Разработка коллекций** | 2013-12-19 → 2013-12-26 (+7d) | 2014-01-13 → 2014-01-17 (+4d) |  |  | 105.8d → 101d |
| 181 | Коллекции | 2013-12-19 → 2013-12-26 (+7d) | 2014-01-13 → 2014-01-17 (+4d) |  |  | 105.8d → 101d |
| 182 | Интеграция по ОРД выполнена | 2014-01-13 → 2014-01-17 (+4d) | 2014-01-13 → 2014-01-17 (+4d) |  |  | 105.8d → 101d |
| 183 | **Интеграция с CMJ по "Кейсам"** | 2013-11-19 → 2013-11-26 (+7d) | 2014-01-13 → 2014-01-17 (+4d) |  |  | 105.8d → 101d |
| 184 | Конфиг ДОП | 2013-11-19 → 2013-11-26 (+7d) | 2013-11-27 → 2013-12-03 (+6d) |  |  | 105.8d → 101d |
| 185 | Mapper | 2013-11-27 → 2013-12-04 (+7d) | 2013-12-05 → 2013-12-11 (+6d) |  |  | 105.8d → 101d |
| 186 | **Настраиваемые коллекции** | 2013-12-05 → 2013-12-12 (+7d) | 2013-12-12 → 2013-12-18 (+6d) |  |  | 119.8d → 115d |
| 187 | **Конфигурация коллекций** | 2013-12-05 → 2013-12-12 (+7d) | 2013-12-11 → 2013-12-17 (+6d) |  |  | 119.8d → 115d |
| 188 | Типовая иерархия кастомных папок (3шт) | 2013-12-05 → 2013-12-12 (+7d) | 2013-12-09 → 2013-12-13 (+4d) |  |  | 119.8d → 115d |
| 189 | Системные настройки для Кейс | 2013-12-09 → 2013-12-16 (+7d) | 2013-12-11 → 2013-12-17 (+6d) |  |  | 119.8d → 115d |
| 190 | Проверка работы | 2013-12-11 → 2013-12-18 (+7d) | 2013-12-12 → 2013-12-18 (+6d) |  |  | 119.8d → 115d |
| 191 | **Разработка адаптеров для Кейс** | 2013-12-05 → 2013-12-11 (+6d) | 2013-12-19 → 2013-12-25 (+6d) |  |  | 105.8d → 101d |
| 192 | Задание поставлено | 2013-12-05 → 2013-12-11 (+6d) | 2013-12-05 → 2013-12-11 (+6d) |  |  | 105.8d → 101d |
| 193 | Разработка архитектуры дя адаптеров | 2013-12-05 → 2013-12-12 (+7d) | 2013-12-12 → 2013-12-18 (+6d) |  |  | 105.8d → 101d |
| 194 | Разработка адаптеров | 2013-12-12 → 2013-12-19 (+7d) | 2013-12-19 → 2013-12-25 (+6d) |  |  | 105.8d → 101d |
| 195 | **Разработка коллекций** | 2013-12-19 → 2013-12-26 (+7d) | 2014-01-13 → 2014-01-17 (+4d) |  |  | 105.8d → 101d |
| 196 | Коллекции | 2013-12-19 → 2013-12-26 (+7d) | 2014-01-13 → 2014-01-17 (+4d) |  |  | 105.8d → 101d |
| 197 | Интеграция по Кейс выполнена | 2014-01-13 → 2014-01-17 (+4d) | 2014-01-13 → 2014-01-17 (+4d) |  |  | 105.8d → 101d |
| 198 | **Интеграция с CMJ по Исходящие документам** | 2013-11-13 → 2013-11-20 (+7d) | 2013-12-26 → 2014-01-13 (+18d) |  |  | 109.8d → 105d |
| 199 | Конфиг ДОП | 2013-11-13 → 2013-11-20 (+7d) | 2013-11-21 → 2013-11-27 (+6d) |  |  | 109.8d → 105d |
| 200 | Mapper | 2013-11-21 → 2013-11-28 (+7d) | 2013-11-29 → 2013-12-05 (+6d) |  |  | 109.8d → 105d |
| 201 | **Настраиваемые коллекции** | 2013-11-29 → 2013-12-06 (+7d) | 2013-12-06 → 2013-12-12 (+6d) |  |  | 123.8d → 119d |
| 202 | **Конфигурация коллекций** | 2013-11-29 → 2013-12-06 (+7d) | 2013-12-05 → 2013-12-11 (+6d) |  |  | 123.8d → 119d |

| ID | Task | Start | Finish | Total float |
| --- | --- | --- | --- | --- |
| 203 | Типовая иерархия кастомных папок (3шт) | 2013-11-29 → 2013-12-06 (+7d) | 2013-12-03 → 2013-12-09 (+6d) | 123.8d → 119d |
| 204 | Системные настройки для Исх | 2013-12-03 → 2013-12-10 (+7d) | 2013-12-05 → 2013-12-11 (+6d) | 123.8d → 119d |
| 205 | Проверка работы | 2013-12-05 → 2013-12-12 (+7d) | 2013-12-06 → 2013-12-12 (+6d) | 123.8d → 119d |
| 206 | **Разработка адаптеров для Исх** | 2013-11-29 → 2013-12-05 (+6d) | 2013-12-13 → 2013-12-19 (+6d) | 109.8d → 105d |
| 207 | Задание поставлено | 2013-11-29 → 2013-12-05 (+6d) | 2013-11-29 → 2013-12-05 (+6d) | 109.8d → 105d |
| 208 | Разработка архитектуры дя адаптеров | 2013-11-29 → 2013-12-06 (+7d) | 2013-12-06 → 2013-12-12 (+6d) | 109.8d → 105d |
| 209 | Разработка адаптеров | 2013-12-06 → 2013-12-13 (+7d) | 2013-12-13 → 2013-12-19 (+6d) | 109.8d → 105d |
| 210 | **Разработка коллекций** | 2013-12-13 → 2013-12-20 (+7d) | 2013-12-26 → 2014-01-13 (+18d) | 109.8d → 105d |
| 211 | Коллекции | 2013-12-13 → 2013-12-20 (+7d) | 2013-12-26 → 2014-01-13 (+18d) | 109.8d → 105d |
| 212 | Интеграция по Исх выполнена | 2013-12-26 → 2014-01-13 (+18d) | 2013-12-26 → 2014-01-13 (+18d) | 109.8d → 105d |
| 213 | **Интеграция с CMJ по самостоятельным поручениям** | 2013-11-19 → 2013-11-26 (+7d) | 2014-01-13 → 2014-01-17 (+4d) | 105.8d → 101d |
| 214 | Конфиг ДОП | 2013-11-19 → 2013-11-26 (+7d) | 2013-11-27 → 2013-12-03 (+6d) | 105.8d → 101d |
| 215 | Mapper | 2013-11-27 → 2013-12-04 (+7d) | 2013-12-05 → 2013-12-11 (+6d) | 105.8d → 101d |
| 216 | **Настраиваемые коллекции** | 2013-12-05 → 2013-12-12 (+7d) | 2013-12-12 → 2013-12-18 (+6d) | 119.8d → 115d |
| 217 | **Конфигурация коллекций** | 2013-12-05 → 2013-12-12 (+7d) | 2013-12-11 → 2013-12-17 (+6d) | 119.8d → 115d |
| 218 | Типовая иерархия кастомных папок (3шт) | 2013-12-05 → 2013-12-12 (+7d) | 2013-12-09 → 2013-12-13 (+4d) | 119.8d → 115d |
| 219 | Системные настройки для Поручений | 2013-12-09 → 2013-12-16 (+7d) | 2013-12-11 → 2013-12-17 (+6d) | 119.8d → 115d |
| 220 | Проверка работы | 2013-12-11 → 2013-12-18 (+7d) | 2013-12-12 → 2013-12-18 (+6d) | 119.8d → 115d |
| 221 | **Разработка адаптеров для Поручений** | 2013-12-05 → 2013-12-11 (+6d) | 2013-12-19 → 2013-12-25 (+6d) | 105.8d → 101d |
| 222 | Задание поставлено | 2013-12-05 → 2013-12-11 (+6d) | 2013-12-05 → 2013-12-11 (+6d) | 105.8d → 101d |
| 223 | Разработка архитектуры дя адаптеров | 2013-12-05 → 2013-12-12 (+7d) | 2013-12-12 → 2013-12-18 (+6d) | 105.8d → 101d |
| 224 | Разработка адаптеров | 2013-12-12 → 2013-12-19 (+7d) | 2013-12-19 → 2013-12-25 (+6d) | 105.8d → 101d |
| 225 | **Разработка коллекций** | 2013-12-19 → 2013-12-26 (+7d) | 2014-01-13 → 2014-01-17 (+4d) | 105.8d → 101d |
| 226 | Коллекции | 2013-12-19 → 2013-12-26 (+7d) | 2014-01-13 → 2014-01-17 (+4d) | 105.8d → 101d |
| 227 | Интеграция по Поручений выполнена | 2014-01-13 → 2014-01-17 (+4d) | 2014-01-13 → 2014-01-17 (+4d) | 105.8d → 101d |
| 228 | **Интеграция с CMJ по ОГ** | 2013-11-19 → 2013-11-26 (+7d) | 2014-01-13 → 2014-01-17 (+4d) | 105.8d → 101d |
| 229 | Конфиг ДОП | 2013-11-19 → 2013-11-26 (+7d) | 2013-11-27 → 2013-12-03 (+6d) | 105.8d → 101d |
| 230 | Mapper | 2013-11-27 → 2013-12-04 (+7d) | 2013-12-05 → 2013-12-11 (+6d) | 105.8d → 101d |
| 231 | **Настраиваемые коллекции** | 2013-12-05 → 2013-12-12 (+7d) | 2013-12-12 → 2013-12-18 (+6d) | 119.8d → 115d |
| 232 | **Конфигурация коллекций** | 2013-12-05 → 2013-12-12 (+7d) | 2013-12-11 → 2013-12-17 (+6d) | 119.8d → 115d |
| 233 | Типовая иерархия кастомных папок (3шт) | 2013-12-05 → 2013-12-12 (+7d) | 2013-12-09 → 2013-12-13 (+4d) | 119.8d → 115d |
| 234 | Системные настройки для ОГ | 2013-12-09 → 2013-12-16 (+7d) | 2013-12-11 → 2013-12-17 (+6d) | 119.8d → 115d |
| 235 | Проверка работы | 2013-12-11 → 2013-12-18 (+7d) | 2013-12-12 → 2013-12-18 (+6d) | 119.8d → 115d |
| 236 | **Разработка адаптеров для ОГ** | 2013-12-05 → 2013-12-11 (+6d) | 2013-12-19 → 2013-12-25 (+6d) | 105.8d → 101d |
| 237 | Задание поставлено | 2013-12-05 → 2013-12-11 (+6d) | 2013-12-05 → 2013-12-11 (+6d) | 105.8d → 101d |
| 238 | Разработка архитектуры дя адаптеров | 2013-12-05 → 2013-12-12 (+7d) | 2013-12-12 → 2013-12-18 (+6d) | 105.8d → 101d |
| 239 | Разработка адаптеров | 2013-12-12 → 2013-12-19 (+7d) | 2013-12-19 → 2013-12-25 (+6d) | 105.8d → 101d |
| 240 | **Разработка коллекций** | 2013-12-19 → 2013-12-26 (+7d) | 2014-01-13 → 2014-01-17 (+4d) | 105.8d → 101d |
| 241 | Коллекции | 2013-12-19 → 2013-12-26 (+7d) | 2014-01-13 → 2014-01-17 (+4d) | 105.8d → 101d |
| 242 | Интеграция по ОГ выполнена | 2014-01-13 → 2014-01-17 (+4d) | 2014-01-13 → 2014-01-17 (+4d) | 105.8d → 101d |
| 274 | **Интеграция с CMJ по Обсуждениям и ознакомлениям** | 2013-11-19 → 2013-11-26 (+7d) | 2014-01-13 → 2014-01-17 (+4d) | 105.8d → 101d |
| 275 | Конфиг ДОП | 2013-11-19 → 2013-11-26 (+7d) | 2013-11-27 → 2013-12-03 (+6d) | 105.8d → 101d |
| 276 | Mapper | 2013-11-27 → 2013-12-04 (+7d) | 2013-12-05 → 2013-12-11 (+6d) | 105.8d → 101d |
| 277 | **Настраиваемые коллекции** | 2013-12-05 → 2013-12-12 (+7d) | 2013-12-12 → 2013-12-18 (+6d) | 119.8d → 115d |
| 278 | **Конфигурация коллекций** | 2013-12-05 → 2013-12-12 (+7d) | 2013-12-11 → 2013-12-17 (+6d) | 119.8d → 115d |
| 279 | Типовая иерархия кастомных папок (3шт) | 2013-12-05 → 2013-12-12 (+7d) | 2013-12-09 → 2013-12-13 (+4d) | 119.8d → 115d |
| 280 | Системные настройки для ОО | 2013-12-09 → 2013-12-16 (+7d) | 2013-12-11 → 2013-12-17 (+6d) | 119.8d → 115d |
| 281 | Проверка работы | 2013-12-11 → 2013-12-18 (+7d) | 2013-12-12 → 2013-12-18 (+6d) | 119.8d → 115d |
| 282 | **Разработка адаптеров для ОО** | 2013-12-05 → 2013-12-11 (+6d) | 2013-12-19 → 2013-12-25 (+6d) | 105.8d → 101d |
| 283 | Задание поставлено | 2013-12-05 → 2013-12-11 (+6d) | 2013-12-05 → 2013-12-11 (+6d) | 105.8d → 101d |
| 284 | Разработка архитектуры дя адаптеров | 2013-12-05 → 2013-12-12 (+7d) | 2013-12-12 → 2013-12-18 (+6d) | 105.8d → 101d |
| 285 | Разработка адаптеров | 2013-12-12 → 2013-12-19 (+7d) | 2013-12-19 → 2013-12-25 (+6d) | 105.8d → 101d |
| 286 | **Разработка коллекций** | 2013-12-19 → 2013-12-26 (+7d) | 2014-01-13 → 2014-01-17 (+4d) | 105.8d → 101d |
| 287 | Коллекции | 2013-12-19 → 2013-12-26 (+7d) | 2014-01-13 → 2014-01-17 (+4d) | 105.8d → 101d |
| 288 | Интеграция по ОО выполнена | 2014-01-13 → 2014-01-17 (+4d) | 2014-01-13 → 2014-01-17 (+4d) | 105.8d → 101d |
| 289 | **Интеграция с CMJ по Формированию дел** | 2013-11-19 → 2013-11-26 (+7d) | 2014-01-13 → 2014-01-17 (+4d) | 105.8d → 101d |
| 290 | Конфиг ДОП | 2013-11-19 → 2013-11-26 (+7d) | 2013-11-27 → 2013-12-03 (+6d) | 105.8d → 101d |
| 291 | Mapper | 2013-11-27 → 2013-12-04 (+7d) | 2013-12-05 → 2013-12-11 (+6d) | 105.8d → 101d |
| 292 | **Настраиваемые коллекции** | 2013-12-05 → 2013-12-12 (+7d) | 2013-12-12 → 2013-12-18 (+6d) | 119.8d → 115d |
| 293 | **Конфигурация коллекций** | 2013-12-05 → 2013-12-12 (+7d) | 2013-12-11 → 2013-12-17 (+6d) | 119.8d → 115d |
| 294 | Типовая иерархия кастомных папок (3шт) | 2013-12-05 → 2013-12-12 (+7d) | 2013-12-09 → 2013-12-13 (+4d) | 119.8d → 115d |
| 295 | Системные настройки для ФД | 2013-12-09 → 2013-12-16 (+7d) | 2013-12-11 → 2013-12-17 (+6d) | 119.8d → 115d |
| 296 | Проверка работы | 2013-12-11 → 2013-12-18 (+7d) | 2013-12-12 → 2013-12-18 (+6d) | 119.8d → 115d |
| 297 | **Разработка адаптеров для ФД** | 2013-12-05 → 2013-12-11 (+6d) | 2013-12-19 → 2013-12-25 (+6d) | 105.8d → 101d |
| 298 | Задание поставлено | 2013-12-05 → 2013-12-11 (+6d) | 2013-12-05 → 2013-12-11 (+6d) | 105.8d → 101d |
| 299 | Разработка архитектуры дя адаптеров | 2013-12-05 → 2013-12-12 (+7d) | 2013-12-12 → 2013-12-18 (+6d) | 105.8d → 101d |
| 300 | Разработка адаптеров | 2013-12-12 → 2013-12-19 (+7d) | 2013-12-19 → 2013-12-25 (+6d) | 105.8d → 101d |
| 301 | **Разработка коллекций** | 2013-12-19 → 2013-12-26 (+7d) | 2014-01-13 → 2014-01-17 (+4d) | 105.8d → 101d |
| 302 | Коллекции | 2013-12-19 → 2013-12-26 (+7d) | 2014-01-13 → 2014-01-17 (+4d) | 105.8d → 101d |
| 303 | Интеграция по ФД выполнена | 2014-01-13 → 2014-01-17 (+4d) | 2014-01-13 → 2014-01-17 (+4d) | 105.8d → 101d |

## Version 50 (saved 2013-11-25)

Last finish stays 2014-09-11. Complete tasks 72 → 85.

Added:

| ID | Task | Duration | Start | Finish | Predecessors | Constraint | Resources |
| --- | --- | --- | --- | --- | --- | --- | --- |
| 120 | **Разработка коллекций (логин)** | 16d | 2013-11-22 | 2013-12-13 |  |  |  |
| 121 | Инициализация прошла | 0d | 2013-11-22 | 2013-11-22 |  | start no earlier than 2013-11-22 |  |
| 122 | Определение состава коллекций после инициализации Вн | 1d | 2013-11-22 | 2013-11-22 | 121 | finish no earlier than 2013-10-28 | Тугушев Илья |
| 123 | Коллекции Портала | 5d | 2013-11-22 | 2013-11-28 | 121 |  | Евгений Баланенко |
| 124 | Коллекции СС | 5d | 2013-11-29 | 2013-12-05 | 122, 123 |  | (БТЛ) Олег Еренцов |
| 125 | Коллекции Каталога | 5d | 2013-11-29 | 2013-12-05 | 123 |  | (БТЛ) Дмитрий Лякин |
| 126 | Коллекции СО | 5d | 2013-11-29 | 2013-12-05 | 123 |  | Тугушев Илья [80%] |
| 127 | Коллекции СпО | 6d | 2013-12-06 | 2013-12-13 | 125 |  | (БТЛ) Дмитрий Лякин |

Changed:

| ID | Task | Start | Finish | Duration | Complete | Total float | Predecessors | Other |
| --- | --- | --- | --- | --- | --- | --- | --- | --- |
| 1 | **Разработка версии CM4/5** |  |  |  | 28% → 32% |  |  |  |
| 9 | **Создание модуля "Делопроизводство" (документоориентированная среда)** |  | 2014-06-24 → 2014-07-15 (+21d) | 294d? → 309d? | 29% → 33% | 57d → 42d |  |  |
| 20 | **Проектирование и формирование ядра системы** |  | 2014-03-04 → 2014-03-25 (+21d) | 214d? → 229d? | 35% → 41% | 69d → 54d |  |  |
| 64 | **Поиск** |  |  |  | 6% → 82% |  |  |  |
| 65 | Идея поиска оформлена | 2013-09-09 A | 2013-09-09 A |  | 0% → 100% | 123d → none |  |  |
| 66 | Поиск |  | 2013-11-06 A |  | 9% → 100% | 120d → none |  |  |
| 67 | Полнотекстовый поиск | 2013-11-07 A |  |  | 0% → 50% |  |  | resources Валерий Мацукевич → Андрей Пирожков |
| 68 | **Слой сопряжения CMJ server (CM4)** |  | 2014-03-04 → 2014-03-25 (+21d) | 173d? → 188d? | 21% → 24% | 69d → 54d |  |  |
| 76 | **Интеграция с CMJ по Внутренним Документам** |  | 2013-11-25 → 2013-12-17 (+22d) | 46d? → 62d? | 54% → 62% | 70d → 54d |  |  |
| 82 | Mapper Каталога | 2013-10-31 → 2013-12-03 (+33d) | 2013-11-01 → 2013-12-04 (+33d) |  |  | 78d → 54d |  |  |
| 86 | Maper СО | 2013-11-04 → 2013-12-05 (+31d) | 2013-11-05 → 2013-12-06 (+31d) |  |  | 78d → 54d |  |  |
| 88 | Mapper ВнД | 2013-11-06 → 2013-12-09 (+33d) | 2013-11-08 → 2013-12-11 (+33d) |  |  | 78d → 54d |  |  |
| 94 | **Настраиваемые коллекции** |  | 2013-11-12 → 2013-12-03 (+21d) | 30d? → 45.25d? | 63% → 81% | 75.25d → 60d |  |  |
| 95 | **Системные настройки** |  | 2013-11-11 → 2013-11-28 (+17d) | 29d → 42.25d | 69% → 90% | 75.25d → 54d |  |  |
| 97 | XSD-схема XML-настроек | 2013-10-29 A | 2013-11-01 A |  | 0% → 100% | 76.25d → none |  |  |
| 98 | Чтение XML настроек через спец-Mapper | 2013-11-01 A | 2013-11-06 A |  | 0% → 100% | 76.25d → none |  |  |
| 99 | Mapper папок | 2013-11-06 → 2013-11-26 (+20d) | 2013-11-11 → 2013-11-28 (+17d) |  |  | 75.25d → 54d | 98 → none | constraint none → start no earlier than 2013-11-26; resources Влад Симоненко → Андрей Карандей |
| 100 | **Конфигурация коллекций (логин)** | 2013-10-01 → 2013-11-29 (+59d) | 2013-10-03 → 2013-12-02 (+60d) |  |  | 96.25d → 54d |  | was named Конфигурация коллекций |
| 101 | Типовая иерархия кастомных папок (3шт) | 2013-10-01 → 2013-11-29 (+59d) | 2013-10-02 → 2013-11-29 (+58d) |  |  | 98.25d → 54d | none → 99 | resources Глеб Ноздрачев [80%] → Андрей Карандей |
| 102 | Системные настройки для ВнД | 2013-10-02 → 2013-12-02 (+61d) | 2013-10-03 → 2013-12-02 (+60d) |  |  | 98.25d → 54d |  | resources Глеб Ноздрачев [80%] → (БТЛ) Олег Еренцов |
| 103 | Проверка работы | 2013-11-11 → 2013-12-03 (+22d) | 2013-11-12 → 2013-12-03 (+21d) |  |  | 75.25d → 60d |  |  |
| 112 | **Разработка коллекций (инициализация)** |  | 2013-11-19 → 2013-12-13 (+24d) | 16d → 34d | 3% → 46% | 74d → 56d |  | was named Разработка коллекций |
| 113 | Описание полей документов Вн |  | 2013-10-30 A |  | 50% → 100% | 73d → none |  |  |
| 114 | Коллекции Портала | 2013-10-29 A | 2013-11-04 A |  | 0% → 100% | 70d → none |  |  |
| 115 | Инструктаж по @-формулам проведен | 2013-11-04 A | 2013-11-04 A |  | 0% → 100% | 85d → none |  |  |
| 116 | Коллекции СС | 2013-11-05 A | 2013-11-11 A |  | 0% → 100% | 70d → none |  |  |
| 117 | Коллекции Каталога | 2013-11-05 A | 2013-11-11 A |  | 0% → 100% | 70d → none |  |  |
| 118 | Коллекции СО | 2013-11-05 A | 2013-11-11 A |  | 0% → 100% | 76d → none |  |  |
| 119 | Коллекции СпО | 2013-11-12 A | 2013-11-19 A |  | 0% → 100% | 70d → none |  |  |
| 128 | Коллекции ВнД | 2013-11-12 → 2013-12-06 (+24d) | 2013-11-19 → 2013-12-13 (+24d) |  |  | 70d → 56d | 116 → 124 |  |
| 129 | ВнД | 2013-11-19 → 2013-12-11 (+22d) | 2013-11-19 → 2013-12-11 (+22d) |  |  | 70d → 54d | 116, 80, 117, 82, 114, 84, 118, 86, 128, 88, 119, 90, 91, 92, 93, 94, 106 → 116, 80, 117, 82, 114, 84, 118, 86, 88, 119, 90, 91, 92, 93, 94, 106 |  |
| 130 | **Адаптация CMJ-server** | 2013-11-20 → 2013-12-12 (+22d) | 2013-11-21 → 2013-12-13 (+22d) |  |  | 72d → 56d |  |  |
| 131 | Подмена РБД для CMJ-Server | 2013-11-20 → 2013-12-12 (+22d) | 2013-11-21 → 2013-12-13 (+22d) |  |  | 72d → 56d |  |  |
| 132 | Имплементация аналогов @-функций для Sochi-server | 2013-11-20 → 2013-12-12 (+22d) | 2013-11-21 → 2013-12-13 (+22d) |  |  | 72d → 56d |  |  |
| 133 | Объединение War | 2013-11-20 → 2013-12-12 (+22d) | 2013-11-20 → 2013-12-12 (+22d) |  |  | 73d → 57d |  |  |
| 134 | **Инструмент заполнения** | 2013-11-20 → 2013-12-12 (+22d) | 2013-11-25 → 2013-12-17 (+22d) |  |  | 70d → 54d |  |  |
| 135 | **Заливка данных для демонстрации** | 2013-11-20 → 2013-12-12 (+22d) | 2013-11-25 → 2013-12-17 (+22d) |  |  | 70d → 54d |  |  |
| 136 | Подготовка задачи | 2013-11-20 → 2013-12-12 (+22d) | 2013-11-20 → 2013-12-12 (+22d) |  |  | 70d → 54d |  |  |
| 137 | Написание скриптов заливки | 2013-11-21 → 2013-12-13 (+22d) | 2013-11-25 → 2013-12-17 (+22d) |  |  | 70d → 54d |  |  |
| 138 | Инструмент заполнения Каталога | 2013-11-20 → 2013-12-12 (+22d) | 2013-11-22 → 2013-12-16 (+24d) |  |  | 71d → 55d |  |  |
| 139 | Инструмент заполнения СС | 2013-11-20 → 2013-12-12 (+22d) | 2013-11-22 → 2013-12-16 (+24d) |  |  | 71d → 55d |  |  |
| 140 | Инструмент заполнения Портала | 2013-11-20 → 2013-12-12 (+22d) | 2013-11-22 → 2013-12-16 (+24d) |  |  | 71d → 55d |  |  |
| 141 | Инструмент заполнения СО | 2013-11-20 → 2013-12-12 (+22d) | 2013-11-22 → 2013-12-16 (+24d) |  |  | 71d → 55d |  |  |
| 142 | Инструмент заполнения СпО | 2013-11-20 → 2013-12-12 (+22d) | 2013-11-22 → 2013-12-16 (+24d) |  |  | 71d → 55d |  |  |
| 161 | **Интеграция с CMJ по Входящим документам** | 2013-11-26 → 2013-12-18 (+22d) | 2014-01-16 → 2014-02-07 (+22d) |  |  | 102.2d → 86.2d |  |  |
| 162 | Конфиг ДОП | 2013-11-26 → 2013-12-18 (+22d) | 2013-12-03 → 2013-12-25 (+22d) |  |  | 102.2d → 86.2d |  |  |
| 163 | Mapper | 2013-12-04 → 2013-12-26 (+22d) | 2013-12-10 → 2014-01-13 (+34d) |  |  | 102.2d → 86.2d |  |  |
| 164 | **Настраиваемые коллекции** | 2013-12-10 → 2014-01-13 (+34d) | 2013-12-17 → 2014-01-20 (+34d) |  |  | 116.2d → 100.2d |  |  |
| 165 | **Конфигурация коллекций** | 2013-12-10 → 2014-01-13 (+34d) | 2013-12-16 → 2014-01-17 (+32d) |  |  | 116.2d → 100.2d |  |  |
| 166 | Типовая иерархия кастомных папок (3шт) | 2013-12-10 → 2014-01-13 (+34d) | 2013-12-12 → 2014-01-15 (+34d) |  |  | 116.2d → 100.2d |  |  |
| 167 | Системные настройки для Вх | 2013-12-12 → 2014-01-15 (+34d) | 2013-12-16 → 2014-01-17 (+32d) |  |  | 116.2d → 100.2d |  |  |
| 168 | Проверка работы | 2013-12-16 → 2014-01-17 (+32d) | 2013-12-17 → 2014-01-20 (+34d) |  |  | 116.2d → 100.2d |  |  |
| 169 | **Разработка адаптеров для Вх** | 2013-12-10 → 2014-01-13 (+34d) | 2013-12-24 → 2014-01-27 (+34d) |  |  | 102.2d → 86.2d |  |  |
| 170 | Задание поставлено | 2013-12-10 → 2014-01-13 (+34d) | 2013-12-10 → 2014-01-13 (+34d) |  |  | 102.2d → 86.2d |  |  |
| 171 | Разработка архитектуры дя адаптеров | 2013-12-10 → 2014-01-13 (+34d) | 2013-12-17 → 2014-01-20 (+34d) |  |  | 102.2d → 86.2d |  |  |
| 172 | Разработка адаптеров | 2013-12-17 → 2014-01-20 (+34d) | 2013-12-24 → 2014-01-27 (+34d) |  |  | 102.2d → 86.2d |  |  |
| 173 | **Разработка коллекций** | 2013-12-24 → 2014-01-27 (+34d) | 2014-01-16 → 2014-02-07 (+22d) |  |  | 102.2d → 86.2d |  |  |
| 174 | Коллекции | 2013-12-24 → 2014-01-27 (+34d) | 2014-01-16 → 2014-02-07 (+22d) |  |  | 102.2d → 86.2d |  |  |
| 175 | Интеграция по Вх выполнена | 2014-01-16 → 2014-02-07 (+22d) | 2014-01-16 → 2014-02-07 (+22d) |  |  | 102.2d → 86.2d |  |  |
| 176 | **Интеграция с CMJ по ОРД** | 2013-11-26 → 2013-12-18 (+22d) | 2014-01-17 → 2014-02-10 (+24d) |  |  | 101d → 85d |  |  |
| 177 | Конфиг ДОП | 2013-11-26 → 2013-12-18 (+22d) | 2013-12-03 → 2013-12-25 (+22d) |  |  | 101d → 85d |  |  |
| 178 | Mapper | 2013-12-04 → 2013-12-26 (+22d) | 2013-12-11 → 2014-01-14 (+34d) |  |  | 101d → 85d |  |  |
| 179 | **Настраиваемые коллекции** | 2013-12-12 → 2014-01-15 (+34d) | 2013-12-18 → 2014-01-21 (+34d) |  |  | 115d → 99d |  |  |
| 180 | **Конфигурация коллекций** | 2013-12-12 → 2014-01-15 (+34d) | 2013-12-17 → 2014-01-20 (+34d) |  |  | 115d → 99d |  |  |
| 181 | Типовая иерархия кастомных папок (3шт) | 2013-12-12 → 2014-01-15 (+34d) | 2013-12-13 → 2014-01-16 (+34d) |  |  | 115d → 99d |  |  |
| 182 | Системные настройки для ОРД | 2013-12-16 → 2014-01-17 (+32d) | 2013-12-17 → 2014-01-20 (+34d) |  |  | 115d → 99d |  |  |
| 183 | Проверка работы | 2013-12-18 → 2014-01-21 (+34d) | 2013-12-18 → 2014-01-21 (+34d) |  |  | 115d → 99d |  |  |
| 184 | **Разработка адаптеров для ОРД** | 2013-12-11 → 2014-01-14 (+34d) | 2013-12-25 → 2014-01-28 (+34d) |  |  | 101d → 85d |  |  |
| 185 | Задание поставлено | 2013-12-11 → 2014-01-14 (+34d) | 2013-12-11 → 2014-01-14 (+34d) |  |  | 101d → 85d |  |  |
| 186 | Разработка архитектуры дя адаптеров | 2013-12-12 → 2014-01-15 (+34d) | 2013-12-18 → 2014-01-21 (+34d) |  |  | 101d → 85d |  |  |

| ID | Task | Start | Finish | Total float |
| --- | --- | --- | --- | --- |
| 187 | Разработка адаптеров | 2013-12-19 → 2014-01-22 (+34d) | 2013-12-25 → 2014-01-28 (+34d) | 101d → 85d |
| 188 | **Разработка коллекций** | 2013-12-26 → 2014-01-29 (+34d) | 2014-01-17 → 2014-02-10 (+24d) | 101d → 85d |
| 189 | Коллекции | 2013-12-26 → 2014-01-29 (+34d) | 2014-01-17 → 2014-02-10 (+24d) | 101d → 85d |
| 190 | Интеграция по ОРД выполнена | 2014-01-17 → 2014-02-10 (+24d) | 2014-01-17 → 2014-02-10 (+24d) | 101d → 85d |
| 191 | **Интеграция с CMJ по "Кейсам"** | 2013-11-26 → 2013-12-18 (+22d) | 2014-01-17 → 2014-02-10 (+24d) | 101d → 85d |
| 192 | Конфиг ДОП | 2013-11-26 → 2013-12-18 (+22d) | 2013-12-03 → 2013-12-25 (+22d) | 101d → 85d |
| 193 | Mapper | 2013-12-04 → 2013-12-26 (+22d) | 2013-12-11 → 2014-01-14 (+34d) | 101d → 85d |
| 194 | **Настраиваемые коллекции** | 2013-12-12 → 2014-01-15 (+34d) | 2013-12-18 → 2014-01-21 (+34d) | 115d → 99d |
| 195 | **Конфигурация коллекций** | 2013-12-12 → 2014-01-15 (+34d) | 2013-12-17 → 2014-01-20 (+34d) | 115d → 99d |
| 196 | Типовая иерархия кастомных папок (3шт) | 2013-12-12 → 2014-01-15 (+34d) | 2013-12-13 → 2014-01-16 (+34d) | 115d → 99d |
| 197 | Системные настройки для Кейс | 2013-12-16 → 2014-01-17 (+32d) | 2013-12-17 → 2014-01-20 (+34d) | 115d → 99d |
| 198 | Проверка работы | 2013-12-18 → 2014-01-21 (+34d) | 2013-12-18 → 2014-01-21 (+34d) | 115d → 99d |
| 199 | **Разработка адаптеров для Кейс** | 2013-12-11 → 2014-01-14 (+34d) | 2013-12-25 → 2014-01-28 (+34d) | 101d → 85d |
| 200 | Задание поставлено | 2013-12-11 → 2014-01-14 (+34d) | 2013-12-11 → 2014-01-14 (+34d) | 101d → 85d |
| 201 | Разработка архитектуры дя адаптеров | 2013-12-12 → 2014-01-15 (+34d) | 2013-12-18 → 2014-01-21 (+34d) | 101d → 85d |
| 202 | Разработка адаптеров | 2013-12-19 → 2014-01-22 (+34d) | 2013-12-25 → 2014-01-28 (+34d) | 101d → 85d |
| 203 | **Разработка коллекций** | 2013-12-26 → 2014-01-29 (+34d) | 2014-01-17 → 2014-02-10 (+24d) | 101d → 85d |
| 204 | Коллекции | 2013-12-26 → 2014-01-29 (+34d) | 2014-01-17 → 2014-02-10 (+24d) | 101d → 85d |
| 205 | Интеграция по Кейс выполнена | 2014-01-17 → 2014-02-10 (+24d) | 2014-01-17 → 2014-02-10 (+24d) | 101d → 85d |
| 206 | **Интеграция с CMJ по Исходящие документам** | 2013-11-20 → 2013-12-12 (+22d) | 2014-01-13 → 2014-02-04 (+22d) | 105d → 89d |
| 207 | Конфиг ДОП | 2013-11-20 → 2013-12-12 (+22d) | 2013-11-27 → 2013-12-19 (+22d) | 105d → 89d |
| 208 | Mapper | 2013-11-28 → 2013-12-20 (+22d) | 2013-12-05 → 2013-12-27 (+22d) | 105d → 89d |
| 209 | **Настраиваемые коллекции** | 2013-12-06 → 2014-01-09 (+34d) | 2013-12-12 → 2014-01-15 (+34d) | 119d → 103d |
| 210 | **Конфигурация коллекций** | 2013-12-06 → 2014-01-09 (+34d) | 2013-12-11 → 2014-01-14 (+34d) | 119d → 103d |
| 211 | Типовая иерархия кастомных папок (3шт) | 2013-12-06 → 2014-01-09 (+34d) | 2013-12-09 → 2014-01-10 (+32d) | 119d → 103d |
| 212 | Системные настройки для Исх | 2013-12-10 → 2014-01-13 (+34d) | 2013-12-11 → 2014-01-14 (+34d) | 119d → 103d |
| 213 | Проверка работы | 2013-12-12 → 2014-01-15 (+34d) | 2013-12-12 → 2014-01-15 (+34d) | 119d → 103d |
| 214 | **Разработка адаптеров для Исх** | 2013-12-05 → 2013-12-27 (+22d) | 2013-12-19 → 2014-01-22 (+34d) | 105d → 89d |
| 215 | Задание поставлено | 2013-12-05 → 2013-12-27 (+22d) | 2013-12-05 → 2013-12-27 (+22d) | 105d → 89d |
| 216 | Разработка архитектуры дя адаптеров | 2013-12-06 → 2014-01-09 (+34d) | 2013-12-12 → 2014-01-15 (+34d) | 105d → 89d |
| 217 | Разработка адаптеров | 2013-12-13 → 2014-01-16 (+34d) | 2013-12-19 → 2014-01-22 (+34d) | 105d → 89d |
| 218 | **Разработка коллекций** | 2013-12-20 → 2014-01-23 (+34d) | 2014-01-13 → 2014-02-04 (+22d) | 105d → 89d |
| 219 | Коллекции | 2013-12-20 → 2014-01-23 (+34d) | 2014-01-13 → 2014-02-04 (+22d) | 105d → 89d |
| 220 | Интеграция по Исх выполнена | 2014-01-13 → 2014-02-04 (+22d) | 2014-01-13 → 2014-02-04 (+22d) | 105d → 89d |
| 221 | **Интеграция с CMJ по самостоятельным поручениям** | 2013-11-26 → 2013-12-18 (+22d) | 2014-01-17 → 2014-02-10 (+24d) | 101d → 85d |
| 222 | Конфиг ДОП | 2013-11-26 → 2013-12-18 (+22d) | 2013-12-03 → 2013-12-25 (+22d) | 101d → 85d |
| 223 | Mapper | 2013-12-04 → 2013-12-26 (+22d) | 2013-12-11 → 2014-01-14 (+34d) | 101d → 85d |
| 224 | **Настраиваемые коллекции** | 2013-12-12 → 2014-01-15 (+34d) | 2013-12-18 → 2014-01-21 (+34d) | 115d → 99d |
| 225 | **Конфигурация коллекций** | 2013-12-12 → 2014-01-15 (+34d) | 2013-12-17 → 2014-01-20 (+34d) | 115d → 99d |
| 226 | Типовая иерархия кастомных папок (3шт) | 2013-12-12 → 2014-01-15 (+34d) | 2013-12-13 → 2014-01-16 (+34d) | 115d → 99d |
| 227 | Системные настройки для Поручений | 2013-12-16 → 2014-01-17 (+32d) | 2013-12-17 → 2014-01-20 (+34d) | 115d → 99d |
| 228 | Проверка работы | 2013-12-18 → 2014-01-21 (+34d) | 2013-12-18 → 2014-01-21 (+34d) | 115d → 99d |
| 229 | **Разработка адаптеров для Поручений** | 2013-12-11 → 2014-01-14 (+34d) | 2013-12-25 → 2014-01-28 (+34d) | 101d → 85d |
| 230 | Задание поставлено | 2013-12-11 → 2014-01-14 (+34d) | 2013-12-11 → 2014-01-14 (+34d) | 101d → 85d |
| 231 | Разработка архитектуры дя адаптеров | 2013-12-12 → 2014-01-15 (+34d) | 2013-12-18 → 2014-01-21 (+34d) | 101d → 85d |
| 232 | Разработка адаптеров | 2013-12-19 → 2014-01-22 (+34d) | 2013-12-25 → 2014-01-28 (+34d) | 101d → 85d |
| 233 | **Разработка коллекций** | 2013-12-26 → 2014-01-29 (+34d) | 2014-01-17 → 2014-02-10 (+24d) | 101d → 85d |
| 234 | Коллекции | 2013-12-26 → 2014-01-29 (+34d) | 2014-01-17 → 2014-02-10 (+24d) | 101d → 85d |
| 235 | Интеграция по Поручений выполнена | 2014-01-17 → 2014-02-10 (+24d) | 2014-01-17 → 2014-02-10 (+24d) | 101d → 85d |
| 236 | **Интеграция с CMJ по ОГ** | 2013-11-26 → 2013-12-18 (+22d) | 2014-01-17 → 2014-02-10 (+24d) | 101d → 85d |
| 237 | Конфиг ДОП | 2013-11-26 → 2013-12-18 (+22d) | 2013-12-03 → 2013-12-25 (+22d) | 101d → 85d |
| 238 | Mapper | 2013-12-04 → 2013-12-26 (+22d) | 2013-12-11 → 2014-01-14 (+34d) | 101d → 85d |
| 239 | **Настраиваемые коллекции** | 2013-12-12 → 2014-01-15 (+34d) | 2013-12-18 → 2014-01-21 (+34d) | 115d → 99d |
| 240 | **Конфигурация коллекций** | 2013-12-12 → 2014-01-15 (+34d) | 2013-12-17 → 2014-01-20 (+34d) | 115d → 99d |
| 241 | Типовая иерархия кастомных папок (3шт) | 2013-12-12 → 2014-01-15 (+34d) | 2013-12-13 → 2014-01-16 (+34d) | 115d → 99d |
| 242 | Системные настройки для ОГ | 2013-12-16 → 2014-01-17 (+32d) | 2013-12-17 → 2014-01-20 (+34d) | 115d → 99d |
| 243 | Проверка работы | 2013-12-18 → 2014-01-21 (+34d) | 2013-12-18 → 2014-01-21 (+34d) | 115d → 99d |
| 244 | **Разработка адаптеров для ОГ** | 2013-12-11 → 2014-01-14 (+34d) | 2013-12-25 → 2014-01-28 (+34d) | 101d → 85d |
| 245 | Задание поставлено | 2013-12-11 → 2014-01-14 (+34d) | 2013-12-11 → 2014-01-14 (+34d) | 101d → 85d |
| 246 | Разработка архитектуры дя адаптеров | 2013-12-12 → 2014-01-15 (+34d) | 2013-12-18 → 2014-01-21 (+34d) | 101d → 85d |
| 247 | Разработка адаптеров | 2013-12-19 → 2014-01-22 (+34d) | 2013-12-25 → 2014-01-28 (+34d) | 101d → 85d |
| 248 | **Разработка коллекций** | 2013-12-26 → 2014-01-29 (+34d) | 2014-01-17 → 2014-02-10 (+24d) | 101d → 85d |
| 249 | Коллекции | 2013-12-26 → 2014-01-29 (+34d) | 2014-01-17 → 2014-02-10 (+24d) | 101d → 85d |
| 250 | Интеграция по ОГ выполнена | 2014-01-17 → 2014-02-10 (+24d) | 2014-01-17 → 2014-02-10 (+24d) | 101d → 85d |
| 251 | **Интеграция с CMJ по сервису согласования** | 2013-11-27 → 2013-12-17 (+20d) | 2014-01-20 → 2014-02-10 (+21d) | 69d → 54d |
| 252 | Получена версия CM4.X c WF движком | 2013-11-27 → 2013-12-17 (+20d) | 2013-11-27 → 2013-12-17 (+20d) | 69d → 54d |
| 253 | Конфиг ДОП | 2013-11-27 → 2013-12-18 (+21d) | 2013-12-04 → 2013-12-25 (+21d) | 69d → 54d |
| 254 | Mapper | 2013-12-05 → 2013-12-26 (+21d) | 2013-12-12 → 2014-01-14 (+33d) | 69d → 54d |
| 255 | **Настраиваемые коллекции** | 2013-12-13 → 2014-01-15 (+33d) | 2013-12-19 → 2014-01-21 (+33d) | 83d → 68d |
| 256 | **Конфигурация коллекций** | 2013-12-13 → 2014-01-15 (+33d) | 2013-12-18 → 2014-01-20 (+33d) | 83d → 68d |

| ID | Task | Start | Finish | Complete | Total float | Other |
| --- | --- | --- | --- | --- | --- | --- |
| 257 | Типовая иерархия кастомных папок (3шт) | 2013-12-13 → 2014-01-15 (+33d) | 2013-12-16 → 2014-01-16 (+31d) |  | 83d → 68d |  |
| 258 | Системные настройки для СрвСогл | 2013-12-17 → 2014-01-17 (+31d) | 2013-12-18 → 2014-01-20 (+33d) |  | 83d → 68d |  |
| 259 | Проверка работы | 2013-12-19 → 2014-01-21 (+33d) | 2013-12-19 → 2014-01-21 (+33d) |  | 83d → 68d |  |
| 260 | **Разработка адаптеров для СрвСогл** | 2013-12-12 → 2014-01-14 (+33d) | 2013-12-26 → 2014-01-28 (+33d) |  | 69d → 54d |  |
| 261 | Задание поставлено | 2013-12-12 → 2014-01-14 (+33d) | 2013-12-12 → 2014-01-14 (+33d) |  | 69d → 54d |  |
| 262 | Разработка архитектуры дя адаптеров | 2013-12-13 → 2014-01-15 (+33d) | 2013-12-19 → 2014-01-21 (+33d) |  | 69d → 54d |  |
| 263 | Разработка адаптеров | 2013-12-20 → 2014-01-22 (+33d) | 2013-12-26 → 2014-01-28 (+33d) |  | 69d → 54d |  |
| 264 | **Разработка коллекций** | 2013-12-27 → 2014-01-29 (+33d) | 2014-01-20 → 2014-02-10 (+21d) |  | 69d → 54d |  |
| 265 | Коллекции | 2013-12-27 → 2014-01-29 (+33d) | 2014-01-20 → 2014-02-10 (+21d) |  | 69d → 54d |  |
| 266 | Интеграция по СрвСогл выполнена | 2014-01-20 → 2014-02-10 (+21d) | 2014-01-20 → 2014-02-10 (+21d) |  | 69d → 54d |  |
| 267 | **Интеграция с CMJ по Заседаниям** | 2014-01-21 → 2014-02-11 (+21d) | 2014-03-04 → 2014-03-25 (+21d) |  | 69d → 54d |  |
| 268 | Конфиг ДОП | 2014-01-21 → 2014-02-11 (+21d) | 2014-01-28 → 2014-02-18 (+21d) |  | 69d → 54d |  |
| 269 | Mapper | 2014-01-29 → 2014-02-19 (+21d) | 2014-02-05 → 2014-02-26 (+21d) |  | 69d → 54d |  |
| 270 | **Настраиваемые коллекции** | 2014-02-06 → 2014-02-27 (+21d) | 2014-02-12 → 2014-03-05 (+21d) |  | 83d → 68d |  |
| 271 | **Конфигурация коллекций** | 2014-02-06 → 2014-02-27 (+21d) | 2014-02-11 → 2014-03-04 (+21d) |  | 83d → 68d |  |
| 272 | Типовая иерархия кастомных папок (3шт) | 2014-02-06 → 2014-02-27 (+21d) | 2014-02-07 → 2014-02-28 (+21d) |  | 83d → 68d |  |
| 273 | Системные настройки для Зсд | 2014-02-10 → 2014-03-03 (+21d) | 2014-02-11 → 2014-03-04 (+21d) |  | 83d → 68d |  |
| 274 | Проверка работы | 2014-02-12 → 2014-03-05 (+21d) | 2014-02-12 → 2014-03-05 (+21d) |  | 83d → 68d |  |
| 275 | **Разработка адаптеров для Зсд** | 2014-02-05 → 2014-02-26 (+21d) | 2014-02-19 → 2014-03-12 (+21d) |  | 69d → 54d |  |
| 276 | Задание поставлено | 2014-02-05 → 2014-02-26 (+21d) | 2014-02-05 → 2014-02-26 (+21d) |  | 69d → 54d |  |
| 277 | Разработка архитектуры дя адаптеров | 2014-02-06 → 2014-02-27 (+21d) | 2014-02-12 → 2014-03-05 (+21d) |  | 69d → 54d |  |
| 278 | Разработка адаптеров | 2014-02-13 → 2014-03-06 (+21d) | 2014-02-19 → 2014-03-12 (+21d) |  | 69d → 54d |  |
| 279 | **Разработка коллекций** | 2014-02-20 → 2014-03-13 (+21d) | 2014-03-04 → 2014-03-25 (+21d) |  | 69d → 54d |  |
| 280 | Коллекции | 2014-02-20 → 2014-03-13 (+21d) | 2014-03-04 → 2014-03-25 (+21d) |  | 69d → 54d |  |
| 281 | Интеграция по Зсд выполнена | 2014-03-04 → 2014-03-25 (+21d) | 2014-03-04 → 2014-03-25 (+21d) |  | 69d → 54d |  |
| 282 | **Интеграция с CMJ по Обсуждениям и ознакомлениям** | 2013-11-26 → 2013-12-18 (+22d) | 2014-01-17 → 2014-02-10 (+24d) |  | 101d → 85d |  |
| 283 | Конфиг ДОП | 2013-11-26 → 2013-12-18 (+22d) | 2013-12-03 → 2013-12-25 (+22d) |  | 101d → 85d |  |
| 284 | Mapper | 2013-12-04 → 2013-12-26 (+22d) | 2013-12-11 → 2014-01-14 (+34d) |  | 101d → 85d |  |
| 285 | **Настраиваемые коллекции** | 2013-12-12 → 2014-01-15 (+34d) | 2013-12-18 → 2014-01-21 (+34d) |  | 115d → 99d |  |
| 286 | **Конфигурация коллекций** | 2013-12-12 → 2014-01-15 (+34d) | 2013-12-17 → 2014-01-20 (+34d) |  | 115d → 99d |  |
| 287 | Типовая иерархия кастомных папок (3шт) | 2013-12-12 → 2014-01-15 (+34d) | 2013-12-13 → 2014-01-16 (+34d) |  | 115d → 99d |  |
| 288 | Системные настройки для ОО | 2013-12-16 → 2014-01-17 (+32d) | 2013-12-17 → 2014-01-20 (+34d) |  | 115d → 99d |  |
| 289 | Проверка работы | 2013-12-18 → 2014-01-21 (+34d) | 2013-12-18 → 2014-01-21 (+34d) |  | 115d → 99d |  |
| 290 | **Разработка адаптеров для ОО** | 2013-12-11 → 2014-01-14 (+34d) | 2013-12-25 → 2014-01-28 (+34d) |  | 101d → 85d |  |
| 291 | Задание поставлено | 2013-12-11 → 2014-01-14 (+34d) | 2013-12-11 → 2014-01-14 (+34d) |  | 101d → 85d |  |
| 292 | Разработка архитектуры дя адаптеров | 2013-12-12 → 2014-01-15 (+34d) | 2013-12-18 → 2014-01-21 (+34d) |  | 101d → 85d |  |
| 293 | Разработка адаптеров | 2013-12-19 → 2014-01-22 (+34d) | 2013-12-25 → 2014-01-28 (+34d) |  | 101d → 85d |  |
| 294 | **Разработка коллекций** | 2013-12-26 → 2014-01-29 (+34d) | 2014-01-17 → 2014-02-10 (+24d) |  | 101d → 85d |  |
| 295 | Коллекции | 2013-12-26 → 2014-01-29 (+34d) | 2014-01-17 → 2014-02-10 (+24d) |  | 101d → 85d |  |
| 296 | Интеграция по ОО выполнена | 2014-01-17 → 2014-02-10 (+24d) | 2014-01-17 → 2014-02-10 (+24d) |  | 101d → 85d |  |
| 297 | **Интеграция с CMJ по Формированию дел** | 2013-11-26 → 2013-12-18 (+22d) | 2014-01-17 → 2014-02-10 (+24d) |  | 101d → 85d |  |
| 298 | Конфиг ДОП | 2013-11-26 → 2013-12-18 (+22d) | 2013-12-03 → 2013-12-25 (+22d) |  | 101d → 85d |  |
| 299 | Mapper | 2013-12-04 → 2013-12-26 (+22d) | 2013-12-11 → 2014-01-14 (+34d) |  | 101d → 85d |  |
| 300 | **Настраиваемые коллекции** | 2013-12-12 → 2014-01-15 (+34d) | 2013-12-18 → 2014-01-21 (+34d) |  | 115d → 99d |  |
| 301 | **Конфигурация коллекций** | 2013-12-12 → 2014-01-15 (+34d) | 2013-12-17 → 2014-01-20 (+34d) |  | 115d → 99d |  |
| 302 | Типовая иерархия кастомных папок (3шт) | 2013-12-12 → 2014-01-15 (+34d) | 2013-12-13 → 2014-01-16 (+34d) |  | 115d → 99d |  |
| 303 | Системные настройки для ФД | 2013-12-16 → 2014-01-17 (+32d) | 2013-12-17 → 2014-01-20 (+34d) |  | 115d → 99d |  |
| 304 | Проверка работы | 2013-12-18 → 2014-01-21 (+34d) | 2013-12-18 → 2014-01-21 (+34d) |  | 115d → 99d |  |
| 305 | **Разработка адаптеров для ФД** | 2013-12-11 → 2014-01-14 (+34d) | 2013-12-25 → 2014-01-28 (+34d) |  | 101d → 85d |  |
| 306 | Задание поставлено | 2013-12-11 → 2014-01-14 (+34d) | 2013-12-11 → 2014-01-14 (+34d) |  | 101d → 85d |  |
| 307 | Разработка архитектуры дя адаптеров | 2013-12-12 → 2014-01-15 (+34d) | 2013-12-18 → 2014-01-21 (+34d) |  | 101d → 85d |  |
| 308 | Разработка адаптеров | 2013-12-19 → 2014-01-22 (+34d) | 2013-12-25 → 2014-01-28 (+34d) |  | 101d → 85d |  |
| 309 | **Разработка коллекций** | 2013-12-26 → 2014-01-29 (+34d) | 2014-01-17 → 2014-02-10 (+24d) |  | 101d → 85d |  |
| 310 | Коллекции | 2013-12-26 → 2014-01-29 (+34d) | 2014-01-17 → 2014-02-10 (+24d) |  | 101d → 85d |  |
| 311 | Интеграция по ФД выполнена | 2014-01-17 → 2014-02-10 (+24d) | 2014-01-17 → 2014-02-10 (+24d) |  | 101d → 85d |  |
| 325 | **Работа с отчетами** | 2013-11-01 A |  | 0% → 50% |  |  |
| 327 | Система готова к интеграции с модулем отчетов | 2013-11-01 A | 2013-11-01 A | 0% → 100% | 116d → none |  |
| 328 | JDBC-драйвер для системы построения отчётов | 2013-11-01 A | 2013-11-14 A | 0% → 100% | 114d → none | resources Денис Митавский [50%]; Андрей Цветков → (БТЛ) Михаил Ларин |
| 329 | Интеграция с Jasper Reports | 2013-11-15 A |  | 0% → 50% |  | resources Денис Митавский [50%]; Андрей Цветков → (БТЛ) Михаил Ларин |
| 330 | GUI - отображение отчётов |  |  |  |  | resources none → Денис Митавский |
| 397 | **Тестирование** | 2014-03-05 → 2014-03-26 (+21d) | 2014-06-06 → 2014-06-27 (+21d) |  | 69d → 54d |  |
| 398 | **Функциональное тестирование** | 2014-03-05 → 2014-03-26 (+21d) | 2014-05-16 → 2014-06-06 (+21d) |  | 69d → 54d |  |
| 399 | Подготовка ПМИ | 2014-03-05 → 2014-03-26 (+21d) | 2014-03-11 → 2014-04-01 (+21d) |  | 69d → 54d |  |
| 400 | Разработка "сценариев тестирования" | 2014-03-05 → 2014-03-26 (+21d) | 2014-03-25 → 2014-04-15 (+21d) |  | 74d → 59d |  |
| 401 | Разработка модели нагрузки для тестирования | 2014-03-12 → 2014-04-02 (+21d) | 2014-03-25 → 2014-04-15 (+21d) |  | 74d → 59d |  |
| 402 | Адаптация автоматизированных сценариев от СМ4 для создания нагрузки | 2014-03-12 → 2014-04-02 (+21d) | 2014-04-15 → 2014-05-06 (+21d) |  | 69d → 54d |  |
| 403 | **Проведение тестирования** | 2014-03-26 → 2014-04-16 (+21d) | 2014-05-16 → 2014-06-06 (+21d) |  | 74d → 59d |  |
| 404 | **Подготовка среды тестирования** | 2014-03-26 → 2014-04-16 (+21d) | 2014-04-08 → 2014-04-29 (+21d) |  | 74d → 59d |  |
| 405 | Разворачивание системы | 2014-03-26 → 2014-04-16 (+21d) | 2014-04-01 → 2014-04-22 (+21d) |  | 117d → 102d |  |
| 406 | Система готова для подключения инструментов мониторинга | 2014-04-01 → 2014-04-22 (+21d) | 2014-04-01 → 2014-04-22 (+21d) |  | 117d → 102d |  |

| ID | Task | Start | Finish | Total float |
| --- | --- | --- | --- | --- |
| 407 | Наполнение данными | 2014-03-26 → 2014-04-16 (+21d) | 2014-04-08 → 2014-04-29 (+21d) | 74d → 59d |
| 408 | Среда тестирования готова | 2014-04-15 → 2014-05-06 (+21d) | 2014-04-15 → 2014-05-06 (+21d) | 69d → 54d |
| 409 | Проведение тестирования | 2014-04-16 → 2014-05-07 (+21d) | 2014-04-29 → 2014-05-20 (+21d) | 69d → 54d |
| 410 | **Обработка результатов тестирования и внесение изменений в модуль** | 2014-04-28 → 2014-05-19 (+21d) | 2014-05-16 → 2014-06-06 (+21d) | 69d → 54d |
| 411 | Устранение замечаний по результатам функционального тестирования | 2014-04-28 → 2014-05-19 (+21d) | 2014-05-16 → 2014-06-06 (+21d) | 69d → 54d |
| 412 | Проверка устранения замечаний | 2014-05-09 → 2014-05-30 (+21d) | 2014-05-16 → 2014-06-06 (+21d) | 69d → 54d |
| 413 | **Нагрузочное тестирование** | 2014-04-29 → 2014-05-20 (+21d) | 2014-06-06 → 2014-06-27 (+21d) | 69d → 54d |
| 414 | Стенд для нагрузочного тестирования подготовлен | 2014-04-29 → 2014-05-20 (+21d) | 2014-04-29 → 2014-05-20 (+21d) | 82d → 67d |
| 415 | Проведения нагрузочного тестирования | 2014-05-19 → 2014-06-09 (+21d) | 2014-05-30 → 2014-06-20 (+21d) | 69d → 54d |
| 416 | Обработка результатов нагрузочного тестирования | 2014-06-02 → 2014-06-23 (+21d) | 2014-06-06 → 2014-06-27 (+21d) | 69d → 54d |
| 417 | **Подготовка документации** | 2014-03-05 → 2014-03-26 (+21d) | 2014-06-24 → 2014-07-15 (+21d) | 57d → 42d |
| 418 | Разработка документа "Концепция системы " | 2014-03-05 → 2014-03-26 (+21d) | 2014-04-29 → 2014-05-20 (+21d) | 57d → 42d |
| 419 | Разработка "Software Architecture Document" | 2014-04-30 → 2014-05-21 (+21d) | 2014-06-24 → 2014-07-15 (+21d) | 57d → 42d |
| 420 | Документы подготовлены | 2014-06-24 → 2014-07-15 (+21d) | 2014-06-24 → 2014-07-15 (+21d) | 57d → 42d |

## Version 51 (saved 2013-12-13)

Note of the change: Merge branch 'master' of ssh://89.175.40.143/srv/repos/git/CM5

Last finish stays 2014-09-11. Complete tasks 85 → 88.

Changed:

| ID | Task | Start | Finish | Duration | Complete | Total float | Predecessors |
| --- | --- | --- | --- | --- | --- | --- | --- |
| 1 | **Разработка версии CM4/5** |  |  |  | 32% → 34% |  |  |
| 9 | **Создание модуля "Делопроизводство" (документоориентированная среда)** |  |  |  | 33% → 36% |  |  |
| 20 | **Проектирование и формирование ядра системы** |  |  |  | 41% → 42% |  |  |
| 325 | **Работа с отчетами** |  | 2013-12-19 → 2013-12-26 (+7d) | 35d → 40d | 50% → 75% | 114d → 109d |  |
| 329 | Интеграция с Jasper Reports |  | 2013-12-05 → 2013-12-12 A (+7d) | 15d → 20d | 50% → 100% | 114d → none |  |
| 330 | GUI - отображение отчётов | 2013-12-06 → 2013-12-13 (+7d) | 2013-12-19 → 2013-12-26 (+7d) |  |  | 114d → 109d |  |
| 331 | **GUI** |  | 2013-12-09 → 2014-03-04 (+85d) | 161d? → 214d? | 43% → 47% | 120d → 67d |  |
| 333 | Адаптация компонентов GUI из СМ4 для наложения на архитектуру см5 |  | 2013-09-16 → 2013-09-02 A (-14d) | 40d → 30d | 75% → 100% | 180d → none |  |
| 358 | **GUI - виджеты разработка** | 2013-10-01 A | 2013-12-09 → 2014-03-04 (+85d) | 50d? → 103d? | 0% → 9% | 120d → 67d |  |
| 359 | Дата/время | 2013-10-01 A | 2013-10-01 → 2013-10-07 A (+6d) | 1d? → 5d | 0% → 100% | 169d → none |  |
| 360 | Остальные без особенностей стиля ст.лебедева (базовый набор) | 2013-10-01 → 2013-12-13 (+73d) | 2013-11-04 → 2014-01-28 (+85d) |  |  | 120d → 67d | 353 → 353, 357, 329 |
| 361 | Остальные для стиля ст.лебедева | 2013-11-05 → 2014-01-29 (+85d) | 2013-12-09 → 2014-03-04 (+85d) |  |  | 120d → 67d |  |
| 362 | **GUI - брендинг, стилизация, темы** | 2013-11-05 → 2014-01-29 (+85d) | 2013-11-13 → 2014-02-04 (+83d) | 7d → 5d |  | 138d → 87d |  |
| 363 | Концепция | 2013-11-05 → 2014-01-29 (+85d) | 2013-11-13 → 2014-02-04 (+83d) |  |  | 138d → 87d |  |
| 365 | **Дополнительные сервисы платформы** |  | 2014-01-15 → 2014-03-06 (+50d) | 93d → 129d |  |  |  |
| 372 | Уточнение состава и сроков работ | 2013-12-10 → 2014-03-05 (+85d) | 2013-12-11 → 2014-03-06 (+85d) |  |  | 120d → 67d |  |
| 384 | **Разработка** |  |  |  | 17% → 28% |  |  |
| 385 | Контроль и корректировка технических решений "Архитектурный комитет" |  |  |  | 38% → 62% |  |  |
| 395 | Подготовка отчетов | 2013-10-29 → 2013-12-09 (+41d) | 2013-12-23 → 2014-02-12 (+51d) |  |  | 132d → 103d | 74 → 74, 386 |

## Version 52 (saved 2014-01-24)

Note of the change: ,Обновление

Last finish stays 2014-09-11. Complete tasks 88 → 94.

Added:

| ID | Task | Duration | Start | Finish | Predecessors | Constraint | Resources |
| --- | --- | --- | --- | --- | --- | --- | --- |
| 89 | Приступили к выполнению антикризисного плана | 0d | 2014-01-27 | 2014-01-27 |  | start no earlier than 2014-01-27 |  |
| 90 | Отладка Маппера Поручения | 1d | 2014-01-27 | 2014-01-27 | 89 |  | Александр Власюк |
| 91 | Отладка Маппера исполнения | 1d | 2014-01-27 | 2014-01-27 | 89 |  | Александр Власюк |
| 92 | Вспомогательная коллекция "responce" | 1d | 2014-01-27 | 2014-01-27 | 89 |  | (БТЛ) Михаил Ларин |
| 93 | Отладка мапперов | 1d | 2014-01-28 | 2014-01-28 | 90, 91 |  | Александр Власюк |
| 94 | UI - коллекции (7) | 3d | 2014-01-28 | 2014-01-30 | 92 |  | (БТЛ) Михаил Ларин |
| 95 | **Доработка ВнД** | 90d | 2013-09-23 | 2014-02-05 |  |  |  |
| 96 | Поддержка работы с Вложениями | 3d | 2014-01-27 | 2014-01-29 | 89 |  | Сергей Околот |
| 97 | Поддержка работы с ReachText | 3d | 2014-01-27 | 2014-01-29 | 89 |  | Леся Пуховая |
| 98 | Правила вычисления дправ доступа - реализация | 2d | 2014-01-27 | 2014-01-28 | 89 |  | (БТЛ) Михаил Ларин |
| 99 | Поддержка полнотекстового поиска | 5d | 2014-01-30 | 2014-02-05 | 96 |  | Сергей Околот |
| 100 | Базовый сервис поддержки сценариев (+DOEL) | 3d | 2014-01-30 | 2014-02-03 | 97 |  | (БТЛ) Михаил Ларин |
| 101 | **Перенос Логики работы агентов** | 85d | 2013-09-23 | 2014-01-29 |  |  |  |
| 102 | Подбор варианта реализации | 3d | 2014-01-27 | 2014-01-29 | 89 |  | Андрей Пирожков |
| 103 | Реализация и отладка переноса логики | 3d | 2013-09-23 | 2013-09-25 |  |  |  |

Removed: 92 Вложения; 93 Форматированный текст

Changed:

| ID | Task | Start | Finish | Duration | Complete | Total float | Predecessors | Other |
| --- | --- | --- | --- | --- | --- | --- | --- | --- |
| 9 | **Создание модуля "Делопроизводство" (документоориентированная среда)** |  | 2014-07-15 → 2014-08-22 (+38d) | 309d? → 337d? | 36% → 37% | 42d → 14d |  |  |
| 20 | **Проектирование и формирование ядра системы** |  | 2014-03-25 → 2014-05-02 (+38d) | 229d? → 257d? | 42% → 43% | 54d → 26d |  |  |
| 68 | **Слой сопряжения CMJ server (CM4)** |  | 2014-03-25 → 2014-05-02 (+38d) | 188d? → 216d? | 24% → 25% | 54d → 26d |  |  |
| 76 | **Интеграция с CMJ по Внутренним Документам** |  | 2013-12-17 → 2014-02-05 (+50d) | 62d? → 90d? |  | 54d → 26d |  |  |
| 80 | Mapper СС | 2013-10-31 A | 2013-11-01 A |  | 0% → 100% | 82d → none |  |  |
| 82 | Mapper Каталога | 2013-12-03 A | 2013-12-04 A |  | 0% → 100% | 54d → none |  |  |
| 83 | Конфиг ДОП Портала | 2013-09-25 A | 2013-09-27 A |  | 0% → 100% | 102d → none |  |  |
| 84 | Mapper Портала | 2013-10-31 A | 2013-11-01 A |  | 0% → 100% | 79d → none |  |  |
| 86 | Maper СО | 2013-12-05 A | 2013-12-06 A |  | 0% → 100% | 54d → none |  |  |
| 87 | Конфиг ДОП ВнД | 2013-09-27 A | 2013-10-01 A |  | 0% → 100% | 96.25d → none |  |  |
| 88 | **Mapper ВнД** | 2013-12-09 → 2014-01-27 (+49d) | 2013-12-11 → 2014-01-30 (+50d) | 3d → 4d |  | 54d → 26d |  |  |
| 106 | Аутентификация |  |  |  |  | 79.25d → 83.25d |  | resources Влад Симоненко → Андрей Карандей |
| 142 | ВнД | 2013-12-11 → 2014-01-30 (+50d) | 2013-12-11 → 2014-01-30 (+50d) |  |  | 54d → 26d | 129, 80, 130, 82, 127, 84, 131, 86, 88, 132, 105, 106, Вложения, Форматированный текст, 107, 119 → 129, 80, 130, 82, 127, 84, 131, 86, 88, 132, 105, 106, 107, 119 |  |
| 143 | **Адаптация CMJ-server** | 2013-12-12 → 2014-01-31 (+50d) | 2013-12-13 → 2014-02-03 (+52d) |  |  | 56d → 28d |  |  |
| 144 | Подмена РБД для CMJ-Server | 2013-12-12 → 2014-01-31 (+50d) | 2013-12-13 → 2014-02-03 (+52d) |  |  | 56d → 28d |  |  |
| 145 | Имплементация аналогов @-функций для Sochi-server | 2013-12-12 → 2014-01-31 (+50d) | 2013-12-13 → 2014-02-03 (+52d) |  |  | 56d → 28d |  |  |
| 146 | Объединение War | 2013-12-12 → 2014-01-31 (+50d) | 2013-12-12 → 2014-01-31 (+50d) |  |  | 57d → 29d |  |  |
| 147 | **Инструмент заполнения** | 2013-12-12 → 2014-01-31 (+50d) | 2013-12-17 → 2014-02-05 (+50d) |  |  | 54d → 26d |  |  |
| 148 | **Заливка данных для демонстрации** | 2013-12-12 → 2014-01-31 (+50d) | 2013-12-17 → 2014-02-05 (+50d) |  |  | 54d → 26d |  |  |
| 149 | Подготовка задачи | 2013-12-12 → 2014-01-31 (+50d) | 2013-12-12 → 2014-01-31 (+50d) |  |  | 54d → 26d |  |  |
| 150 | Написание скриптов заливки | 2013-12-13 → 2014-02-03 (+52d) | 2013-12-17 → 2014-02-05 (+50d) |  |  | 54d → 26d |  |  |
| 151 | Инструмент заполнения Каталога | 2013-12-12 → 2014-01-31 (+50d) | 2013-12-16 → 2014-02-04 (+50d) |  |  | 55d → 27d |  |  |
| 152 | Инструмент заполнения СС | 2013-12-12 → 2014-01-31 (+50d) | 2013-12-16 → 2014-02-04 (+50d) |  |  | 55d → 27d |  |  |
| 153 | Инструмент заполнения Портала | 2013-12-12 → 2014-01-31 (+50d) | 2013-12-16 → 2014-02-04 (+50d) |  |  | 55d → 27d |  |  |
| 154 | Инструмент заполнения СО | 2013-12-12 → 2014-01-31 (+50d) | 2013-12-16 → 2014-02-04 (+50d) |  |  | 55d → 27d |  |  |
| 155 | Инструмент заполнения СпО | 2013-12-12 → 2014-01-31 (+50d) | 2013-12-16 → 2014-02-04 (+50d) |  |  | 55d → 27d |  |  |
| 174 | **Интеграция с CMJ по Входящим документам** | 2013-12-18 → 2014-02-06 (+50d) | 2014-02-07 → 2014-03-19 (+40d) |  |  | 86.2d → 58.2d |  |  |
| 175 | Конфиг ДОП | 2013-12-18 → 2014-02-06 (+50d) | 2013-12-25 → 2014-02-13 (+50d) |  |  | 86.2d → 58.2d |  |  |
| 176 | Mapper | 2013-12-26 → 2014-02-14 (+50d) | 2014-01-13 → 2014-02-20 (+38d) |  |  | 86.2d → 58.2d |  |  |
| 177 | **Настраиваемые коллекции** | 2014-01-13 → 2014-02-20 (+38d) | 2014-01-20 → 2014-02-27 (+38d) |  |  | 100.2d → 72.2d |  |  |
| 178 | **Конфигурация коллекций** | 2014-01-13 → 2014-02-20 (+38d) | 2014-01-17 → 2014-02-26 (+40d) |  |  | 100.2d → 72.2d |  |  |
| 179 | Типовая иерархия кастомных папок (3шт) | 2014-01-13 → 2014-02-20 (+38d) | 2014-01-15 → 2014-02-24 (+40d) |  |  | 100.2d → 72.2d |  |  |
| 180 | Системные настройки для Вх | 2014-01-15 → 2014-02-24 (+40d) | 2014-01-17 → 2014-02-26 (+40d) |  |  | 100.2d → 72.2d |  |  |
| 181 | Проверка работы | 2014-01-17 → 2014-02-26 (+40d) | 2014-01-20 → 2014-02-27 (+38d) |  |  | 100.2d → 72.2d |  |  |
| 182 | **Разработка адаптеров для Вх** | 2014-01-13 → 2014-02-20 (+38d) | 2014-01-27 → 2014-03-06 (+38d) |  |  | 86.2d → 58.2d |  |  |
| 183 | Задание поставлено | 2014-01-13 → 2014-02-20 (+38d) | 2014-01-13 → 2014-02-20 (+38d) |  |  | 86.2d → 58.2d |  |  |
| 184 | Разработка архитектуры дя адаптеров | 2014-01-13 → 2014-02-20 (+38d) | 2014-01-20 → 2014-02-27 (+38d) |  |  | 86.2d → 58.2d |  |  |
| 185 | Разработка адаптеров | 2014-01-20 → 2014-02-27 (+38d) | 2014-01-27 → 2014-03-06 (+38d) |  |  | 86.2d → 58.2d |  |  |
| 186 | **Разработка коллекций** | 2014-01-27 → 2014-03-06 (+38d) | 2014-02-07 → 2014-03-19 (+40d) |  |  | 86.2d → 58.2d |  |  |
| 187 | Коллекции | 2014-01-27 → 2014-03-06 (+38d) | 2014-02-07 → 2014-03-19 (+40d) |  |  | 86.2d → 58.2d |  |  |
| 188 | Интеграция по Вх выполнена | 2014-02-07 → 2014-03-19 (+40d) | 2014-02-07 → 2014-03-19 (+40d) |  |  | 86.2d → 58.2d |  |  |
| 189 | **Интеграция с CMJ по ОРД** | 2013-12-18 → 2014-02-06 (+50d) | 2014-02-10 → 2014-03-20 (+38d) |  |  | 85d → 57d |  |  |
| 190 | Конфиг ДОП | 2013-12-18 → 2014-02-06 (+50d) | 2013-12-25 → 2014-02-13 (+50d) |  |  | 85d → 57d |  |  |
| 191 | Mapper | 2013-12-26 → 2014-02-14 (+50d) | 2014-01-14 → 2014-02-21 (+38d) |  |  | 85d → 57d |  |  |
| 192 | **Настраиваемые коллекции** | 2014-01-15 → 2014-02-24 (+40d) | 2014-01-21 → 2014-02-28 (+38d) |  |  | 99d → 71d |  |  |
| 193 | **Конфигурация коллекций** | 2014-01-15 → 2014-02-24 (+40d) | 2014-01-20 → 2014-02-27 (+38d) |  |  | 99d → 71d |  |  |
| 194 | Типовая иерархия кастомных папок (3шт) | 2014-01-15 → 2014-02-24 (+40d) | 2014-01-16 → 2014-02-25 (+40d) |  |  | 99d → 71d |  |  |
| 195 | Системные настройки для ОРД | 2014-01-17 → 2014-02-26 (+40d) | 2014-01-20 → 2014-02-27 (+38d) |  |  | 99d → 71d |  |  |
| 196 | Проверка работы | 2014-01-21 → 2014-02-28 (+38d) | 2014-01-21 → 2014-02-28 (+38d) |  |  | 99d → 71d |  |  |
| 197 | **Разработка адаптеров для ОРД** | 2014-01-14 → 2014-02-21 (+38d) | 2014-01-28 → 2014-03-07 (+38d) |  |  | 85d → 57d |  |  |
| 198 | Задание поставлено | 2014-01-14 → 2014-02-21 (+38d) | 2014-01-14 → 2014-02-21 (+38d) |  |  | 85d → 57d |  |  |
| 199 | Разработка архитектуры дя адаптеров | 2014-01-15 → 2014-02-24 (+40d) | 2014-01-21 → 2014-02-28 (+38d) |  |  | 85d → 57d |  |  |
| 200 | Разработка адаптеров | 2014-01-22 → 2014-03-03 (+40d) | 2014-01-28 → 2014-03-07 (+38d) |  |  | 85d → 57d |  |  |
| 201 | **Разработка коллекций** | 2014-01-29 → 2014-03-10 (+40d) | 2014-02-10 → 2014-03-20 (+38d) |  |  | 85d → 57d |  |  |
| 202 | Коллекции | 2014-01-29 → 2014-03-10 (+40d) | 2014-02-10 → 2014-03-20 (+38d) |  |  | 85d → 57d |  |  |
| 203 | Интеграция по ОРД выполнена | 2014-02-10 → 2014-03-20 (+38d) | 2014-02-10 → 2014-03-20 (+38d) |  |  | 85d → 57d |  |  |
| 204 | **Интеграция с CMJ по "Кейсам"** | 2013-12-18 → 2014-02-06 (+50d) | 2014-02-10 → 2014-03-20 (+38d) |  |  | 85d → 57d |  |  |
| 205 | Конфиг ДОП | 2013-12-18 → 2014-02-06 (+50d) | 2013-12-25 → 2014-02-13 (+50d) |  |  | 85d → 57d |  |  |
| 206 | Mapper | 2013-12-26 → 2014-02-14 (+50d) | 2014-01-14 → 2014-02-21 (+38d) |  |  | 85d → 57d |  |  |
| 207 | **Настраиваемые коллекции** | 2014-01-15 → 2014-02-24 (+40d) | 2014-01-21 → 2014-02-28 (+38d) |  |  | 99d → 71d |  |  |
| 208 | **Конфигурация коллекций** | 2014-01-15 → 2014-02-24 (+40d) | 2014-01-20 → 2014-02-27 (+38d) |  |  | 99d → 71d |  |  |
| 209 | Типовая иерархия кастомных папок (3шт) | 2014-01-15 → 2014-02-24 (+40d) | 2014-01-16 → 2014-02-25 (+40d) |  |  | 99d → 71d |  |  |
| 210 | Системные настройки для Кейс | 2014-01-17 → 2014-02-26 (+40d) | 2014-01-20 → 2014-02-27 (+38d) |  |  | 99d → 71d |  |  |
| 211 | Проверка работы | 2014-01-21 → 2014-02-28 (+38d) | 2014-01-21 → 2014-02-28 (+38d) |  |  | 99d → 71d |  |  |
| 212 | **Разработка адаптеров для Кейс** | 2014-01-14 → 2014-02-21 (+38d) | 2014-01-28 → 2014-03-07 (+38d) |  |  | 85d → 57d |  |  |
| 213 | Задание поставлено | 2014-01-14 → 2014-02-21 (+38d) | 2014-01-14 → 2014-02-21 (+38d) |  |  | 85d → 57d |  |  |
| 214 | Разработка архитектуры дя адаптеров | 2014-01-15 → 2014-02-24 (+40d) | 2014-01-21 → 2014-02-28 (+38d) |  |  | 85d → 57d |  |  |
| 215 | Разработка адаптеров | 2014-01-22 → 2014-03-03 (+40d) | 2014-01-28 → 2014-03-07 (+38d) |  |  | 85d → 57d |  |  |
| 216 | **Разработка коллекций** | 2014-01-29 → 2014-03-10 (+40d) | 2014-02-10 → 2014-03-20 (+38d) |  |  | 85d → 57d |  |  |
| 217 | Коллекции | 2014-01-29 → 2014-03-10 (+40d) | 2014-02-10 → 2014-03-20 (+38d) |  |  | 85d → 57d |  |  |

| ID | Task | Start | Finish | Total float |
| --- | --- | --- | --- | --- |
| 218 | Интеграция по Кейс выполнена | 2014-02-10 → 2014-03-20 (+38d) | 2014-02-10 → 2014-03-20 (+38d) | 85d → 57d |
| 219 | **Интеграция с CMJ по Исходящие документам** | 2013-12-12 → 2014-01-31 (+50d) | 2014-02-04 → 2014-03-14 (+38d) | 89d → 61d |
| 220 | Конфиг ДОП | 2013-12-12 → 2014-01-31 (+50d) | 2013-12-19 → 2014-02-07 (+50d) | 89d → 61d |
| 221 | Mapper | 2013-12-20 → 2014-02-10 (+52d) | 2013-12-27 → 2014-02-17 (+52d) | 89d → 61d |
| 222 | **Настраиваемые коллекции** | 2014-01-09 → 2014-02-18 (+40d) | 2014-01-15 → 2014-02-24 (+40d) | 103d → 75d |
| 223 | **Конфигурация коллекций** | 2014-01-09 → 2014-02-18 (+40d) | 2014-01-14 → 2014-02-21 (+38d) | 103d → 75d |
| 224 | Типовая иерархия кастомных папок (3шт) | 2014-01-09 → 2014-02-18 (+40d) | 2014-01-10 → 2014-02-19 (+40d) | 103d → 75d |
| 225 | Системные настройки для Исх | 2014-01-13 → 2014-02-20 (+38d) | 2014-01-14 → 2014-02-21 (+38d) | 103d → 75d |
| 226 | Проверка работы | 2014-01-15 → 2014-02-24 (+40d) | 2014-01-15 → 2014-02-24 (+40d) | 103d → 75d |
| 227 | **Разработка адаптеров для Исх** | 2013-12-27 → 2014-02-17 (+52d) | 2014-01-22 → 2014-03-03 (+40d) | 89d → 61d |
| 228 | Задание поставлено | 2013-12-27 → 2014-02-17 (+52d) | 2013-12-27 → 2014-02-17 (+52d) | 89d → 61d |
| 229 | Разработка архитектуры дя адаптеров | 2014-01-09 → 2014-02-18 (+40d) | 2014-01-15 → 2014-02-24 (+40d) | 89d → 61d |
| 230 | Разработка адаптеров | 2014-01-16 → 2014-02-25 (+40d) | 2014-01-22 → 2014-03-03 (+40d) | 89d → 61d |
| 231 | **Разработка коллекций** | 2014-01-23 → 2014-03-04 (+40d) | 2014-02-04 → 2014-03-14 (+38d) | 89d → 61d |
| 232 | Коллекции | 2014-01-23 → 2014-03-04 (+40d) | 2014-02-04 → 2014-03-14 (+38d) | 89d → 61d |
| 233 | Интеграция по Исх выполнена | 2014-02-04 → 2014-03-14 (+38d) | 2014-02-04 → 2014-03-14 (+38d) | 89d → 61d |
| 234 | **Интеграция с CMJ по самостоятельным поручениям** | 2013-12-18 → 2014-02-06 (+50d) | 2014-02-10 → 2014-03-20 (+38d) | 85d → 57d |
| 235 | Конфиг ДОП | 2013-12-18 → 2014-02-06 (+50d) | 2013-12-25 → 2014-02-13 (+50d) | 85d → 57d |
| 236 | Mapper | 2013-12-26 → 2014-02-14 (+50d) | 2014-01-14 → 2014-02-21 (+38d) | 85d → 57d |
| 237 | **Настраиваемые коллекции** | 2014-01-15 → 2014-02-24 (+40d) | 2014-01-21 → 2014-02-28 (+38d) | 99d → 71d |
| 238 | **Конфигурация коллекций** | 2014-01-15 → 2014-02-24 (+40d) | 2014-01-20 → 2014-02-27 (+38d) | 99d → 71d |
| 239 | Типовая иерархия кастомных папок (3шт) | 2014-01-15 → 2014-02-24 (+40d) | 2014-01-16 → 2014-02-25 (+40d) | 99d → 71d |
| 240 | Системные настройки для Поручений | 2014-01-17 → 2014-02-26 (+40d) | 2014-01-20 → 2014-02-27 (+38d) | 99d → 71d |
| 241 | Проверка работы | 2014-01-21 → 2014-02-28 (+38d) | 2014-01-21 → 2014-02-28 (+38d) | 99d → 71d |
| 242 | **Разработка адаптеров для Поручений** | 2014-01-14 → 2014-02-21 (+38d) | 2014-01-28 → 2014-03-07 (+38d) | 85d → 57d |
| 243 | Задание поставлено | 2014-01-14 → 2014-02-21 (+38d) | 2014-01-14 → 2014-02-21 (+38d) | 85d → 57d |
| 244 | Разработка архитектуры дя адаптеров | 2014-01-15 → 2014-02-24 (+40d) | 2014-01-21 → 2014-02-28 (+38d) | 85d → 57d |
| 245 | Разработка адаптеров | 2014-01-22 → 2014-03-03 (+40d) | 2014-01-28 → 2014-03-07 (+38d) | 85d → 57d |
| 246 | **Разработка коллекций** | 2014-01-29 → 2014-03-10 (+40d) | 2014-02-10 → 2014-03-20 (+38d) | 85d → 57d |
| 247 | Коллекции | 2014-01-29 → 2014-03-10 (+40d) | 2014-02-10 → 2014-03-20 (+38d) | 85d → 57d |
| 248 | Интеграция по Поручений выполнена | 2014-02-10 → 2014-03-20 (+38d) | 2014-02-10 → 2014-03-20 (+38d) | 85d → 57d |
| 249 | **Интеграция с CMJ по ОГ** | 2013-12-18 → 2014-02-06 (+50d) | 2014-02-10 → 2014-03-20 (+38d) | 85d → 57d |
| 250 | Конфиг ДОП | 2013-12-18 → 2014-02-06 (+50d) | 2013-12-25 → 2014-02-13 (+50d) | 85d → 57d |
| 251 | Mapper | 2013-12-26 → 2014-02-14 (+50d) | 2014-01-14 → 2014-02-21 (+38d) | 85d → 57d |
| 252 | **Настраиваемые коллекции** | 2014-01-15 → 2014-02-24 (+40d) | 2014-01-21 → 2014-02-28 (+38d) | 99d → 71d |
| 253 | **Конфигурация коллекций** | 2014-01-15 → 2014-02-24 (+40d) | 2014-01-20 → 2014-02-27 (+38d) | 99d → 71d |
| 254 | Типовая иерархия кастомных папок (3шт) | 2014-01-15 → 2014-02-24 (+40d) | 2014-01-16 → 2014-02-25 (+40d) | 99d → 71d |
| 255 | Системные настройки для ОГ | 2014-01-17 → 2014-02-26 (+40d) | 2014-01-20 → 2014-02-27 (+38d) | 99d → 71d |
| 256 | Проверка работы | 2014-01-21 → 2014-02-28 (+38d) | 2014-01-21 → 2014-02-28 (+38d) | 99d → 71d |
| 257 | **Разработка адаптеров для ОГ** | 2014-01-14 → 2014-02-21 (+38d) | 2014-01-28 → 2014-03-07 (+38d) | 85d → 57d |
| 258 | Задание поставлено | 2014-01-14 → 2014-02-21 (+38d) | 2014-01-14 → 2014-02-21 (+38d) | 85d → 57d |
| 259 | Разработка архитектуры дя адаптеров | 2014-01-15 → 2014-02-24 (+40d) | 2014-01-21 → 2014-02-28 (+38d) | 85d → 57d |
| 260 | Разработка адаптеров | 2014-01-22 → 2014-03-03 (+40d) | 2014-01-28 → 2014-03-07 (+38d) | 85d → 57d |
| 261 | **Разработка коллекций** | 2014-01-29 → 2014-03-10 (+40d) | 2014-02-10 → 2014-03-20 (+38d) | 85d → 57d |
| 262 | Коллекции | 2014-01-29 → 2014-03-10 (+40d) | 2014-02-10 → 2014-03-20 (+38d) | 85d → 57d |
| 263 | Интеграция по ОГ выполнена | 2014-02-10 → 2014-03-20 (+38d) | 2014-02-10 → 2014-03-20 (+38d) | 85d → 57d |
| 264 | **Интеграция с CMJ по сервису согласования** | 2013-12-17 → 2014-02-05 (+50d) | 2014-02-10 → 2014-03-20 (+38d) | 54d → 26d |
| 265 | Получена версия CM4.X c WF движком | 2013-12-17 → 2014-02-05 (+50d) | 2013-12-17 → 2014-02-05 (+50d) | 54d → 26d |
| 266 | Конфиг ДОП | 2013-12-18 → 2014-02-06 (+50d) | 2013-12-25 → 2014-02-13 (+50d) | 54d → 26d |
| 267 | Mapper | 2013-12-26 → 2014-02-14 (+50d) | 2014-01-14 → 2014-02-21 (+38d) | 54d → 26d |
| 268 | **Настраиваемые коллекции** | 2014-01-15 → 2014-02-24 (+40d) | 2014-01-21 → 2014-02-28 (+38d) | 68d → 40d |
| 269 | **Конфигурация коллекций** | 2014-01-15 → 2014-02-24 (+40d) | 2014-01-20 → 2014-02-27 (+38d) | 68d → 40d |
| 270 | Типовая иерархия кастомных папок (3шт) | 2014-01-15 → 2014-02-24 (+40d) | 2014-01-16 → 2014-02-25 (+40d) | 68d → 40d |
| 271 | Системные настройки для СрвСогл | 2014-01-17 → 2014-02-26 (+40d) | 2014-01-20 → 2014-02-27 (+38d) | 68d → 40d |
| 272 | Проверка работы | 2014-01-21 → 2014-02-28 (+38d) | 2014-01-21 → 2014-02-28 (+38d) | 68d → 40d |
| 273 | **Разработка адаптеров для СрвСогл** | 2014-01-14 → 2014-02-21 (+38d) | 2014-01-28 → 2014-03-07 (+38d) | 54d → 26d |
| 274 | Задание поставлено | 2014-01-14 → 2014-02-21 (+38d) | 2014-01-14 → 2014-02-21 (+38d) | 54d → 26d |
| 275 | Разработка архитектуры дя адаптеров | 2014-01-15 → 2014-02-24 (+40d) | 2014-01-21 → 2014-02-28 (+38d) | 54d → 26d |
| 276 | Разработка адаптеров | 2014-01-22 → 2014-03-03 (+40d) | 2014-01-28 → 2014-03-07 (+38d) | 54d → 26d |
| 277 | **Разработка коллекций** | 2014-01-29 → 2014-03-10 (+40d) | 2014-02-10 → 2014-03-20 (+38d) | 54d → 26d |
| 278 | Коллекции | 2014-01-29 → 2014-03-10 (+40d) | 2014-02-10 → 2014-03-20 (+38d) | 54d → 26d |
| 279 | Интеграция по СрвСогл выполнена | 2014-02-10 → 2014-03-20 (+38d) | 2014-02-10 → 2014-03-20 (+38d) | 54d → 26d |
| 280 | **Интеграция с CMJ по Заседаниям** | 2014-02-11 → 2014-03-21 (+38d) | 2014-03-25 → 2014-05-02 (+38d) | 54d → 26d |
| 281 | Конфиг ДОП | 2014-02-11 → 2014-03-21 (+38d) | 2014-02-18 → 2014-03-28 (+38d) | 54d → 26d |
| 282 | Mapper | 2014-02-19 → 2014-03-31 (+40d) | 2014-02-26 → 2014-04-07 (+40d) | 54d → 26d |
| 283 | **Настраиваемые коллекции** | 2014-02-27 → 2014-04-08 (+40d) | 2014-03-05 → 2014-04-14 (+40d) | 68d → 40d |
| 284 | **Конфигурация коллекций** | 2014-02-27 → 2014-04-08 (+40d) | 2014-03-04 → 2014-04-11 (+38d) | 68d → 40d |
| 285 | Типовая иерархия кастомных папок (3шт) | 2014-02-27 → 2014-04-08 (+40d) | 2014-02-28 → 2014-04-09 (+40d) | 68d → 40d |
| 286 | Системные настройки для Зсд | 2014-03-03 → 2014-04-10 (+38d) | 2014-03-04 → 2014-04-11 (+38d) | 68d → 40d |
| 287 | Проверка работы | 2014-03-05 → 2014-04-14 (+40d) | 2014-03-05 → 2014-04-14 (+40d) | 68d → 40d |

| ID | Task | Start | Finish | Total float |
| --- | --- | --- | --- | --- |
| 288 | **Разработка адаптеров для Зсд** | 2014-02-26 → 2014-04-07 (+40d) | 2014-03-12 → 2014-04-21 (+40d) | 54d → 26d |
| 289 | Задание поставлено | 2014-02-26 → 2014-04-07 (+40d) | 2014-02-26 → 2014-04-07 (+40d) | 54d → 26d |
| 290 | Разработка архитектуры дя адаптеров | 2014-02-27 → 2014-04-08 (+40d) | 2014-03-05 → 2014-04-14 (+40d) | 54d → 26d |
| 291 | Разработка адаптеров | 2014-03-06 → 2014-04-15 (+40d) | 2014-03-12 → 2014-04-21 (+40d) | 54d → 26d |
| 292 | **Разработка коллекций** | 2014-03-13 → 2014-04-22 (+40d) | 2014-03-25 → 2014-05-02 (+38d) | 54d → 26d |
| 293 | Коллекции | 2014-03-13 → 2014-04-22 (+40d) | 2014-03-25 → 2014-05-02 (+38d) | 54d → 26d |
| 294 | Интеграция по Зсд выполнена | 2014-03-25 → 2014-05-02 (+38d) | 2014-03-25 → 2014-05-02 (+38d) | 54d → 26d |
| 295 | **Интеграция с CMJ по Обсуждениям и ознакомлениям** | 2013-12-18 → 2014-02-06 (+50d) | 2014-02-10 → 2014-03-20 (+38d) | 85d → 57d |
| 296 | Конфиг ДОП | 2013-12-18 → 2014-02-06 (+50d) | 2013-12-25 → 2014-02-13 (+50d) | 85d → 57d |
| 297 | Mapper | 2013-12-26 → 2014-02-14 (+50d) | 2014-01-14 → 2014-02-21 (+38d) | 85d → 57d |
| 298 | **Настраиваемые коллекции** | 2014-01-15 → 2014-02-24 (+40d) | 2014-01-21 → 2014-02-28 (+38d) | 99d → 71d |
| 299 | **Конфигурация коллекций** | 2014-01-15 → 2014-02-24 (+40d) | 2014-01-20 → 2014-02-27 (+38d) | 99d → 71d |
| 300 | Типовая иерархия кастомных папок (3шт) | 2014-01-15 → 2014-02-24 (+40d) | 2014-01-16 → 2014-02-25 (+40d) | 99d → 71d |
| 301 | Системные настройки для ОО | 2014-01-17 → 2014-02-26 (+40d) | 2014-01-20 → 2014-02-27 (+38d) | 99d → 71d |
| 302 | Проверка работы | 2014-01-21 → 2014-02-28 (+38d) | 2014-01-21 → 2014-02-28 (+38d) | 99d → 71d |
| 303 | **Разработка адаптеров для ОО** | 2014-01-14 → 2014-02-21 (+38d) | 2014-01-28 → 2014-03-07 (+38d) | 85d → 57d |
| 304 | Задание поставлено | 2014-01-14 → 2014-02-21 (+38d) | 2014-01-14 → 2014-02-21 (+38d) | 85d → 57d |
| 305 | Разработка архитектуры дя адаптеров | 2014-01-15 → 2014-02-24 (+40d) | 2014-01-21 → 2014-02-28 (+38d) | 85d → 57d |
| 306 | Разработка адаптеров | 2014-01-22 → 2014-03-03 (+40d) | 2014-01-28 → 2014-03-07 (+38d) | 85d → 57d |
| 307 | **Разработка коллекций** | 2014-01-29 → 2014-03-10 (+40d) | 2014-02-10 → 2014-03-20 (+38d) | 85d → 57d |
| 308 | Коллекции | 2014-01-29 → 2014-03-10 (+40d) | 2014-02-10 → 2014-03-20 (+38d) | 85d → 57d |
| 309 | Интеграция по ОО выполнена | 2014-02-10 → 2014-03-20 (+38d) | 2014-02-10 → 2014-03-20 (+38d) | 85d → 57d |
| 310 | **Интеграция с CMJ по Формированию дел** | 2013-12-18 → 2014-02-06 (+50d) | 2014-02-10 → 2014-03-20 (+38d) | 85d → 57d |
| 311 | Конфиг ДОП | 2013-12-18 → 2014-02-06 (+50d) | 2013-12-25 → 2014-02-13 (+50d) | 85d → 57d |
| 312 | Mapper | 2013-12-26 → 2014-02-14 (+50d) | 2014-01-14 → 2014-02-21 (+38d) | 85d → 57d |
| 313 | **Настраиваемые коллекции** | 2014-01-15 → 2014-02-24 (+40d) | 2014-01-21 → 2014-02-28 (+38d) | 99d → 71d |
| 314 | **Конфигурация коллекций** | 2014-01-15 → 2014-02-24 (+40d) | 2014-01-20 → 2014-02-27 (+38d) | 99d → 71d |
| 315 | Типовая иерархия кастомных папок (3шт) | 2014-01-15 → 2014-02-24 (+40d) | 2014-01-16 → 2014-02-25 (+40d) | 99d → 71d |
| 316 | Системные настройки для ФД | 2014-01-17 → 2014-02-26 (+40d) | 2014-01-20 → 2014-02-27 (+38d) | 99d → 71d |
| 317 | Проверка работы | 2014-01-21 → 2014-02-28 (+38d) | 2014-01-21 → 2014-02-28 (+38d) | 99d → 71d |
| 318 | **Разработка адаптеров для ФД** | 2014-01-14 → 2014-02-21 (+38d) | 2014-01-28 → 2014-03-07 (+38d) | 85d → 57d |
| 319 | Задание поставлено | 2014-01-14 → 2014-02-21 (+38d) | 2014-01-14 → 2014-02-21 (+38d) | 85d → 57d |
| 320 | Разработка архитектуры дя адаптеров | 2014-01-15 → 2014-02-24 (+40d) | 2014-01-21 → 2014-02-28 (+38d) | 85d → 57d |
| 321 | Разработка адаптеров | 2014-01-22 → 2014-03-03 (+40d) | 2014-01-28 → 2014-03-07 (+38d) | 85d → 57d |
| 322 | **Разработка коллекций** | 2014-01-29 → 2014-03-10 (+40d) | 2014-02-10 → 2014-03-20 (+38d) | 85d → 57d |
| 323 | Коллекции | 2014-01-29 → 2014-03-10 (+40d) | 2014-02-10 → 2014-03-20 (+38d) | 85d → 57d |
| 324 | Интеграция по ФД выполнена | 2014-02-10 → 2014-03-20 (+38d) | 2014-02-10 → 2014-03-20 (+38d) | 85d → 57d |
| 410 | **Тестирование** | 2014-03-26 → 2014-05-05 (+40d) | 2014-06-27 → 2014-08-06 (+40d) | 54d → 26d |
| 411 | **Функциональное тестирование** | 2014-03-26 → 2014-05-05 (+40d) | 2014-06-06 → 2014-07-16 (+40d) | 54d → 26d |
| 412 | Подготовка ПМИ | 2014-03-26 → 2014-05-05 (+40d) | 2014-04-01 → 2014-05-09 (+38d) | 54d → 26d |
| 413 | Разработка "сценариев тестирования" | 2014-03-26 → 2014-05-05 (+40d) | 2014-04-15 → 2014-05-23 (+38d) | 59d → 31d |
| 414 | Разработка модели нагрузки для тестирования | 2014-04-02 → 2014-05-12 (+40d) | 2014-04-15 → 2014-05-23 (+38d) | 59d → 31d |
| 415 | Адаптация автоматизированных сценариев от СМ4 для создания нагрузки | 2014-04-02 → 2014-05-12 (+40d) | 2014-05-06 → 2014-06-13 (+38d) | 54d → 26d |
| 416 | **Проведение тестирования** | 2014-04-16 → 2014-05-26 (+40d) | 2014-06-06 → 2014-07-16 (+40d) | 59d → 31d |
| 417 | **Подготовка среды тестирования** | 2014-04-16 → 2014-05-26 (+40d) | 2014-04-29 → 2014-06-06 (+38d) | 59d → 31d |
| 418 | Разворачивание системы | 2014-04-16 → 2014-05-26 (+40d) | 2014-04-22 → 2014-05-30 (+38d) | 102d → 74d |
| 419 | Система готова для подключения инструментов мониторинга | 2014-04-22 → 2014-05-30 (+38d) | 2014-04-22 → 2014-05-30 (+38d) | 102d → 74d |
| 420 | Наполнение данными | 2014-04-16 → 2014-05-26 (+40d) | 2014-04-29 → 2014-06-06 (+38d) | 59d → 31d |
| 421 | Среда тестирования готова | 2014-05-06 → 2014-06-13 (+38d) | 2014-05-06 → 2014-06-13 (+38d) | 54d → 26d |
| 422 | Проведение тестирования | 2014-05-07 → 2014-06-16 (+40d) | 2014-05-20 → 2014-06-27 (+38d) | 54d → 26d |
| 423 | **Обработка результатов тестирования и внесение изменений в модуль** | 2014-05-19 → 2014-06-26 (+38d) | 2014-06-06 → 2014-07-16 (+40d) | 54d → 26d |
| 424 | Устранение замечаний по результатам функционального тестирования | 2014-05-19 → 2014-06-26 (+38d) | 2014-06-06 → 2014-07-16 (+40d) | 54d → 26d |
| 425 | Проверка устранения замечаний | 2014-05-30 → 2014-07-09 (+40d) | 2014-06-06 → 2014-07-16 (+40d) | 54d → 26d |
| 426 | **Нагрузочное тестирование** | 2014-05-20 → 2014-06-27 (+38d) | 2014-06-27 → 2014-08-06 (+40d) | 54d → 26d |
| 427 | Стенд для нагрузочного тестирования подготовлен | 2014-05-20 → 2014-06-27 (+38d) | 2014-05-20 → 2014-06-27 (+38d) | 67d → 39d |
| 428 | Проведения нагрузочного тестирования | 2014-06-09 → 2014-07-17 (+38d) | 2014-06-20 → 2014-07-30 (+40d) | 54d → 26d |
| 429 | Обработка результатов нагрузочного тестирования | 2014-06-23 → 2014-07-31 (+38d) | 2014-06-27 → 2014-08-06 (+40d) | 54d → 26d |
| 430 | **Подготовка документации** | 2014-03-26 → 2014-05-05 (+40d) | 2014-07-15 → 2014-08-22 (+38d) | 42d → 14d |
| 431 | Разработка документа "Концепция системы " | 2014-03-26 → 2014-05-05 (+40d) | 2014-05-20 → 2014-06-27 (+38d) | 42d → 14d |
| 432 | Разработка "Software Architecture Document" | 2014-05-21 → 2014-06-30 (+40d) | 2014-07-15 → 2014-08-22 (+38d) | 42d → 14d |
| 433 | Документы подготовлены | 2014-07-15 → 2014-08-22 (+38d) | 2014-07-15 → 2014-08-22 (+38d) | 42d → 14d |

## Version 53 (saved 2014-02-05)

Note of the change: ОБновление

Last finish stays 2014-09-11. Complete tasks 94 → 96.

Added:

| ID | Task | Duration | Start | Finish | Predecessors | Resources |
| --- | --- | --- | --- | --- | --- | --- |
| 95 | CollectionProvider методы получения только категорий | 5d | 2014-01-30 | 2014-02-05 | 92 | (БТЛ) Олег Еренцов |

Changed:

| ID | Task | Start | Finish | Duration | Complete | Total float | Predecessors | Other |
| --- | --- | --- | --- | --- | --- | --- | --- | --- |
| 9 | **Создание модуля "Делопроизводство" (документоориентированная среда)** |  | 2014-08-22 → 2014-08-28 (+6d) | 337d? → 341d? | 37% → 36% | 14d → 10d |  |  |
| 20 | **Проектирование и формирование ядра системы** |  | 2014-05-02 → 2014-05-08 (+6d) | 257d? → 261d? | 43% → 42% | 26d → 22d |  |  |
| 68 | **Слой сопряжения CMJ server (CM4)** |  | 2014-05-02 → 2014-05-08 (+6d) | 216d? → 220d? |  | 26d → 22d |  |  |
| 76 | **Интеграция с CMJ по Внутренним Документам** |  | 2014-02-05 → 2014-02-11 (+6d) | 90d? → 94d? | 62% → 58% | 26d → 22d |  |  |
| 88 | **Mapper ВнД** | 2014-01-27 A | 2014-01-30 → 2014-02-05 (+6d) | 4d → 8d | 0% → 15% | 26d → 22d |  |  |
| 89 | Приступили к выполнению антикризисного плана | 2014-01-27 A | 2014-01-27 A |  | 0% → 100% | 26d → none |  |  |
| 90 | Отладка Маппера Поручения | 2014-01-27 A | 2014-01-27 A |  | 0% → 100% | 28d → none |  |  |
| 91 | Отладка Маппера исполнения | 2014-01-27 A | 2014-01-27 → 2014-01-29 (+2d) | 1d → 3d | 0% → 33% | 28d → 23d |  |  |
| 92 | Вспомогательная коллекция "responce" | 2014-01-27 A | 2014-01-27 → 2014-01-29 (+2d) | 1d → 3d | 0% → 33% | 26d → 22d |  |  |
| 93 | Отладка мапперов | 2014-01-28 → 2014-01-30 (+2d) | 2014-01-28 → 2014-02-04 (+7d) | 1d → 4d |  | 28d → 23d |  |  |
| 94 | UI - коллекции (7) | 2014-01-28 → 2014-01-30 (+2d) | 2014-01-30 → 2014-02-04 (+5d) | 3d → 4d |  | 26d → 23d |  |  |
| 96 | **Доработка ВнД** | 2013-09-23 → 2014-01-27 (+126d) | 2014-02-05 → 2014-02-07 (+2d) | 90d → 10d |  | 26d → 24d |  |  |
| 98 | Поддержка работы с ReachText |  | 2014-01-29 → 2014-01-27 (-2d) | 3d → 1d |  | 28d → 26d |  | resources Леся Пуховая → Тугушев Илья |
| 99 | Правила вычисления дправ доступа - реализация | 2014-01-27 → 2014-01-30 (+3d) | 2014-01-28 → 2014-02-04 (+7d) | 2d → 4d |  | 32d → 27d | 89 → 89, 92 |  |
| 101 | Базовый сервис поддержки сценариев (+DOEL) | 2014-01-30 → 2014-01-28 (-2d) | 2014-02-03 → 2014-02-05 (+2d) | 3d → 7d |  | 28d → 26d |  |  |
| 102 | **Перенос Логики работы агентов** | 2013-09-23 → 2014-01-27 (+126d) | 2014-01-29 → 2014-02-07 (+9d) | 85d → 10d |  | 31d → 24d |  |  |
| 103 | Подбор варианта реализации |  | 2014-01-29 → 2014-02-04 (+6d) | 3d → 7d |  | 31d → 24d |  |  |
| 104 | Реализация и отладка переноса логики | 2013-09-23 → 2014-02-05 (+135d) | 2013-09-25 → 2014-02-07 (+135d) |  |  | 113d → 24d | none → 103 |  |
| 143 | ВнД | 2014-01-30 → 2014-02-05 (+6d) | 2014-01-30 → 2014-02-05 (+6d) |  |  | 26d → 22d |  |  |
| 144 | **Адаптация CMJ-server** | 2014-01-31 → 2014-02-06 (+6d) | 2014-02-03 → 2014-02-07 (+4d) |  |  | 28d → 24d |  |  |
| 145 | Подмена РБД для CMJ-Server | 2014-01-31 → 2014-02-06 (+6d) | 2014-02-03 → 2014-02-07 (+4d) |  |  | 28d → 24d |  |  |
| 146 | Имплементация аналогов @-функций для Sochi-server | 2014-01-31 → 2014-02-06 (+6d) | 2014-02-03 → 2014-02-07 (+4d) |  |  | 28d → 24d |  |  |
| 147 | Объединение War | 2014-01-31 → 2014-02-06 (+6d) | 2014-01-31 → 2014-02-06 (+6d) |  |  | 29d → 25d |  |  |
| 148 | **Инструмент заполнения** | 2014-01-31 → 2014-02-06 (+6d) | 2014-02-05 → 2014-02-11 (+6d) |  |  | 26d → 22d |  |  |
| 149 | **Заливка данных для демонстрации** | 2014-01-31 → 2014-02-06 (+6d) | 2014-02-05 → 2014-02-11 (+6d) |  |  | 26d → 22d |  |  |
| 150 | Подготовка задачи | 2014-01-31 → 2014-02-06 (+6d) | 2014-01-31 → 2014-02-06 (+6d) |  |  | 26d → 22d |  |  |
| 151 | Написание скриптов заливки | 2014-02-03 → 2014-02-07 (+4d) | 2014-02-05 → 2014-02-11 (+6d) |  |  | 26d → 22d |  |  |
| 152 | Инструмент заполнения Каталога | 2014-01-31 → 2014-02-06 (+6d) | 2014-02-04 → 2014-02-10 (+6d) |  |  | 27d → 23d |  |  |
| 153 | Инструмент заполнения СС | 2014-01-31 → 2014-02-06 (+6d) | 2014-02-04 → 2014-02-10 (+6d) |  |  | 27d → 23d |  |  |
| 154 | Инструмент заполнения Портала | 2014-01-31 → 2014-02-06 (+6d) | 2014-02-04 → 2014-02-10 (+6d) |  |  | 27d → 23d |  |  |
| 155 | Инструмент заполнения СО | 2014-01-31 → 2014-02-06 (+6d) | 2014-02-04 → 2014-02-10 (+6d) |  |  | 27d → 23d |  |  |
| 156 | Инструмент заполнения СпО | 2014-01-31 → 2014-02-06 (+6d) | 2014-02-04 → 2014-02-10 (+6d) |  |  | 27d → 23d |  |  |
| 175 | **Интеграция с CMJ по Входящим документам** | 2014-02-06 → 2014-02-12 (+6d) | 2014-03-19 → 2014-03-25 (+6d) |  |  | 58.2d → 54.2d |  |  |
| 176 | Конфиг ДОП | 2014-02-06 → 2014-02-12 (+6d) | 2014-02-13 → 2014-02-19 (+6d) |  |  | 58.2d → 54.2d |  |  |
| 177 | Mapper | 2014-02-14 → 2014-02-20 (+6d) | 2014-02-20 → 2014-02-26 (+6d) |  |  | 58.2d → 54.2d |  |  |
| 178 | **Настраиваемые коллекции** | 2014-02-20 → 2014-02-26 (+6d) | 2014-02-27 → 2014-03-05 (+6d) |  |  | 72.2d → 68.2d |  |  |
| 179 | **Конфигурация коллекций** | 2014-02-20 → 2014-02-26 (+6d) | 2014-02-26 → 2014-03-04 (+6d) |  |  | 72.2d → 68.2d |  |  |
| 180 | Типовая иерархия кастомных папок (3шт) | 2014-02-20 → 2014-02-26 (+6d) | 2014-02-24 → 2014-02-28 (+4d) |  |  | 72.2d → 68.2d |  |  |
| 181 | Системные настройки для Вх | 2014-02-24 → 2014-02-28 (+4d) | 2014-02-26 → 2014-03-04 (+6d) |  |  | 72.2d → 68.2d |  |  |
| 182 | Проверка работы | 2014-02-26 → 2014-03-04 (+6d) | 2014-02-27 → 2014-03-05 (+6d) |  |  | 72.2d → 68.2d |  |  |
| 183 | **Разработка адаптеров для Вх** | 2014-02-20 → 2014-02-26 (+6d) | 2014-03-06 → 2014-03-12 (+6d) |  |  | 58.2d → 54.2d |  |  |
| 184 | Задание поставлено | 2014-02-20 → 2014-02-26 (+6d) | 2014-02-20 → 2014-02-26 (+6d) |  |  | 58.2d → 54.2d |  |  |
| 185 | Разработка архитектуры дя адаптеров | 2014-02-20 → 2014-02-26 (+6d) | 2014-02-27 → 2014-03-05 (+6d) |  |  | 58.2d → 54.2d |  |  |
| 186 | Разработка адаптеров | 2014-02-27 → 2014-03-05 (+6d) | 2014-03-06 → 2014-03-12 (+6d) |  |  | 58.2d → 54.2d |  |  |
| 187 | **Разработка коллекций** | 2014-03-06 → 2014-03-12 (+6d) | 2014-03-19 → 2014-03-25 (+6d) |  |  | 58.2d → 54.2d |  |  |
| 188 | Коллекции | 2014-03-06 → 2014-03-12 (+6d) | 2014-03-19 → 2014-03-25 (+6d) |  |  | 58.2d → 54.2d |  |  |
| 189 | Интеграция по Вх выполнена | 2014-03-19 → 2014-03-25 (+6d) | 2014-03-19 → 2014-03-25 (+6d) |  |  | 58.2d → 54.2d |  |  |
| 190 | **Интеграция с CMJ по ОРД** | 2014-02-06 → 2014-02-12 (+6d) | 2014-03-20 → 2014-03-26 (+6d) |  |  | 57d → 53d |  |  |
| 191 | Конфиг ДОП | 2014-02-06 → 2014-02-12 (+6d) | 2014-02-13 → 2014-02-19 (+6d) |  |  | 57d → 53d |  |  |
| 192 | Mapper | 2014-02-14 → 2014-02-20 (+6d) | 2014-02-21 → 2014-02-27 (+6d) |  |  | 57d → 53d |  |  |
| 193 | **Настраиваемые коллекции** | 2014-02-24 → 2014-02-28 (+4d) | 2014-02-28 → 2014-03-06 (+6d) |  |  | 71d → 67d |  |  |
| 194 | **Конфигурация коллекций** | 2014-02-24 → 2014-02-28 (+4d) | 2014-02-27 → 2014-03-05 (+6d) |  |  | 71d → 67d |  |  |
| 195 | Типовая иерархия кастомных папок (3шт) | 2014-02-24 → 2014-02-28 (+4d) | 2014-02-25 → 2014-03-03 (+6d) |  |  | 71d → 67d |  |  |
| 196 | Системные настройки для ОРД | 2014-02-26 → 2014-03-04 (+6d) | 2014-02-27 → 2014-03-05 (+6d) |  |  | 71d → 67d |  |  |
| 197 | Проверка работы | 2014-02-28 → 2014-03-06 (+6d) | 2014-02-28 → 2014-03-06 (+6d) |  |  | 71d → 67d |  |  |
| 198 | **Разработка адаптеров для ОРД** | 2014-02-21 → 2014-02-27 (+6d) | 2014-03-07 → 2014-03-13 (+6d) |  |  | 57d → 53d |  |  |
| 199 | Задание поставлено | 2014-02-21 → 2014-02-27 (+6d) | 2014-02-21 → 2014-02-27 (+6d) |  |  | 57d → 53d |  |  |
| 200 | Разработка архитектуры дя адаптеров | 2014-02-24 → 2014-02-28 (+4d) | 2014-02-28 → 2014-03-06 (+6d) |  |  | 57d → 53d |  |  |
| 201 | Разработка адаптеров | 2014-03-03 → 2014-03-07 (+4d) | 2014-03-07 → 2014-03-13 (+6d) |  |  | 57d → 53d |  |  |
| 202 | **Разработка коллекций** | 2014-03-10 → 2014-03-14 (+4d) | 2014-03-20 → 2014-03-26 (+6d) |  |  | 57d → 53d |  |  |
| 203 | Коллекции | 2014-03-10 → 2014-03-14 (+4d) | 2014-03-20 → 2014-03-26 (+6d) |  |  | 57d → 53d |  |  |
| 204 | Интеграция по ОРД выполнена | 2014-03-20 → 2014-03-26 (+6d) | 2014-03-20 → 2014-03-26 (+6d) |  |  | 57d → 53d |  |  |
| 205 | **Интеграция с CMJ по "Кейсам"** | 2014-02-06 → 2014-02-12 (+6d) | 2014-03-20 → 2014-03-26 (+6d) |  |  | 57d → 53d |  |  |
| 206 | Конфиг ДОП | 2014-02-06 → 2014-02-12 (+6d) | 2014-02-13 → 2014-02-19 (+6d) |  |  | 57d → 53d |  |  |
| 207 | Mapper | 2014-02-14 → 2014-02-20 (+6d) | 2014-02-21 → 2014-02-27 (+6d) |  |  | 57d → 53d |  |  |
| 208 | **Настраиваемые коллекции** | 2014-02-24 → 2014-02-28 (+4d) | 2014-02-28 → 2014-03-06 (+6d) |  |  | 71d → 67d |  |  |
| 209 | **Конфигурация коллекций** | 2014-02-24 → 2014-02-28 (+4d) | 2014-02-27 → 2014-03-05 (+6d) |  |  | 71d → 67d |  |  |
| 210 | Типовая иерархия кастомных папок (3шт) | 2014-02-24 → 2014-02-28 (+4d) | 2014-02-25 → 2014-03-03 (+6d) |  |  | 71d → 67d |  |  |
| 211 | Системные настройки для Кейс | 2014-02-26 → 2014-03-04 (+6d) | 2014-02-27 → 2014-03-05 (+6d) |  |  | 71d → 67d |  |  |
| 212 | Проверка работы | 2014-02-28 → 2014-03-06 (+6d) | 2014-02-28 → 2014-03-06 (+6d) |  |  | 71d → 67d |  |  |

| ID | Task | Start | Finish | Total float |
| --- | --- | --- | --- | --- |
| 213 | **Разработка адаптеров для Кейс** | 2014-02-21 → 2014-02-27 (+6d) | 2014-03-07 → 2014-03-13 (+6d) | 57d → 53d |
| 214 | Задание поставлено | 2014-02-21 → 2014-02-27 (+6d) | 2014-02-21 → 2014-02-27 (+6d) | 57d → 53d |
| 215 | Разработка архитектуры дя адаптеров | 2014-02-24 → 2014-02-28 (+4d) | 2014-02-28 → 2014-03-06 (+6d) | 57d → 53d |
| 216 | Разработка адаптеров | 2014-03-03 → 2014-03-07 (+4d) | 2014-03-07 → 2014-03-13 (+6d) | 57d → 53d |
| 217 | **Разработка коллекций** | 2014-03-10 → 2014-03-14 (+4d) | 2014-03-20 → 2014-03-26 (+6d) | 57d → 53d |
| 218 | Коллекции | 2014-03-10 → 2014-03-14 (+4d) | 2014-03-20 → 2014-03-26 (+6d) | 57d → 53d |
| 219 | Интеграция по Кейс выполнена | 2014-03-20 → 2014-03-26 (+6d) | 2014-03-20 → 2014-03-26 (+6d) | 57d → 53d |
| 220 | **Интеграция с CMJ по Исходящие документам** | 2014-01-31 → 2014-02-06 (+6d) | 2014-03-14 → 2014-03-20 (+6d) | 61d → 57d |
| 221 | Конфиг ДОП | 2014-01-31 → 2014-02-06 (+6d) | 2014-02-07 → 2014-02-13 (+6d) | 61d → 57d |
| 222 | Mapper | 2014-02-10 → 2014-02-14 (+4d) | 2014-02-17 → 2014-02-21 (+4d) | 61d → 57d |
| 223 | **Настраиваемые коллекции** | 2014-02-18 → 2014-02-24 (+6d) | 2014-02-24 → 2014-02-28 (+4d) | 75d → 71d |
| 224 | **Конфигурация коллекций** | 2014-02-18 → 2014-02-24 (+6d) | 2014-02-21 → 2014-02-27 (+6d) | 75d → 71d |
| 225 | Типовая иерархия кастомных папок (3шт) | 2014-02-18 → 2014-02-24 (+6d) | 2014-02-19 → 2014-02-25 (+6d) | 75d → 71d |
| 226 | Системные настройки для Исх | 2014-02-20 → 2014-02-26 (+6d) | 2014-02-21 → 2014-02-27 (+6d) | 75d → 71d |
| 227 | Проверка работы | 2014-02-24 → 2014-02-28 (+4d) | 2014-02-24 → 2014-02-28 (+4d) | 75d → 71d |
| 228 | **Разработка адаптеров для Исх** | 2014-02-17 → 2014-02-21 (+4d) | 2014-03-03 → 2014-03-07 (+4d) | 61d → 57d |
| 229 | Задание поставлено | 2014-02-17 → 2014-02-21 (+4d) | 2014-02-17 → 2014-02-21 (+4d) | 61d → 57d |
| 230 | Разработка архитектуры дя адаптеров | 2014-02-18 → 2014-02-24 (+6d) | 2014-02-24 → 2014-02-28 (+4d) | 61d → 57d |
| 231 | Разработка адаптеров | 2014-02-25 → 2014-03-03 (+6d) | 2014-03-03 → 2014-03-07 (+4d) | 61d → 57d |
| 232 | **Разработка коллекций** | 2014-03-04 → 2014-03-10 (+6d) | 2014-03-14 → 2014-03-20 (+6d) | 61d → 57d |
| 233 | Коллекции | 2014-03-04 → 2014-03-10 (+6d) | 2014-03-14 → 2014-03-20 (+6d) | 61d → 57d |
| 234 | Интеграция по Исх выполнена | 2014-03-14 → 2014-03-20 (+6d) | 2014-03-14 → 2014-03-20 (+6d) | 61d → 57d |
| 235 | **Интеграция с CMJ по самостоятельным поручениям** | 2014-02-06 → 2014-02-12 (+6d) | 2014-03-20 → 2014-03-26 (+6d) | 57d → 53d |
| 236 | Конфиг ДОП | 2014-02-06 → 2014-02-12 (+6d) | 2014-02-13 → 2014-02-19 (+6d) | 57d → 53d |
| 237 | Mapper | 2014-02-14 → 2014-02-20 (+6d) | 2014-02-21 → 2014-02-27 (+6d) | 57d → 53d |
| 238 | **Настраиваемые коллекции** | 2014-02-24 → 2014-02-28 (+4d) | 2014-02-28 → 2014-03-06 (+6d) | 71d → 67d |
| 239 | **Конфигурация коллекций** | 2014-02-24 → 2014-02-28 (+4d) | 2014-02-27 → 2014-03-05 (+6d) | 71d → 67d |
| 240 | Типовая иерархия кастомных папок (3шт) | 2014-02-24 → 2014-02-28 (+4d) | 2014-02-25 → 2014-03-03 (+6d) | 71d → 67d |
| 241 | Системные настройки для Поручений | 2014-02-26 → 2014-03-04 (+6d) | 2014-02-27 → 2014-03-05 (+6d) | 71d → 67d |
| 242 | Проверка работы | 2014-02-28 → 2014-03-06 (+6d) | 2014-02-28 → 2014-03-06 (+6d) | 71d → 67d |
| 243 | **Разработка адаптеров для Поручений** | 2014-02-21 → 2014-02-27 (+6d) | 2014-03-07 → 2014-03-13 (+6d) | 57d → 53d |
| 244 | Задание поставлено | 2014-02-21 → 2014-02-27 (+6d) | 2014-02-21 → 2014-02-27 (+6d) | 57d → 53d |
| 245 | Разработка архитектуры дя адаптеров | 2014-02-24 → 2014-02-28 (+4d) | 2014-02-28 → 2014-03-06 (+6d) | 57d → 53d |
| 246 | Разработка адаптеров | 2014-03-03 → 2014-03-07 (+4d) | 2014-03-07 → 2014-03-13 (+6d) | 57d → 53d |
| 247 | **Разработка коллекций** | 2014-03-10 → 2014-03-14 (+4d) | 2014-03-20 → 2014-03-26 (+6d) | 57d → 53d |
| 248 | Коллекции | 2014-03-10 → 2014-03-14 (+4d) | 2014-03-20 → 2014-03-26 (+6d) | 57d → 53d |
| 249 | Интеграция по Поручений выполнена | 2014-03-20 → 2014-03-26 (+6d) | 2014-03-20 → 2014-03-26 (+6d) | 57d → 53d |
| 250 | **Интеграция с CMJ по ОГ** | 2014-02-06 → 2014-02-12 (+6d) | 2014-03-20 → 2014-03-26 (+6d) | 57d → 53d |
| 251 | Конфиг ДОП | 2014-02-06 → 2014-02-12 (+6d) | 2014-02-13 → 2014-02-19 (+6d) | 57d → 53d |
| 252 | Mapper | 2014-02-14 → 2014-02-20 (+6d) | 2014-02-21 → 2014-02-27 (+6d) | 57d → 53d |
| 253 | **Настраиваемые коллекции** | 2014-02-24 → 2014-02-28 (+4d) | 2014-02-28 → 2014-03-06 (+6d) | 71d → 67d |
| 254 | **Конфигурация коллекций** | 2014-02-24 → 2014-02-28 (+4d) | 2014-02-27 → 2014-03-05 (+6d) | 71d → 67d |
| 255 | Типовая иерархия кастомных папок (3шт) | 2014-02-24 → 2014-02-28 (+4d) | 2014-02-25 → 2014-03-03 (+6d) | 71d → 67d |
| 256 | Системные настройки для ОГ | 2014-02-26 → 2014-03-04 (+6d) | 2014-02-27 → 2014-03-05 (+6d) | 71d → 67d |
| 257 | Проверка работы | 2014-02-28 → 2014-03-06 (+6d) | 2014-02-28 → 2014-03-06 (+6d) | 71d → 67d |
| 258 | **Разработка адаптеров для ОГ** | 2014-02-21 → 2014-02-27 (+6d) | 2014-03-07 → 2014-03-13 (+6d) | 57d → 53d |
| 259 | Задание поставлено | 2014-02-21 → 2014-02-27 (+6d) | 2014-02-21 → 2014-02-27 (+6d) | 57d → 53d |
| 260 | Разработка архитектуры дя адаптеров | 2014-02-24 → 2014-02-28 (+4d) | 2014-02-28 → 2014-03-06 (+6d) | 57d → 53d |
| 261 | Разработка адаптеров | 2014-03-03 → 2014-03-07 (+4d) | 2014-03-07 → 2014-03-13 (+6d) | 57d → 53d |
| 262 | **Разработка коллекций** | 2014-03-10 → 2014-03-14 (+4d) | 2014-03-20 → 2014-03-26 (+6d) | 57d → 53d |
| 263 | Коллекции | 2014-03-10 → 2014-03-14 (+4d) | 2014-03-20 → 2014-03-26 (+6d) | 57d → 53d |
| 264 | Интеграция по ОГ выполнена | 2014-03-20 → 2014-03-26 (+6d) | 2014-03-20 → 2014-03-26 (+6d) | 57d → 53d |
| 265 | **Интеграция с CMJ по сервису согласования** | 2014-02-05 → 2014-02-11 (+6d) | 2014-03-20 → 2014-03-26 (+6d) | 26d → 22d |
| 266 | Получена версия CM4.X c WF движком | 2014-02-05 → 2014-02-11 (+6d) | 2014-02-05 → 2014-02-11 (+6d) | 26d → 22d |
| 267 | Конфиг ДОП | 2014-02-06 → 2014-02-12 (+6d) | 2014-02-13 → 2014-02-19 (+6d) | 26d → 22d |
| 268 | Mapper | 2014-02-14 → 2014-02-20 (+6d) | 2014-02-21 → 2014-02-27 (+6d) | 26d → 22d |
| 269 | **Настраиваемые коллекции** | 2014-02-24 → 2014-02-28 (+4d) | 2014-02-28 → 2014-03-06 (+6d) | 40d → 36d |
| 270 | **Конфигурация коллекций** | 2014-02-24 → 2014-02-28 (+4d) | 2014-02-27 → 2014-03-05 (+6d) | 40d → 36d |
| 271 | Типовая иерархия кастомных папок (3шт) | 2014-02-24 → 2014-02-28 (+4d) | 2014-02-25 → 2014-03-03 (+6d) | 40d → 36d |
| 272 | Системные настройки для СрвСогл | 2014-02-26 → 2014-03-04 (+6d) | 2014-02-27 → 2014-03-05 (+6d) | 40d → 36d |
| 273 | Проверка работы | 2014-02-28 → 2014-03-06 (+6d) | 2014-02-28 → 2014-03-06 (+6d) | 40d → 36d |
| 274 | **Разработка адаптеров для СрвСогл** | 2014-02-21 → 2014-02-27 (+6d) | 2014-03-07 → 2014-03-13 (+6d) | 26d → 22d |
| 275 | Задание поставлено | 2014-02-21 → 2014-02-27 (+6d) | 2014-02-21 → 2014-02-27 (+6d) | 26d → 22d |
| 276 | Разработка архитектуры дя адаптеров | 2014-02-24 → 2014-02-28 (+4d) | 2014-02-28 → 2014-03-06 (+6d) | 26d → 22d |
| 277 | Разработка адаптеров | 2014-03-03 → 2014-03-07 (+4d) | 2014-03-07 → 2014-03-13 (+6d) | 26d → 22d |
| 278 | **Разработка коллекций** | 2014-03-10 → 2014-03-14 (+4d) | 2014-03-20 → 2014-03-26 (+6d) | 26d → 22d |
| 279 | Коллекции | 2014-03-10 → 2014-03-14 (+4d) | 2014-03-20 → 2014-03-26 (+6d) | 26d → 22d |
| 280 | Интеграция по СрвСогл выполнена | 2014-03-20 → 2014-03-26 (+6d) | 2014-03-20 → 2014-03-26 (+6d) | 26d → 22d |
| 281 | **Интеграция с CMJ по Заседаниям** | 2014-03-21 → 2014-03-27 (+6d) | 2014-05-02 → 2014-05-08 (+6d) | 26d → 22d |
| 282 | Конфиг ДОП | 2014-03-21 → 2014-03-27 (+6d) | 2014-03-28 → 2014-04-03 (+6d) | 26d → 22d |

| ID | Task | Start | Finish | Total float |
| --- | --- | --- | --- | --- |
| 283 | Mapper | 2014-03-31 → 2014-04-04 (+4d) | 2014-04-07 → 2014-04-11 (+4d) | 26d → 22d |
| 284 | **Настраиваемые коллекции** | 2014-04-08 → 2014-04-14 (+6d) | 2014-04-14 → 2014-04-18 (+4d) | 40d → 36d |
| 285 | **Конфигурация коллекций** | 2014-04-08 → 2014-04-14 (+6d) | 2014-04-11 → 2014-04-17 (+6d) | 40d → 36d |
| 286 | Типовая иерархия кастомных папок (3шт) | 2014-04-08 → 2014-04-14 (+6d) | 2014-04-09 → 2014-04-15 (+6d) | 40d → 36d |
| 287 | Системные настройки для Зсд | 2014-04-10 → 2014-04-16 (+6d) | 2014-04-11 → 2014-04-17 (+6d) | 40d → 36d |
| 288 | Проверка работы | 2014-04-14 → 2014-04-18 (+4d) | 2014-04-14 → 2014-04-18 (+4d) | 40d → 36d |
| 289 | **Разработка адаптеров для Зсд** | 2014-04-07 → 2014-04-11 (+4d) | 2014-04-21 → 2014-04-25 (+4d) | 26d → 22d |
| 290 | Задание поставлено | 2014-04-07 → 2014-04-11 (+4d) | 2014-04-07 → 2014-04-11 (+4d) | 26d → 22d |
| 291 | Разработка архитектуры дя адаптеров | 2014-04-08 → 2014-04-14 (+6d) | 2014-04-14 → 2014-04-18 (+4d) | 26d → 22d |
| 292 | Разработка адаптеров | 2014-04-15 → 2014-04-21 (+6d) | 2014-04-21 → 2014-04-25 (+4d) | 26d → 22d |
| 293 | **Разработка коллекций** | 2014-04-22 → 2014-04-28 (+6d) | 2014-05-02 → 2014-05-08 (+6d) | 26d → 22d |
| 294 | Коллекции | 2014-04-22 → 2014-04-28 (+6d) | 2014-05-02 → 2014-05-08 (+6d) | 26d → 22d |
| 295 | Интеграция по Зсд выполнена | 2014-05-02 → 2014-05-08 (+6d) | 2014-05-02 → 2014-05-08 (+6d) | 26d → 22d |
| 296 | **Интеграция с CMJ по Обсуждениям и ознакомлениям** | 2014-02-06 → 2014-02-12 (+6d) | 2014-03-20 → 2014-03-26 (+6d) | 57d → 53d |
| 297 | Конфиг ДОП | 2014-02-06 → 2014-02-12 (+6d) | 2014-02-13 → 2014-02-19 (+6d) | 57d → 53d |
| 298 | Mapper | 2014-02-14 → 2014-02-20 (+6d) | 2014-02-21 → 2014-02-27 (+6d) | 57d → 53d |
| 299 | **Настраиваемые коллекции** | 2014-02-24 → 2014-02-28 (+4d) | 2014-02-28 → 2014-03-06 (+6d) | 71d → 67d |
| 300 | **Конфигурация коллекций** | 2014-02-24 → 2014-02-28 (+4d) | 2014-02-27 → 2014-03-05 (+6d) | 71d → 67d |
| 301 | Типовая иерархия кастомных папок (3шт) | 2014-02-24 → 2014-02-28 (+4d) | 2014-02-25 → 2014-03-03 (+6d) | 71d → 67d |
| 302 | Системные настройки для ОО | 2014-02-26 → 2014-03-04 (+6d) | 2014-02-27 → 2014-03-05 (+6d) | 71d → 67d |
| 303 | Проверка работы | 2014-02-28 → 2014-03-06 (+6d) | 2014-02-28 → 2014-03-06 (+6d) | 71d → 67d |
| 304 | **Разработка адаптеров для ОО** | 2014-02-21 → 2014-02-27 (+6d) | 2014-03-07 → 2014-03-13 (+6d) | 57d → 53d |
| 305 | Задание поставлено | 2014-02-21 → 2014-02-27 (+6d) | 2014-02-21 → 2014-02-27 (+6d) | 57d → 53d |
| 306 | Разработка архитектуры дя адаптеров | 2014-02-24 → 2014-02-28 (+4d) | 2014-02-28 → 2014-03-06 (+6d) | 57d → 53d |
| 307 | Разработка адаптеров | 2014-03-03 → 2014-03-07 (+4d) | 2014-03-07 → 2014-03-13 (+6d) | 57d → 53d |
| 308 | **Разработка коллекций** | 2014-03-10 → 2014-03-14 (+4d) | 2014-03-20 → 2014-03-26 (+6d) | 57d → 53d |
| 309 | Коллекции | 2014-03-10 → 2014-03-14 (+4d) | 2014-03-20 → 2014-03-26 (+6d) | 57d → 53d |
| 310 | Интеграция по ОО выполнена | 2014-03-20 → 2014-03-26 (+6d) | 2014-03-20 → 2014-03-26 (+6d) | 57d → 53d |
| 311 | **Интеграция с CMJ по Формированию дел** | 2014-02-06 → 2014-02-12 (+6d) | 2014-03-20 → 2014-03-26 (+6d) | 57d → 53d |
| 312 | Конфиг ДОП | 2014-02-06 → 2014-02-12 (+6d) | 2014-02-13 → 2014-02-19 (+6d) | 57d → 53d |
| 313 | Mapper | 2014-02-14 → 2014-02-20 (+6d) | 2014-02-21 → 2014-02-27 (+6d) | 57d → 53d |
| 314 | **Настраиваемые коллекции** | 2014-02-24 → 2014-02-28 (+4d) | 2014-02-28 → 2014-03-06 (+6d) | 71d → 67d |
| 315 | **Конфигурация коллекций** | 2014-02-24 → 2014-02-28 (+4d) | 2014-02-27 → 2014-03-05 (+6d) | 71d → 67d |
| 316 | Типовая иерархия кастомных папок (3шт) | 2014-02-24 → 2014-02-28 (+4d) | 2014-02-25 → 2014-03-03 (+6d) | 71d → 67d |
| 317 | Системные настройки для ФД | 2014-02-26 → 2014-03-04 (+6d) | 2014-02-27 → 2014-03-05 (+6d) | 71d → 67d |
| 318 | Проверка работы | 2014-02-28 → 2014-03-06 (+6d) | 2014-02-28 → 2014-03-06 (+6d) | 71d → 67d |
| 319 | **Разработка адаптеров для ФД** | 2014-02-21 → 2014-02-27 (+6d) | 2014-03-07 → 2014-03-13 (+6d) | 57d → 53d |
| 320 | Задание поставлено | 2014-02-21 → 2014-02-27 (+6d) | 2014-02-21 → 2014-02-27 (+6d) | 57d → 53d |
| 321 | Разработка архитектуры дя адаптеров | 2014-02-24 → 2014-02-28 (+4d) | 2014-02-28 → 2014-03-06 (+6d) | 57d → 53d |
| 322 | Разработка адаптеров | 2014-03-03 → 2014-03-07 (+4d) | 2014-03-07 → 2014-03-13 (+6d) | 57d → 53d |
| 323 | **Разработка коллекций** | 2014-03-10 → 2014-03-14 (+4d) | 2014-03-20 → 2014-03-26 (+6d) | 57d → 53d |
| 324 | Коллекции | 2014-03-10 → 2014-03-14 (+4d) | 2014-03-20 → 2014-03-26 (+6d) | 57d → 53d |
| 325 | Интеграция по ФД выполнена | 2014-03-20 → 2014-03-26 (+6d) | 2014-03-20 → 2014-03-26 (+6d) | 57d → 53d |
| 411 | **Тестирование** | 2014-05-05 → 2014-05-09 (+4d) | 2014-08-06 → 2014-08-12 (+6d) | 26d → 22d |
| 412 | **Функциональное тестирование** | 2014-05-05 → 2014-05-09 (+4d) | 2014-07-16 → 2014-07-22 (+6d) | 26d → 22d |
| 413 | Подготовка ПМИ | 2014-05-05 → 2014-05-09 (+4d) | 2014-05-09 → 2014-05-15 (+6d) | 26d → 22d |
| 414 | Разработка "сценариев тестирования" | 2014-05-05 → 2014-05-09 (+4d) | 2014-05-23 → 2014-05-29 (+6d) | 31d → 27d |
| 415 | Разработка модели нагрузки для тестирования | 2014-05-12 → 2014-05-16 (+4d) | 2014-05-23 → 2014-05-29 (+6d) | 31d → 27d |
| 416 | Адаптация автоматизированных сценариев от СМ4 для создания нагрузки | 2014-05-12 → 2014-05-16 (+4d) | 2014-06-13 → 2014-06-19 (+6d) | 26d → 22d |
| 417 | **Проведение тестирования** | 2014-05-26 → 2014-05-30 (+4d) | 2014-07-16 → 2014-07-22 (+6d) | 31d → 27d |
| 418 | **Подготовка среды тестирования** | 2014-05-26 → 2014-05-30 (+4d) | 2014-06-06 → 2014-06-12 (+6d) | 31d → 27d |
| 419 | Разворачивание системы | 2014-05-26 → 2014-05-30 (+4d) | 2014-05-30 → 2014-06-05 (+6d) | 74d → 70d |
| 420 | Система готова для подключения инструментов мониторинга | 2014-05-30 → 2014-06-05 (+6d) | 2014-05-30 → 2014-06-05 (+6d) | 74d → 70d |
| 421 | Наполнение данными | 2014-05-26 → 2014-05-30 (+4d) | 2014-06-06 → 2014-06-12 (+6d) | 31d → 27d |
| 422 | Среда тестирования готова | 2014-06-13 → 2014-06-19 (+6d) | 2014-06-13 → 2014-06-19 (+6d) | 26d → 22d |
| 423 | Проведение тестирования | 2014-06-16 → 2014-06-20 (+4d) | 2014-06-27 → 2014-07-03 (+6d) | 26d → 22d |
| 424 | **Обработка результатов тестирования и внесение изменений в модуль** | 2014-06-26 → 2014-07-02 (+6d) | 2014-07-16 → 2014-07-22 (+6d) | 26d → 22d |
| 425 | Устранение замечаний по результатам функционального тестирования | 2014-06-26 → 2014-07-02 (+6d) | 2014-07-16 → 2014-07-22 (+6d) | 26d → 22d |
| 426 | Проверка устранения замечаний | 2014-07-09 → 2014-07-15 (+6d) | 2014-07-16 → 2014-07-22 (+6d) | 26d → 22d |
| 427 | **Нагрузочное тестирование** | 2014-06-27 → 2014-07-03 (+6d) | 2014-08-06 → 2014-08-12 (+6d) | 26d → 22d |
| 428 | Стенд для нагрузочного тестирования подготовлен | 2014-06-27 → 2014-07-03 (+6d) | 2014-06-27 → 2014-07-03 (+6d) | 39d → 35d |
| 429 | Проведения нагрузочного тестирования | 2014-07-17 → 2014-07-23 (+6d) | 2014-07-30 → 2014-08-05 (+6d) | 26d → 22d |
| 430 | Обработка результатов нагрузочного тестирования | 2014-07-31 → 2014-08-06 (+6d) | 2014-08-06 → 2014-08-12 (+6d) | 26d → 22d |
| 431 | **Подготовка документации** | 2014-05-05 → 2014-05-09 (+4d) | 2014-08-22 → 2014-08-28 (+6d) | 14d → 10d |
| 432 | Разработка документа "Концепция системы " | 2014-05-05 → 2014-05-09 (+4d) | 2014-06-27 → 2014-07-03 (+6d) | 14d → 10d |
| 433 | Разработка "Software Architecture Document" | 2014-06-30 → 2014-07-04 (+4d) | 2014-08-22 → 2014-08-28 (+6d) | 14d → 10d |
| 434 | Документы подготовлены | 2014-08-22 → 2014-08-28 (+6d) | 2014-08-22 → 2014-08-28 (+6d) | 14d → 10d |

## Version 54 (saved 2014-02-07)

Note of the change: обновление

Last finish stays 2014-09-11. Complete tasks 96 → 110.

Added:

| ID | Task | Duration | Start | Finish | Predecessors | Constraint | Resources |
| --- | --- | --- | --- | --- | --- | --- | --- |
| 118 | Конфигурация корневой папки навигатора | 0d | 2014-02-06 | 2014-02-06 |  | start no earlier than 2014-02-06 | Глеб Ноздрачев |
| 179 | **Коллекции** | 5d? | 2014-02-18 | 2014-02-24 |  |  |  |
| 180 | Коллекции ГУИ для Двходящих | 5d | 2014-02-18 | 2014-02-24 |  |  | (БТЛ)Сергей Степыгин; (БТЛ) Дмитрий Лякин |
| 181 | Коллекции Сисм для Входящих | 1d? | 2014-02-18 | 2014-02-18 |  |  |  |
| 413 | **Подготовка базового набора отчетов** | 40d | 2014-02-10 | 2014-04-04 |  |  |  |
| 414 | Данные для подготовки базового набора отчетов собраны | 0d | 2014-02-10 | 2014-02-10 |  | start no earlier than 2014-02-10 |  |
| 415 | Структура данных для отчетов подготовлена и описана | 0d | 2014-02-10 | 2014-02-10 | 414 |  |  |
| 416 | Механизм управления отчетными формами подготовлен | 0d | 2014-02-10 | 2014-02-10 | 415 |  |  |

Changed:

| ID | Task | Start | Finish | Duration | Complete | Total float | Predecessors | Other |
| --- | --- | --- | --- | --- | --- | --- | --- | --- |
| 1 | **Разработка версии CM4/5** |  |  |  | 34% → 36% |  |  |  |
| 9 | **Создание модуля "Делопроизводство" (документоориентированная среда)** |  | 2014-08-28 → 2014-09-03 (+6d) | 341d? → 345d? | 36% → 39% | 10d → 6d |  |  |
| 20 | **Проектирование и формирование ядра системы** |  | 2014-05-08 → 2014-05-14 (+6d) | 261d? → 265d? | 42% → 46% | 22d → 18d |  |  |
| 68 | **Слой сопряжения CMJ server (CM4)** |  | 2014-05-08 → 2014-05-14 (+6d) | 220d? → 224d? | 25% → 33% | 22d → 18d |  |  |
| 76 | **Интеграция с CMJ по Внутренним Документам** |  | 2014-02-11 → 2014-02-17 (+6d) | 94d? → 98d? | 58% → 79% | 22d → 0d |  |  |
| 88 | **Mapper ВнД** |  | 2014-02-05 → 2014-02-06 (+1d) | 8d → 9d | 15% → 93% | 22d → 3d |  |  |
| 91 | Отладка Маппера исполнения |  | 2014-01-29 A |  | 33% → 100% | 23d → none |  |  |
| 92 | Вспомогательная коллекция "responce" |  | 2014-01-29 A |  | 33% → 100% | 22d → none |  |  |
| 93 | Отладка мапперов | 2014-01-30 A | 2014-02-04 A |  | 0% → 100% | 23d → none |  |  |
| 94 | UI - коллекции (7) | 2014-01-30 → 2014-01-31 A (+1d) | 2014-02-04 → 2014-02-05 A (+1d) |  | 0% → 100% | 23d → none |  | constraint none → finish no earlier than 2014-02-05 |
| 95 | CollectionProvider методы получения только категорий | 2014-01-30 → 2014-01-31 A (+1d) | 2014-02-05 → 2014-02-06 (+1d) |  | 0% → 70% | 22d → 3d |  | constraint none → finish no earlier than 2014-02-06 |
| 96 | **Доработка ВнД** | 2014-01-27 A | 2014-02-07 → 2014-02-17 (+10d) | 10d → 16d | 0% → 6% | 24d → 0d |  |  |
| 97 | Поддержка работы с Вложениями | 2014-01-27 → 2014-02-04 (+8d) | 2014-01-29 → 2014-02-06 (+8d) |  |  | 26d → 2d |  | constraint none → finish no earlier than 2014-02-06 |
| 99 | Правила вычисления дправ доступа - реализация | 2014-01-30 → 2014-02-03 (+4d) | 2014-02-04 → 2014-02-06 (+2d) |  |  | 27d → 0d |  | constraint none → finish no earlier than 2014-02-06 |
| 100 | Поддержка полнотекстового поиска | 2014-01-30 → 2014-02-07 (+8d) | 2014-02-05 → 2014-02-13 (+8d) |  |  | 26d → 2d |  |  |
| 101 | Базовый сервис поддержки сценариев (+DOEL) | 2014-01-28 → 2014-02-07 (+10d) | 2014-02-05 → 2014-02-17 (+12d) |  |  | 26d → 0d | 98 → 98, 99 |  |
| 102 | **Перенос Логики работы агентов** | 2014-01-27 A |  |  | 0% → 18% | 24d → 6d |  |  |
| 103 | Подбор варианта реализации | 2014-01-27 A |  |  | 0% → 25% | 24d → 6d |  |  |
| 108 | **Настраиваемые коллекции** |  | 2013-12-03 → 2014-02-06 (+65d) | 45.25d? → 83.25d? | 81% → 96% | 60d → 4d |  |  |
| 109 | **Системные настройки** |  | 2013-11-28 A |  | 90% → 100% | 60d → none |  |  |
| 113 | Mapper папок | 2013-11-26 A | 2013-11-28 A |  | 0% → 100% | 60d → none |  |  |
| 114 | **Конфигурация коллекций (логин)** | 2013-11-29 A | 2013-12-02 → 2013-12-12 (+10d) | 2d? → 10d | 0% → 95% | 60d → 34d |  |  |
| 115 | Типовая иерархия кастомных папок (3шт) | 2013-11-29 A | 2013-11-29 → 2013-12-05 A (+6d) | 1d → 5d | 0% → 100% | 60d → none |  |  |
| 116 | Системные настройки для ВнД | 2013-12-02 → 2013-12-06 A (+4d) | 2013-12-02 → 2013-12-12 (+10d) | 1d? → 5d | 0% → 90% | 60d → 34d |  |  |
| 117 | Проверка работы | 2013-12-03 → 2013-12-13 (+10d) | 2013-12-03 → 2013-12-13 (+10d) |  |  | 60d → 34d |  |  |
| 123 | Разработка архитектуры дя адаптеров database |  | 2013-10-04 A |  | 90% → 100% | 106d → none |  |  |
| 125 | Задание по Database и Document поставлена | 2013-10-04 A |  |  | 0% → 90% | 106d → 0d |  |  |
| 127 | **Разработка коллекций (инициализация)** |  | 2013-12-13 → 2014-01-24 (+42d) | 34d → 56d | 46% → 99% | 56d → 16d |  |  |
| 135 | **Разработка коллекций (логин)** | 2013-11-22 → 2013-12-24 A (+32d) | 2013-12-13 → 2014-01-24 (+42d) |  | 0% → 99% | 56d → 16d |  |  |
| 136 | Инициализация прошла | 2013-11-22 → 2013-12-24 A (+32d) | 2013-11-22 → 2013-12-24 A (+32d) |  | 0% → 100% | 56d → none |  | constraint start no earlier than 2013-11-22 → start no earlier than 2013-12-24 |
| 137 | Определение состава коллекций после инициализации Вн | 2013-11-22 → 2013-12-24 A (+32d) | 2013-11-22 → 2013-12-24 A (+32d) |  | 0% → 100% | 60d → none |  |  |
| 138 | Коллекции Портала | 2013-11-22 → 2013-12-24 A (+32d) | 2013-11-28 → 2014-01-09 A (+42d) |  | 0% → 100% | 56d → none |  |  |
| 139 | Коллекции СС | 2013-11-29 → 2014-01-10 A (+42d) | 2013-12-05 → 2014-01-16 A (+42d) |  | 0% → 100% | 56d → none |  |  |
| 140 | Коллекции Каталога | 2013-11-29 → 2014-01-10 A (+42d) | 2013-12-05 → 2014-01-16 A (+42d) |  | 0% → 100% | 56d → none |  |  |
| 141 | Коллекции СО | 2013-11-29 → 2014-01-10 A (+42d) | 2013-12-05 → 2014-01-16 A (+42d) |  | 0% → 100% | 62d → none |  |  |
| 142 | Коллекции СпО | 2013-12-06 → 2014-01-17 A (+42d) | 2013-12-13 → 2014-01-24 A (+42d) |  | 0% → 100% | 56d → none |  |  |
| 143 | Коллекции ВнД | 2013-12-06 → 2014-01-17 A (+42d) | 2013-12-13 → 2014-01-24 (+42d) |  | 0% → 95% | 56d → 16d |  |  |
| 144 | ВнД | 2014-02-05 → 2014-02-06 (+1d) | 2014-02-05 → 2014-02-06 (+1d) |  |  | 22d → 21d |  |  |
| 145 | **Адаптация CMJ-server** | 2014-02-06 → 2014-02-07 (+1d) | 2014-02-07 → 2014-02-10 (+3d) |  |  | 24d → 5d |  |  |
| 146 | Подмена РБД для CMJ-Server | 2014-02-06 → 2014-02-07 (+1d) | 2014-02-07 → 2014-02-10 (+3d) |  |  | 24d → 5d |  |  |
| 147 | Имплементация аналогов @-функций для Sochi-server | 2014-02-06 → 2014-02-07 (+1d) | 2014-02-07 → 2014-02-10 (+3d) |  |  | 24d → 5d |  |  |
| 148 | Объединение War | 2014-02-06 → 2014-02-07 (+1d) | 2014-02-06 → 2014-02-07 (+1d) |  |  | 25d → 6d |  |  |
| 149 | **Инструмент заполнения** | 2014-02-06 → 2014-02-07 (+1d) | 2014-02-11 → 2014-02-12 (+1d) |  |  | 22d → 3d |  |  |
| 150 | **Заливка данных для демонстрации** | 2014-02-06 → 2014-02-07 (+1d) | 2014-02-11 → 2014-02-12 (+1d) |  |  | 22d → 3d |  |  |
| 151 | Подготовка задачи | 2014-02-06 → 2014-02-07 (+1d) | 2014-02-06 → 2014-02-07 (+1d) |  |  | 22d → 3d |  |  |
| 152 | Написание скриптов заливки | 2014-02-07 → 2014-02-10 (+3d) | 2014-02-11 → 2014-02-12 (+1d) |  |  | 22d → 3d |  |  |
| 153 | Инструмент заполнения Каталога | 2014-02-06 → 2014-02-07 (+1d) | 2014-02-10 → 2014-02-11 (+1d) |  |  | 23d → 22d |  |  |
| 154 | Инструмент заполнения СС | 2014-02-06 → 2014-02-07 (+1d) | 2014-02-10 → 2014-02-11 (+1d) |  |  | 23d → 22d |  |  |
| 155 | Инструмент заполнения Портала | 2014-02-06 → 2014-02-07 (+1d) | 2014-02-10 → 2014-02-11 (+1d) |  |  | 23d → 22d |  |  |
| 156 | Инструмент заполнения СО | 2014-02-06 → 2014-02-07 (+1d) | 2014-02-10 → 2014-02-11 (+1d) |  |  | 23d → 22d |  |  |
| 157 | Инструмент заполнения СпО | 2014-02-06 → 2014-02-07 (+1d) | 2014-02-10 → 2014-02-11 (+1d) |  |  | 23d → 22d |  |  |
| 176 | **Интеграция с CMJ по Входящим документам** | 2014-02-12 → 2014-02-18 A (+6d) | 2014-03-25 → 2014-03-31 (+6d) |  | 0% → 13% | 54.2d → 50.2d |  |  |
| 177 | Конфиг ДОП | 2014-02-12 → 2014-02-18 A (+6d) | 2014-02-19 → 2014-02-25 (+6d) |  | 0% → 90% | 54.2d → 50.2d |  |  |
| 178 | Mapper | 2014-02-20 → 2014-02-26 (+6d) | 2014-02-26 → 2014-03-04 (+6d) |  |  | 54.2d → 50.2d |  |  |
| 182 | **Настраиваемые коллекции** | 2014-02-26 → 2014-03-04 (+6d) | 2014-03-05 → 2014-03-11 (+6d) |  |  | 68.2d → 64.2d |  |  |
| 183 | **Конфигурация коллекций** | 2014-02-26 → 2014-03-04 (+6d) | 2014-03-04 → 2014-03-10 (+6d) |  |  | 68.2d → 64.2d |  |  |
| 184 | Типовая иерархия кастомных папок (3шт) | 2014-02-26 → 2014-03-04 (+6d) | 2014-02-28 → 2014-03-06 (+6d) |  |  | 68.2d → 64.2d |  |  |
| 185 | Системные настройки для Вх | 2014-02-28 → 2014-03-06 (+6d) | 2014-03-04 → 2014-03-10 (+6d) |  |  | 68.2d → 64.2d |  |  |
| 186 | Проверка работы | 2014-03-04 → 2014-03-10 (+6d) | 2014-03-05 → 2014-03-11 (+6d) |  |  | 68.2d → 64.2d |  |  |
| 187 | **Разработка адаптеров для Вх** | 2014-02-26 → 2014-03-04 (+6d) | 2014-03-12 → 2014-03-18 (+6d) |  |  | 54.2d → 50.2d |  |  |
| 188 | Задание поставлено | 2014-02-26 → 2014-03-04 (+6d) | 2014-02-26 → 2014-03-04 (+6d) |  |  | 54.2d → 50.2d |  |  |
| 189 | Разработка архитектуры дя адаптеров | 2014-02-26 → 2014-03-04 (+6d) | 2014-03-05 → 2014-03-11 (+6d) |  |  | 54.2d → 50.2d |  |  |
| 190 | Разработка адаптеров | 2014-03-05 → 2014-03-11 (+6d) | 2014-03-12 → 2014-03-18 (+6d) |  |  | 54.2d → 50.2d |  |  |
| 191 | **Разработка коллекций** | 2014-03-12 → 2014-03-18 (+6d) | 2014-03-25 → 2014-03-31 (+6d) |  |  | 54.2d → 50.2d |  |  |
| 192 | Коллекции | 2014-03-12 → 2014-03-18 (+6d) | 2014-03-25 → 2014-03-31 (+6d) |  |  | 54.2d → 50.2d |  |  |
| 193 | Интеграция по Вх выполнена | 2014-03-25 → 2014-03-31 (+6d) | 2014-03-25 → 2014-03-31 (+6d) |  |  | 54.2d → 50.2d |  |  |
| 194 | **Интеграция с CMJ по ОРД** | 2014-02-12 → 2014-02-18 (+6d) | 2014-03-26 → 2014-04-01 (+6d) |  |  | 53d → 49d |  |  |
| 195 | Конфиг ДОП | 2014-02-12 → 2014-02-18 (+6d) | 2014-02-19 → 2014-02-25 (+6d) |  |  | 53d → 49d |  |  |
| 196 | Mapper | 2014-02-20 → 2014-02-26 (+6d) | 2014-02-27 → 2014-03-05 (+6d) |  |  | 53d → 49d |  |  |
| 197 | **Настраиваемые коллекции** | 2014-02-28 → 2014-03-06 (+6d) | 2014-03-06 → 2014-03-12 (+6d) |  |  | 67d → 63d |  |  |

| ID | Task | Start | Finish | Total float |
| --- | --- | --- | --- | --- |
| 198 | **Конфигурация коллекций** | 2014-02-28 → 2014-03-06 (+6d) | 2014-03-05 → 2014-03-11 (+6d) | 67d → 63d |
| 199 | Типовая иерархия кастомных папок (3шт) | 2014-02-28 → 2014-03-06 (+6d) | 2014-03-03 → 2014-03-07 (+4d) | 67d → 63d |
| 200 | Системные настройки для ОРД | 2014-03-04 → 2014-03-10 (+6d) | 2014-03-05 → 2014-03-11 (+6d) | 67d → 63d |
| 201 | Проверка работы | 2014-03-06 → 2014-03-12 (+6d) | 2014-03-06 → 2014-03-12 (+6d) | 67d → 63d |
| 202 | **Разработка адаптеров для ОРД** | 2014-02-27 → 2014-03-05 (+6d) | 2014-03-13 → 2014-03-19 (+6d) | 53d → 49d |
| 203 | Задание поставлено | 2014-02-27 → 2014-03-05 (+6d) | 2014-02-27 → 2014-03-05 (+6d) | 53d → 49d |
| 204 | Разработка архитектуры дя адаптеров | 2014-02-28 → 2014-03-06 (+6d) | 2014-03-06 → 2014-03-12 (+6d) | 53d → 49d |
| 205 | Разработка адаптеров | 2014-03-07 → 2014-03-13 (+6d) | 2014-03-13 → 2014-03-19 (+6d) | 53d → 49d |
| 206 | **Разработка коллекций** | 2014-03-14 → 2014-03-20 (+6d) | 2014-03-26 → 2014-04-01 (+6d) | 53d → 49d |
| 207 | Коллекции | 2014-03-14 → 2014-03-20 (+6d) | 2014-03-26 → 2014-04-01 (+6d) | 53d → 49d |
| 208 | Интеграция по ОРД выполнена | 2014-03-26 → 2014-04-01 (+6d) | 2014-03-26 → 2014-04-01 (+6d) | 53d → 49d |
| 209 | **Интеграция с CMJ по "Кейсам"** | 2014-02-12 → 2014-02-18 (+6d) | 2014-03-26 → 2014-04-01 (+6d) | 53d → 49d |
| 210 | Конфиг ДОП | 2014-02-12 → 2014-02-18 (+6d) | 2014-02-19 → 2014-02-25 (+6d) | 53d → 49d |
| 211 | Mapper | 2014-02-20 → 2014-02-26 (+6d) | 2014-02-27 → 2014-03-05 (+6d) | 53d → 49d |
| 212 | **Настраиваемые коллекции** | 2014-02-28 → 2014-03-06 (+6d) | 2014-03-06 → 2014-03-12 (+6d) | 67d → 63d |
| 213 | **Конфигурация коллекций** | 2014-02-28 → 2014-03-06 (+6d) | 2014-03-05 → 2014-03-11 (+6d) | 67d → 63d |
| 214 | Типовая иерархия кастомных папок (3шт) | 2014-02-28 → 2014-03-06 (+6d) | 2014-03-03 → 2014-03-07 (+4d) | 67d → 63d |
| 215 | Системные настройки для Кейс | 2014-03-04 → 2014-03-10 (+6d) | 2014-03-05 → 2014-03-11 (+6d) | 67d → 63d |
| 216 | Проверка работы | 2014-03-06 → 2014-03-12 (+6d) | 2014-03-06 → 2014-03-12 (+6d) | 67d → 63d |
| 217 | **Разработка адаптеров для Кейс** | 2014-02-27 → 2014-03-05 (+6d) | 2014-03-13 → 2014-03-19 (+6d) | 53d → 49d |
| 218 | Задание поставлено | 2014-02-27 → 2014-03-05 (+6d) | 2014-02-27 → 2014-03-05 (+6d) | 53d → 49d |
| 219 | Разработка архитектуры дя адаптеров | 2014-02-28 → 2014-03-06 (+6d) | 2014-03-06 → 2014-03-12 (+6d) | 53d → 49d |
| 220 | Разработка адаптеров | 2014-03-07 → 2014-03-13 (+6d) | 2014-03-13 → 2014-03-19 (+6d) | 53d → 49d |
| 221 | **Разработка коллекций** | 2014-03-14 → 2014-03-20 (+6d) | 2014-03-26 → 2014-04-01 (+6d) | 53d → 49d |
| 222 | Коллекции | 2014-03-14 → 2014-03-20 (+6d) | 2014-03-26 → 2014-04-01 (+6d) | 53d → 49d |
| 223 | Интеграция по Кейс выполнена | 2014-03-26 → 2014-04-01 (+6d) | 2014-03-26 → 2014-04-01 (+6d) | 53d → 49d |
| 224 | **Интеграция с CMJ по Исходящие документам** | 2014-02-06 → 2014-02-07 (+1d) | 2014-03-20 → 2014-03-21 (+1d) | 57d → 56d |
| 225 | Конфиг ДОП | 2014-02-06 → 2014-02-07 (+1d) | 2014-02-13 → 2014-02-14 (+1d) | 57d → 56d |
| 226 | Mapper | 2014-02-14 → 2014-02-17 (+3d) | 2014-02-21 → 2014-02-24 (+3d) | 57d → 56d |
| 227 | **Настраиваемые коллекции** | 2014-02-24 → 2014-02-25 (+1d) | 2014-02-28 → 2014-03-03 (+3d) | 71d → 70d |
| 228 | **Конфигурация коллекций** | 2014-02-24 → 2014-02-25 (+1d) | 2014-02-27 → 2014-02-28 (+1d) | 71d → 70d |
| 229 | Типовая иерархия кастомных папок (3шт) | 2014-02-24 → 2014-02-25 (+1d) | 2014-02-25 → 2014-02-26 (+1d) | 71d → 70d |
| 230 | Системные настройки для Исх | 2014-02-26 → 2014-02-27 (+1d) | 2014-02-27 → 2014-02-28 (+1d) | 71d → 70d |
| 231 | Проверка работы | 2014-02-28 → 2014-03-03 (+3d) | 2014-02-28 → 2014-03-03 (+3d) | 71d → 70d |
| 232 | **Разработка адаптеров для Исх** | 2014-02-21 → 2014-02-24 (+3d) | 2014-03-07 → 2014-03-10 (+3d) | 57d → 56d |
| 233 | Задание поставлено | 2014-02-21 → 2014-02-24 (+3d) | 2014-02-21 → 2014-02-24 (+3d) | 57d → 56d |
| 234 | Разработка архитектуры дя адаптеров | 2014-02-24 → 2014-02-25 (+1d) | 2014-02-28 → 2014-03-03 (+3d) | 57d → 56d |
| 235 | Разработка адаптеров | 2014-03-03 → 2014-03-04 (+1d) | 2014-03-07 → 2014-03-10 (+3d) | 57d → 56d |
| 236 | **Разработка коллекций** | 2014-03-10 → 2014-03-11 (+1d) | 2014-03-20 → 2014-03-21 (+1d) | 57d → 56d |
| 237 | Коллекции | 2014-03-10 → 2014-03-11 (+1d) | 2014-03-20 → 2014-03-21 (+1d) | 57d → 56d |
| 238 | Интеграция по Исх выполнена | 2014-03-20 → 2014-03-21 (+1d) | 2014-03-20 → 2014-03-21 (+1d) | 57d → 56d |
| 239 | **Интеграция с CMJ по самостоятельным поручениям** | 2014-02-12 → 2014-02-18 (+6d) | 2014-03-26 → 2014-04-01 (+6d) | 53d → 49d |
| 240 | Конфиг ДОП | 2014-02-12 → 2014-02-18 (+6d) | 2014-02-19 → 2014-02-25 (+6d) | 53d → 49d |
| 241 | Mapper | 2014-02-20 → 2014-02-26 (+6d) | 2014-02-27 → 2014-03-05 (+6d) | 53d → 49d |
| 242 | **Настраиваемые коллекции** | 2014-02-28 → 2014-03-06 (+6d) | 2014-03-06 → 2014-03-12 (+6d) | 67d → 63d |
| 243 | **Конфигурация коллекций** | 2014-02-28 → 2014-03-06 (+6d) | 2014-03-05 → 2014-03-11 (+6d) | 67d → 63d |
| 244 | Типовая иерархия кастомных папок (3шт) | 2014-02-28 → 2014-03-06 (+6d) | 2014-03-03 → 2014-03-07 (+4d) | 67d → 63d |
| 245 | Системные настройки для Поручений | 2014-03-04 → 2014-03-10 (+6d) | 2014-03-05 → 2014-03-11 (+6d) | 67d → 63d |
| 246 | Проверка работы | 2014-03-06 → 2014-03-12 (+6d) | 2014-03-06 → 2014-03-12 (+6d) | 67d → 63d |
| 247 | **Разработка адаптеров для Поручений** | 2014-02-27 → 2014-03-05 (+6d) | 2014-03-13 → 2014-03-19 (+6d) | 53d → 49d |
| 248 | Задание поставлено | 2014-02-27 → 2014-03-05 (+6d) | 2014-02-27 → 2014-03-05 (+6d) | 53d → 49d |
| 249 | Разработка архитектуры дя адаптеров | 2014-02-28 → 2014-03-06 (+6d) | 2014-03-06 → 2014-03-12 (+6d) | 53d → 49d |
| 250 | Разработка адаптеров | 2014-03-07 → 2014-03-13 (+6d) | 2014-03-13 → 2014-03-19 (+6d) | 53d → 49d |
| 251 | **Разработка коллекций** | 2014-03-14 → 2014-03-20 (+6d) | 2014-03-26 → 2014-04-01 (+6d) | 53d → 49d |
| 252 | Коллекции | 2014-03-14 → 2014-03-20 (+6d) | 2014-03-26 → 2014-04-01 (+6d) | 53d → 49d |
| 253 | Интеграция по Поручений выполнена | 2014-03-26 → 2014-04-01 (+6d) | 2014-03-26 → 2014-04-01 (+6d) | 53d → 49d |
| 254 | **Интеграция с CMJ по ОГ** | 2014-02-12 → 2014-02-18 (+6d) | 2014-03-26 → 2014-04-01 (+6d) | 53d → 49d |
| 255 | Конфиг ДОП | 2014-02-12 → 2014-02-18 (+6d) | 2014-02-19 → 2014-02-25 (+6d) | 53d → 49d |
| 256 | Mapper | 2014-02-20 → 2014-02-26 (+6d) | 2014-02-27 → 2014-03-05 (+6d) | 53d → 49d |
| 257 | **Настраиваемые коллекции** | 2014-02-28 → 2014-03-06 (+6d) | 2014-03-06 → 2014-03-12 (+6d) | 67d → 63d |
| 258 | **Конфигурация коллекций** | 2014-02-28 → 2014-03-06 (+6d) | 2014-03-05 → 2014-03-11 (+6d) | 67d → 63d |
| 259 | Типовая иерархия кастомных папок (3шт) | 2014-02-28 → 2014-03-06 (+6d) | 2014-03-03 → 2014-03-07 (+4d) | 67d → 63d |
| 260 | Системные настройки для ОГ | 2014-03-04 → 2014-03-10 (+6d) | 2014-03-05 → 2014-03-11 (+6d) | 67d → 63d |
| 261 | Проверка работы | 2014-03-06 → 2014-03-12 (+6d) | 2014-03-06 → 2014-03-12 (+6d) | 67d → 63d |
| 262 | **Разработка адаптеров для ОГ** | 2014-02-27 → 2014-03-05 (+6d) | 2014-03-13 → 2014-03-19 (+6d) | 53d → 49d |
| 263 | Задание поставлено | 2014-02-27 → 2014-03-05 (+6d) | 2014-02-27 → 2014-03-05 (+6d) | 53d → 49d |
| 264 | Разработка архитектуры дя адаптеров | 2014-02-28 → 2014-03-06 (+6d) | 2014-03-06 → 2014-03-12 (+6d) | 53d → 49d |
| 265 | Разработка адаптеров | 2014-03-07 → 2014-03-13 (+6d) | 2014-03-13 → 2014-03-19 (+6d) | 53d → 49d |
| 266 | **Разработка коллекций** | 2014-03-14 → 2014-03-20 (+6d) | 2014-03-26 → 2014-04-01 (+6d) | 53d → 49d |
| 267 | Коллекции | 2014-03-14 → 2014-03-20 (+6d) | 2014-03-26 → 2014-04-01 (+6d) | 53d → 49d |

| ID | Task | Start | Finish | Duration | Total float | Predecessors |
| --- | --- | --- | --- | --- | --- | --- |
| 268 | Интеграция по ОГ выполнена | 2014-03-26 → 2014-04-01 (+6d) | 2014-03-26 → 2014-04-01 (+6d) |  | 53d → 49d |  |
| 269 | **Интеграция с CMJ по сервису согласования** | 2014-02-11 → 2014-02-17 (+6d) | 2014-03-26 → 2014-04-01 (+6d) |  | 22d → 18d |  |
| 270 | Получена версия CM4.X c WF движком | 2014-02-11 → 2014-02-17 (+6d) | 2014-02-11 → 2014-02-17 (+6d) |  | 22d → 18d |  |
| 271 | Конфиг ДОП | 2014-02-12 → 2014-02-18 (+6d) | 2014-02-19 → 2014-02-25 (+6d) |  | 22d → 18d |  |
| 272 | Mapper | 2014-02-20 → 2014-02-26 (+6d) | 2014-02-27 → 2014-03-05 (+6d) |  | 22d → 18d |  |
| 273 | **Настраиваемые коллекции** | 2014-02-28 → 2014-03-06 (+6d) | 2014-03-06 → 2014-03-12 (+6d) |  | 36d → 32d |  |
| 274 | **Конфигурация коллекций** | 2014-02-28 → 2014-03-06 (+6d) | 2014-03-05 → 2014-03-11 (+6d) |  | 36d → 32d |  |
| 275 | Типовая иерархия кастомных папок (3шт) | 2014-02-28 → 2014-03-06 (+6d) | 2014-03-03 → 2014-03-07 (+4d) |  | 36d → 32d |  |
| 276 | Системные настройки для СрвСогл | 2014-03-04 → 2014-03-10 (+6d) | 2014-03-05 → 2014-03-11 (+6d) |  | 36d → 32d |  |
| 277 | Проверка работы | 2014-03-06 → 2014-03-12 (+6d) | 2014-03-06 → 2014-03-12 (+6d) |  | 36d → 32d |  |
| 278 | **Разработка адаптеров для СрвСогл** | 2014-02-27 → 2014-03-05 (+6d) | 2014-03-13 → 2014-03-19 (+6d) |  | 22d → 18d |  |
| 279 | Задание поставлено | 2014-02-27 → 2014-03-05 (+6d) | 2014-02-27 → 2014-03-05 (+6d) |  | 22d → 18d |  |
| 280 | Разработка архитектуры дя адаптеров | 2014-02-28 → 2014-03-06 (+6d) | 2014-03-06 → 2014-03-12 (+6d) |  | 22d → 18d |  |
| 281 | Разработка адаптеров | 2014-03-07 → 2014-03-13 (+6d) | 2014-03-13 → 2014-03-19 (+6d) |  | 22d → 18d |  |
| 282 | **Разработка коллекций** | 2014-03-14 → 2014-03-20 (+6d) | 2014-03-26 → 2014-04-01 (+6d) |  | 22d → 18d |  |
| 283 | Коллекции | 2014-03-14 → 2014-03-20 (+6d) | 2014-03-26 → 2014-04-01 (+6d) |  | 22d → 18d |  |
| 284 | Интеграция по СрвСогл выполнена | 2014-03-26 → 2014-04-01 (+6d) | 2014-03-26 → 2014-04-01 (+6d) |  | 22d → 18d |  |
| 285 | **Интеграция с CMJ по Заседаниям** | 2014-03-27 → 2014-04-02 (+6d) | 2014-05-08 → 2014-05-14 (+6d) |  | 22d → 18d |  |
| 286 | Конфиг ДОП | 2014-03-27 → 2014-04-02 (+6d) | 2014-04-03 → 2014-04-09 (+6d) |  | 22d → 18d |  |
| 287 | Mapper | 2014-04-04 → 2014-04-10 (+6d) | 2014-04-11 → 2014-04-17 (+6d) |  | 22d → 18d |  |
| 288 | **Настраиваемые коллекции** | 2014-04-14 → 2014-04-18 (+4d) | 2014-04-18 → 2014-04-24 (+6d) |  | 36d → 32d |  |
| 289 | **Конфигурация коллекций** | 2014-04-14 → 2014-04-18 (+4d) | 2014-04-17 → 2014-04-23 (+6d) |  | 36d → 32d |  |
| 290 | Типовая иерархия кастомных папок (3шт) | 2014-04-14 → 2014-04-18 (+4d) | 2014-04-15 → 2014-04-21 (+6d) |  | 36d → 32d |  |
| 291 | Системные настройки для Зсд | 2014-04-16 → 2014-04-22 (+6d) | 2014-04-17 → 2014-04-23 (+6d) |  | 36d → 32d |  |
| 292 | Проверка работы | 2014-04-18 → 2014-04-24 (+6d) | 2014-04-18 → 2014-04-24 (+6d) |  | 36d → 32d |  |
| 293 | **Разработка адаптеров для Зсд** | 2014-04-11 → 2014-04-17 (+6d) | 2014-04-25 → 2014-05-01 (+6d) |  | 22d → 18d |  |
| 294 | Задание поставлено | 2014-04-11 → 2014-04-17 (+6d) | 2014-04-11 → 2014-04-17 (+6d) |  | 22d → 18d |  |
| 295 | Разработка архитектуры дя адаптеров | 2014-04-14 → 2014-04-18 (+4d) | 2014-04-18 → 2014-04-24 (+6d) |  | 22d → 18d |  |
| 296 | Разработка адаптеров | 2014-04-21 → 2014-04-25 (+4d) | 2014-04-25 → 2014-05-01 (+6d) |  | 22d → 18d |  |
| 297 | **Разработка коллекций** | 2014-04-28 → 2014-05-02 (+4d) | 2014-05-08 → 2014-05-14 (+6d) |  | 22d → 18d |  |
| 298 | Коллекции | 2014-04-28 → 2014-05-02 (+4d) | 2014-05-08 → 2014-05-14 (+6d) |  | 22d → 18d |  |
| 299 | Интеграция по Зсд выполнена | 2014-05-08 → 2014-05-14 (+6d) | 2014-05-08 → 2014-05-14 (+6d) |  | 22d → 18d |  |
| 300 | **Интеграция с CMJ по Обсуждениям и ознакомлениям** | 2014-02-12 → 2014-02-18 (+6d) | 2014-03-26 → 2014-04-01 (+6d) |  | 53d → 49d |  |
| 301 | Конфиг ДОП | 2014-02-12 → 2014-02-18 (+6d) | 2014-02-19 → 2014-02-25 (+6d) |  | 53d → 49d |  |
| 302 | Mapper | 2014-02-20 → 2014-02-26 (+6d) | 2014-02-27 → 2014-03-05 (+6d) |  | 53d → 49d |  |
| 303 | **Настраиваемые коллекции** | 2014-02-28 → 2014-03-06 (+6d) | 2014-03-06 → 2014-03-12 (+6d) |  | 67d → 63d |  |
| 304 | **Конфигурация коллекций** | 2014-02-28 → 2014-03-06 (+6d) | 2014-03-05 → 2014-03-11 (+6d) |  | 67d → 63d |  |
| 305 | Типовая иерархия кастомных папок (3шт) | 2014-02-28 → 2014-03-06 (+6d) | 2014-03-03 → 2014-03-07 (+4d) |  | 67d → 63d |  |
| 306 | Системные настройки для ОО | 2014-03-04 → 2014-03-10 (+6d) | 2014-03-05 → 2014-03-11 (+6d) |  | 67d → 63d |  |
| 307 | Проверка работы | 2014-03-06 → 2014-03-12 (+6d) | 2014-03-06 → 2014-03-12 (+6d) |  | 67d → 63d |  |
| 308 | **Разработка адаптеров для ОО** | 2014-02-27 → 2014-03-05 (+6d) | 2014-03-13 → 2014-03-19 (+6d) |  | 53d → 49d |  |
| 309 | Задание поставлено | 2014-02-27 → 2014-03-05 (+6d) | 2014-02-27 → 2014-03-05 (+6d) |  | 53d → 49d |  |
| 310 | Разработка архитектуры дя адаптеров | 2014-02-28 → 2014-03-06 (+6d) | 2014-03-06 → 2014-03-12 (+6d) |  | 53d → 49d |  |
| 311 | Разработка адаптеров | 2014-03-07 → 2014-03-13 (+6d) | 2014-03-13 → 2014-03-19 (+6d) |  | 53d → 49d |  |
| 312 | **Разработка коллекций** | 2014-03-14 → 2014-03-20 (+6d) | 2014-03-26 → 2014-04-01 (+6d) |  | 53d → 49d |  |
| 313 | Коллекции | 2014-03-14 → 2014-03-20 (+6d) | 2014-03-26 → 2014-04-01 (+6d) |  | 53d → 49d |  |
| 314 | Интеграция по ОО выполнена | 2014-03-26 → 2014-04-01 (+6d) | 2014-03-26 → 2014-04-01 (+6d) |  | 53d → 49d |  |
| 315 | **Интеграция с CMJ по Формированию дел** | 2014-02-12 → 2014-02-18 (+6d) | 2014-03-26 → 2014-04-01 (+6d) |  | 53d → 49d |  |
| 316 | Конфиг ДОП | 2014-02-12 → 2014-02-18 (+6d) | 2014-02-19 → 2014-02-25 (+6d) |  | 53d → 49d |  |
| 317 | Mapper | 2014-02-20 → 2014-02-26 (+6d) | 2014-02-27 → 2014-03-05 (+6d) |  | 53d → 49d |  |
| 318 | **Настраиваемые коллекции** | 2014-02-28 → 2014-03-06 (+6d) | 2014-03-06 → 2014-03-12 (+6d) |  | 67d → 63d |  |
| 319 | **Конфигурация коллекций** | 2014-02-28 → 2014-03-06 (+6d) | 2014-03-05 → 2014-03-11 (+6d) |  | 67d → 63d |  |
| 320 | Типовая иерархия кастомных папок (3шт) | 2014-02-28 → 2014-03-06 (+6d) | 2014-03-03 → 2014-03-07 (+4d) |  | 67d → 63d |  |
| 321 | Системные настройки для ФД | 2014-03-04 → 2014-03-10 (+6d) | 2014-03-05 → 2014-03-11 (+6d) |  | 67d → 63d |  |
| 322 | Проверка работы | 2014-03-06 → 2014-03-12 (+6d) | 2014-03-06 → 2014-03-12 (+6d) |  | 67d → 63d |  |
| 323 | **Разработка адаптеров для ФД** | 2014-02-27 → 2014-03-05 (+6d) | 2014-03-13 → 2014-03-19 (+6d) |  | 53d → 49d |  |
| 324 | Задание поставлено | 2014-02-27 → 2014-03-05 (+6d) | 2014-02-27 → 2014-03-05 (+6d) |  | 53d → 49d |  |
| 325 | Разработка архитектуры дя адаптеров | 2014-02-28 → 2014-03-06 (+6d) | 2014-03-06 → 2014-03-12 (+6d) |  | 53d → 49d |  |
| 326 | Разработка адаптеров | 2014-03-07 → 2014-03-13 (+6d) | 2014-03-13 → 2014-03-19 (+6d) |  | 53d → 49d |  |
| 327 | **Разработка коллекций** | 2014-03-14 → 2014-03-20 (+6d) | 2014-03-26 → 2014-04-01 (+6d) |  | 53d → 49d |  |
| 328 | Коллекции | 2014-03-14 → 2014-03-20 (+6d) | 2014-03-26 → 2014-04-01 (+6d) |  | 53d → 49d |  |
| 329 | Интеграция по ФД выполнена | 2014-03-26 → 2014-04-01 (+6d) | 2014-03-26 → 2014-04-01 (+6d) |  | 53d → 49d |  |
| 349 | **GUI** |  | 2014-03-04 → 2014-03-11 (+7d) | 214d? → 219d? | 67d → 62d |  |
| 380 | **GUI - брендинг, стилизация, темы** | 2014-01-29 → 2014-03-05 (+35d) | 2014-02-04 → 2014-03-11 (+35d) |  | 87d → 62d |  |
| 381 | Концепция | 2014-01-29 → 2014-03-05 (+35d) | 2014-02-04 → 2014-03-11 (+35d) |  | 87d → 62d | 374, 378 → 374, 378, 379 |
| 383 | **Дополнительные сервисы платформы** |  | 2014-03-06 → 2014-03-13 (+7d) | 129d → 134d |  |  |
| 390 | Уточнение состава и сроков работ | 2014-03-05 → 2014-03-12 (+7d) | 2014-03-06 → 2014-03-13 (+7d) |  | 67d → 62d |  |
| 402 | **Разработка** |  | 2014-04-09 → 2014-06-13 (+65d) | 209d → 256d | 111d → 64d |  |
| 417 | Подготовка отчетов | 2013-12-09 → 2014-02-10 (+63d) | 2014-02-12 → 2014-04-04 (+51d) |  | 103d → 64d | 74, 404 → 74, 404, 416, 414, 415 |
| 418 | Сопряжение с мобильным клиентом СМ4 | 2013-12-09 → 2014-04-07 (+119d) | 2014-02-26 → 2014-06-13 (+107d) |  | 141d → 64d | 404 → 404, 417 |

| ID | Task | Start | Finish | Total float |
| --- | --- | --- | --- | --- |
| 419 | **Тестирование** | 2014-05-09 → 2014-05-15 (+6d) | 2014-08-12 → 2014-08-18 (+6d) | 22d → 18d |
| 420 | **Функциональное тестирование** | 2014-05-09 → 2014-05-15 (+6d) | 2014-07-22 → 2014-07-28 (+6d) | 22d → 18d |
| 421 | Подготовка ПМИ | 2014-05-09 → 2014-05-15 (+6d) | 2014-05-15 → 2014-05-21 (+6d) | 22d → 18d |
| 422 | Разработка "сценариев тестирования" | 2014-05-09 → 2014-05-15 (+6d) | 2014-05-29 → 2014-06-04 (+6d) | 27d → 23d |
| 423 | Разработка модели нагрузки для тестирования | 2014-05-16 → 2014-05-22 (+6d) | 2014-05-29 → 2014-06-04 (+6d) | 27d → 23d |
| 424 | Адаптация автоматизированных сценариев от СМ4 для создания нагрузки | 2014-05-16 → 2014-05-22 (+6d) | 2014-06-19 → 2014-06-25 (+6d) | 22d → 18d |
| 425 | **Проведение тестирования** | 2014-05-30 → 2014-06-05 (+6d) | 2014-07-22 → 2014-07-28 (+6d) | 27d → 23d |
| 426 | **Подготовка среды тестирования** | 2014-05-30 → 2014-06-05 (+6d) | 2014-06-12 → 2014-06-18 (+6d) | 27d → 23d |
| 427 | Разворачивание системы | 2014-05-30 → 2014-06-05 (+6d) | 2014-06-05 → 2014-06-11 (+6d) | 70d → 66d |
| 428 | Система готова для подключения инструментов мониторинга | 2014-06-05 → 2014-06-11 (+6d) | 2014-06-05 → 2014-06-11 (+6d) | 70d → 66d |
| 429 | Наполнение данными | 2014-05-30 → 2014-06-05 (+6d) | 2014-06-12 → 2014-06-18 (+6d) | 27d → 23d |
| 430 | Среда тестирования готова | 2014-06-19 → 2014-06-25 (+6d) | 2014-06-19 → 2014-06-25 (+6d) | 22d → 18d |
| 431 | Проведение тестирования | 2014-06-20 → 2014-06-26 (+6d) | 2014-07-03 → 2014-07-09 (+6d) | 22d → 18d |
| 432 | **Обработка результатов тестирования и внесение изменений в модуль** | 2014-07-02 → 2014-07-08 (+6d) | 2014-07-22 → 2014-07-28 (+6d) | 22d → 18d |
| 433 | Устранение замечаний по результатам функционального тестирования | 2014-07-02 → 2014-07-08 (+6d) | 2014-07-22 → 2014-07-28 (+6d) | 22d → 18d |
| 434 | Проверка устранения замечаний | 2014-07-15 → 2014-07-21 (+6d) | 2014-07-22 → 2014-07-28 (+6d) | 22d → 18d |
| 435 | **Нагрузочное тестирование** | 2014-07-03 → 2014-07-09 (+6d) | 2014-08-12 → 2014-08-18 (+6d) | 22d → 18d |
| 436 | Стенд для нагрузочного тестирования подготовлен | 2014-07-03 → 2014-07-09 (+6d) | 2014-07-03 → 2014-07-09 (+6d) | 35d → 31d |
| 437 | Проведения нагрузочного тестирования | 2014-07-23 → 2014-07-29 (+6d) | 2014-08-05 → 2014-08-11 (+6d) | 22d → 18d |
| 438 | Обработка результатов нагрузочного тестирования | 2014-08-06 → 2014-08-12 (+6d) | 2014-08-12 → 2014-08-18 (+6d) | 22d → 18d |
| 439 | **Подготовка документации** | 2014-05-09 → 2014-05-15 (+6d) | 2014-08-28 → 2014-09-03 (+6d) | 10d → 6d |
| 440 | Разработка документа "Концепция системы " | 2014-05-09 → 2014-05-15 (+6d) | 2014-07-03 → 2014-07-09 (+6d) | 10d → 6d |
| 441 | Разработка "Software Architecture Document" | 2014-07-04 → 2014-07-10 (+6d) | 2014-08-28 → 2014-09-03 (+6d) | 10d → 6d |
| 442 | Документы подготовлены | 2014-08-28 → 2014-09-03 (+6d) | 2014-08-28 → 2014-09-03 (+6d) | 10d → 6d |

## Version 55 (saved 2014-02-19)

Note of the change: обновления

Last finish stays 2014-09-11. Complete tasks 110 → 122.

Added:

| ID | Task | Duration | Start | Finish | Predecessors | Constraint | Resources |
| --- | --- | --- | --- | --- | --- | --- | --- |
| 145 | **Преобразование структуры зранения для Поруч и Исп.** | 5d | 2014-02-12 | 2014-02-18 |  |  |  |
| 146 | Принято решение по упрощению ДОП | 0d | 2014-02-12 | 2014-02-12 |  | start no earlier than 2014-02-12 |  |
| 147 | Адаптация ДОП | 2d | 2014-02-12 | 2014-02-13 | 146 |  |  |
| 148 | Адаптация коллекций | 3d | 2014-02-14 | 2014-02-18 | 147 |  |  |
| 162 | Проверка заполнения | 3d | 2014-02-11 | 2014-02-13 |  |  | Тимофей Щербатый |
| 164 | Задание выдано | 0d | 2014-02-12 | 2014-02-12 |  | start no earlier than 2014-02-12 | Тугушев Илья |
| 167 | **Перенос логики сервисов по вхД** | 11d | 2014-02-26 | 2014-03-13 |  |  |  |
| 168 | Задача поставлена | 1d | 2014-02-26 | 2014-02-27 | 164, 166 |  | Тугушев Илья |
| 169 | Пролведение процедуры Revers Engineering | 5d | 2014-02-27 | 2014-03-06 | 168 |  | Наталья Смолянец (Смолянец) |
| 170 | Реализация в слое CMJ-CMSochi | 5d | 2014-03-06 | 2014-03-13 | 169 |  | Антон Ганчев (Киев) |
| 173 | Коллекции GUI | 10d | 2014-02-20 | 2014-03-05 | 165 |  | (БТЛ) Дмитрий Лякин |

Removed: 179 Коллекции; 180 Коллекции ГУИ для Двходящих; 181 Коллекции Сисм для Входящих; 187 Разработка адаптеров для Вх; 188 Задание поставлено; 189 Разработка архитектуры дя адаптеров; 190 Разработка адаптеров

Changed:

| ID | Task | Start | Finish | Duration | Complete | Total float | Predecessors | Other |
| --- | --- | --- | --- | --- | --- | --- | --- | --- |
| 1 | **Разработка версии CM4/5** |  |  |  | 36% → 37% |  |  |  |
| 9 | **Создание модуля "Делопроизводство" (документоориентированная среда)** |  | 2014-09-03 → 2014-09-04 (+1d) | 345d? → 346d? | 39% → 40% | 6d → 5d |  |  |
| 20 | **Проектирование и формирование ядра системы** |  | 2014-05-14 → 2014-05-15 (+1d) | 265d? → 266d? | 46% → 47% | 18d → 17d |  |  |
| 68 | **Слой сопряжения CMJ server (CM4)** |  | 2014-05-14 → 2014-05-15 (+1d) | 224d? → 225d? | 33% → 35% | 18d → 17d |  |  |
| 76 | **Интеграция с CMJ по Внутренним Документам** |  | 2014-02-17 → 2014-02-18 (+1d) | 98d? → 99d? | 79% → 84% | 0d → 17d |  |  |
| 96 | **Доработка ВнД** |  |  |  | 6% → 31% | 0d → 18d |  |  |
| 97 | Поддержка работы с Вложениями | 2014-02-04 A | 2014-02-06 A |  | 0% → 100% | 2d → none |  |  |
| 98 | Поддержка работы с ReachText | 2014-01-27 A | 2014-01-27 A |  | 0% → 100% | 8d → none |  |  |
| 99 | Правила вычисления дправ доступа - реализация | 2014-02-03 A | 2014-02-06 A |  | 0% → 100% | 0d → none |  |  |
| 100 | Поддержка полнотекстового поиска |  | 2014-02-13 → 2014-02-14 (+1d) | 5d → 6d |  | 2d → 1d |  |  |
| 106 | Mapper СпО | 2013-11-04 A | 2013-11-06 A |  | 0% → 100% | 79d → none |  |  |
| 107 | Аутентификация | 2013-10-29 → 2014-02-04 A (+98d) | 2013-10-31 → 2014-02-10 A (+102d) | 2d → 5d | 0% → 100% | 65.25d → none |  | constraint start no earlier than 2013-09-30 → start no earlier than 2014-02-04 |
| 108 | **Настраиваемые коллекции** |  | 2014-02-06 A |  | 96% → 100% | 4d → none |  |  |
| 114 | **Конфигурация коллекций (логин)** |  | 2013-12-12 A |  | 95% → 100% | 34d → none |  |  |
| 116 | Системные настройки для ВнД |  | 2013-12-12 A |  | 90% → 100% | 34d → none |  |  |
| 117 | Проверка работы | 2013-12-13 A | 2013-12-13 A |  | 0% → 100% | 34d → none |  |  |
| 118 | Конфигурация корневой папки навигатора | 2014-02-06 A | 2014-02-06 A |  | 0% → 100% | 4d → none |  |  |
| 144 | ВнД | 2014-02-06 → 2014-02-10 (+4d) | 2014-02-06 → 2014-02-10 (+4d) |  |  | 21d → 0d |  |  |
| 149 | **Адаптация CMJ-server** | 2014-02-07 → 2014-02-11 A (+4d) | 2014-02-10 → 2014-02-12 (+2d) |  | 0% → 50% | 5d → 21d |  |  |
| 150 | Подмена РБД для CMJ-Server | 2014-02-07 → 2014-02-11 A (+4d) | 2014-02-10 → 2014-02-12 A (+2d) |  | 0% → 100% | 5d → none |  |  |
| 151 | Имплементация аналогов @-функций для Sochi-server | 2014-02-07 → 2014-02-11 (+4d) | 2014-02-10 → 2014-02-12 (+2d) |  |  | 5d → 21d |  |  |
| 152 | Объединение War | 2014-02-07 → 2014-02-11 A (+4d) | 2014-02-07 → 2014-02-11 A (+4d) |  | 0% → 100% | 6d → none |  |  |
| 153 | **Инструмент заполнения** | 2014-02-07 → 2014-02-11 A (+4d) | 2014-02-12 → 2014-02-14 (+2d) |  | 0% → 18% | 3d → 19d |  |  |
| 154 | **Заливка данных для демонстрации** | 2014-02-07 → 2014-02-11 A (+4d) | 2014-02-12 → 2014-02-14 A (+2d) |  | 0% → 100% | 3d → none |  |  |
| 155 | Подготовка задачи | 2014-02-07 → 2014-02-11 A (+4d) | 2014-02-07 → 2014-02-11 A (+4d) |  | 0% → 100% | 3d → none |  |  |
| 156 | Написание скриптов заливки | 2014-02-10 → 2014-02-12 A (+2d) | 2014-02-12 → 2014-02-14 A (+2d) |  | 0% → 100% | 3d → none |  |  |
| 157 | Инструмент заполнения Каталога | 2014-02-07 → 2014-02-11 (+4d) | 2014-02-11 → 2014-02-13 (+2d) |  |  | 22d → 20d |  | resources none → Евгений Сафроненко |
| 158 | Инструмент заполнения СС | 2014-02-07 → 2014-02-11 (+4d) | 2014-02-11 → 2014-02-13 (+2d) |  |  | 22d → 20d |  | resources none → Евгений Сафроненко |
| 159 | Инструмент заполнения Портала | 2014-02-07 → 2014-02-11 (+4d) | 2014-02-11 → 2014-02-13 (+2d) |  |  | 22d → 20d |  | resources none → Евгений Сафроненко |
| 160 | Инструмент заполнения СО | 2014-02-07 → 2014-02-11 (+4d) | 2014-02-11 → 2014-02-13 (+2d) |  |  | 22d → 20d |  | resources none → Евгений Сафроненко |
| 161 | Инструмент заполнения СпО | 2014-02-07 → 2014-02-11 (+4d) | 2014-02-11 → 2014-02-13 (+2d) |  |  | 22d → 20d |  | resources none → Евгений Сафроненко |
| 163 | **Интеграция с CMJ по Входящим документам** | 2014-02-18 A → 2014-02-12 (-6d) | 2014-03-31 → 2014-03-14 (-17d) | 29.8d? → 23d | 13% → 0% | 50.2d → 61d | 76 → none |  |
| 165 | Конфиг ДОП | 2014-02-18 A → 2014-02-12 (-6d) | 2014-02-25 → 2014-02-19 (-6d) |  | 90% → 0% | 50.2d → 61d | 190 → 164 | resources Евгений Баланенко → Глеб Ноздрачев |
| 166 | Mapper | 2014-02-26 → 2014-02-20 (-6d) | 2014-03-04 → 2014-02-26 (-6d) |  |  | 50.2d → 62.2d |  | resources Евгений Баланенко → Александр Власюк |
| 171 | **Разработка коллекций** | 2014-03-18 → 2014-02-20 (-26d) | 2014-03-31 → 2014-03-14 (-17d) | 9d → 17d |  | 50.2d → 61d | Разработка адаптеров для Вх → 165 |  |
| 172 | Коллекции внутрисистемные | 2014-03-18 → 2014-02-20 (-26d) | 2014-03-31 → 2014-03-04 (-27d) |  |  | 50.2d → 69d | none → 165 | was named Коллекции; resources (БТЛ) Олег Еренцов → (БТЛ)Сергей Степыгин |
| 174 | **Настраиваемые коллекции** | 2014-03-04 → 2014-03-06 (+2d) |  | 5d? → 4d |  | 64.2d → 61d | 166 → 173 |  |
| 175 | **Конфигурация коллекций** | 2014-03-04 → 2014-03-06 (+2d) | 2014-03-10 → 2014-03-11 (+1d) |  |  | 64.2d → 61d |  |  |
| 176 | Типовая иерархия кастомных папок (3шт) | 2014-03-04 → 2014-03-06 (+2d) | 2014-03-06 → 2014-03-07 (+1d) |  |  | 64.2d → 61d |  | resources Евгений Баланенко → (БТЛ) Олег Еренцов |
| 177 | Системные настройки для Вх | 2014-03-06 → 2014-03-10 (+4d) | 2014-03-10 → 2014-03-11 (+1d) |  |  | 64.2d → 61d |  | resources Евгений Баланенко → (БТЛ) Олег Еренцов |
| 178 | Проверка работы | 2014-03-10 → 2014-03-12 (+2d) | 2014-03-11 → 2014-03-14 (+3d) | 1d? → 3d |  | 64.2d → 61d |  | resources Евгений Баланенко → (БТЛ) Олег Еренцов |
| 179 | Интеграция по Вх выполнена | 2014-03-31 → 2014-03-14 (-17d) | 2014-03-31 → 2014-03-14 (-17d) |  |  | 50.2d → 61d | 166, 174, 172 → 166, 174, 172, 171 |  |
| 198 | **Интеграция с CMJ по ОРД** | 2014-02-18 → 2014-02-19 (+1d) | 2014-04-01 → 2014-04-02 (+1d) |  |  | 49d → 48d |  |  |
| 199 | Конфиг ДОП | 2014-02-18 → 2014-02-19 (+1d) | 2014-02-25 → 2014-02-26 (+1d) |  |  | 49d → 48d |  |  |
| 200 | Mapper | 2014-02-26 → 2014-02-27 (+1d) | 2014-03-05 → 2014-03-06 (+1d) |  |  | 49d → 48d |  |  |
| 201 | **Настраиваемые коллекции** | 2014-03-06 → 2014-03-07 (+1d) | 2014-03-12 → 2014-03-13 (+1d) |  |  | 63d → 62d |  |  |
| 202 | **Конфигурация коллекций** | 2014-03-06 → 2014-03-07 (+1d) | 2014-03-11 → 2014-03-12 (+1d) |  |  | 63d → 62d |  |  |
| 203 | Типовая иерархия кастомных папок (3шт) | 2014-03-06 → 2014-03-07 (+1d) | 2014-03-07 → 2014-03-10 (+3d) |  |  | 63d → 62d |  |  |
| 204 | Системные настройки для ОРД | 2014-03-10 → 2014-03-11 (+1d) | 2014-03-11 → 2014-03-12 (+1d) |  |  | 63d → 62d |  |  |
| 205 | Проверка работы | 2014-03-12 → 2014-03-13 (+1d) | 2014-03-12 → 2014-03-13 (+1d) |  |  | 63d → 62d |  |  |
| 206 | **Разработка адаптеров для ОРД** | 2014-03-05 → 2014-03-06 (+1d) | 2014-03-19 → 2014-03-20 (+1d) |  |  | 49d → 48d |  |  |
| 207 | Задание поставлено | 2014-03-05 → 2014-03-06 (+1d) | 2014-03-05 → 2014-03-06 (+1d) |  |  | 49d → 48d |  |  |
| 208 | Разработка архитектуры дя адаптеров | 2014-03-06 → 2014-03-07 (+1d) | 2014-03-12 → 2014-03-13 (+1d) |  |  | 49d → 48d |  |  |
| 209 | Разработка адаптеров | 2014-03-13 → 2014-03-14 (+1d) | 2014-03-19 → 2014-03-20 (+1d) |  |  | 49d → 48d |  |  |
| 210 | **Разработка коллекций** | 2014-03-20 → 2014-03-21 (+1d) | 2014-04-01 → 2014-04-02 (+1d) |  |  | 49d → 48d |  |  |
| 211 | Коллекции | 2014-03-20 → 2014-03-21 (+1d) | 2014-04-01 → 2014-04-02 (+1d) |  |  | 49d → 48d |  |  |
| 212 | Интеграция по ОРД выполнена | 2014-04-01 → 2014-04-02 (+1d) | 2014-04-01 → 2014-04-02 (+1d) |  |  | 49d → 48d |  |  |
| 213 | **Интеграция с CMJ по "Кейсам"** | 2014-02-18 → 2014-02-19 (+1d) | 2014-04-01 → 2014-04-02 (+1d) |  |  | 49d → 48d |  |  |
| 214 | Конфиг ДОП | 2014-02-18 → 2014-02-19 (+1d) | 2014-02-25 → 2014-02-26 (+1d) |  |  | 49d → 48d |  |  |
| 215 | Mapper | 2014-02-26 → 2014-02-27 (+1d) | 2014-03-05 → 2014-03-06 (+1d) |  |  | 49d → 48d |  |  |
| 216 | **Настраиваемые коллекции** | 2014-03-06 → 2014-03-07 (+1d) | 2014-03-12 → 2014-03-13 (+1d) |  |  | 63d → 62d |  |  |
| 217 | **Конфигурация коллекций** | 2014-03-06 → 2014-03-07 (+1d) | 2014-03-11 → 2014-03-12 (+1d) |  |  | 63d → 62d |  |  |
| 218 | Типовая иерархия кастомных папок (3шт) | 2014-03-06 → 2014-03-07 (+1d) | 2014-03-07 → 2014-03-10 (+3d) |  |  | 63d → 62d |  |  |
| 219 | Системные настройки для Кейс | 2014-03-10 → 2014-03-11 (+1d) | 2014-03-11 → 2014-03-12 (+1d) |  |  | 63d → 62d |  |  |
| 220 | Проверка работы | 2014-03-12 → 2014-03-13 (+1d) | 2014-03-12 → 2014-03-13 (+1d) |  |  | 63d → 62d |  |  |
| 221 | **Разработка адаптеров для Кейс** | 2014-03-05 → 2014-03-06 (+1d) | 2014-03-19 → 2014-03-20 (+1d) |  |  | 49d → 48d |  |  |
| 222 | Задание поставлено | 2014-03-05 → 2014-03-06 (+1d) | 2014-03-05 → 2014-03-06 (+1d) |  |  | 49d → 48d |  |  |
| 223 | Разработка архитектуры дя адаптеров | 2014-03-06 → 2014-03-07 (+1d) | 2014-03-12 → 2014-03-13 (+1d) |  |  | 49d → 48d |  |  |
| 224 | Разработка адаптеров | 2014-03-13 → 2014-03-14 (+1d) | 2014-03-19 → 2014-03-20 (+1d) |  |  | 49d → 48d |  |  |
| 225 | **Разработка коллекций** | 2014-03-20 → 2014-03-21 (+1d) | 2014-04-01 → 2014-04-02 (+1d) |  |  | 49d → 48d |  |  |

| ID | Task | Start | Finish | Total float |
| --- | --- | --- | --- | --- |
| 226 | Коллекции | 2014-03-20 → 2014-03-21 (+1d) | 2014-04-01 → 2014-04-02 (+1d) | 49d → 48d |
| 227 | Интеграция по Кейс выполнена | 2014-04-01 → 2014-04-02 (+1d) | 2014-04-01 → 2014-04-02 (+1d) | 49d → 48d |
| 228 | **Интеграция с CMJ по Исходящие документам** | 2014-02-07 → 2014-02-11 (+4d) | 2014-03-21 → 2014-03-25 (+4d) | 56d → 54d |
| 229 | Конфиг ДОП | 2014-02-07 → 2014-02-11 (+4d) | 2014-02-14 → 2014-02-18 (+4d) | 56d → 54d |
| 230 | Mapper | 2014-02-17 → 2014-02-19 (+2d) | 2014-02-24 → 2014-02-26 (+2d) | 56d → 54d |
| 231 | **Настраиваемые коллекции** | 2014-02-25 → 2014-02-27 (+2d) | 2014-03-03 → 2014-03-05 (+2d) | 70d → 68d |
| 232 | **Конфигурация коллекций** | 2014-02-25 → 2014-02-27 (+2d) | 2014-02-28 → 2014-03-04 (+4d) | 70d → 68d |
| 233 | Типовая иерархия кастомных папок (3шт) | 2014-02-25 → 2014-02-27 (+2d) | 2014-02-26 → 2014-02-28 (+2d) | 70d → 68d |
| 234 | Системные настройки для Исх | 2014-02-27 → 2014-03-03 (+4d) | 2014-02-28 → 2014-03-04 (+4d) | 70d → 68d |
| 235 | Проверка работы | 2014-03-03 → 2014-03-05 (+2d) | 2014-03-03 → 2014-03-05 (+2d) | 70d → 68d |
| 236 | **Разработка адаптеров для Исх** | 2014-02-24 → 2014-02-26 (+2d) | 2014-03-10 → 2014-03-12 (+2d) | 56d → 54d |
| 237 | Задание поставлено | 2014-02-24 → 2014-02-26 (+2d) | 2014-02-24 → 2014-02-26 (+2d) | 56d → 54d |
| 238 | Разработка архитектуры дя адаптеров | 2014-02-25 → 2014-02-27 (+2d) | 2014-03-03 → 2014-03-05 (+2d) | 56d → 54d |
| 239 | Разработка адаптеров | 2014-03-04 → 2014-03-06 (+2d) | 2014-03-10 → 2014-03-12 (+2d) | 56d → 54d |
| 240 | **Разработка коллекций** | 2014-03-11 → 2014-03-13 (+2d) | 2014-03-21 → 2014-03-25 (+4d) | 56d → 54d |
| 241 | Коллекции | 2014-03-11 → 2014-03-13 (+2d) | 2014-03-21 → 2014-03-25 (+4d) | 56d → 54d |
| 242 | Интеграция по Исх выполнена | 2014-03-21 → 2014-03-25 (+4d) | 2014-03-21 → 2014-03-25 (+4d) | 56d → 54d |
| 243 | **Интеграция с CMJ по самостоятельным поручениям** | 2014-02-18 → 2014-02-19 (+1d) | 2014-04-01 → 2014-04-02 (+1d) | 49d → 48d |
| 244 | Конфиг ДОП | 2014-02-18 → 2014-02-19 (+1d) | 2014-02-25 → 2014-02-26 (+1d) | 49d → 48d |
| 245 | Mapper | 2014-02-26 → 2014-02-27 (+1d) | 2014-03-05 → 2014-03-06 (+1d) | 49d → 48d |
| 246 | **Настраиваемые коллекции** | 2014-03-06 → 2014-03-07 (+1d) | 2014-03-12 → 2014-03-13 (+1d) | 63d → 62d |
| 247 | **Конфигурация коллекций** | 2014-03-06 → 2014-03-07 (+1d) | 2014-03-11 → 2014-03-12 (+1d) | 63d → 62d |
| 248 | Типовая иерархия кастомных папок (3шт) | 2014-03-06 → 2014-03-07 (+1d) | 2014-03-07 → 2014-03-10 (+3d) | 63d → 62d |
| 249 | Системные настройки для Поручений | 2014-03-10 → 2014-03-11 (+1d) | 2014-03-11 → 2014-03-12 (+1d) | 63d → 62d |
| 250 | Проверка работы | 2014-03-12 → 2014-03-13 (+1d) | 2014-03-12 → 2014-03-13 (+1d) | 63d → 62d |
| 251 | **Разработка адаптеров для Поручений** | 2014-03-05 → 2014-03-06 (+1d) | 2014-03-19 → 2014-03-20 (+1d) | 49d → 48d |
| 252 | Задание поставлено | 2014-03-05 → 2014-03-06 (+1d) | 2014-03-05 → 2014-03-06 (+1d) | 49d → 48d |
| 253 | Разработка архитектуры дя адаптеров | 2014-03-06 → 2014-03-07 (+1d) | 2014-03-12 → 2014-03-13 (+1d) | 49d → 48d |
| 254 | Разработка адаптеров | 2014-03-13 → 2014-03-14 (+1d) | 2014-03-19 → 2014-03-20 (+1d) | 49d → 48d |
| 255 | **Разработка коллекций** | 2014-03-20 → 2014-03-21 (+1d) | 2014-04-01 → 2014-04-02 (+1d) | 49d → 48d |
| 256 | Коллекции | 2014-03-20 → 2014-03-21 (+1d) | 2014-04-01 → 2014-04-02 (+1d) | 49d → 48d |
| 257 | Интеграция по Поручений выполнена | 2014-04-01 → 2014-04-02 (+1d) | 2014-04-01 → 2014-04-02 (+1d) | 49d → 48d |
| 258 | **Интеграция с CMJ по ОГ** | 2014-02-18 → 2014-02-19 (+1d) | 2014-04-01 → 2014-04-02 (+1d) | 49d → 48d |
| 259 | Конфиг ДОП | 2014-02-18 → 2014-02-19 (+1d) | 2014-02-25 → 2014-02-26 (+1d) | 49d → 48d |
| 260 | Mapper | 2014-02-26 → 2014-02-27 (+1d) | 2014-03-05 → 2014-03-06 (+1d) | 49d → 48d |
| 261 | **Настраиваемые коллекции** | 2014-03-06 → 2014-03-07 (+1d) | 2014-03-12 → 2014-03-13 (+1d) | 63d → 62d |
| 262 | **Конфигурация коллекций** | 2014-03-06 → 2014-03-07 (+1d) | 2014-03-11 → 2014-03-12 (+1d) | 63d → 62d |
| 263 | Типовая иерархия кастомных папок (3шт) | 2014-03-06 → 2014-03-07 (+1d) | 2014-03-07 → 2014-03-10 (+3d) | 63d → 62d |
| 264 | Системные настройки для ОГ | 2014-03-10 → 2014-03-11 (+1d) | 2014-03-11 → 2014-03-12 (+1d) | 63d → 62d |
| 265 | Проверка работы | 2014-03-12 → 2014-03-13 (+1d) | 2014-03-12 → 2014-03-13 (+1d) | 63d → 62d |
| 266 | **Разработка адаптеров для ОГ** | 2014-03-05 → 2014-03-06 (+1d) | 2014-03-19 → 2014-03-20 (+1d) | 49d → 48d |
| 267 | Задание поставлено | 2014-03-05 → 2014-03-06 (+1d) | 2014-03-05 → 2014-03-06 (+1d) | 49d → 48d |
| 268 | Разработка архитектуры дя адаптеров | 2014-03-06 → 2014-03-07 (+1d) | 2014-03-12 → 2014-03-13 (+1d) | 49d → 48d |
| 269 | Разработка адаптеров | 2014-03-13 → 2014-03-14 (+1d) | 2014-03-19 → 2014-03-20 (+1d) | 49d → 48d |
| 270 | **Разработка коллекций** | 2014-03-20 → 2014-03-21 (+1d) | 2014-04-01 → 2014-04-02 (+1d) | 49d → 48d |
| 271 | Коллекции | 2014-03-20 → 2014-03-21 (+1d) | 2014-04-01 → 2014-04-02 (+1d) | 49d → 48d |
| 272 | Интеграция по ОГ выполнена | 2014-04-01 → 2014-04-02 (+1d) | 2014-04-01 → 2014-04-02 (+1d) | 49d → 48d |
| 273 | **Интеграция с CMJ по сервису согласования** | 2014-02-17 → 2014-02-18 (+1d) | 2014-04-01 → 2014-04-02 (+1d) | 18d → 17d |
| 274 | Получена версия CM4.X c WF движком | 2014-02-17 → 2014-02-18 (+1d) | 2014-02-17 → 2014-02-18 (+1d) | 18d → 17d |
| 275 | Конфиг ДОП | 2014-02-18 → 2014-02-19 (+1d) | 2014-02-25 → 2014-02-26 (+1d) | 18d → 17d |
| 276 | Mapper | 2014-02-26 → 2014-02-27 (+1d) | 2014-03-05 → 2014-03-06 (+1d) | 18d → 17d |
| 277 | **Настраиваемые коллекции** | 2014-03-06 → 2014-03-07 (+1d) | 2014-03-12 → 2014-03-13 (+1d) | 32d → 31d |
| 278 | **Конфигурация коллекций** | 2014-03-06 → 2014-03-07 (+1d) | 2014-03-11 → 2014-03-12 (+1d) | 32d → 31d |
| 279 | Типовая иерархия кастомных папок (3шт) | 2014-03-06 → 2014-03-07 (+1d) | 2014-03-07 → 2014-03-10 (+3d) | 32d → 31d |
| 280 | Системные настройки для СрвСогл | 2014-03-10 → 2014-03-11 (+1d) | 2014-03-11 → 2014-03-12 (+1d) | 32d → 31d |
| 281 | Проверка работы | 2014-03-12 → 2014-03-13 (+1d) | 2014-03-12 → 2014-03-13 (+1d) | 32d → 31d |
| 282 | **Разработка адаптеров для СрвСогл** | 2014-03-05 → 2014-03-06 (+1d) | 2014-03-19 → 2014-03-20 (+1d) | 18d → 17d |
| 283 | Задание поставлено | 2014-03-05 → 2014-03-06 (+1d) | 2014-03-05 → 2014-03-06 (+1d) | 18d → 17d |
| 284 | Разработка архитектуры дя адаптеров | 2014-03-06 → 2014-03-07 (+1d) | 2014-03-12 → 2014-03-13 (+1d) | 18d → 17d |
| 285 | Разработка адаптеров | 2014-03-13 → 2014-03-14 (+1d) | 2014-03-19 → 2014-03-20 (+1d) | 18d → 17d |
| 286 | **Разработка коллекций** | 2014-03-20 → 2014-03-21 (+1d) | 2014-04-01 → 2014-04-02 (+1d) | 18d → 17d |
| 287 | Коллекции | 2014-03-20 → 2014-03-21 (+1d) | 2014-04-01 → 2014-04-02 (+1d) | 18d → 17d |
| 288 | Интеграция по СрвСогл выполнена | 2014-04-01 → 2014-04-02 (+1d) | 2014-04-01 → 2014-04-02 (+1d) | 18d → 17d |
| 289 | **Интеграция с CMJ по Заседаниям** | 2014-04-02 → 2014-04-03 (+1d) | 2014-05-14 → 2014-05-15 (+1d) | 18d → 17d |
| 290 | Конфиг ДОП | 2014-04-02 → 2014-04-03 (+1d) | 2014-04-09 → 2014-04-10 (+1d) | 18d → 17d |
| 291 | Mapper | 2014-04-10 → 2014-04-11 (+1d) | 2014-04-17 → 2014-04-18 (+1d) | 18d → 17d |
| 292 | **Настраиваемые коллекции** | 2014-04-18 → 2014-04-21 (+3d) | 2014-04-24 → 2014-04-25 (+1d) | 32d → 31d |
| 293 | **Конфигурация коллекций** | 2014-04-18 → 2014-04-21 (+3d) | 2014-04-23 → 2014-04-24 (+1d) | 32d → 31d |
| 294 | Типовая иерархия кастомных папок (3шт) | 2014-04-18 → 2014-04-21 (+3d) | 2014-04-21 → 2014-04-22 (+1d) | 32d → 31d |
| 295 | Системные настройки для Зсд | 2014-04-22 → 2014-04-23 (+1d) | 2014-04-23 → 2014-04-24 (+1d) | 32d → 31d |

| ID | Task | Start | Finish | Total float |
| --- | --- | --- | --- | --- |
| 296 | Проверка работы | 2014-04-24 → 2014-04-25 (+1d) | 2014-04-24 → 2014-04-25 (+1d) | 32d → 31d |
| 297 | **Разработка адаптеров для Зсд** | 2014-04-17 → 2014-04-18 (+1d) | 2014-05-01 → 2014-05-02 (+1d) | 18d → 17d |
| 298 | Задание поставлено | 2014-04-17 → 2014-04-18 (+1d) | 2014-04-17 → 2014-04-18 (+1d) | 18d → 17d |
| 299 | Разработка архитектуры дя адаптеров | 2014-04-18 → 2014-04-21 (+3d) | 2014-04-24 → 2014-04-25 (+1d) | 18d → 17d |
| 300 | Разработка адаптеров | 2014-04-25 → 2014-04-28 (+3d) | 2014-05-01 → 2014-05-02 (+1d) | 18d → 17d |
| 301 | **Разработка коллекций** | 2014-05-02 → 2014-05-05 (+3d) | 2014-05-14 → 2014-05-15 (+1d) | 18d → 17d |
| 302 | Коллекции | 2014-05-02 → 2014-05-05 (+3d) | 2014-05-14 → 2014-05-15 (+1d) | 18d → 17d |
| 303 | Интеграция по Зсд выполнена | 2014-05-14 → 2014-05-15 (+1d) | 2014-05-14 → 2014-05-15 (+1d) | 18d → 17d |
| 304 | **Интеграция с CMJ по Обсуждениям и ознакомлениям** | 2014-02-18 → 2014-02-19 (+1d) | 2014-04-01 → 2014-04-02 (+1d) | 49d → 48d |
| 305 | Конфиг ДОП | 2014-02-18 → 2014-02-19 (+1d) | 2014-02-25 → 2014-02-26 (+1d) | 49d → 48d |
| 306 | Mapper | 2014-02-26 → 2014-02-27 (+1d) | 2014-03-05 → 2014-03-06 (+1d) | 49d → 48d |
| 307 | **Настраиваемые коллекции** | 2014-03-06 → 2014-03-07 (+1d) | 2014-03-12 → 2014-03-13 (+1d) | 63d → 62d |
| 308 | **Конфигурация коллекций** | 2014-03-06 → 2014-03-07 (+1d) | 2014-03-11 → 2014-03-12 (+1d) | 63d → 62d |
| 309 | Типовая иерархия кастомных папок (3шт) | 2014-03-06 → 2014-03-07 (+1d) | 2014-03-07 → 2014-03-10 (+3d) | 63d → 62d |
| 310 | Системные настройки для ОО | 2014-03-10 → 2014-03-11 (+1d) | 2014-03-11 → 2014-03-12 (+1d) | 63d → 62d |
| 311 | Проверка работы | 2014-03-12 → 2014-03-13 (+1d) | 2014-03-12 → 2014-03-13 (+1d) | 63d → 62d |
| 312 | **Разработка адаптеров для ОО** | 2014-03-05 → 2014-03-06 (+1d) | 2014-03-19 → 2014-03-20 (+1d) | 49d → 48d |
| 313 | Задание поставлено | 2014-03-05 → 2014-03-06 (+1d) | 2014-03-05 → 2014-03-06 (+1d) | 49d → 48d |
| 314 | Разработка архитектуры дя адаптеров | 2014-03-06 → 2014-03-07 (+1d) | 2014-03-12 → 2014-03-13 (+1d) | 49d → 48d |
| 315 | Разработка адаптеров | 2014-03-13 → 2014-03-14 (+1d) | 2014-03-19 → 2014-03-20 (+1d) | 49d → 48d |
| 316 | **Разработка коллекций** | 2014-03-20 → 2014-03-21 (+1d) | 2014-04-01 → 2014-04-02 (+1d) | 49d → 48d |
| 317 | Коллекции | 2014-03-20 → 2014-03-21 (+1d) | 2014-04-01 → 2014-04-02 (+1d) | 49d → 48d |
| 318 | Интеграция по ОО выполнена | 2014-04-01 → 2014-04-02 (+1d) | 2014-04-01 → 2014-04-02 (+1d) | 49d → 48d |
| 319 | **Интеграция с CMJ по Формированию дел** | 2014-02-18 → 2014-02-19 (+1d) | 2014-04-01 → 2014-04-02 (+1d) | 49d → 48d |
| 320 | Конфиг ДОП | 2014-02-18 → 2014-02-19 (+1d) | 2014-02-25 → 2014-02-26 (+1d) | 49d → 48d |
| 321 | Mapper | 2014-02-26 → 2014-02-27 (+1d) | 2014-03-05 → 2014-03-06 (+1d) | 49d → 48d |
| 322 | **Настраиваемые коллекции** | 2014-03-06 → 2014-03-07 (+1d) | 2014-03-12 → 2014-03-13 (+1d) | 63d → 62d |
| 323 | **Конфигурация коллекций** | 2014-03-06 → 2014-03-07 (+1d) | 2014-03-11 → 2014-03-12 (+1d) | 63d → 62d |
| 324 | Типовая иерархия кастомных папок (3шт) | 2014-03-06 → 2014-03-07 (+1d) | 2014-03-07 → 2014-03-10 (+3d) | 63d → 62d |
| 325 | Системные настройки для ФД | 2014-03-10 → 2014-03-11 (+1d) | 2014-03-11 → 2014-03-12 (+1d) | 63d → 62d |
| 326 | Проверка работы | 2014-03-12 → 2014-03-13 (+1d) | 2014-03-12 → 2014-03-13 (+1d) | 63d → 62d |
| 327 | **Разработка адаптеров для ФД** | 2014-03-05 → 2014-03-06 (+1d) | 2014-03-19 → 2014-03-20 (+1d) | 49d → 48d |
| 328 | Задание поставлено | 2014-03-05 → 2014-03-06 (+1d) | 2014-03-05 → 2014-03-06 (+1d) | 49d → 48d |
| 329 | Разработка архитектуры дя адаптеров | 2014-03-06 → 2014-03-07 (+1d) | 2014-03-12 → 2014-03-13 (+1d) | 49d → 48d |
| 330 | Разработка адаптеров | 2014-03-13 → 2014-03-14 (+1d) | 2014-03-19 → 2014-03-20 (+1d) | 49d → 48d |
| 331 | **Разработка коллекций** | 2014-03-20 → 2014-03-21 (+1d) | 2014-04-01 → 2014-04-02 (+1d) | 49d → 48d |
| 332 | Коллекции | 2014-03-20 → 2014-03-21 (+1d) | 2014-04-01 → 2014-04-02 (+1d) | 49d → 48d |
| 333 | Интеграция по ФД выполнена | 2014-04-01 → 2014-04-02 (+1d) | 2014-04-01 → 2014-04-02 (+1d) | 49d → 48d |
| 423 | **Тестирование** | 2014-05-15 → 2014-05-16 (+1d) | 2014-08-18 → 2014-08-19 (+1d) | 18d → 17d |
| 424 | **Функциональное тестирование** | 2014-05-15 → 2014-05-16 (+1d) | 2014-07-28 → 2014-07-29 (+1d) | 18d → 17d |
| 425 | Подготовка ПМИ | 2014-05-15 → 2014-05-16 (+1d) | 2014-05-21 → 2014-05-22 (+1d) | 18d → 17d |
| 426 | Разработка "сценариев тестирования" | 2014-05-15 → 2014-05-16 (+1d) | 2014-06-04 → 2014-06-05 (+1d) | 23d → 22d |
| 427 | Разработка модели нагрузки для тестирования | 2014-05-22 → 2014-05-23 (+1d) | 2014-06-04 → 2014-06-05 (+1d) | 23d → 22d |
| 428 | Адаптация автоматизированных сценариев от СМ4 для создания нагрузки | 2014-05-22 → 2014-05-23 (+1d) | 2014-06-25 → 2014-06-26 (+1d) | 18d → 17d |
| 429 | **Проведение тестирования** | 2014-06-05 → 2014-06-06 (+1d) | 2014-07-28 → 2014-07-29 (+1d) | 23d → 22d |
| 430 | **Подготовка среды тестирования** | 2014-06-05 → 2014-06-06 (+1d) | 2014-06-18 → 2014-06-19 (+1d) | 23d → 22d |
| 431 | Разворачивание системы | 2014-06-05 → 2014-06-06 (+1d) | 2014-06-11 → 2014-06-12 (+1d) | 66d → 65d |
| 432 | Система готова для подключения инструментов мониторинга | 2014-06-11 → 2014-06-12 (+1d) | 2014-06-11 → 2014-06-12 (+1d) | 66d → 65d |
| 433 | Наполнение данными | 2014-06-05 → 2014-06-06 (+1d) | 2014-06-18 → 2014-06-19 (+1d) | 23d → 22d |
| 434 | Среда тестирования готова | 2014-06-25 → 2014-06-26 (+1d) | 2014-06-25 → 2014-06-26 (+1d) | 18d → 17d |
| 435 | Проведение тестирования | 2014-06-26 → 2014-06-27 (+1d) | 2014-07-09 → 2014-07-10 (+1d) | 18d → 17d |
| 436 | **Обработка результатов тестирования и внесение изменений в модуль** | 2014-07-08 → 2014-07-09 (+1d) | 2014-07-28 → 2014-07-29 (+1d) | 18d → 17d |
| 437 | Устранение замечаний по результатам функционального тестирования | 2014-07-08 → 2014-07-09 (+1d) | 2014-07-28 → 2014-07-29 (+1d) | 18d → 17d |
| 438 | Проверка устранения замечаний | 2014-07-21 → 2014-07-22 (+1d) | 2014-07-28 → 2014-07-29 (+1d) | 18d → 17d |
| 439 | **Нагрузочное тестирование** | 2014-07-09 → 2014-07-10 (+1d) | 2014-08-18 → 2014-08-19 (+1d) | 18d → 17d |
| 440 | Стенд для нагрузочного тестирования подготовлен | 2014-07-09 → 2014-07-10 (+1d) | 2014-07-09 → 2014-07-10 (+1d) | 31d → 30d |
| 441 | Проведения нагрузочного тестирования | 2014-07-29 → 2014-07-30 (+1d) | 2014-08-11 → 2014-08-12 (+1d) | 18d → 17d |
| 442 | Обработка результатов нагрузочного тестирования | 2014-08-12 → 2014-08-13 (+1d) | 2014-08-18 → 2014-08-19 (+1d) | 18d → 17d |
| 443 | **Подготовка документации** | 2014-05-15 → 2014-05-16 (+1d) | 2014-09-03 → 2014-09-04 (+1d) | 6d → 5d |
| 444 | Разработка документа "Концепция системы " | 2014-05-15 → 2014-05-16 (+1d) | 2014-07-09 → 2014-07-10 (+1d) | 6d → 5d |
| 445 | Разработка "Software Architecture Document" | 2014-07-10 → 2014-07-11 (+1d) | 2014-09-03 → 2014-09-04 (+1d) | 6d → 5d |
| 446 | Документы подготовлены | 2014-09-03 → 2014-09-04 (+1d) | 2014-09-03 → 2014-09-04 (+1d) | 6d → 5d |

## Version 56 (saved 2014-02-26)

Note of the change: новый

Last finish 2014-09-11 → 2014-10-14 (+33d).

Added:

| ID | Task | Duration | Start | Finish | Predecessors | Constraint | Resources |
| --- | --- | --- | --- | --- | --- | --- | --- |
| 191 | **Перенос логики сервисов по Дгв** | 11d | 2014-03-14 | 2014-03-31 |  |  |  |
| 192 | Задача поставлена | 1d | 2014-03-14 | 2014-03-17 | 167 |  | Тугушев Илья |
| 193 | Пролведение процедуры Revers Engineering для процессов | 10d | 2014-03-17 | 2014-03-31 | 192, 183 |  | Наталья Смолянец (Смолянец) |
| 194 | Реализация в слое CMJ-CMSochi | 10d | 2014-03-17 | 2014-03-31 | 193SS |  | Антон Ганчев (Киев) |
| 221 | **Перенос логики сервисов по ОРД** | 7d | 2014-04-09 | 2014-04-18 |  |  |  |
| 223 | Пролведение процедуры Revers Engineering для процессов | 7d | 2014-04-09 | 2014-04-18 | 222 |  | Наталья Смолянец (Смолянец) |
| 224 | Реализация в слое CMJ-CMSochi | 7d | 2014-04-09 | 2014-04-18 | 223SS |  | Антон Ганчев (Киев) |
| 234 | Системные настройки для СамПор | 6d | 2014-04-17 | 2014-04-24 | 233SS |  | Тимофей Билый |
| 236 | **Перенос логики сервисов по СамПор** | 7d | 2014-04-18 | 2014-04-29 |  |  |  |
| 238 | Пролведение процедуры Revers Engineering для процессов | 7d | 2014-04-18 | 2014-04-29 | 237 |  | Наталья Смолянец (Смолянец) |
| 239 | Реализация в слое CMJ-CMSochi | 7d | 2014-04-18 | 2014-04-29 | 238SS |  | Антон Ганчев (Киев) |
| 242 | Интеграция по СамПор выполнена | 0d | 2014-04-25 | 2014-04-25 | 230, 231, 241 |  |  |
| 251 | **Перенос логики сервисов по ОГ** | 7d | 2014-04-18 | 2014-04-29 |  |  |  |
| 253 | Пролведение процедуры Revers Engineering для процессов | 7d | 2014-04-18 | 2014-04-29 | 252 |  | Наталья Смолянец (Смолянец) |
| 254 | Реализация в слое CMJ-CMSochi | 7d | 2014-04-18 | 2014-04-29 | 253SS |  | Антон Ганчев (Киев) |
| 258 | **Интеграция с CMJ по WF** | 39.8d? | 2014-03-10 | 2014-05-06 |  |  |  |
| 260 | Переход на 4.3 CMJ | 20d | 2014-03-10 | 2014-04-04 | 259 |  | Тугушев Илья; Глеб Ноздрачев; Java разработчик3; Тестировщик |
| 266 | Системные настройки для WF | 4d | 2014-04-18 | 2014-04-23 | 265SS |  | Тимофей Билый |
| 268 | **Перенос логики сервисов по WF** | 3d | 2014-04-29 | 2014-05-06 |  |  |  |
| 270 | Пролведение процедуры Revers Engineering для процессов | 3d | 2014-04-29 | 2014-05-06 | 269 |  | Наталья Смолянец (Смолянец) |
| 271 | Реализация в слое CMJ-CMSochi | 3d | 2014-04-29 | 2014-05-06 | 270SS |  | Антон Ганчев (Киев) |
| 278 | Интеграция по WF выполнена | 0d | 2014-04-29 | 2014-04-29 | 262, 263, 277 |  |  |
| 279 | **Интеграция с CMJ по сервису Контроля Заданий** | 19.8d? | 2014-04-16 | 2014-05-16 |  |  |  |
| 284 | Типовая иерархия кастомных папок | 6d | 2014-05-06 | 2014-05-15 | 271 |  | Евгений Сафроненко |
| 285 | Системные настройки для КЗ | 6d | 2014-05-06 | 2014-05-15 | 284SS |  | Тимофей Билый |
| 287 | **Перенос логики сервисов по КЗ** | 10d | 2014-04-18 | 2014-05-06 |  |  |  |
| 289 | Пролведение процедуры Revers Engineering для процессов | 7d | 2014-04-24 | 2014-05-06 | 288, 266 |  | Наталья Смолянец (Смолянец) |
| 290 | Реализация в слое CMJ-CMSochi | 7d | 2014-04-24 | 2014-05-06 | 289SS |  | Антон Ганчев (Киев) |
| 293 | Интеграция по КЗ выполнена | 0d | 2014-05-16 | 2014-05-16 | 281, 282, 292 |  |  |
| 299 | Типовая иерархия кастомных папок | 6d | 2014-05-15 | 2014-05-23 | 285 |  | Евгений Сафроненко |
| 302 | **Перенос логики сервисов по ФД** | 9d | 2014-04-30 | 2014-05-16 |  |  |  |
| 304 | Пролведение процедуры Revers Engineering для процессов | 7d | 2014-05-07 | 2014-05-16 | 303, 289 |  | Наталья Смолянец (Смолянец) |
| 305 | Реализация в слое CMJ-CMSochi | 7d | 2014-05-07 | 2014-05-16 | 304SS |  | Антон Ганчев (Киев) |
| 314 | Типовая иерархия кастомных папок | 6d | 2014-05-23 | 2014-06-02 | 300 |  | Евгений Сафроненко |
| 317 | **Перенос логики сервисов по Зсд** | 7d | 2014-05-16 | 2014-05-27 |  |  |  |
| 319 | Пролведение процедуры Revers Engineering для процессов | 7d | 2014-05-19 | 2014-05-27 | 318, 305 |  | Наталья Смолянец (Смолянец) |
| 320 | Реализация в слое CMJ-CMSochi | 7d | 2014-05-19 | 2014-05-27 | 319SS |  | Антон Ганчев (Киев) |
| 329 | Типовая иерархия кастомных папок | 6d | 2014-06-04 | 2014-06-11 | 315 |  | Евгений Сафроненко |
| 332 | **Перенос логики сервисов по ОО** | 7d | 2014-05-27 | 2014-06-05 |  |  |  |
| 334 | Пролведение процедуры Revers Engineering для процессов | 7d | 2014-05-28 | 2014-06-05 | 333, 319 |  | Наталья Смолянец (Смолянец) |
| 335 | Реализация в слое CMJ-CMSochi | 7d | 2014-05-28 | 2014-06-05 | 334SS |  | Антон Ганчев (Киев) |
| 340 | Конфиг ДОП | 3d | 2014-06-04 | 2014-06-06 | 326 |  | Александр Власюк |
| 341 | Mapper | 5d | 2014-06-09 | 2014-06-13 | 340 |  | Александр Власюк |
| 342 | **Настраиваемые коллекции** | 7d? | 2014-06-16 | 2014-06-24 | 341 |  |  |
| 343 | **Конфигурация коллекций** | 6d | 2014-06-16 | 2014-06-23 |  |  |  |
| 344 | Типовая иерархия кастомных папок | 6d | 2014-06-16 | 2014-06-23 |  |  | Евгений Сафроненко |
| 345 | Системные настройки для "Кейсов" | 6d | 2014-06-16 | 2014-06-23 | 344SS |  | Тимофей Билый |
| 346 | Проверка работы | 1d? | 2014-06-24 | 2014-06-24 | 343 |  | Глеб Ноздрачев [80%] |
| 347 | **Перенос логики сервисов по "Кейсам"** | 7d | 2014-06-06 | 2014-06-17 |  |  |  |
| 348 | Задание поставлено | 0d | 2014-06-06 | 2014-06-06 | 340, 335 | start no earlier than 2013-09-30 | Тугушев Илья [80%] |
| 349 | Пролведение процедуры Revers Engineering для процессов | 7d | 2014-06-09 | 2014-06-17 | 348 |  | Наталья Смолянец (Смолянец) |
| 350 | Реализация в слое CMJ-CMSochi | 7d | 2014-06-09 | 2014-06-17 | 349SS |  | Антон Ганчев (Киев) |
| 351 | **Разработка коллекций** | 10d | 2014-06-10 | 2014-06-23 |  |  |  |
| 352 | Коллекции | 10d | 2014-06-10 | 2014-06-23 | 340, 337 |  | (БТЛ) Олег Еренцов; (БТЛ) Дмитрий Лякин; (БТЛ)Сергей Степыгин |
| 353 | Интеграция по "Кейсам" выполнена | 0d | 2014-06-24 | 2014-06-24 | 341, 342, 352 |  |  |

Removed: 191 Разработка адаптеров для Дгв; 193 Разработка архитектуры дя адаптеров; 194 Разработка адаптеров; 206 Разработка адаптеров для ОРД; 208 Разработка архитектуры дя адаптеров; 209 Разработка адаптеров; 219 Системные настройки для Кейс; 221 Разработка адаптеров для Кейс; 223 Разработка архитектуры дя адаптеров; 224 Разработка адаптеров; 227 Интеграция по Кейс выполнена; 249 Системные настройки для Поручений; 251 Разработка адаптеров для Поручений; 253 Разработка архитектуры дя адаптеров; 254 Разработка адаптеров; 257 Интеграция по Поручений выполнена; 266 Разработка адаптеров для ОГ; 268 Разработка архитектуры дя адаптеров; 269 Разработка адаптеров; 273 Интеграция с CMJ по сервису согласования; 279 Типовая иерархия кастомных папок (3шт); 280 Системные настройки для СрвСогл; 288 Интеграция по СрвСогл выполнена; 294 Типовая иерархия кастомных папок (3шт); 297 Разработка адаптеров для Зсд; 299 Разработка архитектуры дя адаптеров; 300 Разработка адаптеров; 309 Типовая иерархия кастомных папок (3шт); 312 Разработка адаптеров для ОО; 314 Разработка архитектуры дя адаптеров; 315 Разработка адаптеров; 324 Типовая иерархия кастомных папок (3шт); 327 Разработка адаптеров для ФД; 329 Разработка архитектуры дя адаптеров; 330 Разработка адаптеров

Changed:

| ID | Task | Start | Finish | Duration | Complete | Total float | Predecessors | Other |
| --- | --- | --- | --- | --- | --- | --- | --- | --- |
| 1 | **Разработка версии CM4/5** |  | 2014-09-11 → 2014-10-14 (+33d) | 351d? → 371d? | 37% → 35% |  |  |  |
| 3 | Управление проектом |  | 2014-05-16 → 2014-05-21 (+5d) |  |  | 84d → 117d |  |  |
| 4 | **Управление требованиями** |  | 2014-09-11 → 2014-09-16 (+5d) |  |  | 0d → 33d |  |  |
| 8 | Сопровождение требований |  | 2014-09-11 → 2014-09-16 (+5d) |  |  | 0d → 33d |  |  |
| 9 | **Создание модуля "Делопроизводство" (документоориентированная среда)** |  | 2014-09-04 → 2014-10-14 (+40d) | 346d? → 371d? | 40% → 37% | 5d → 0d |  |  |
| 20 | **Проектирование и формирование ядра системы** |  | 2014-05-15 → 2014-06-24 (+40d) | 266d? → 291d? | 47% → 43% | 17d → 12d |  |  |
| 68 | **Слой сопряжения CMJ server (CM4)** |  | 2014-05-15 → 2014-06-24 (+40d) | 225d? → 250d? | 35% → 29% | 17d → 12d |  |  |
| 119 | **Разработка адаптеров для Вн** |  | 2013-10-28 A |  | 99% → 100% | 0d → none |  |  |
| 125 | Задание по Database и Document поставлена |  | 2013-10-04 A |  | 90% → 100% | 0d → none |  |  |
| 163 | **Интеграция с CMJ по Входящим документам** | 2014-02-12 → 2014-02-06 (-6d) |  | 23d → 26.8d |  | 61d → 12d |  |  |
| 164 | Задание выдано | 2014-02-12 → 2014-02-06 (-6d) | 2014-02-12 → 2014-02-06 (-6d) |  |  | 61d → 12d |  | constraint start no earlier than 2014-02-12 → start no earlier than 2014-02-06 |
| 165 | Конфиг ДОП | 2014-02-12 → 2014-02-06 (-6d) | 2014-02-19 → 2014-02-13 (-6d) |  |  | 61d → 12d |  |  |
| 166 | Mapper | 2014-02-20 → 2014-02-14 (-6d) | 2014-02-26 → 2014-02-20 (-6d) |  |  | 62.2d → 34.2d |  |  |
| 167 | **Перенос логики сервисов по вхД** | 2014-02-26 → 2014-02-20 (-6d) | 2014-03-13 → 2014-03-14 (+1d) | 11d → 16d |  | 62.2d → 34.2d |  |  |
| 168 | Задача поставлена | 2014-02-26 → 2014-02-20 (-6d) | 2014-02-27 → 2014-02-21 (-6d) |  |  | 62.2d → 21.2d |  |  |
| 169 | Пролведение процедуры Revers Engineering для процессов | 2014-02-27 → 2014-02-21 (-6d) | 2014-03-06 → 2014-03-07 (+1d) | 5d → 10d |  | 62.2d → 21.2d |  | was named Пролведение процедуры Revers Engineering |
| 170 | Реализация в слое CMJ-CMSochi | 2014-03-06 → 2014-03-07 (+1d) | 2014-03-13 → 2014-03-14 (+1d) |  |  | 62.2d → 21.2d |  |  |
| 171 | **Разработка коллекций** | 2014-02-20 → 2014-02-14 (-6d) | 2014-03-14 → 2014-03-10 (-4d) |  |  | 61d → 12d |  |  |
| 172 | Коллекции внутрисистемные | 2014-02-20 → 2014-02-14 (-6d) | 2014-03-04 → 2014-02-26 (-6d) |  |  | 69d → 93d |  |  |
| 173 | Коллекции GUI | 2014-02-20 → 2014-02-14 (-6d) | 2014-03-05 → 2014-02-27 (-6d) |  |  | 61d → 12d |  |  |
| 174 | **Настраиваемые коллекции** | 2014-03-06 → 2014-02-28 (-6d) | 2014-03-11 → 2014-03-05 (-6d) |  |  | 61d → 12d |  |  |
| 175 | **Конфигурация коллекций** | 2014-03-06 → 2014-02-28 (-6d) | 2014-03-11 → 2014-03-05 (-6d) |  |  | 61d → 12d |  |  |
| 176 | Типовая иерархия кастомных папок (3шт) | 2014-03-06 → 2014-02-28 (-6d) | 2014-03-07 → 2014-03-03 (-4d) |  |  | 61d → 13d |  |  |
| 177 | Системные настройки для Вх | 2014-03-10 → 2014-03-04 (-6d) | 2014-03-11 → 2014-03-05 (-6d) |  |  | 61d → 13d |  |  |
| 178 | Проверка работы | 2014-03-12 → 2014-03-06 (-6d) | 2014-03-14 → 2014-03-10 (-4d) |  |  | 61d → 85d |  |  |
| 179 | Интеграция по Вх выполнена | 2014-03-14 → 2014-03-10 (-4d) | 2014-03-14 → 2014-03-10 (-4d) |  |  | 61d → 98d |  |  |
| 180 | **Интеграция с CMJ по Договорам** | 2013-10-15 A → 2014-02-27 (+135d) | 2013-11-25 → 2014-03-31 (+126d) | 30d → 21.8d | 15% → 0% | 132d → 13d |  |  |
| 181 | Определен исполнитель по составлению конфигураций | 2013-10-15 → 2014-02-27 (+135d) | 2013-10-15 → 2014-02-27 (+135d) |  |  | 160d → 13d | none → 173 | constraint start no earlier than 2013-10-15 → none |
| 182 | Проектирование и получение оценки работ | 2013-10-16 → 2014-02-28 (+135d) | 2013-10-17 → 2014-03-03 (+137d) |  |  | 159d → 13d |  | constraint start no earlier than 2013-10-16 → none |
| 183 | Конфиг ДОП | 2013-10-15 A → 2014-03-04 (+140d) | 2013-10-22 A → 2014-03-11 (+140d) |  | 100% → 0% | none → 12d | 181 → 182 | resources Евгений Баланенко → Александр Власюк |
| 184 | Mapper | 2013-10-23 → 2014-03-12 (+140d) | 2013-10-29 → 2014-03-19 (+141d) | 5d → 6d |  | 132d → 72d |  | resources Евгений Баланенко → Александр Власюк |
| 185 | **Настраиваемые коллекции** | 2013-10-30 → 2014-03-20 (+141d) | 2013-11-07 → 2014-03-27 (+140d) | 7d → 6d |  | 144d → 85d |  |  |
| 186 | **Конфигурация коллекций** | 2013-10-30 → 2014-03-20 (+141d) | 2013-11-06 → 2014-03-26 (+140d) | 6d → 5d |  | 144d → 85d |  |  |
| 187 | Типовая иерархия кастомных папок (3шт) | 2013-10-30 → 2014-03-20 (+141d) | 2013-11-04 → 2014-03-26 (+142d) | 4d → 5d |  | 144d → 72d |  |  |
| 188 | Системные настройки для Дгв | 2013-11-05 → 2014-03-20 (+135d) | 2013-11-06 → 2014-03-26 (+140d) | 2d → 5d |  | 144d → 72d | 187 → 187SS |  |
| 189 | Проверка работы | 2013-11-07 → 2014-03-27 (+140d) | 2013-11-07 → 2014-03-27 (+140d) |  |  | 144d → 72d |  | resources Евгений Баланенко → Тимофей Билый |
| 190 | Конфигурация для модуля "Договора" получена | 2013-11-07 → 2014-03-27 (+140d) | 2013-11-07 → 2014-03-27 (+140d) |  |  | 144d → 85d |  |  |
| 195 | **Разработка коллекций** | 2013-11-13 → 2014-03-06 (+113d) | 2013-11-25 → 2014-03-18 (+113d) |  |  | 132d → 12d | Разработка адаптеров для Дгв → none |  |
| 196 | Коллекции | 2013-11-13 → 2014-03-06 (+113d) | 2013-11-25 → 2014-03-18 (+113d) |  |  | 132d → 13d | none → 175 | resources (БТЛ) Олег Еренцов → (БТЛ) Олег Еренцов; (БТЛ) Дмитрий Лякин; (БТЛ)Сергей Степыгин |
| 197 | Интеграция по Дгв выполнена | 2013-11-25 → 2014-03-27 (+122d) | 2013-11-25 → 2014-03-27 (+122d) |  |  | 132d → 85d |  |  |
| 198 | **Интеграция с CMJ по Исходящие документам** | 2014-02-11 → 2014-03-12 (+29d) | 2014-03-25 → 2014-04-09 (+15d) | 31d? → 20.8d |  | 54d → 13d |  |  |
| 199 | Конфиг ДОП | 2014-02-11 → 2014-03-12 (+29d) | 2014-02-18 → 2014-03-14 (+24d) | 6d → 3d |  | 54d → 13d | none → 183 | resources Глеб Ноздрачев [1%] → Александр Власюк |
| 200 | Mapper | 2014-02-19 → 2014-03-17 (+26d) | 2014-02-26 → 2014-03-25 (+27d) | 6d → 7d |  | 54d → 13d |  | resources Глеб Ноздрачев [80%] → Александр Власюк |
| 201 | **Настраиваемые коллекции** | 2014-02-27 → 2014-03-17 (+18d) | 2014-03-05 → 2014-03-26 (+21d) | 5d? → 8d |  | 68d → 15d | 200 → none |  |
| 202 | **Конфигурация коллекций** | 2014-02-27 → 2014-03-17 (+18d) | 2014-03-04 → 2014-03-24 (+20d) | 4d → 6d |  | 68d → 15d |  |  |
| 203 | Типовая иерархия кастомных папок (3шт) | 2014-02-27 → 2014-03-17 (+18d) | 2014-02-28 → 2014-03-24 (+24d) | 2d → 6d |  | 68d → 15d | none → 199 | resources Глеб Ноздрачев [80%] → Евгений Сафроненко |
| 204 | Системные настройки для Исх | 2014-03-03 → 2014-03-17 (+14d) | 2014-03-04 → 2014-03-24 (+20d) | 2d → 6d |  | 68d → 15d | 203 → 203SS | resources Глеб Ноздрачев [80%] → Тимофей Билый |
| 205 | Проверка работы | 2014-03-05 → 2014-03-25 (+20d) | 2014-03-05 → 2014-03-26 (+21d) | 1d? → 2d |  | 68d → 15d |  |  |
| 206 | **Перенос логики сервисов по Исх** | 2014-02-26 → 2014-03-31 (+33d) | 2014-03-12 → 2014-04-09 (+28d) | 10d → 7d |  | 54d → 34.2d |  | was named Разработка адаптеров для Исх |
| 207 | Задание поставлено | 2014-02-26 → 2014-03-31 (+33d) | 2014-02-26 → 2014-03-31 (+33d) |  |  | 54d → 34.2d | none → 194 |  |
| 208 | Пролведение процедуры Revers Engineering для процессов | 2014-02-27 → 2014-03-31 (+32d) | 2014-03-05 → 2014-04-09 (+35d) | 5d → 7d |  | 54d → 34.2d |  | was named Разработка архитектуры дя адаптеров; resources Тугушев Илья [80%] → Наталья Смолянец (Смолянец) |
| 209 | Реализация в слое CMJ-CMSochi | 2014-03-06 → 2014-03-31 (+25d) | 2014-03-12 → 2014-04-09 (+28d) | 5d → 7d |  | 54d → 34.2d | 208 → 208SS | was named Разработка адаптеров; resources Александр Власюк → Антон Ганчев (Киев) |
| 210 | **Разработка коллекций** | 2014-03-13 → 2014-03-19 (+6d) | 2014-03-25 → 2014-03-31 (+6d) |  |  | 54d → 12d | 206 → none |  |
| 211 | Коллекции | 2014-03-13 → 2014-03-19 (+6d) | 2014-03-25 → 2014-03-31 (+6d) |  |  | 54d → 12d | none → 196 | resources (БТЛ) Олег Еренцов → (БТЛ) Олег Еренцов; (БТЛ) Дмитрий Лякин; (БТЛ)Сергей Степыгин |
| 212 | Интеграция по Исх выполнена | 2014-03-25 → 2014-03-31 (+6d) | 2014-03-25 → 2014-03-31 (+6d) |  |  | 54d → 12d |  |  |
| 213 | **Интеграция с CMJ по ОРД** | 2014-02-19 → 2014-03-26 (+35d) | 2014-04-02 → 2014-04-18 (+16d) | 31d? → 17.8d? |  | 48d → 12d |  |  |
| 214 | Конфиг ДОП | 2014-02-19 → 2014-03-26 (+35d) | 2014-02-26 → 2014-03-28 (+30d) | 6d → 3d |  | 48d → 13d | none → 200 | resources Глеб Ноздрачев [1%] → Александр Власюк |
| 215 | Mapper | 2014-02-27 → 2014-03-31 (+32d) | 2014-03-06 → 2014-04-04 (+29d) | 6d → 5d |  | 48d → 64d |  | resources Глеб Ноздрачев [80%] → Александр Власюк |
| 216 | **Настраиваемые коллекции** | 2014-03-07 → 2014-04-07 (+31d) | 2014-03-13 → 2014-04-15 (+33d) | 5d? → 7d? |  | 62d → 53d |  |  |
| 217 | **Конфигурация коллекций** | 2014-03-07 → 2014-04-07 (+31d) | 2014-03-12 → 2014-04-14 (+33d) | 4d → 6d |  | 62d → 66d |  |  |
| 218 | Типовая иерархия кастомных папок (3шт) | 2014-03-07 → 2014-04-07 (+31d) | 2014-03-10 → 2014-04-14 (+35d) | 2d → 6d |  | 62d → 66d |  | resources Глеб Ноздрачев [80%] → Евгений Сафроненко |
| 219 | Системные настройки для ОРД | 2014-03-11 → 2014-04-07 (+27d) | 2014-03-12 → 2014-04-14 (+33d) | 2d → 6d |  | 62d → 66d | 218 → 218SS | resources Глеб Ноздрачев [80%] → Тимофей Билый |
| 220 | Проверка работы | 2014-03-13 → 2014-04-15 (+33d) | 2014-03-13 → 2014-04-15 (+33d) |  |  | 62d → 72d |  |  |
| 222 | Задание поставлено | 2013-10-29 → 2014-04-09 (+162d) | 2013-10-29 → 2014-04-09 (+162d) |  |  | 132d → 34.2d | none → 206 |  |
| 225 | **Разработка коллекций** | 2014-03-21 → 2014-04-01 (+11d) | 2014-04-02 → 2014-04-10 (+8d) | 9d → 8d |  | 48d → 12d | Разработка адаптеров для ОРД → 212 |  |
| 226 | Коллекции | 2014-03-21 → 2014-04-01 (+11d) | 2014-04-02 → 2014-04-10 (+8d) | 9d → 8d |  | 48d → 12d | none → 214 | resources (БТЛ) Олег Еренцов → (БТЛ) Олег Еренцов; (БТЛ) Дмитрий Лякин; (БТЛ)Сергей Степыгин |
| 227 | Интеграция по ОРД выполнена | 2014-04-02 → 2014-04-15 (+13d) | 2014-04-02 → 2014-04-15 (+13d) |  |  | 48d → 72d |  |  |
| 228 | **Интеграция с CMJ по самостоятельным поручениям** | 2014-02-19 → 2014-04-07 (+47d) | 2014-04-02 → 2014-04-29 (+27d) | 31d? → 16.8d? |  | 48d → 49.2d | 76 → none |  |
| 229 | Конфиг ДОП | 2014-02-19 → 2014-04-07 (+47d) | 2014-02-26 → 2014-04-09 (+42d) | 6d → 3d |  | 48d → 51d | none → 215 | resources Глеб Ноздрачев [1%] → Александр Власюк |
| 230 | Mapper | 2014-02-27 → 2014-04-10 (+42d) | 2014-03-06 → 2014-04-16 (+41d) | 6d → 5d |  | 48d → 51d |  | resources Глеб Ноздрачев [80%] → Александр Власюк |

| ID | Task | Start | Finish | Duration | Total float | Predecessors | Other |
| --- | --- | --- | --- | --- | --- | --- | --- |
| 231 | **Настраиваемые коллекции** | 2014-03-07 → 2014-04-17 (+41d) | 2014-03-13 → 2014-04-25 (+43d) | 5d? → 7d? | 62d → 51d |  |  |
| 232 | **Конфигурация коллекций** | 2014-03-07 → 2014-04-17 (+41d) | 2014-03-12 → 2014-04-24 (+43d) | 4d → 6d | 62d → 51d | none → 219 |  |
| 233 | Типовая иерархия кастомных папок (3шт) | 2014-03-07 → 2014-04-17 (+41d) | 2014-03-10 → 2014-04-24 (+45d) | 2d → 6d | 62d → 51d |  | resources Глеб Ноздрачев [80%] → Евгений Сафроненко |
| 235 | Проверка работы | 2014-03-13 → 2014-04-25 (+43d) | 2014-03-13 → 2014-04-25 (+43d) |  | 62d → 51d |  |  |
| 237 | Задание поставлено | 2014-03-06 → 2014-04-18 (+43d) | 2014-03-06 → 2014-04-18 (+43d) |  | 48d → 49.2d | none → 224 |  |
| 240 | **Разработка коллекций** | 2014-03-21 → 2014-04-11 (+21d) | 2014-04-02 → 2014-04-22 (+20d) | 9d → 8d | 48d → 54d | Разработка адаптеров для Кейс → none |  |
| 241 | Коллекции | 2014-03-21 → 2014-04-11 (+21d) | 2014-04-02 → 2014-04-22 (+20d) | 9d → 8d | 48d → 54d | none → 229, 226 | resources (БТЛ) Олег Еренцов → (БТЛ) Олег Еренцов; (БТЛ) Дмитрий Лякин; (БТЛ)Сергей Степыгин |
| 243 | **Интеграция с CMJ по ОГ** | 2014-02-19 → 2014-03-31 (+40d) | 2014-04-02 → 2014-04-29 (+27d) | 31d? → 21.8d? | 48d → 12d | 76 → none |  |
| 244 | Конфиг ДОП | 2014-02-19 → 2014-03-31 (+40d) | 2014-02-26 → 2014-04-02 (+35d) | 6d → 3d | 48d → 12d | none → 214 | resources Глеб Ноздрачев [1%] → Александр Власюк |
| 245 | Mapper | 2014-02-27 → 2014-04-03 (+35d) | 2014-03-06 → 2014-04-09 (+34d) | 6d → 5d | 48d → 12d |  | resources Глеб Ноздрачев [80%] → Александр Власюк |
| 246 | **Настраиваемые коллекции** | 2014-03-07 → 2014-04-10 (+34d) | 2014-03-13 → 2014-04-18 (+36d) | 5d? → 7d? | 62d → 18d |  |  |
| 247 | **Конфигурация коллекций** | 2014-03-07 → 2014-04-10 (+34d) | 2014-03-12 → 2014-04-17 (+36d) | 4d → 6d | 62d → 31d |  |  |
| 248 | Типовая иерархия кастомных папок (3шт) | 2014-03-07 → 2014-04-10 (+34d) | 2014-03-10 → 2014-04-17 (+38d) | 2d → 6d | 62d → 31d |  | resources Глеб Ноздрачев [80%] → Евгений Сафроненко |
| 249 | Системные настройки для ОГ | 2014-03-11 → 2014-04-10 (+30d) | 2014-03-12 → 2014-04-17 (+36d) | 2d → 6d | 62d → 31d | 265 → 248SS | resources Глеб Ноздрачев [80%] → Тимофей Билый |
| 250 | Проверка работы | 2014-03-13 → 2014-04-18 (+36d) | 2014-03-13 → 2014-04-18 (+36d) |  | 62d → 69d |  |  |
| 252 | Задание поставлено | 2014-03-06 → 2014-04-18 (+43d) | 2014-03-06 → 2014-04-18 (+43d) |  | 48d → 34.2d | none → 244, 223 |  |
| 255 | **Разработка коллекций** | 2014-03-21 → 2014-04-11 (+21d) | 2014-04-02 → 2014-04-22 (+20d) | 9d → 8d | 48d → 13d | Разработка адаптеров для Поручений → none |  |
| 256 | Коллекции | 2014-03-21 → 2014-04-11 (+21d) | 2014-04-02 → 2014-04-22 (+20d) | 9d → 8d | 48d → 12d | none → 244, 226 | resources (БТЛ) Олег Еренцов → (БТЛ) Олег Еренцов; (БТЛ) Дмитрий Лякин; (БТЛ)Сергей Степыгин |
| 257 | Интеграция по ОГ выполнена | 2014-04-02 → 2014-04-22 (+20d) | 2014-04-02 → 2014-04-22 (+20d) |  | 48d → 54d | 262, 263, 277 → 245, 246, 256 |  |
| 259 | Получена версия CM4.X c WF движком | 2014-02-18 → 2014-03-10 (+20d) | 2014-02-18 → 2014-03-10 (+20d) |  | 17d → 66d |  | constraint start no earlier than 2013-11-27 → start no earlier than 2014-03-10 |
| 261 | Конфиг ДОП | 2014-02-19 → 2014-04-10 (+50d) | 2014-02-26 → 2014-04-10 (+43d) | 6d → 1d | 48d → 18d | none → 245 | resources Глеб Ноздрачев [1%] → Александр Власюк |
| 262 | Mapper | 2014-02-27 → 2014-04-11 (+43d) | 2014-03-06 → 2014-04-15 (+40d) | 6d → 3d | 48d → 18d |  | resources Глеб Ноздрачев [80%] → Александр Власюк |
| 263 | **Настраиваемые коллекции** | 2014-03-07 → 2014-04-18 (+42d) | 2014-03-13 → 2014-04-24 (+42d) |  | 62d → 18d |  |  |
| 264 | **Конфигурация коллекций** | 2014-03-07 → 2014-04-18 (+42d) | 2014-03-12 → 2014-04-23 (+42d) |  | 62d → 28d | none → 247 |  |
| 265 | Типовая иерархия кастомных папок (3шт) | 2014-03-07 → 2014-04-18 (+42d) | 2014-03-10 → 2014-04-23 (+44d) | 2d → 4d | 62d → 28d |  | resources Глеб Ноздрачев [80%] → Евгений Сафроненко |
| 267 | Проверка работы | 2014-03-13 → 2014-04-24 (+42d) | 2014-03-13 → 2014-04-24 (+42d) |  |  |  |  |
| 269 | Задание поставлено | 2014-03-06 → 2014-04-29 (+54d) | 2014-03-06 → 2014-04-29 (+54d) |  | 48d → 31.2d | none → 261, 254 |  |
| 272 | **Разработка адаптеров для СрвСогл** | 2014-03-06 → 2014-04-10 (+35d) | 2014-03-20 → 2014-04-24 (+35d) |  | 17d → 62d | 281 → none |  |
| 273 | Задание поставлено | 2014-03-06 → 2014-04-10 (+35d) | 2014-03-06 → 2014-04-10 (+35d) |  | 17d → 62d | none → 260, 261 |  |
| 274 | Разработка архитектуры дя адаптеров | 2014-03-07 → 2014-04-11 (+35d) | 2014-03-13 → 2014-04-17 (+35d) |  | 17d → 62d |  |  |
| 275 | Разработка адаптеров | 2014-03-14 → 2014-04-18 (+35d) | 2014-03-20 → 2014-04-24 (+35d) |  | 17d → 62d |  |  |
| 276 | **Разработка коллекций** | 2014-03-21 → 2014-04-23 (+33d) | 2014-04-02 → 2014-04-29 (+27d) | 9d → 5d | 48d → 12d | Разработка адаптеров для ОГ → none |  |
| 277 | Коллекции | 2014-03-21 → 2014-04-23 (+33d) | 2014-04-02 → 2014-04-29 (+27d) | 9d → 5d | 48d → 12d | none → 261, 255 | resources (БТЛ) Олег Еренцов → (БТЛ) Олег Еренцов; (БТЛ) Дмитрий Лякин; (БТЛ)Сергей Степыгин |
| 280 | Конфиг ДОП | 2014-02-19 → 2014-04-16 (+56d) | 2014-02-26 → 2014-04-18 (+51d) | 6d → 3d | 17d → 18d | 259 → 262 | resources Глеб Ноздрачев [1%] → Александр Власюк |
| 281 | Mapper | 2014-02-27 → 2014-04-21 (+53d) | 2014-03-06 → 2014-04-25 (+50d) | 6d → 5d | 17d → 18d |  | resources Глеб Ноздрачев [80%] → Александр Власюк |
| 282 | **Настраиваемые коллекции** | 2014-03-07 → 2014-05-06 (+60d) | 2014-03-13 → 2014-05-16 (+64d) | 5d? → 7d? | 31d → 21.2d |  |  |
| 283 | **Конфигурация коллекций** | 2014-03-07 → 2014-05-06 (+60d) | 2014-03-12 → 2014-05-15 (+64d) | 4d → 6d | 31d → 34.2d |  |  |
| 286 | Проверка работы | 2014-03-13 → 2014-05-15 (+63d) | 2014-03-13 → 2014-05-16 (+64d) |  | 31d → 52.2d |  |  |
| 288 | Задание поставлено | 2014-03-06 → 2014-04-18 (+43d) | 2014-03-06 → 2014-04-18 (+43d) |  | 48d → 31d | none → 280 |  |
| 291 | **Разработка коллекций** | 2014-03-21 → 2014-04-30 (+40d) | 2014-04-02 → 2014-05-13 (+41d) | 9d → 7d | 17d → 12d | 272 → none |  |
| 292 | Коллекции | 2014-03-21 → 2014-04-30 (+40d) | 2014-04-02 → 2014-05-13 (+41d) | 9d → 7d | 17d → 12d | none → 280, 277 | resources (БТЛ) Олег Еренцов → (БТЛ) Олег Еренцов; (БТЛ) Дмитрий Лякин; (БТЛ)Сергей Степыгин |
| 294 | **Интеграция с CMJ по Формированию дел** | 2014-02-19 → 2014-04-28 (+68d) | 2014-04-02 → 2014-05-26 (+54d) | 31d? → 17.8d? | 48d → 12d | 76 → none |  |
| 295 | Конфиг ДОП | 2014-04-03 → 2014-04-28 (+25d) | 2014-04-10 → 2014-04-30 (+20d) | 6d → 3d | 17d → 18d | none → 281 | resources Глеб Ноздрачев [1%] → Александр Власюк |
| 296 | Mapper | 2014-04-11 → 2014-05-05 (+24d) | 2014-04-18 → 2014-05-12 (+24d) | 6d → 5d | 17d → 20d |  | resources Глеб Ноздрачев [80%] → Александр Власюк |
| 297 | **Настраиваемые коллекции** | 2014-04-21 → 2014-05-15 (+24d) | 2014-04-25 → 2014-05-26 (+31d) | 5d? → 7d? | 31d → 21.2d |  |  |
| 298 | **Конфигурация коллекций** | 2014-04-21 → 2014-05-15 (+24d) | 2014-04-24 → 2014-05-23 (+29d) | 4d → 6d | 31d → 31.2d |  |  |
| 300 | Системные настройки для ФД | 2014-03-11 → 2014-05-15 (+65d) | 2014-03-12 → 2014-05-23 (+72d) | 2d → 6d | 62d → 31.2d | Типовая иерархия кастомных папок (3шт) → 299SS | resources Глеб Ноздрачев [80%] → Тимофей Билый |
| 301 | Проверка работы | 2014-04-25 → 2014-05-23 (+28d) | 2014-04-25 → 2014-05-26 (+31d) |  | 31d → 43.2d |  |  |
| 303 | Задание поставлено | 2014-04-18 → 2014-04-30 (+12d) | 2014-04-18 → 2014-04-30 (+12d) |  | 17d → 30d | none → 295 |  |
| 306 | **Разработка коллекций** | 2014-05-05 → 2014-05-14 (+9d) | 2014-05-15 → 2014-05-21 (+6d) | 9d → 6d | 17d → 13d | Разработка адаптеров для Зсд → none |  |
| 307 | Коллекции | 2014-05-05 → 2014-05-14 (+9d) | 2014-05-15 → 2014-05-21 (+6d) | 9d → 6d | 17d → 13d | none → 295, 292 | resources (БТЛ) Олег Еренцов → (БТЛ) Олег Еренцов; (БТЛ) Дмитрий Лякин; (БТЛ)Сергей Степыгин |
| 308 | Интеграция по ФД выполнена | 2014-04-02 → 2014-05-26 (+54d) | 2014-04-02 → 2014-05-26 (+54d) |  | 48d → 33.2d | 326, 327, 337 → 296, 297, 307 |  |
| 309 | **Интеграция с CMJ по Заседаниям** | 2014-04-03 → 2014-05-13 (+40d) | 2014-05-15 → 2014-06-03 (+19d) | 31d? → 15.8d? | 17d → 12d | 76, Интеграция с CMJ по сервису согласования → none |  |
| 310 | Конфиг ДОП | 2014-02-19 → 2014-05-13 (+83d) | 2014-02-26 → 2014-05-15 (+78d) | 6d → 3d | 48d → 23d | none → 296 | resources Глеб Ноздрачев [1%] → Александр Власюк |
| 311 | Mapper | 2014-02-27 → 2014-05-16 (+78d) | 2014-03-06 → 2014-05-22 (+77d) | 6d → 5d | 48d → 25d |  | resources Глеб Ноздрачев [80%] → Александр Власюк |
| 312 | **Настраиваемые коллекции** | 2014-03-07 → 2014-05-23 (+77d) | 2014-03-13 → 2014-06-03 (+82d) | 5d? → 7d? | 62d → 21.2d |  |  |
| 313 | **Конфигурация коллекций** | 2014-03-07 → 2014-05-23 (+77d) | 2014-03-12 → 2014-06-02 (+82d) | 4d → 6d | 62d → 34.2d |  |  |
| 315 | Системные настройки для Зсд | 2014-04-23 → 2014-05-23 (+30d) | 2014-04-24 → 2014-06-02 (+39d) | 2d → 6d | 31d → 34.2d | Типовая иерархия кастомных папок (3шт) → 314SS | resources Глеб Ноздрачев [80%] → Тимофей Билый |
| 316 | Проверка работы | 2014-03-13 → 2014-06-02 (+81d) | 2014-03-13 → 2014-06-03 (+82d) |  | 62d → 40.2d |  |  |
| 318 | Задание поставлено | 2014-03-06 → 2014-05-16 (+71d) | 2014-03-06 → 2014-05-16 (+71d) |  | 48d → 31d | none → 310, 304 |  |
| 321 | **Разработка коллекций** | 2014-03-21 → 2014-05-22 (+62d) | 2014-04-02 → 2014-05-29 (+57d) | 9d → 6d | 48d → 13d | Разработка адаптеров для ОО → none |  |
| 322 | Коллекции | 2014-03-21 → 2014-05-22 (+62d) | 2014-04-02 → 2014-05-29 (+57d) | 9d → 6d | 48d → 13d | none → 310, 307 | resources (БТЛ) Олег Еренцов → (БТЛ) Олег Еренцов; (БТЛ) Дмитрий Лякин; (БТЛ)Сергей Степыгин |
| 323 | Интеграция по Зсд выполнена | 2014-05-15 → 2014-06-03 (+19d) | 2014-05-15 → 2014-06-03 (+19d) |  | 17d → 27.2d | 296, 297, 307 → 311, 312, 322 |  |
| 324 | **Интеграция с CMJ по Обсуждениям и ознакомлениям** | 2014-02-19 → 2014-05-23 (+93d) | 2014-04-02 → 2014-06-12 (+71d) | 31d? → 15d? | 48d → 12d | 76 → none |  |
| 325 | Конфиг ДОП | 2014-02-19 → 2014-05-23 (+93d) | 2014-02-26 → 2014-05-27 (+90d) | 6d → 3d | 48d → 25d | none → 311 | resources Глеб Ноздрачев [1%] → Александр Власюк |
| 326 | Mapper | 2014-02-27 → 2014-05-28 (+90d) | 2014-03-06 → 2014-06-03 (+89d) | 6d → 5d | 48d → 25d |  | resources Глеб Ноздрачев [80%] → Александр Власюк |
| 327 | **Настраиваемые коллекции** | 2014-03-07 → 2014-06-04 (+89d) | 2014-03-13 → 2014-06-12 (+91d) | 5d? → 7d? | 62d → 20d |  |  |
| 328 | **Конфигурация коллекций** | 2014-03-07 → 2014-06-04 (+89d) | 2014-03-12 → 2014-06-11 (+91d) | 4d → 6d | 62d → 33d |  |  |
| 330 | Системные настройки для ОО | 2014-03-11 → 2014-06-04 (+85d) | 2014-03-12 → 2014-06-11 (+91d) | 2d → 6d | 62d → 33d | Типовая иерархия кастомных папок (3шт) → 329SS | resources Глеб Ноздрачев [80%] → Тимофей Билый |
| 331 | Проверка работы | 2014-03-13 → 2014-06-12 (+91d) | 2014-03-13 → 2014-06-12 (+91d) |  | 62d → 33d |  |  |

| ID | Task | Start | Finish | Duration | Total float | Predecessors | Other |
| --- | --- | --- | --- | --- | --- | --- | --- |
| 333 | Задание поставлено | 2014-03-06 → 2014-05-27 (+82d) | 2014-03-06 → 2014-05-27 (+82d) |  | 48d → 31d | none → 325 |  |
| 336 | **Разработка коллекций** | 2014-03-21 → 2014-05-30 (+70d) | 2014-04-02 → 2014-06-09 (+68d) | 9d → 7d | 48d → 13d | Разработка адаптеров для ФД → none |  |
| 337 | Коллекции | 2014-03-21 → 2014-05-30 (+70d) | 2014-04-02 → 2014-06-09 (+68d) | 9d → 7d | 48d → 13d | none → 325, 322 | resources (БТЛ) Олег Еренцов → (БТЛ) Олег Еренцов; (БТЛ) Дмитрий Лякин; (БТЛ)Сергей Степыгин |
| 338 | Интеграция по ОО выполнена | 2014-04-02 → 2014-06-12 (+71d) | 2014-04-02 → 2014-06-12 (+71d) |  | 48d → 20d | 311, 312, 322 → 326, 327, 337 |  |
| 339 | **Интеграция с CMJ по "Кейсам"** | 2014-02-19 → 2014-06-04 (+105d) | 2014-04-02 → 2014-06-24 (+83d) | 31d? → 15d? | 48d → 12d | 76 → none |  |
| 427 | **Разработка** |  | 2014-06-13 → 2014-06-18 (+5d) |  | 64d → 97d |  |  |
| 443 | Сопряжение с мобильным клиентом СМ4 |  | 2014-06-13 → 2014-06-18 (+5d) |  | 64d → 97d |  |  |
| 444 | **Тестирование** | 2014-05-16 → 2014-06-25 (+40d) | 2014-08-19 → 2014-09-26 (+38d) |  | 17d → 12d |  |  |
| 445 | **Функциональное тестирование** | 2014-05-16 → 2014-06-25 (+40d) | 2014-07-29 → 2014-09-05 (+38d) |  | 17d → 12d |  |  |
| 446 | Подготовка ПМИ | 2014-05-16 → 2014-06-25 (+40d) | 2014-05-22 → 2014-07-01 (+40d) |  | 17d → 12d |  |  |
| 447 | Разработка "сценариев тестирования" | 2014-05-16 → 2014-06-25 (+40d) | 2014-06-05 → 2014-07-15 (+40d) |  | 22d → 17d |  |  |
| 448 | Разработка модели нагрузки для тестирования | 2014-05-23 → 2014-07-02 (+40d) | 2014-06-05 → 2014-07-15 (+40d) |  | 22d → 17d |  |  |
| 449 | Адаптация автоматизированных сценариев от СМ4 для создания нагрузки | 2014-05-23 → 2014-07-02 (+40d) | 2014-06-26 → 2014-08-05 (+40d) |  | 17d → 12d |  |  |
| 450 | **Проведение тестирования** | 2014-06-06 → 2014-07-16 (+40d) | 2014-07-29 → 2014-09-05 (+38d) |  | 22d → 17d |  |  |
| 451 | **Подготовка среды тестирования** | 2014-06-06 → 2014-07-16 (+40d) | 2014-06-19 → 2014-07-29 (+40d) |  | 22d → 17d |  |  |
| 452 | Разворачивание системы | 2014-06-06 → 2014-07-16 (+40d) | 2014-06-12 → 2014-07-22 (+40d) |  | 65d → 60d |  |  |
| 453 | Система готова для подключения инструментов мониторинга | 2014-06-12 → 2014-07-22 (+40d) | 2014-06-12 → 2014-07-22 (+40d) |  | 65d → 60d |  |  |
| 454 | Наполнение данными | 2014-06-06 → 2014-07-16 (+40d) | 2014-06-19 → 2014-07-29 (+40d) |  | 22d → 17d |  |  |
| 455 | Среда тестирования готова | 2014-06-26 → 2014-08-05 (+40d) | 2014-06-26 → 2014-08-05 (+40d) |  | 17d → 12d |  |  |
| 456 | Проведение тестирования | 2014-06-27 → 2014-08-06 (+40d) | 2014-07-10 → 2014-08-19 (+40d) |  | 17d → 12d |  |  |
| 457 | **Обработка результатов тестирования и внесение изменений в модуль** | 2014-07-09 → 2014-08-18 (+40d) | 2014-07-29 → 2014-09-05 (+38d) |  | 17d → 12d |  |  |
| 458 | Устранение замечаний по результатам функционального тестирования | 2014-07-09 → 2014-08-18 (+40d) | 2014-07-29 → 2014-09-05 (+38d) |  | 17d → 12d |  |  |
| 459 | Проверка устранения замечаний | 2014-07-22 → 2014-08-29 (+38d) | 2014-07-29 → 2014-09-05 (+38d) |  | 17d → 12d |  |  |
| 460 | **Нагрузочное тестирование** | 2014-07-10 → 2014-08-19 (+40d) | 2014-08-19 → 2014-09-26 (+38d) |  | 17d → 12d |  |  |
| 461 | Стенд для нагрузочного тестирования подготовлен | 2014-07-10 → 2014-08-19 (+40d) | 2014-07-10 → 2014-08-19 (+40d) |  | 30d → 25d |  |  |
| 462 | Проведения нагрузочного тестирования | 2014-07-30 → 2014-09-08 (+40d) | 2014-08-12 → 2014-09-19 (+38d) |  | 17d → 12d |  |  |
| 463 | Обработка результатов нагрузочного тестирования | 2014-08-13 → 2014-09-22 (+40d) | 2014-08-19 → 2014-09-26 (+38d) |  | 17d → 12d |  |  |
| 464 | **Подготовка документации** | 2014-05-16 → 2014-06-25 (+40d) | 2014-09-04 → 2014-10-14 (+40d) |  | 5d → 0d |  |  |
| 465 | Разработка документа "Концепция системы " | 2014-05-16 → 2014-06-25 (+40d) | 2014-07-10 → 2014-08-19 (+40d) |  | 5d → 0d |  |  |
| 466 | Разработка "Software Architecture Document" | 2014-07-11 → 2014-08-20 (+40d) | 2014-09-04 → 2014-10-14 (+40d) |  | 5d → 0d |  |  |
| 467 | Документы подготовлены | 2014-09-04 → 2014-10-14 (+40d) | 2014-09-04 → 2014-10-14 (+40d) |  | 5d → 0d |  |  |

## Version 57 (saved 2014-02-27)

Note of the change: но

Last finish 2014-10-14 → 2014-11-27 (+44d). Complete tasks 122 → 127.

Added:

| ID | Task | Duration | Start | Finish | Predecessors | Constraint | Resources |
| --- | --- | --- | --- | --- | --- | --- | --- |
| 214 | **Переход на 4.3 CMJ** | 10d | 2014-03-11 | 2014-03-24 | 213 |  |  |
| 215 | Адаптация под функционал настраиваемых реквизитов | 5d | 2014-03-11 | 2014-03-17 |  |  | Тугушев Илья; Глеб Ноздрачев; Java разработчик3; Тестировщик |
| 216 | Настройка адаптеров для 4.3 | 3d | 2014-03-18 | 2014-03-20 | 215 |  | Тугушев Илья; Глеб Ноздрачев; Java разработчик3; Тестировщик |
| 217 | Проверки сборки и функционала | 10d | 2014-03-11 | 2014-03-24 |  |  | Java разработчик3 |
| 428 | **Подсистема нотификаций** | 46d | 2014-01-20 A | 2014-03-24 |  |  |  |
| 429 | Описание принципов устройства и функционирования подсистемы нотификаций | 10d | 2014-01-20 A | 2014-01-31 |  |  | Андрей Пирожков |
| 430 | Подготовка проекта подсистемы нотификаций | 10d | 2014-02-03 | 2014-02-14 | 429 |  | Андрей Пирожков; (БТЛ) Михаил Ларин |
| 431 | **Разработка подсистемы** | 20d | 2014-02-25 | 2014-03-24 |  |  |  |
| 432 | Доработка существующих сервисов | 15d | 2014-02-25 | 2014-03-17 | 430FS+6d |  | (БТЛ) Михаил Ларин [50%]; Андрей Цветков |
| 433 | Разработка специфичного функционала подсистемы | 15d | 2014-02-25 | 2014-03-17 | 432SS |  | (БТЛ) Михаил Ларин [50%]; Роман Митинков |
| 434 | Сборка и отладка | 5d | 2014-03-18 | 2014-03-24 | 432, 433 |  | (БТЛ) Михаил Ларин; Андрей Цветков; Роман Митинков |
| 439 | Предварительный Сбор и подготовка требований | 20d | 2013-12-23 A | 2014-01-30 A |  |  | Пестова Ольга (Киев) |
| 440 | Уточнение стребований к АРМ тематичесхких админов | 30d | 2014-02-10 A | 2014-03-21 |  | start no earlier than 2014-02-10 | Тимофей Щербатый |
| 452 | Уточнение требований по шаблонам отчетов | 20d | 2014-02-10 | 2014-03-07 | 451 |  | Евгения Капустина [50%] |
| 453 | Требования по отображению отчетов сформированы | 0d | 2014-03-07 | 2014-03-07 | 452 |  |  |

Removed: 260 Переход на 4.3 CMJ

Changed:

| ID | Task | Start | Finish | Duration | Complete | Total float | Predecessors | Other |
| --- | --- | --- | --- | --- | --- | --- | --- | --- |
| 1 | **Разработка версии CM4/5** |  | 2014-10-14 → 2014-11-27 (+44d) | 371d? → 403d? | 35% → 36% |  |  |  |
| 9 | **Создание модуля "Делопроизводство" (документоориентированная среда)** |  | 2014-10-14 → 2014-11-27 (+44d) | 371d? → 403d? | 37% → 39% |  |  |  |
| 20 | **Проектирование и формирование ядра системы** |  | 2014-06-24 → 2014-08-07 (+44d) | 291d? → 323d? | 43% → 46% |  |  |  |
| 213 | Получена версия CM4.X c WF движком |  |  |  |  | 66d → 65d | none → 179 |  |
| 218 | **Интеграция с CMJ по ОРД** |  |  |  |  | 12d → 44d | 76 → none |  |
| 219 | Конфиг ДОП |  |  |  |  | 13d → 12d | 200 → 200, 184 |  |
| 263 | **Интеграция с CMJ по WF** | 2014-03-10 → 2014-04-10 (+31d) |  | 39.8d? → 16.8d? |  | 35d → 44d |  |  |
| 276 | Задание поставлено |  |  |  |  | 62d → 52d | Переход на 4.3 CMJ, 264 → 264, 214 |  |
| 370 | **Работа с отчетами** |  | 2013-12-26 → 2013-12-12 (-14d) | 40d → 30d | 75% → 99% | 142d → 171d |  |  |
| 409 | **Дополнительные сервисы платформы** | 2013-08-28 → 2013-09-10 A (+13d) | 2014-03-13 → 2014-08-07 (+147d) | 134d → 227d | 0% → 26% | 54.14d → 12d |  |  |
| 410 | Расширение функциональности DAO (требования CMJ4.1, базовые требования) | 2013-08-28 → 2013-12-09 A (+103d) | 2013-10-08 → 2014-01-29 A (+113d) |  | 0% → 100% | 54.14d → none | 36 → 36, 357 |  |
| 411 | Защита конфигурационных файлов от изменений | 2013-10-22 → 2014-01-30 A (+100d) | 2013-10-28 → 2014-02-27 (+122d) | 5d → 21d | 0% → 85% | 41.14d → 12d | 412 → 410 |  |
| 412 | Выделение конфигурации GUI в отдельные сущности, к изменению формата которых система не будет восприимчива | 2013-10-09 → 2014-02-28 (+142d) | 2013-10-21 → 2014-03-27 (+157d) | 9d → 20d |  | 41.14d → 12d | 410 → 411 |  |
| 413 | Версионность/аудит | 2013-10-29 → 2014-03-28 (+150d) | 2013-11-07 → 2014-04-24 (+168d) | 8d → 20d |  | 41.14d → 12d | 411 → 411, 412 |  |
| 414 | Блокировки бизнес-объектов | 2013-11-08 → 2014-04-25 (+168d) | 2013-11-15 → 2014-05-28 (+194d) | 6d → 21d |  | 41.14d → 12d |  |  |
| 417 | Кросс-СУБД, поддержка Oracle | 2013-11-18 → 2014-05-29 (+192d) | 2013-12-06 → 2014-06-25 (+201d) | 15d → 20d |  | 41.14d → 12d |  |  |
| 418 | SQL-trace | 2013-12-09 → 2014-06-26 (+199d) | 2013-12-13 → 2014-07-17 (+216d) | 5d → 16d |  | 123d → 12d |  | resources Влад Симоненко → Валерий Мацукевич |
| 419 | Локализация (на уровне конфигурации) | 2013-12-16 → 2014-07-18 (+214d) | 2014-01-15 → 2014-08-07 (+204d) |  |  | 123d → 12d |  | resources Влад Симоненко → Сергей Околот |
| 420 | **Интеграция с системой управления учетными записями** | 2013-11-18 → 2014-05-29 (+192d) | 2013-12-05 → 2014-06-17 (+194d) |  |  | 157d → 49d |  |  |
| 421 | Интеграция с ActiveDirectory | 2013-11-18 → 2014-05-29 (+192d) | 2013-12-05 → 2014-06-17 (+194d) |  |  | 144d → 49d |  |  |
| 422 | **Расширение функций сервиса конфигурации** |  | 2014-01-14 A |  | 32% → 100% | 122d → none |  |  |
| 423 | Расширяемость конфигурации |  | 2013-12-11 A |  | 75% → 100% | 122d → none |  |  |
| 424 | Изменение и дополнение конфигурации системы | 2013-12-12 A | 2014-01-14 A |  | 0% → 100% | 122d → none |  |  |
| 425 | **Сервис для работы с системным журналом** | 2014-01-15 A |  |  | 0% → 67% | 122d → 141d |  |  |
| 426 | Ведение журнала действий пользователей и действий с объектами системы | 2014-01-15 A | 2014-01-28 A |  | 0% → 100% | 122d → none |  | resources Андрей Карандей → (БТЛ) Михаил Ларин |
| 435 | **Архитектурный комитет** |  | 2014-06-18 → 2014-06-06 (-12d) | 256d → 248d | 28% → 45% | 97d → 124d |  | was named Разработка |
| 436 | Контроль и корректировка технических решений "Архитектурный комитет" |  | 2014-04-09 → 2014-06-06 (+58d) | 209d → 248d | 62% → 52% | 144d → 92d |  |  |
| 438 | **Разработка Форм для АРМ тематических администраторов** | 2013-12-23 A | 2014-02-27 → 2014-06-25 (+118d) | 40d → 121.75d | 0% → 22% | 173.75d → 111d |  |  |
| 441 | **Подготовка работы со списками значений** | 2013-12-23 → 2014-03-24 (+91d) | 2014-02-27 → 2014-05-06 (+68d) | 40d → 30d |  | 173.75d → 111d |  |  |
| 442 | Разработка функционала учета организационно штатной структуры | 2013-12-23 → 2014-03-24 (+91d) | 2014-02-17 → 2014-04-04 (+46d) | 40d → 10d |  | 173.75d → 79d | none → 440 | resources Андрей Цветков → Ярослав Бондарчук |
| 443 | Разработка функционала с рубрикаторами (сложные справочники) | 2013-12-23 → 2014-04-07 (+105d) | 2014-01-30 → 2014-04-18 (+78d) | 20d → 10d |  | 173.75d → 79d | none → 442 | resources Валерий Мацукевич → Ярослав Бондарчук |
| 444 | Разработка функционала для работы с словарями данных (простые, линейные справочники) | 2014-01-30 → 2014-04-21 (+81d) | 2014-02-27 → 2014-05-06 (+68d) | 20d → 10d |  | 173.75d → 79d |  | resources Валерий Мацукевич → Ярослав Бондарчук |
| 445 | Разработка форм для работы в GUI (настройки форм) | 2013-12-23 → 2014-05-07 (+135d) | 2014-01-23 → 2014-05-21 (+118d) | 15d → 10d |  | 193.75d → 79d | none → 444 | resources Java разработчик3 → Ярослав Бондарчук |
| 446 | Разработка структуры рабочего места АРМ | 2014-01-23 → 2014-05-22 (+119d) | 2014-01-30 → 2014-05-28 (+118d) |  |  | 193.75d → 79d |  | resources Java разработчик3 → none |
| 447 | Разработка специфичных для форм АРМ элементов GUI | 2013-12-23 → 2014-05-29 (+157d) | 2014-01-30 → 2014-06-25 (+146d) |  |  | 193.75d → 79d | none → 446 | resources Java разработчик4 → Ярослав Бондарчук |
| 448 | **Подготовка базового набора отчетов** |  | 2014-04-04 → 2014-07-16 (+103d) | 40d → 110d |  | 97d → 96d |  |  |
| 454 | GUI - отображение отчётов | 2013-12-13 → 2014-03-10 (+87d) | 2013-12-26 → 2014-03-28 (+92d) | 10d → 15d |  | 142d → 171d | 374 → 453 |  |
| 455 | Подготовка отчетов | 2014-02-10 → 2014-03-10 (+28d) | 2014-04-04 → 2014-05-06 (+32d) |  |  | 97d → 96d | 74, 437, 451, 449, 450 → 453 |  |
| 456 | Сопряжение с мобильным клиентом СМ4 | 2014-04-07 → 2014-05-07 (+30d) | 2014-06-18 → 2014-07-16 (+28d) |  |  | 97d → 96d |  |  |
| 457 | **Тестирование** | 2014-06-25 → 2014-08-08 (+44d) | 2014-09-26 → 2014-11-11 (+46d) |  |  |  |  |  |
| 458 | **Функциональное тестирование** | 2014-06-25 → 2014-08-08 (+44d) | 2014-09-05 → 2014-10-21 (+46d) |  |  |  |  |  |
| 459 | Подготовка ПМИ | 2014-06-25 → 2014-08-08 (+44d) | 2014-07-01 → 2014-08-14 (+44d) |  |  |  |  |  |
| 460 | Разработка "сценариев тестирования" | 2014-06-25 → 2014-08-08 (+44d) | 2014-07-15 → 2014-08-28 (+44d) |  |  |  |  |  |
| 461 | Разработка модели нагрузки для тестирования | 2014-07-02 → 2014-08-15 (+44d) | 2014-07-15 → 2014-08-28 (+44d) |  |  |  |  |  |
| 462 | Адаптация автоматизированных сценариев от СМ4 для создания нагрузки | 2014-07-02 → 2014-08-15 (+44d) | 2014-08-05 → 2014-09-18 (+44d) |  |  |  |  |  |
| 463 | **Проведение тестирования** | 2014-07-16 → 2014-08-29 (+44d) | 2014-09-05 → 2014-10-21 (+46d) |  |  |  |  |  |
| 464 | **Подготовка среды тестирования** | 2014-07-16 → 2014-08-29 (+44d) | 2014-07-29 → 2014-09-11 (+44d) |  |  |  |  |  |
| 465 | Разворачивание системы | 2014-07-16 → 2014-08-29 (+44d) | 2014-07-22 → 2014-09-04 (+44d) |  |  |  |  |  |
| 466 | Система готова для подключения инструментов мониторинга | 2014-07-22 → 2014-09-04 (+44d) | 2014-07-22 → 2014-09-04 (+44d) |  |  |  |  |  |
| 467 | Наполнение данными | 2014-07-16 → 2014-08-29 (+44d) | 2014-07-29 → 2014-09-11 (+44d) |  |  |  |  |  |
| 468 | Среда тестирования готова | 2014-08-05 → 2014-09-18 (+44d) | 2014-08-05 → 2014-09-18 (+44d) |  |  |  |  |  |
| 469 | Проведение тестирования | 2014-08-06 → 2014-09-19 (+44d) | 2014-08-19 → 2014-10-02 (+44d) |  |  |  |  |  |
| 470 | **Обработка результатов тестирования и внесение изменений в модуль** | 2014-08-18 → 2014-10-01 (+44d) | 2014-09-05 → 2014-10-21 (+46d) |  |  |  |  |  |
| 471 | Устранение замечаний по результатам функционального тестирования | 2014-08-18 → 2014-10-01 (+44d) | 2014-09-05 → 2014-10-21 (+46d) |  |  |  |  |  |
| 472 | Проверка устранения замечаний | 2014-08-29 → 2014-10-14 (+46d) | 2014-09-05 → 2014-10-21 (+46d) |  |  |  |  |  |
| 473 | **Нагрузочное тестирование** | 2014-08-19 → 2014-10-02 (+44d) | 2014-09-26 → 2014-11-11 (+46d) |  |  |  |  |  |
| 474 | Стенд для нагрузочного тестирования подготовлен | 2014-08-19 → 2014-10-02 (+44d) | 2014-08-19 → 2014-10-02 (+44d) |  |  |  |  |  |
| 475 | Проведения нагрузочного тестирования | 2014-09-08 → 2014-10-22 (+44d) | 2014-09-19 → 2014-11-04 (+46d) |  |  |  |  |  |
| 476 | Обработка результатов нагрузочного тестирования | 2014-09-22 → 2014-11-05 (+44d) | 2014-09-26 → 2014-11-11 (+46d) |  |  |  |  |  |
| 477 | **Подготовка документации** | 2014-06-25 → 2014-08-08 (+44d) | 2014-10-14 → 2014-11-27 (+44d) |  |  |  |  |  |
| 478 | Разработка документа "Концепция системы " | 2014-06-25 → 2014-08-08 (+44d) | 2014-08-19 → 2014-10-02 (+44d) |  |  |  |  |  |
| 479 | Разработка "Software Architecture Document" | 2014-08-20 → 2014-10-03 (+44d) | 2014-10-14 → 2014-11-27 (+44d) |  |  |  |  |  |
| 480 | Документы подготовлены | 2014-10-14 → 2014-11-27 (+44d) | 2014-10-14 → 2014-11-27 (+44d) |  |  |  |  |  |

## Version 58 (saved 2014-03-03)

Last finish stays 2014-11-27.

Added:

| ID | Task | Duration | Start | Finish | Predecessors | Resources |
| --- | --- | --- | --- | --- | --- | --- |
| 179 | Доработка расширенного поиска | 7d | 2014-02-28 | 2014-03-10 | 175SS | Сергей Околот |
| 191 | Доработка расширенного поиска | 7d | 2014-03-20 | 2014-03-28 | 188SS | Сергей Околот |
| 218 | Конфиг ДОП | 3d | 2014-03-26 | 2014-03-28 | 202 | Александр Власюк |
| 219 | Mapper | 5d | 2014-03-31 | 2014-04-04 | 218 | Александр Власюк |
| 220 | Коллекции | 8d | 2014-04-01 | 2014-04-10 | 214 | (БТЛ) Олег Еренцов; (БТЛ) Дмитрий Лякин; (БТЛ)Сергей Степыгин |
| 222 | Помещение сущностей во временный модуль | 12d | 2014-03-26 | 2014-04-10 | 218SS | Сергей Околот |
| 231 | Доработка расширенного поиска | 7d | 2014-04-07 | 2014-04-15 | 229SS | Сергей Околот |
| 247 | Доработка расширенного поиска | 7d | 2014-04-17 | 2014-04-25 | 245SS | Сергей Околот |
| 263 | Доработка расширенного поиска | 7d | 2014-04-10 | 2014-04-18 | 261SS | Сергей Околот |
| 279 | Доработка расширенного поиска | 7d | 2014-04-21 | 2014-04-29 | 277SS | Сергей Околот |
| 298 | Доработка расширенного поиска | 7d | 2014-04-29 | 2014-05-13 | 284SS | Сергей Околот |
| 314 | Доработка расширенного поиска | 7d | 2014-05-15 | 2014-05-26 | 313SS | Сергей Околот |
| 331 | Доработка расширенного поиска | 7d | 2014-05-23 | 2014-06-03 | 329SS | Сергей Околот |
| 346 | Доработка расширенного поиска | 7d | 2014-06-04 | 2014-06-12 | 345SS | Сергей Околот |
| 362 | Доработка расширенного поиска | 7d | 2014-06-16 | 2014-06-24 | 361SS | Сергей Околот |

Changed:

| ID | Task | Start | Finish | Duration | Complete | Total float | Predecessors |
| --- | --- | --- | --- | --- | --- | --- | --- |
| 1 | **Разработка версии CM4/5** |  |  |  | 36% → 35% |  |  |
| 9 | **Создание модуля "Делопроизводство" (документоориентированная среда)** |  |  |  | 39% → 37% |  |  |
| 20 | **Проектирование и формирование ядра системы** |  |  |  | 46% → 43% |  |  |
| 68 | **Слой сопряжения CMJ server (CM4)** |  | 2014-06-24 → 2014-07-03 (+9d) | 250d? → 257d? | 29% → 26% | 44d → 37d |  |
| 174 | **Настраиваемые коллекции** |  | 2014-03-05 → 2014-03-10 (+5d) | 4d → 7d |  | 45d → 37d |  |
| 178 | Проверка работы | 2014-03-06 → 2014-02-28 (-6d) | 2014-03-10 → 2014-03-04 (-6d) |  |  | 65d → 38d | 175 → none |
| 186 | **Настраиваемые коллекции** |  | 2014-03-27 → 2014-03-28 (+1d) | 6d → 7d |  | 104d → 103d |  |
| 199 | Интеграция по Дгв выполнена | 2014-03-27 → 2014-03-28 (+1d) | 2014-03-27 → 2014-03-28 (+1d) |  |  | 72d → 103d |  |
| 215 | Получена версия CM4.X c WF движком | 2014-03-10 → 2014-03-26 (+16d) | 2014-03-10 → 2014-03-26 (+16d) |  |  | 65d → 106d | 180 → 180, 217 |
| 216 | **Переход на 4.3 CMJ** | 2014-03-11 → 2014-03-19 (+8d) | 2014-03-24 → 2014-04-10 (+17d) | 10d → 17d |  | 97d → 46d | 215 → none |
| 217 | Адаптация под функционал настраиваемых реквизитов | 2014-03-11 → 2014-03-19 (+8d) | 2014-03-17 → 2014-03-26 (+9d) |  |  | 67d → 93d | none → 218SF |
| 221 | Настройка адаптеров для 4.3 | 2014-03-18 → 2014-03-26 (+8d) | 2014-03-20 → 2014-03-28 (+8d) |  |  | 67d → 93d |  |
| 223 | Проверки сборки и функционала | 2014-03-11 → 2014-03-26 (+15d) | 2014-03-24 → 2014-04-10 (+17d) | 10d → 12d |  | 65d → 84d | none → 218SS |
| 224 | **Интеграция с CMJ по ОРД** |  | 2014-04-18 → 2014-04-22 (+4d) | 17.8d? → 20d? |  | 44d → 43d |  |
| 225 | Конфиг ДОП |  |  |  |  | 12d → 43d | 202, 185 → 202, 185SF |
| 227 | **Настраиваемые коллекции** |  | 2014-04-15 → 2014-04-16 (+1d) | 7d? → 8d? |  | 85d → 84d |  |
| 228 | **Конфигурация коллекций** |  | 2014-04-14 → 2014-04-15 (+1d) | 6d → 7d |  | 85d → 84d |  |
| 232 | Проверка работы | 2014-04-15 → 2014-04-16 (+1d) | 2014-04-15 → 2014-04-16 (+1d) |  |  | 59d → 90d |  |
| 237 | **Разработка коллекций** | 2014-04-01 → 2014-04-11 (+10d) | 2014-04-10 → 2014-04-22 (+12d) |  |  | 45d → 37d |  |
| 238 | Коллекции | 2014-04-01 → 2014-04-11 (+10d) | 2014-04-10 → 2014-04-22 (+12d) |  |  | 45d → 37d | 225 → 225, 220 |
| 239 | Интеграция по ОРД выполнена | 2014-04-15 → 2014-04-22 (+7d) | 2014-04-15 → 2014-04-22 (+7d) |  |  | 59d → 86d |  |
| 240 | **Интеграция с CMJ по самостоятельным поручениям** |  | 2014-04-29 → 2014-05-06 (+7d) | 16.8d? → 20d? |  | 81.2d → 78d |  |
| 243 | **Настраиваемые коллекции** |  | 2014-04-25 → 2014-04-28 (+3d) | 7d? → 8d? |  | 83d → 82d |  |
| 244 | **Конфигурация коллекций** |  | 2014-04-24 → 2014-04-25 (+1d) | 6d → 7d |  | 83d → 82d |  |
| 248 | Проверка работы | 2014-04-25 → 2014-04-28 (+3d) | 2014-04-25 → 2014-04-28 (+3d) |  |  | 51d → 82d |  |
| 253 | **Разработка коллекций** | 2014-04-11 → 2014-04-23 (+12d) | 2014-04-22 → 2014-05-06 (+14d) |  |  | 86d → 78d |  |
| 254 | Коллекции | 2014-04-11 → 2014-04-23 (+12d) | 2014-04-22 → 2014-05-06 (+14d) |  |  | 54d → 78d |  |
| 255 | Интеграция по СамПор выполнена | 2014-04-25 → 2014-05-06 (+11d) | 2014-04-25 → 2014-05-06 (+11d) |  |  | 51d → 78d |  |
| 256 | **Интеграция с CMJ по ОГ** |  | 2014-04-29 → 2014-05-06 (+7d) | 21.8d? → 25d? |  | 44d → 43d |  |
| 259 | **Настраиваемые коллекции** |  | 2014-04-18 → 2014-04-21 (+3d) | 7d? → 8d? |  | 50d → 49d |  |
| 260 | **Конфигурация коллекций** |  | 2014-04-17 → 2014-04-18 (+1d) | 6d → 7d |  | 50d → 49d |  |
| 264 | Проверка работы | 2014-04-18 → 2014-04-21 (+3d) | 2014-04-18 → 2014-04-21 (+3d) |  |  | 69d → 87d |  |
| 269 | **Разработка коллекций** | 2014-04-11 → 2014-04-23 (+12d) | 2014-04-22 → 2014-05-06 (+14d) |  |  | 45d → 37d |  |
| 270 | Коллекции | 2014-04-11 → 2014-04-23 (+12d) | 2014-04-22 → 2014-05-06 (+14d) |  |  | 12d → 37d |  |
| 271 | Интеграция по ОГ выполнена | 2014-04-22 → 2014-05-06 (+14d) | 2014-04-22 → 2014-05-06 (+14d) |  |  | 54d → 78d |  |
| 272 | **Интеграция с CMJ по WF** |  | 2014-05-06 → 2014-05-14 (+8d) | 16.8d? → 22d? |  | 44d → 43d |  |
| 275 | **Настраиваемые коллекции** | 2014-04-18 → 2014-04-21 (+3d) | 2014-04-24 → 2014-04-30 (+6d) | 5d? → 8d? |  | 50d → 49d |  |
| 276 | **Конфигурация коллекций** | 2014-04-18 → 2014-04-21 (+3d) | 2014-04-23 → 2014-04-29 (+6d) | 4d → 7d |  | 50d → 49d |  |
| 277 | Типовая иерархия кастомных папок (3шт) | 2014-04-18 → 2014-04-21 (+3d) | 2014-04-23 → 2014-04-24 (+1d) |  |  | 18d → 49d |  |
| 278 | Системные настройки для WF | 2014-04-18 → 2014-04-21 (+3d) | 2014-04-23 → 2014-04-24 (+1d) |  |  | 50d → 49d |  |
| 280 | Проверка работы | 2014-04-24 → 2014-04-30 (+6d) | 2014-04-24 → 2014-04-30 (+6d) |  |  | 52d → 80d |  |
| 289 | **Разработка коллекций** | 2014-04-23 → 2014-05-07 (+14d) | 2014-04-29 → 2014-05-14 (+15d) |  |  | 45d → 37d |  |
| 290 | Коллекции | 2014-04-23 → 2014-05-07 (+14d) | 2014-04-29 → 2014-05-14 (+15d) |  |  | 13d → 37d |  |
| 291 | Интеграция по WF выполнена | 2014-04-29 → 2014-05-14 (+15d) | 2014-04-29 → 2014-05-14 (+15d) |  |  | 49d → 73d |  |
| 292 | **Интеграция с CMJ по сервису Контроля Заданий** |  | 2014-05-16 → 2014-05-23 (+7d) | 19.8d? → 25d? |  | 44d → 43d |  |
| 295 | **Настраиваемые коллекции** | 2014-05-06 → 2014-04-29 (-7d) |  | 7d? → 10d? |  | 53.2d → 55.2d |  |
| 296 | **Конфигурация коллекций** | 2014-05-06 → 2014-04-29 (-7d) |  | 6d → 9d |  | 53.2d → 55.2d |  |
| 301 | **Перенос логики сервисов по КЗ** |  | 2014-05-06 → 2014-05-07 (+1d) | 10d → 11d |  |  |  |
| 303 | Пролведение процедуры Revers Engineering для процессов | 2014-04-24 → 2014-04-25 (+1d) | 2014-05-06 → 2014-05-07 (+1d) |  |  | 18d → 49d |  |
| 304 | Реализация в слое CMJ-CMSochi | 2014-04-24 → 2014-04-25 (+1d) | 2014-05-06 → 2014-05-07 (+1d) |  |  | 78d → 77d |  |
| 305 | **Разработка коллекций** | 2014-04-30 → 2014-05-15 (+15d) | 2014-05-13 → 2014-05-23 (+10d) |  |  | 45d → 37d |  |
| 306 | Коллекции | 2014-04-30 → 2014-05-15 (+15d) | 2014-05-13 → 2014-05-23 (+10d) |  |  | 13d → 37d |  |
| 307 | Интеграция по КЗ выполнена | 2014-05-16 → 2014-05-23 (+7d) | 2014-05-16 → 2014-05-23 (+7d) |  |  | 39.2d → 66d |  |
| 308 | **Интеграция с CMJ по Формированию дел** |  | 2014-05-26 → 2014-06-02 (+7d) | 17.8d? → 23d? |  | 44d → 43d |  |
| 311 | **Настраиваемые коллекции** |  | 2014-05-26 → 2014-05-27 (+1d) | 7d? → 8d? |  | 53.2d → 52.2d |  |
| 312 | **Конфигурация коллекций** |  | 2014-05-23 → 2014-05-26 (+3d) | 6d → 7d |  | 53.2d → 52.2d |  |
| 316 | Проверка работы | 2014-05-23 → 2014-05-26 (+3d) | 2014-05-26 → 2014-05-27 (+1d) |  |  | 65.2d → 64.2d |  |
| 317 | **Перенос логики сервисов по ФД** |  | 2014-05-16 → 2014-05-19 (+3d) | 9d → 10d |  | 50d → 49d |  |
| 319 | Пролведение процедуры Revers Engineering для процессов | 2014-05-07 → 2014-05-08 (+1d) | 2014-05-16 → 2014-05-19 (+3d) |  |  | 18d → 49d |  |
| 320 | Реализация в слое CMJ-CMSochi | 2014-05-07 → 2014-05-08 (+1d) | 2014-05-16 → 2014-05-19 (+3d) |  |  | 50d → 49d |  |
| 321 | **Разработка коллекций** | 2014-05-14 → 2014-05-26 (+12d) | 2014-05-21 → 2014-06-02 (+12d) |  |  | 45d → 37d |  |
| 322 | Коллекции | 2014-05-14 → 2014-05-26 (+12d) | 2014-05-21 → 2014-06-02 (+12d) |  |  | 13d → 37d |  |
| 323 | Интеграция по ФД выполнена | 2014-05-26 → 2014-06-02 (+7d) | 2014-05-26 → 2014-06-02 (+7d) |  |  | 33.2d → 60d |  |
| 324 | **Интеграция с CMJ по Заседаниям** |  | 2014-06-03 → 2014-06-10 (+7d) | 15.8d? → 21d? |  | 44d → 43d |  |
| 327 | **Настраиваемые коллекции** |  | 2014-06-03 → 2014-06-04 (+1d) | 7d? → 8d? |  | 53.2d → 52.2d |  |
| 328 | **Конфигурация коллекций** |  | 2014-06-02 → 2014-06-03 (+1d) | 6d → 7d |  | 53.2d → 52.2d |  |
| 332 | Проверка работы | 2014-06-02 → 2014-06-03 (+1d) | 2014-06-03 → 2014-06-04 (+1d) |  |  | 59.2d → 58.2d |  |
| 333 | **Перенос логики сервисов по Зсд** | 2014-05-16 → 2014-05-19 (+3d) | 2014-05-27 → 2014-05-28 (+1d) |  |  | 50d → 49d |  |
| 334 | Задание поставлено | 2014-05-16 → 2014-05-19 (+3d) | 2014-05-16 → 2014-05-19 (+3d) |  |  | 18d → 49d |  |
| 335 | Пролведение процедуры Revers Engineering для процессов | 2014-05-19 → 2014-05-20 (+1d) | 2014-05-27 → 2014-05-28 (+1d) |  |  | 18d → 49d |  |

| ID | Task | Start | Finish | Duration | Complete | Total float | Predecessors | Other |
| --- | --- | --- | --- | --- | --- | --- | --- | --- |
| 336 | Реализация в слое CMJ-CMSochi | 2014-05-19 → 2014-05-20 (+1d) | 2014-05-27 → 2014-05-28 (+1d) |  |  | 64d → 63d |  |  |
| 337 | **Разработка коллекций** | 2014-05-22 → 2014-06-03 (+12d) | 2014-05-29 → 2014-06-10 (+12d) |  |  | 45d → 37d |  |  |
| 338 | Коллекции | 2014-05-22 → 2014-06-03 (+12d) | 2014-05-29 → 2014-06-10 (+12d) |  |  | 13d → 37d |  |  |
| 339 | Интеграция по Зсд выполнена | 2014-06-03 → 2014-06-10 (+7d) | 2014-06-03 → 2014-06-10 (+7d) |  |  | 27.2d → 54d |  |  |
| 340 | **Интеграция с CMJ по Обсуждениям и ознакомлениям** |  | 2014-06-12 → 2014-06-19 (+7d) | 15d? → 20d? |  | 44d → 43d |  |  |
| 343 | **Настраиваемые коллекции** |  | 2014-06-12 → 2014-06-13 (+1d) | 7d? → 8d? |  | 52d → 51d |  |  |
| 344 | **Конфигурация коллекций** |  | 2014-06-11 → 2014-06-12 (+1d) | 6d → 7d |  | 52d → 51d |  |  |
| 348 | Проверка работы | 2014-06-12 → 2014-06-13 (+1d) | 2014-06-12 → 2014-06-13 (+1d) |  |  | 20d → 51d |  |  |
| 349 | **Перенос логики сервисов по ОО** |  | 2014-06-05 → 2014-06-06 (+1d) | 7d → 8d |  | 50d → 49d |  |  |
| 351 | Пролведение процедуры Revers Engineering для процессов | 2014-05-28 → 2014-05-29 (+1d) | 2014-06-05 → 2014-06-06 (+1d) |  |  | 18d → 49d |  |  |
| 352 | Реализация в слое CMJ-CMSochi | 2014-05-28 → 2014-05-29 (+1d) | 2014-06-05 → 2014-06-06 (+1d) |  |  | 50d → 49d |  |  |
| 353 | **Разработка коллекций** | 2014-05-30 → 2014-06-11 (+12d) | 2014-06-09 → 2014-06-19 (+10d) |  |  | 45d → 37d |  |  |
| 354 | Коллекции | 2014-05-30 → 2014-06-11 (+12d) | 2014-06-09 → 2014-06-19 (+10d) |  |  | 13d → 37d |  |  |
| 355 | Интеграция по ОО выполнена | 2014-06-12 → 2014-06-19 (+7d) | 2014-06-12 → 2014-06-19 (+7d) |  |  | 20d → 47d |  |  |
| 356 | **Интеграция с CMJ по "Кейсам"** |  | 2014-06-24 → 2014-07-03 (+9d) | 15d? → 22d? |  | 44d → 37d |  |  |
| 359 | **Настраиваемые коллекции** |  | 2014-06-24 → 2014-06-25 (+1d) | 7d? → 8d? |  | 44d → 43d |  |  |
| 360 | **Конфигурация коллекций** |  | 2014-06-23 → 2014-06-24 (+1d) | 6d → 7d |  | 44d → 43d |  |  |
| 364 | Проверка работы | 2014-06-24 → 2014-06-25 (+1d) | 2014-06-24 → 2014-06-25 (+1d) |  |  | 12d → 43d |  |  |
| 369 | **Разработка коллекций** | 2014-06-10 → 2014-06-20 (+10d) | 2014-06-23 → 2014-07-03 (+10d) |  |  | 45d → 37d |  |  |
| 370 | Коллекции | 2014-06-10 → 2014-06-20 (+10d) | 2014-06-23 → 2014-07-03 (+10d) |  |  | 13d → 37d |  |  |
| 371 | Интеграция по "Кейсам" выполнена | 2014-06-24 → 2014-07-03 (+9d) | 2014-06-24 → 2014-07-03 (+9d) |  |  | 12d → 37d |  |  |
| 390 | **GUI** |  | 2014-03-11 → 2014-05-06 (+56d) | 219d? → 257d? | 47% → 42% | 114d → 76d |  |  |
| 414 | **GUI - поиск** | 2013-10-01 → 2013-12-23 (+83d) | 2013-10-15 → 2014-02-14 (+122d) | 11d → 32d |  | 156d → 76d |  |  |
| 415 | GUI - поиск. Проектирование | 2013-10-01 → 2013-12-23 (+83d) | 2013-10-04 → 2014-01-29 (+117d) | 4d → 20d |  | 124d → 76d | 412 → none | constraint none → start no earlier than 2013-12-23; resources Денис Митавский [50%] → Игорь Петров |
| 416 | GUI - поиск. Реализация | 2013-10-07 → 2014-01-30 (+115d) | 2013-10-15 → 2014-02-14 (+122d) | 7d → 12d |  | 124d → 76d |  | resources Андрей Карандей → Игорь Петров |
| 417 | **GUI - виджеты разработка** |  | 2014-03-04 → 2014-04-25 (+52d) | 103d? → 141d? |  | 114d → 76d |  |  |
| 419 | Остальные без особенностей стиля ст.лебедева (базовый набор) | 2013-12-13 → 2014-02-17 (+66d) | 2014-01-28 → 2014-03-21 (+52d) |  |  | 82d → 76d |  |  |
| 420 | Остальные для стиля ст.лебедева | 2014-01-29 → 2014-03-24 (+54d) | 2014-03-04 → 2014-04-25 (+52d) |  |  | 82d → 76d |  |  |
| 421 | **GUI - брендинг, стилизация, темы** | 2014-03-05 → 2014-04-28 (+54d) | 2014-03-11 → 2014-05-06 (+56d) |  |  | 114d → 76d |  |  |
| 422 | Концепция | 2014-03-05 → 2014-04-28 (+54d) | 2014-03-11 → 2014-05-06 (+56d) |  |  | 82d → 76d |  |  |
| 431 | Уточнение состава и сроков работ | 2014-03-12 → 2014-05-07 (+56d) | 2014-03-13 → 2014-05-08 (+56d) |  |  | 82d → 76d |  |  |

## Version 59 (saved 2014-03-04)

Last finish stays 2014-11-27.

Added:

| ID | Task | Duration | Start | Finish | Predecessors | Constraint | Resources |
| --- | --- | --- | --- | --- | --- | --- | --- |
| 181 | **Подключение механизма контроля доступа** | 3d | 2014-03-20 | 2014-03-24 |  |  |  |
| 182 | Доступность Ноздрачева | 0d | 2014-03-20 | 2014-03-20 |  | start no earlier than 2014-03-20 |  |
| 183 | создание типовых матриц доступа | 3d | 2014-03-20 | 2014-03-24 | 182 |  |  |
| 220 | **Модификация CMJ** | 5d | 2013-04-22 | 2013-04-26 |  |  |  |
| 221 | Для отложенного добавления персон | 5d | 2013-04-22 | 2013-04-26 |  |  | Глеб Ноздрачев |
| 377 | **Интеграция с CMJ ПКД** | 10d | 2014-06-12 | 2014-06-26 |  |  |  |
| 378 | **Перенос логики сервисов по ОО** | 10d | 2014-06-12 | 2014-06-26 |  |  |  |
| 379 | Задание поставлено | 0d | 2014-06-12 | 2014-06-12 | 357, 370 | start no earlier than 2013-09-30 | Тугушев Илья [80%] |
| 380 | Пролведение процедуры Revers Engineering для процессов | 10d | 2014-06-13 | 2014-06-26 | 379 |  | Наталья Смолянец (Смолянец) |
| 381 | Реализация в слое CMJ-CMSochi | 10d | 2014-06-13 | 2014-06-26 | 380SS |  | Антон Ганчев (Киев) |

Changed:

| ID | Task | Start | Finish | Duration | Complete | Total float | Other |
| --- | --- | --- | --- | --- | --- | --- | --- |
| 20 | **Проектирование и формирование ядра системы** |  |  |  | 43% → 42% |  |  |
| 68 | **Слой сопряжения CMJ server (CM4)** | 2013-06-25 A → 2013-04-22 A (-64d) |  | 257d? → 298d? |  |  |  |
| 184 | **Интеграция с CMJ по Договорам** | 2014-02-27 A |  |  | 0% → 5% | 40d → 102.2d |  |
| 187 | Конфиг ДОП |  | 2014-03-11 → 2014-03-06 (-5d) | 6d → 3d |  | 40d → 42d | constraint none → start no earlier than 2014-02-27 |
| 188 | Mapper | 2014-03-12 → 2014-03-07 A (-5d) | 2014-03-19 → 2014-03-14 (-5d) |  | 0% → 50% | 57d → 106d |  |
| 189 | **Настраиваемые коллекции** | 2014-03-20 → 2014-03-17 (-3d) | 2014-03-28 → 2014-03-25 (-3d) |  |  | 103d → 106d |  |
| 190 | **Конфигурация коллекций** | 2014-03-20 → 2014-03-17 (-3d) | 2014-03-26 → 2014-03-21 (-5d) |  |  | 103d → 106d |  |
| 191 | Типовая иерархия кастомных папок (3шт) | 2014-03-20 → 2014-03-17 (-3d) | 2014-03-26 → 2014-03-21 (-5d) |  |  | 104d → 106d |  |
| 192 | Системные настройки для Дгв | 2014-03-20 → 2014-03-17 (-3d) | 2014-03-26 → 2014-03-21 (-5d) |  |  | 104d → 107d |  |
| 193 | Проверка работы | 2014-03-27 → 2014-03-24 (-3d) | 2014-03-27 → 2014-03-24 (-3d) |  |  | 104d → 107d |  |
| 194 | Доработка расширенного поиска | 2014-03-20 → 2014-03-17 (-3d) | 2014-03-28 → 2014-03-25 (-3d) |  |  | 103d → 106d |  |
| 195 | Конфигурация для модуля "Договора" получена | 2014-03-27 → 2014-03-24 (-3d) | 2014-03-27 → 2014-03-24 (-3d) |  |  | 104d → 107d |  |
| 202 | Интеграция по Дгв выполнена | 2014-03-28 → 2014-03-25 (-3d) | 2014-03-28 → 2014-03-25 (-3d) |  |  | 103d → 106d |  |
| 203 | **Интеграция с CMJ по Исходящие документам** | 2014-03-12 → 2014-03-07 (-5d) |  | 20.8d → 23.8d |  | 40d → 42d |  |
| 204 | Конфиг ДОП | 2014-03-12 → 2014-03-07 (-5d) | 2014-03-14 → 2014-03-11 (-3d) |  |  | 40d → 42d |  |
| 205 | Mapper | 2014-03-17 → 2014-03-12 (-5d) | 2014-03-25 → 2014-03-20 (-5d) |  |  | 41d → 42d |  |
| 206 | **Настраиваемые коллекции** | 2014-03-17 → 2014-03-12 (-5d) | 2014-03-26 → 2014-03-21 (-5d) |  |  | 40d → 43d |  |
| 207 | **Конфигурация коллекций** | 2014-03-17 → 2014-03-12 (-5d) | 2014-03-24 → 2014-03-19 (-5d) |  |  | 40d → 43d |  |
| 208 | Типовая иерархия кастомных папок (3шт) | 2014-03-17 → 2014-03-12 (-5d) | 2014-03-24 → 2014-03-19 (-5d) |  |  | 40d → 43d |  |
| 209 | Системные настройки для Исх | 2014-03-17 → 2014-03-12 (-5d) | 2014-03-24 → 2014-03-19 (-5d) |  |  | 40d → 43d |  |
| 210 | Проверка работы | 2014-03-25 → 2014-03-20 (-5d) | 2014-03-26 → 2014-03-21 (-5d) |  |  | 40d → 43d |  |
| 218 | Получена версия CM4.X c WF движком | 2014-03-26 → 2014-03-21 (-5d) | 2014-03-26 → 2014-03-21 (-5d) |  |  | 106d → 109d |  |
| 219 | **Переход на 4.3 CMJ** | 2014-03-19 → 2013-04-22 (-331d) |  | 17d → 241d |  | 46d → 84d |  |
| 222 | Адаптация под функционал настраиваемых реквизитов | 2014-03-19 → 2014-03-14 (-5d) | 2014-03-26 → 2014-03-21 (-5d) |  |  | 93d → 96d |  |
| 223 | Конфиг ДОП | 2014-03-26 → 2014-03-21 (-5d) | 2014-03-28 → 2014-03-25 (-3d) |  |  | 84d → 87d |  |
| 224 | Mapper | 2014-03-31 → 2014-03-26 (-5d) | 2014-04-04 → 2014-04-01 (-3d) |  |  | 88d → 91d |  |
| 226 | Настройка адаптеров для 4.3 | 2014-03-26 → 2014-03-21 (-5d) | 2014-03-28 → 2014-03-25 (-3d) |  |  | 93d → 96d |  |
| 227 | Помещение сущностей во временный модуль | 2014-03-26 → 2014-03-21 (-5d) | 2014-04-10 → 2014-04-07 (-3d) |  |  | 84d → 87d |  |
| 228 | Проверки сборки и функционала | 2014-03-26 → 2014-03-21 (-5d) | 2014-04-10 → 2014-04-07 (-3d) |  |  | 84d → 87d |  |
| 229 | **Интеграция с CMJ по ОРД** | 2014-03-26 → 2014-03-21 (-5d) |  | 20d? → 23d? |  | 43d → 42d |  |
| 230 | Конфиг ДОП | 2014-03-26 → 2014-03-21 (-5d) | 2014-03-28 → 2014-03-25 (-3d) |  |  | 43d → 46d |  |
| 231 | Mapper | 2014-03-31 → 2014-03-26 (-5d) | 2014-04-04 → 2014-04-01 (-3d) |  |  | 82d → 85d |  |
| 232 | **Настраиваемые коллекции** | 2014-04-07 → 2014-04-02 (-5d) | 2014-04-16 → 2014-04-11 (-5d) |  |  | 84d → 87d |  |
| 233 | **Конфигурация коллекций** | 2014-04-07 → 2014-04-02 (-5d) | 2014-04-15 → 2014-04-10 (-5d) |  |  | 84d → 87d |  |
| 234 | Типовая иерархия кастомных папок (3шт) | 2014-04-07 → 2014-04-02 (-5d) | 2014-04-14 → 2014-04-09 (-5d) |  |  | 84d → 87d |  |
| 235 | Системные настройки для ОРД | 2014-04-07 → 2014-04-02 (-5d) | 2014-04-14 → 2014-04-09 (-5d) |  |  | 84d → 87d |  |
| 236 | Доработка расширенного поиска | 2014-04-07 → 2014-04-02 (-5d) | 2014-04-15 → 2014-04-10 (-5d) |  |  | 90d → 93d |  |
| 237 | Проверка работы | 2014-04-16 → 2014-04-11 (-5d) | 2014-04-16 → 2014-04-11 (-5d) |  |  | 90d → 93d |  |
| 245 | **Интеграция с CMJ по самостоятельным поручениям** | 2014-04-07 → 2014-04-02 (-5d) |  | 20d? → 23d? |  |  |  |
| 246 | Конфиг ДОП | 2014-04-07 → 2014-04-02 (-5d) | 2014-04-09 → 2014-04-04 (-5d) |  |  | 82d → 85d |  |
| 247 | Mapper | 2014-04-10 → 2014-04-07 (-3d) | 2014-04-16 → 2014-04-11 (-5d) |  |  | 82d → 85d |  |
| 248 | **Настраиваемые коллекции** | 2014-04-17 → 2014-04-14 (-3d) | 2014-04-28 → 2014-04-23 (-5d) |  |  | 82d → 85d |  |
| 249 | **Конфигурация коллекций** | 2014-04-17 → 2014-04-14 (-3d) | 2014-04-25 → 2014-04-22 (-3d) |  |  | 82d → 85d |  |
| 250 | Типовая иерархия кастомных папок (3шт) | 2014-04-17 → 2014-04-14 (-3d) | 2014-04-24 → 2014-04-21 (-3d) |  |  | 82d → 85d |  |
| 251 | Системные настройки для СамПор | 2014-04-17 → 2014-04-14 (-3d) | 2014-04-24 → 2014-04-21 (-3d) |  |  | 83d → 86d |  |
| 252 | Доработка расширенного поиска | 2014-04-17 → 2014-04-14 (-3d) | 2014-04-25 → 2014-04-22 (-3d) |  |  | 82d → 85d |  |
| 253 | Проверка работы | 2014-04-28 → 2014-04-23 (-5d) | 2014-04-28 → 2014-04-23 (-5d) |  |  | 82d → 85d |  |
| 261 | **Интеграция с CMJ по ОГ** | 2014-03-31 → 2014-03-26 (-5d) |  | 25d? → 28d? |  | 43d → 42d |  |
| 262 | Конфиг ДОП | 2014-03-31 → 2014-03-26 (-5d) | 2014-04-02 → 2014-03-28 (-5d) |  |  | 43d → 46d |  |
| 263 | Mapper | 2014-04-03 → 2014-03-31 (-3d) | 2014-04-09 → 2014-04-04 (-5d) |  |  | 43d → 46d |  |
| 264 | **Настраиваемые коллекции** | 2014-04-10 → 2014-04-07 (-3d) | 2014-04-21 → 2014-04-16 (-5d) |  |  | 49d → 42d |  |
| 265 | **Конфигурация коллекций** | 2014-04-10 → 2014-04-07 (-3d) | 2014-04-18 → 2014-04-15 (-3d) |  |  | 49d → 42d |  |
| 266 | Типовая иерархия кастомных папок (3шт) | 2014-04-10 → 2014-04-07 (-3d) | 2014-04-17 → 2014-04-14 (-3d) |  |  | 49d → 52d |  |
| 267 | Системные настройки для ОГ | 2014-04-10 → 2014-04-07 (-3d) | 2014-04-17 → 2014-04-14 (-3d) |  |  | 50d → 43d |  |
| 268 | Доработка расширенного поиска | 2014-04-10 → 2014-04-07 (-3d) | 2014-04-18 → 2014-04-15 (-3d) |  |  | 49d → 42d |  |
| 269 | Проверка работы | 2014-04-21 → 2014-04-16 (-5d) | 2014-04-21 → 2014-04-16 (-5d) |  |  | 87d → 90d |  |
| 277 | **Интеграция с CMJ по WF** | 2014-04-10 → 2014-04-07 (-3d) |  | 22d? → 25d? |  | 43d → 42d |  |
| 278 | Конфиг ДОП | 2014-04-10 → 2014-04-07 (-3d) | 2014-04-10 → 2014-04-07 (-3d) |  |  | 43d → 46d |  |
| 279 | Mapper | 2014-04-11 → 2014-04-08 (-3d) | 2014-04-15 → 2014-04-10 (-5d) |  |  | 43d → 46d |  |
| 280 | **Настраиваемые коллекции** | 2014-04-21 → 2014-04-16 (-5d) | 2014-04-30 → 2014-04-25 (-5d) |  |  | 49d → 42d |  |
| 281 | **Конфигурация коллекций** | 2014-04-21 → 2014-04-16 (-5d) | 2014-04-29 → 2014-04-24 (-5d) |  |  | 49d → 42d |  |
| 282 | Типовая иерархия кастомных папок (3шт) | 2014-04-21 → 2014-04-16 (-5d) | 2014-04-24 → 2014-04-21 (-3d) |  |  | 49d → 52d |  |
| 283 | Системные настройки для WF | 2014-04-21 → 2014-04-16 (-5d) | 2014-04-24 → 2014-04-21 (-3d) |  |  | 49d → 42d |  |
| 284 | Доработка расширенного поиска | 2014-04-21 → 2014-04-16 (-5d) | 2014-04-29 → 2014-04-24 (-5d) |  |  | 80d → 83d |  |
| 285 | Проверка работы | 2014-04-30 → 2014-04-25 (-5d) | 2014-04-30 → 2014-04-25 (-5d) |  |  | 80d → 83d |  |
| 297 | **Интеграция с CMJ по сервису Контроля Заданий** | 2014-04-16 → 2014-04-11 (-5d) |  | 25d? → 28d? |  | 43d → 42d |  |
| 298 | Конфиг ДОП | 2014-04-16 → 2014-04-11 (-5d) | 2014-04-18 → 2014-04-15 (-3d) |  |  | 43d → 42d |  |
| 299 | Mapper | 2014-04-21 → 2014-04-16 (-5d) | 2014-04-25 → 2014-04-22 (-3d) |  |  | 43d → 42d |  |
| 306 | **Перенос логики сервисов по КЗ** | 2014-04-18 → 2014-04-15 (-3d) | 2014-05-07 → 2014-04-30 (-7d) |  |  | 53d → 46d |  |
| 307 | Задание поставлено | 2014-04-18 → 2014-04-15 (-3d) | 2014-04-18 → 2014-04-15 (-3d) |  |  | 53d → 46d |  |

| ID | Task | Start | Finish | Duration | Total float |
| --- | --- | --- | --- | --- | --- |
| 308 | Пролведение процедуры Revers Engineering для процессов | 2014-04-25 → 2014-04-22 (-3d) | 2014-05-07 → 2014-04-30 (-7d) |  | 49d → 42d |
| 309 | Реализация в слое CMJ-CMSochi | 2014-04-25 → 2014-04-22 (-3d) | 2014-05-07 → 2014-04-30 (-7d) |  | 77d → 80d |
| 313 | **Интеграция с CMJ по Формированию дел** | 2014-04-28 → 2014-04-23 (-5d) |  | 23d? → 26d? | 43d → 42d |
| 314 | Конфиг ДОП | 2014-04-28 → 2014-04-23 (-5d) | 2014-04-30 → 2014-04-25 (-5d) |  | 43d → 46d |
| 315 | Mapper | 2014-05-05 → 2014-04-28 (-7d) | 2014-05-12 → 2014-05-06 (-6d) |  | 43d → 46d |
| 322 | **Перенос логики сервисов по ФД** | 2014-04-30 → 2014-04-25 (-5d) | 2014-05-19 → 2014-05-14 (-5d) |  | 49d → 42d |
| 323 | Задание поставлено | 2014-04-30 → 2014-04-25 (-5d) | 2014-04-30 → 2014-04-25 (-5d) |  | 52d → 55d |
| 324 | Пролведение процедуры Revers Engineering для процессов | 2014-05-08 → 2014-05-05 (-3d) | 2014-05-19 → 2014-05-14 (-5d) |  | 49d → 52d |
| 325 | Реализация в слое CMJ-CMSochi | 2014-05-08 → 2014-05-05 (-3d) | 2014-05-19 → 2014-05-14 (-5d) |  | 49d → 42d |
| 329 | **Интеграция с CMJ по Заседаниям** | 2014-05-13 → 2014-05-07 (-6d) |  | 21d? → 24d? | 43d → 42d |
| 330 | Конфиг ДОП | 2014-05-13 → 2014-05-07 (-6d) | 2014-05-15 → 2014-05-12 (-3d) |  | 43d → 42d |
| 331 | Mapper | 2014-05-16 → 2014-05-13 (-3d) | 2014-05-22 → 2014-05-19 (-3d) |  | 43d → 42d |
| 338 | **Перенос логики сервисов по Зсд** | 2014-05-19 → 2014-05-14 (-5d) | 2014-05-28 → 2014-05-23 (-5d) |  | 49d → 42d |
| 339 | Задание поставлено | 2014-05-19 → 2014-05-14 (-5d) | 2014-05-19 → 2014-05-14 (-5d) |  | 49d → 42d |
| 340 | Пролведение процедуры Revers Engineering для процессов | 2014-05-20 → 2014-05-15 (-5d) | 2014-05-28 → 2014-05-23 (-5d) |  | 49d → 42d |
| 341 | Реализация в слое CMJ-CMSochi | 2014-05-20 → 2014-05-15 (-5d) | 2014-05-28 → 2014-05-23 (-5d) |  | 63d → 66d |
| 345 | **Интеграция с CMJ по Обсуждениям и ознакомлениям** | 2014-05-23 → 2014-05-20 (-3d) |  | 20d? → 23d? | 43d → 42d |
| 346 | Конфиг ДОП | 2014-05-23 → 2014-05-20 (-3d) | 2014-05-27 → 2014-05-22 (-5d) |  | 43d → 42d |
| 347 | Mapper | 2014-05-28 → 2014-05-23 (-5d) | 2014-06-03 → 2014-05-29 (-5d) |  | 43d → 42d |
| 348 | **Настраиваемые коллекции** | 2014-06-04 → 2014-06-02 (-2d) | 2014-06-13 → 2014-06-12 (-1d) |  | 51d → 52.2d |
| 349 | **Конфигурация коллекций** | 2014-06-04 → 2014-06-02 (-2d) | 2014-06-12 → 2014-06-11 (-1d) |  | 51d → 52.2d |
| 350 | Типовая иерархия кастомных папок | 2014-06-04 → 2014-06-02 (-2d) | 2014-06-11 → 2014-06-10 (-1d) |  | 51d → 52.2d |
| 351 | Доработка расширенного поиска | 2014-06-04 → 2014-06-02 (-2d) | 2014-06-12 → 2014-06-11 (-1d) |  | 51d → 52.2d |
| 352 | Системные настройки для ОО | 2014-06-04 → 2014-06-02 (-2d) | 2014-06-11 → 2014-06-10 (-1d) |  | 52d → 53.2d |
| 353 | Проверка работы | 2014-06-13 → 2014-06-11 (-2d) | 2014-06-13 → 2014-06-12 (-1d) |  | 51d → 52.2d |
| 354 | **Перенос логики сервисов по ОО** | 2014-05-27 → 2014-05-22 (-5d) | 2014-06-06 → 2014-06-03 (-3d) |  | 49d → 42d |
| 355 | Задание поставлено | 2014-05-27 → 2014-05-22 (-5d) | 2014-05-27 → 2014-05-22 (-5d) |  | 50d → 43d |
| 356 | Пролведение процедуры Revers Engineering для процессов | 2014-05-29 → 2014-05-26 (-3d) | 2014-06-06 → 2014-06-03 (-3d) |  | 49d → 42d |
| 357 | Реализация в слое CMJ-CMSochi | 2014-05-29 → 2014-05-26 (-3d) | 2014-06-06 → 2014-06-03 (-3d) |  | 49d → 42d |
| 361 | **Интеграция с CMJ по "Кейсам"** | 2014-06-04 → 2014-05-30 (-5d) |  | 22d? → 25d? |  |
| 362 | Конфиг ДОП | 2014-06-04 → 2014-05-30 (-5d) | 2014-06-06 → 2014-06-03 (-3d) |  | 43d → 42d |
| 363 | Mapper | 2014-06-09 → 2014-06-04 (-5d) | 2014-06-13 → 2014-06-10 (-3d) |  | 43d → 46d |
| 364 | **Настраиваемые коллекции** | 2014-06-16 → 2014-06-11 (-5d) | 2014-06-25 → 2014-06-20 (-5d) |  | 43d → 46d |
| 365 | **Конфигурация коллекций** | 2014-06-16 → 2014-06-11 (-5d) | 2014-06-24 → 2014-06-19 (-5d) |  | 43d → 46d |
| 366 | Типовая иерархия кастомных папок | 2014-06-16 → 2014-06-11 (-5d) | 2014-06-23 → 2014-06-18 (-5d) |  | 43d → 46d |
| 367 | Доработка расширенного поиска | 2014-06-16 → 2014-06-11 (-5d) | 2014-06-24 → 2014-06-19 (-5d) |  | 43d → 46d |
| 368 | Системные настройки для "Кейсов" | 2014-06-16 → 2014-06-11 (-5d) | 2014-06-23 → 2014-06-18 (-5d) |  | 44d → 47d |
| 369 | Проверка работы | 2014-06-25 → 2014-06-20 (-5d) | 2014-06-25 → 2014-06-20 (-5d) |  | 43d → 46d |
| 370 | **Перенос логики сервисов по "Кейсам"** | 2014-06-06 → 2014-06-03 (-3d) | 2014-06-17 → 2014-06-12 (-5d) |  | 49d → 42d |
| 371 | Задание поставлено | 2014-06-06 → 2014-06-03 (-3d) | 2014-06-06 → 2014-06-03 (-3d) |  | 49d → 42d |
| 372 | Пролведение процедуры Revers Engineering для процессов | 2014-06-09 → 2014-06-04 (-5d) | 2014-06-17 → 2014-06-12 (-5d) |  | 49d → 42d |
| 373 | Реализация в слое CMJ-CMSochi | 2014-06-09 → 2014-06-04 (-5d) | 2014-06-17 → 2014-06-12 (-5d) |  | 49d → 42d |

## Version 60 (saved 2014-03-05)

Last finish 2014-11-27 → 2014-09-16 (-72d). Complete tasks 127 → 147.

Added:

| ID | Task | Duration | Start | Finish | Predecessors | Constraint | Resources |
| --- | --- | --- | --- | --- | --- | --- | --- |
| 432 | Реализация | 23d | 2014-07-10 | 2014-08-11 | 431 |  | Денис Митавский [50%] |
| 461 | **Средства мониторинга** | 33d | 2014-03-05 | 2014-04-18 |  |  |  |
| 462 | уточнена постановка | 0d | 2014-03-05 | 2014-03-05 |  | start no earlier than 2014-03-05 |  |
| 463 | **Проектирование и формализация** | 6d | 2014-03-05 | 2014-03-12 |  |  |  |
| 464 | Определение параметров контроля | 3d | 2014-03-05 | 2014-03-07 | 462 |  | Андрей Пирожков |
| 465 | Разработка методики контроля | 3d | 2014-03-10 | 2014-03-12 | 464 |  | Андрей Пирожков |
| 466 | **Реализация** | 27d | 2014-03-13 | 2014-04-18 |  |  |  |
| 467 | Определение точек контроля системы | 7d | 2014-03-13 | 2014-03-21 | 465 |  | Андрей Пирожков |
| 468 | Разработка счетчиков точек контроля | 15d | 2014-03-24 | 2014-04-11 | 467 |  | Андрей Пирожков; Java разработчик4 |
| 469 | Сборка "zabbix" | 5d | 2014-04-14 | 2014-04-18 | 468 |  | Java разработчик4 |
| 470 | **Стабилизация ядра системы** | 67d | 2014-04-03 | 2014-07-09 |  |  |  |
| 471 | Исправление ошибок в ядре | 70d | 2014-04-03 | 2014-07-09 | 452 |  | Андрей Цветков [50%]; Валерий Мацукевич [50%]; Роман Митинков [50%] |
| 472 | Доработка недостающего функционала | 70d | 2014-04-03 | 2014-07-09 | 452 |  | Андрей Цветков [50%]; Валерий Мацукевич [50%]; Роман Митинков [50%] |

Removed: 383 REST-протокол для АРМа - проектирование; 440 Описание структуры модуля Делопроизводство; 462 Разработка серверной логики модуля CMJ

Changed:

| ID | Task | Start | Finish | Duration | Complete | Total float | Predecessors | Other |
| --- | --- | --- | --- | --- | --- | --- | --- | --- |
| 1 | **Разработка версии CM4/5** |  | 2014-11-27 → 2014-09-16 (-72d) | 403d? → 351d? | 35% → 37% | 0d → 33d |  |  |
| 9 | **Создание модуля "Делопроизводство" (документоориентированная среда)** |  | 2014-11-27 → 2014-08-13 (-106d) | 403d? → 327d? | 37% → 39% | 0d → 34d |  |  |
| 20 | **Проектирование и формирование ядра системы** |  | 2014-08-07 → 2014-08-13 (+6d) | 323d? → 327d? | 42% → 47% | 12d → 34d |  |  |
| 64 | **Поиск** |  | 2013-12-11 → 2014-03-07 (+86d) | 97d → 151d | 82% → 94% | 172d → 134d |  |  |
| 67 | Полнотекстовый поиск |  | 2013-12-11 → 2014-03-07 (+86d) | 25d → 79d | 50% → 90% | 172d → 134d |  |  |
| 68 | **Слой сопряжения CMJ server (CM4)** |  |  |  | 26% → 28% | 37d → 53d |  |  |
| 75 | Проектирование завершено - готовность к интеграции | 2013-09-23 A | 2013-09-23 A |  | 0% → 100% | 213.92d → none |  |  |
| 76 | **Интеграция с CMJ по Внутренним Документам** |  |  |  | 84% → 91% | 131d → 147d |  |  |
| 88 | **Mapper ВнД** |  |  |  | 93% → 99% | 2d → 0d |  |  |
| 95 | CollectionProvider методы получения только категорий |  | 2014-02-06 A |  | 70% → 100% | 2d → none |  |  |
| 96 | **Доработка ВнД** |  |  |  | 31% → 99% | 132d → 158d |  |  |
| 100 | Поддержка полнотекстового поиска | 2014-02-07 A | 2014-02-14 A |  | 0% → 100% | 133d → none |  |  |
| 101 | Базовый сервис поддержки сценариев (+DOEL) | 2014-02-07 A | 2014-02-17 A |  | 0% → 100% | 132d → none |  |  |
| 102 | **Перенос Логики работы агентов** |  |  |  | 18% → 97% | 138d → 164d |  |  |
| 103 | Подбор варианта реализации |  | 2014-02-04 A |  | 25% → 100% | 138d → none |  |  |
| 104 | Реализация и отладка переноса логики | 2014-02-05 A |  |  | 0% → 90% | 138d → 164d |  |  |
| 181 | **Подключение механизма контроля доступа** |  | 2014-03-24 → 2014-03-27 (+3d) | 3d → 6d |  | 107d → 130d |  |  |
| 183 | создание типовых матриц доступа |  | 2014-03-24 → 2014-03-27 (+3d) | 3d → 6d |  | 107d → 120d |  |  |
| 383 | **Проверка работоспособности решения - Организация демонстрации** | 2013-12-09 A | 2014-01-22 → 2013-12-12 A (-41d) | 25d? → 4d | 0% → 100% | 150d → none |  |  |
| 384 | Подготовка стенда | 2013-12-09 A | 2013-12-11 A |  | 0% → 100% | 172d → none |  | resources Влад Симоненко; Аналитик → Java разработчик3; Аналитик |
| 385 | Подготовка прототипа | 2013-12-09 A | 2014-01-15 → 2013-12-10 A (-36d) | 20d? → 2d | 0% → 100% | 150d → none |  | resources Влад Симоненко; Аналитик → Java разработчик3; Аналитик |
| 386 | Проведение демонстраций | 2014-01-16 → 2013-12-11 A (-36d) | 2014-01-20 → 2013-12-11 A (-40d) | 3d → 1d | 0% → 100% | 150d → none |  | resources Влад Симоненко; Аналитик → Java разработчик3; Аналитик |
| 387 | Анализ результатов - выводы | 2014-01-21 → 2013-12-12 A (-40d) | 2014-01-22 → 2013-12-12 A (-41d) | 2d → 1d | 0% → 100% | 150d → none |  | resources Влад Симоненко; Аналитик → Java разработчик3; Аналитик |
| 394 | **Механизм формирования отчетов** |  | 2013-12-12 A |  | 99% → 100% | 171d → none |  | was named Работа с отчетами |
| 395 | Определен состав отчетов | 2013-11-01 A | 2013-11-01 A |  | 0% → 100% | 201d → none |  |  |
| 399 | **GUI** |  | 2014-05-06 → 2014-08-11 (+97d) | 257d? → 325d | 42% → 53% | 76d → 34d |  |  |
| 411 | **GUI - плагин отображения коллекций** | 2013-09-04 A | 2013-09-24 A |  | 0% → 100% | 226d → none |  |  |
| 412 | Проектирование | 2013-09-04 A | 2013-09-05 A |  | 0% → 100% | 235d → none |  |  |
| 413 | Разработка | 2013-09-17 A | 2013-09-24 A |  | 0% → 100% | 226d → none |  |  |
| 414 | **GUI - действия** |  | 2013-09-09 A |  | 13% → 100% | 234d → none |  |  |
| 415 | Проектирование |  | 2013-09-09 A |  | 50% → 100% | 234d → none |  |  |
| 416 | Разработка | 2013-04-22 A | 2013-04-29 A |  | 0% → 100% | 324d → none |  |  |
| 417 | **Формы встроенного GUI** |  | 2013-09-30 A |  | 38% → 100% | 222d → none |  |  |
| 421 | Реализация чтения | 2013-09-24 A | 2013-09-30 A |  | 0% → 100% | 167d → none |  |  |
| 422 | Реализация сохранения | 2013-09-19 A | 2013-09-25 A |  | 0% → 100% | 225d → none |  |  |
| 423 | **GUI - поиск** | 2013-12-23 A | 2014-02-14 A |  | 0% → 100% | 76d → none |  |  |
| 424 | GUI - поиск. Проектирование | 2013-12-23 A | 2014-01-29 A |  | 0% → 100% | 76d → none |  |  |
| 425 | GUI - поиск. Реализация | 2014-01-30 A | 2014-02-14 A |  | 0% → 100% | 76d → none |  |  |
| 426 | **GUI - виджеты разработка** |  | 2014-04-25 → 2014-06-25 (+61d) | 141d? → 181d | 9% → 5% | 76d → 34d |  |  |
| 428 | Остальные без особенностей стиля ст.лебедева (базовый набор) |  | 2014-03-21 → 2014-04-25 (+35d) | 25d? → 50d |  | 76d → 34d |  | resources Тимофей Билый; Алексей Львов → Денис Митавский |
| 429 | Остальные для стиля ст.лебедева | 2014-03-24 → 2014-04-28 (+35d) | 2014-04-25 → 2014-06-25 (+61d) | 25d? → 40d |  | 76d → 34d |  | resources Андрей Карандей; Алексей Львов → Денис Митавский |
| 430 | **GUI - брендинг, стилизация, темы** | 2014-04-28 → 2014-06-26 (+59d) | 2014-05-06 → 2014-08-11 (+97d) | 5d → 33d |  | 76d → 34d |  |  |
| 431 | Концепция | 2014-04-28 → 2014-06-26 (+59d) | 2014-05-06 → 2014-07-09 (+64d) | 5d → 10d |  | 76d → 34d |  |  |
| 433 | Тестирование производительности конфигурации |  | 2013-10-14 A |  | 80% → 100% | 214d → none |  | was named Тестирование производительности |
| 434 | **Дополнительные сервисы платформы** | 2013-09-10 A → 2013-12-09 A (+90d) | 2014-08-07 → 2014-08-13 (+6d) | 227d → 167d | 26% → 32% | 12d → 34d |  |  |
| 436 | Защита конфигурационных файлов от изменений |  | 2014-02-27 A |  | 85% → 100% | 12d → none |  |  |
| 437 | Выделение конфигурации GUI в отдельные сущности, к изменению формата которых система не будет восприимчива | 2014-02-28 A |  |  | 0% → 5% | 12d → 38d |  |  |
| 440 | Уточнение состава и сроков работ | 2014-05-07 → 2014-08-12 (+97d) | 2014-05-08 → 2014-08-13 (+97d) |  |  | 76d → 34d |  |  |
| 452 | **Подсистема нотификаций** |  | 2014-03-24 → 2014-04-02 (+9d) | 46d → 53d | 9% → 8% | 175d → 56d |  |  |
| 454 | Подготовка проекта подсистемы нотификаций |  | 2014-02-14 → 2014-02-25 (+11d) | 10d → 17d |  | 175d → 56d |  |  |
| 455 | **Разработка подсистемы** | 2014-02-25 → 2014-03-06 (+9d) | 2014-03-24 → 2014-04-02 (+9d) |  |  | 175d → 56d |  |  |
| 456 | Доработка существующих сервисов | 2014-02-25 → 2014-03-06 (+9d) | 2014-03-17 → 2014-03-26 (+9d) |  |  | 175d → 56d |  |  |
| 457 | Разработка специфичного функционала подсистемы | 2014-02-25 → 2014-03-06 (+9d) | 2014-03-17 → 2014-03-26 (+9d) |  |  | 175d → 56d |  |  |
| 458 | Сборка и отладка | 2014-03-18 → 2014-03-27 (+9d) | 2014-03-24 → 2014-04-02 (+9d) |  |  | 175d → 56d |  |  |
| 459 | **Архитектурный комитет** |  | 2014-06-06 → 2014-06-30 (+24d) | 248d → 264d | 45% → 49% | 124d → 56d |  |  |
| 460 | Контроль и корректировка технических решений "Архитектурный комитет" |  | 2014-06-06 → 2014-06-30 (+24d) | 248d → 264d | 52% → 49% | 124d → 56d |  |  |
| 483 | **Подготовка базового набора отчетов и ГО** |  |  |  |  | 96d → 44d |  | was named Подготовка базового набора отчетов |
| 491 | Сопряжение с мобильным клиентом СМ4 |  |  |  |  | 96d → 54d | Разработка серверной логики модуля CMJ, 490 → 490 |  |
| 492 | **Тестирование** | 2014-08-08 → 2014-03-21 (-140d) | 2014-11-11 → 2014-07-14 (-120d) | 68d? → 79d? |  | 12d → 46d | 20 → 218 |  |
| 493 | **Функциональное тестирование** | 2014-08-08 → 2014-03-21 (-140d) | 2014-10-21 → 2014-06-23 (-120d) | 53d? → 64d? |  | 12d → 57d |  |  |
| 494 | Подготовка ПМИ | 2014-08-08 → 2014-03-21 (-140d) | 2014-08-14 → 2014-03-27 (-140d) |  |  | 12d → 67d |  |  |
| 495 | Разработка "сценариев тестирования" | 2014-08-08 → 2014-03-21 (-140d) | 2014-08-28 → 2014-04-10 (-140d) |  |  | 17d → 72d |  |  |
| 496 | Разработка модели нагрузки для тестирования | 2014-08-15 → 2014-03-28 (-140d) | 2014-08-28 → 2014-04-10 (-140d) |  |  | 17d → 72d |  |  |
| 497 | Адаптация автоматизированных сценариев от СМ4 для создания нагрузки | 2014-08-15 → 2014-03-28 (-140d) | 2014-09-18 → 2014-05-05 (-136d) |  |  | 12d → 67d |  |  |
| 498 | **Проведение тестирования** | 2014-08-29 → 2014-04-28 (-123d) | 2014-10-21 → 2014-06-23 (-120d) |  |  | 17d → 51d |  |  |
| 499 | **Подготовка среды тестирования** | 2014-08-29 → 2014-04-28 (-123d) | 2014-09-11 → 2014-05-21 (-113d) | 10d? → 15d? |  | 17d → 51d |  |  |
| 500 | Разворачивание системы | 2014-08-29 → 2014-04-28 (-123d) | 2014-09-04 → 2014-05-07 (-120d) |  |  | 60d → 104d |  |  |
| 501 | Система готова для подключения инструментов мониторинга | 2014-09-04 → 2014-05-07 (-120d) | 2014-09-04 → 2014-05-07 (-120d) |  |  | 60d → 104d |  |  |
| 502 | Наполнение данными | 2014-08-29 → 2014-05-07 (-114d) | 2014-09-11 → 2014-05-21 (-113d) |  |  | 17d → 56d |  |  |
| 503 | Среда тестирования готова | 2014-09-18 → 2014-05-21 (-120d) | 2014-09-18 → 2014-05-21 (-120d) |  |  | 12d → 56d |  |  |

| ID | Task | Start | Finish | Total float |
| --- | --- | --- | --- | --- |
| 504 | Проведение тестирования | 2014-09-19 → 2014-05-22 (-120d) | 2014-10-02 → 2014-06-04 (-120d) | 12d → 56d |
| 505 | **Обработка результатов тестирования и внесение изменений в модуль** | 2014-10-01 → 2014-06-03 (-120d) | 2014-10-21 → 2014-06-23 (-120d) | 12d → 56d |
| 506 | Устранение замечаний по результатам функционального тестирования | 2014-10-01 → 2014-06-03 (-120d) | 2014-10-21 → 2014-06-23 (-120d) | 12d → 56d |
| 507 | Проверка устранения замечаний | 2014-10-14 → 2014-06-16 (-120d) | 2014-10-21 → 2014-06-23 (-120d) | 12d → 56d |
| 508 | **Нагрузочное тестирование** | 2014-10-02 → 2014-06-04 (-120d) | 2014-11-11 → 2014-07-14 (-120d) | 12d → 56d |
| 509 | Стенд для нагрузочного тестирования подготовлен | 2014-10-02 → 2014-06-04 (-120d) | 2014-10-02 → 2014-06-04 (-120d) | 25d → 69d |
| 510 | Проведения нагрузочного тестирования | 2014-10-22 → 2014-06-24 (-120d) | 2014-11-04 → 2014-07-07 (-120d) | 12d → 56d |
| 511 | Обработка результатов нагрузочного тестирования | 2014-11-05 → 2014-07-08 (-120d) | 2014-11-11 → 2014-07-14 (-120d) | 12d → 56d |
| 512 | **Подготовка документации** | 2014-08-08 → 2014-03-21 (-140d) | 2014-11-27 → 2014-07-15 (-135d) | 0d → 55d |
| 513 | Разработка документа "Концепция системы " | 2014-08-08 → 2014-03-21 (-140d) | 2014-10-02 → 2014-05-20 (-135d) | 0d → 55d |
| 514 | Разработка "Software Architecture Document" | 2014-10-03 → 2014-05-21 (-135d) | 2014-11-27 → 2014-07-15 (-135d) | 0d → 55d |
| 515 | Документы подготовлены | 2014-11-27 → 2014-07-15 (-135d) | 2014-11-27 → 2014-07-15 (-135d) | 0d → 55d |

## Version 61 (saved 2014-03-07)

Last finish stays 2014-09-16.

Added:

| ID | Task | Duration | Start | Finish | Predecessors | Resources |
| --- | --- | --- | --- | --- | --- | --- |
| 229 | Интеграция с мобильным клиентом - верефикация возможности | 20d | 2014-04-08 | 2014-05-07 | 228 | Java разработчик3 |

Changed:

| ID | Task | Start | Finish | Duration | Complete | Total float | Predecessors |
| --- | --- | --- | --- | --- | --- | --- | --- |
| 20 | **Проектирование и формирование ядра системы** |  |  |  | 47% → 46% | 34d → 24d |  |
| 68 | **Слой сопряжения CMJ server (CM4)** | 2013-04-22 A → 2013-08-05 A (+105d) |  | 298d? → 228d? |  |  |  |
| 219 | **Переход на 4.3 CMJ** | 2013-04-22 → 2014-03-14 (+326d) | 2014-04-10 → 2014-05-07 (+27d) | 241d → 37d |  | 110d → 57d |  |
| 220 | **Модификация CMJ** | 2013-04-22 → 2014-03-21 (+333d) | 2013-04-26 → 2014-03-27 (+335d) |  |  | 346d → 110d |  |
| 221 | Для отложенного добавления персон | 2013-04-22 → 2014-03-21 (+333d) | 2013-04-26 → 2014-03-27 (+335d) |  |  | 320d → 110d | none → 218 |
| 278 | **Интеграция с CMJ по WF** |  | 2014-05-14 → 2014-05-22 (+8d) | 25d? → 31d? |  |  |  |
| 291 | **Разработка адаптеров для СрвСогл** | 2014-04-10 → 2014-05-07 (+27d) | 2014-04-24 → 2014-05-22 (+28d) |  |  | 110d → 83d |  |
| 292 | Задание поставлено | 2014-04-10 → 2014-05-07 (+27d) | 2014-04-10 → 2014-05-07 (+27d) |  |  | 84d → 83d |  |
| 293 | Разработка архитектуры дя адаптеров | 2014-04-11 → 2014-05-08 (+27d) | 2014-04-17 → 2014-05-15 (+28d) |  |  | 100d → 83d |  |
| 294 | Разработка адаптеров | 2014-04-18 → 2014-05-16 (+28d) | 2014-04-24 → 2014-05-22 (+28d) |  |  | 100d → 83d |  |

## Version 62 (saved 2014-03-12)

Last finish stays 2014-09-16.

Added:

| ID | Task | Duration | Start | Finish | Predecessors | Constraint | Resources |
| --- | --- | --- | --- | --- | --- | --- | --- |
| 383 | **Интеграция с CMJ по ПРВЗ(мобильность)** | 16d? | 2014-06-27 | 2014-07-18 |  |  |  |
| 384 | Конфиг ДОП | 3d | 2014-06-27 | 2014-07-01 | 366 |  | Александр Власюк |
| 385 | Mapper | 5d | 2014-07-02 | 2014-07-08 | 384 |  | Александр Власюк |
| 386 | **Настраиваемые коллекции** | 8d? | 2014-07-09 | 2014-07-18 | 385 |  |  |
| 387 | **Конфигурация коллекций** | 7d | 2014-07-09 | 2014-07-17 |  |  |  |
| 388 | Типовая иерархия кастомных папок | 6d | 2014-07-09 | 2014-07-16 |  |  | Евгений Сафроненко |
| 389 | Доработка расширенного поиска | 7d | 2014-07-09 | 2014-07-17 | 388SS |  | Сергей Околот |
| 390 | Системные настройки для ПРВЗ | 6d | 2014-07-09 | 2014-07-16 | 388SS |  | Тимофей Билый |
| 391 | Проверка работы | 1d? | 2014-07-18 | 2014-07-18 | 387 |  | Глеб Ноздрачев [80%] |
| 392 | **Перенос логики сервисов по ПРВЗ** | 7d | 2014-07-01 | 2014-07-10 |  |  |  |
| 393 | Задание поставлено | 0d | 2014-07-01 | 2014-07-01 | 384 | start no earlier than 2013-09-30 | Тугушев Илья [80%] |
| 394 | Пролведение процедуры Revers Engineering для процессов | 7d | 2014-07-02 | 2014-07-10 | 393 |  | Наталья Смолянец (Смолянец) |
| 395 | Реализация в слое CMJ-CMSochi | 7d | 2014-07-02 | 2014-07-10 | 394SS |  | Антон Ганчев (Киев) |
| 396 | **Разработка коллекций** | 10d | 2014-07-02 | 2014-07-15 |  |  |  |
| 397 | Коллекции | 10d | 2014-07-02 | 2014-07-15 | 384 |  | (БТЛ) Олег Еренцов; (БТЛ) Дмитрий Лякин; (БТЛ)Сергей Степыгин |
| 398 | Интеграция по ПРВЗ выполнена | 0d | 2014-07-18 | 2014-07-18 | 385, 386, 397 |  |  |

Changed:

| ID | Task | Start | Finish | Duration | Complete | Total float | Predecessors | Other |
| --- | --- | --- | --- | --- | --- | --- | --- | --- |
| 1 | **Разработка версии CM4/5** |  |  |  | 37% → 36% |  |  |  |
| 9 | **Создание модуля "Делопроизводство" (документоориентированная среда)** |  |  |  | 39% → 38% |  |  |  |
| 20 | **Проектирование и формирование ядра системы** |  |  |  | 46% → 45% |  |  |  |
| 68 | **Слой сопряжения CMJ server (CM4)** |  | 2014-07-03 → 2014-07-18 (+15d) | 228d? → 239d? | 28% → 26% | 53d → 42d |  |  |
| 218 | Получена версия CM4.X c WF движком | 2014-03-21 → 2014-03-19 (-2d) | 2014-03-21 → 2014-03-19 (-2d) |  |  | 57d → 59d | 180, 222 → 180 | constraint start no earlier than 2014-03-10 → start no earlier than 2014-03-19 |
| 219 | **Переход на 4.3 CMJ** | 2014-03-14 → 2014-03-19 (+5d) | 2014-05-07 → 2014-06-05 (+29d) | 37d → 54d |  | 57d → 62d |  |  |
| 220 | **Модификация CMJ** | 2014-03-21 → 2014-03-19 (-2d) | 2014-03-27 → 2014-04-01 (+5d) | 5d → 10d |  | 110d → 63d |  |  |
| 221 | Для отложенного добавления персон | 2014-03-21 → 2014-03-19 (-2d) | 2014-03-27 → 2014-03-25 (-2d) |  |  | 110d → 63d |  |  |
| 222 | Адаптация под функционал настраиваемых реквизитов | 2014-03-14 → 2014-03-26 (+12d) | 2014-03-21 → 2014-04-01 (+11d) |  |  | 57d → 63d | 223SF → 221 |  |
| 226 | Настройка адаптеров для 4.3 | 2014-03-21 → 2014-04-02 (+12d) | 2014-03-25 → 2014-04-04 (+10d) |  |  | 112d → 104d |  |  |
| 227 | Помещение сущностей во временный модуль | 2014-03-21 → 2014-04-02 (+12d) | 2014-04-07 → 2014-04-17 (+10d) |  |  | 103d → 63d | 223SS → 223SS, 220 |  |
| 228 | Проверки сборки и функционала | 2014-03-21 → 2014-04-18 (+28d) | 2014-04-07 → 2014-05-07 (+30d) |  |  | 83d → 63d | 223SS → 223SS, 227 |  |
| 229 | Интеграция с мобильным клиентом - верефикация возможности | 2014-04-08 → 2014-05-08 (+30d) | 2014-05-07 → 2014-06-05 (+29d) |  |  | 83d → 63d |  |  |
| 262 | **Интеграция с CMJ по ОГ** | 2014-03-26 → 2014-04-02 (+7d) |  | 28d? → 23d? |  | 58d → 42d |  |  |
| 263 | Конфиг ДОП | 2014-03-26 → 2014-04-02 (+7d) | 2014-03-28 → 2014-04-04 (+7d) |  |  | 58d → 42d | 231 → 231, 232 |  |
| 264 | Mapper | 2014-03-31 → 2014-04-07 (+7d) | 2014-04-04 → 2014-04-11 (+7d) |  |  | 58d → 42d |  |  |
| 265 | **Настраиваемые коллекции** | 2014-04-07 → 2014-04-14 (+7d) | 2014-04-16 → 2014-04-23 (+7d) |  |  | 58d → 53d |  |  |
| 266 | **Конфигурация коллекций** | 2014-04-07 → 2014-04-14 (+7d) | 2014-04-15 → 2014-04-22 (+7d) |  |  | 58d → 53d |  |  |
| 267 | Типовая иерархия кастомных папок (3шт) | 2014-04-07 → 2014-04-14 (+7d) | 2014-04-14 → 2014-04-21 (+7d) |  |  | 58d → 53d |  |  |
| 268 | Системные настройки для ОГ | 2014-04-07 → 2014-04-14 (+7d) | 2014-04-14 → 2014-04-21 (+7d) |  |  | 59d → 54d |  |  |
| 269 | Доработка расширенного поиска | 2014-04-07 → 2014-04-14 (+7d) | 2014-04-15 → 2014-04-22 (+7d) |  |  | 58d → 53d | 267SS → 267SS, 237 |  |
| 270 | Проверка работы | 2014-04-16 → 2014-04-23 (+7d) | 2014-04-16 → 2014-04-23 (+7d) |  |  | 106d → 101d |  |  |
| 278 | **Интеграция с CMJ по WF** | 2014-04-07 → 2014-04-14 (+7d) | 2014-05-22 → 2014-06-19 (+28d) | 31d? → 46d? |  | 58d → 42d |  |  |
| 279 | Конфиг ДОП | 2014-04-07 → 2014-04-14 (+7d) | 2014-04-07 → 2014-04-14 (+7d) |  |  | 58d → 42d |  |  |
| 280 | Mapper | 2014-04-08 → 2014-04-15 (+7d) | 2014-04-10 → 2014-04-17 (+7d) |  |  | 58d → 42d |  |  |
| 281 | **Настраиваемые коллекции** | 2014-04-16 → 2014-04-23 (+7d) | 2014-04-25 → 2014-05-06 (+11d) |  |  | 58d → 53d |  |  |
| 282 | **Конфигурация коллекций** | 2014-04-16 → 2014-04-23 (+7d) | 2014-04-24 → 2014-05-05 (+11d) |  |  | 58d → 53d |  |  |
| 283 | Типовая иерархия кастомных папок (3шт) | 2014-04-16 → 2014-04-23 (+7d) | 2014-04-21 → 2014-04-28 (+7d) |  |  | 58d → 53d |  |  |
| 284 | Системные настройки для WF | 2014-04-16 → 2014-04-23 (+7d) | 2014-04-21 → 2014-04-28 (+7d) |  |  | 58d → 53d |  |  |
| 285 | Доработка расширенного поиска | 2014-04-16 → 2014-04-23 (+7d) | 2014-04-24 → 2014-05-05 (+11d) |  |  | 99d → 94d |  |  |
| 286 | Проверка работы | 2014-04-25 → 2014-05-06 (+11d) | 2014-04-25 → 2014-05-06 (+11d) |  |  | 99d → 94d |  |  |
| 291 | **Разработка адаптеров для СрвСогл** | 2014-05-07 → 2014-06-05 (+29d) | 2014-05-22 → 2014-06-19 (+28d) |  |  | 83d → 63d |  |  |
| 292 | Задание поставлено | 2014-05-07 → 2014-06-05 (+29d) | 2014-05-07 → 2014-06-05 (+29d) |  |  | 83d → 63d |  |  |
| 293 | Разработка архитектуры дя адаптеров | 2014-05-08 → 2014-06-06 (+29d) | 2014-05-15 → 2014-06-12 (+28d) |  |  | 83d → 63d |  |  |
| 294 | Разработка адаптеров | 2014-05-16 → 2014-06-13 (+28d) | 2014-05-22 → 2014-06-19 (+28d) |  |  | 83d → 63d |  |  |
| 298 | **Интеграция с CMJ по сервису Контроля Заданий** | 2014-04-11 → 2014-04-18 (+7d) |  | 28d? → 23d? |  | 58d → 42d |  |  |
| 299 | Конфиг ДОП | 2014-04-11 → 2014-04-18 (+7d) | 2014-04-15 → 2014-04-22 (+7d) |  |  | 58d → 42d |  |  |
| 300 | Mapper | 2014-04-16 → 2014-04-23 (+7d) | 2014-04-22 → 2014-04-29 (+7d) |  |  | 58d → 42d |  |  |
| 301 | **Настраиваемые коллекции** | 2014-04-29 → 2014-04-30 (+1d) |  | 10d? → 9.8d? |  | 71.2d → 71d |  |  |
| 302 | **Конфигурация коллекций** | 2014-04-29 → 2014-04-30 (+1d) |  | 9d → 8.8d |  | 71.2d → 71d |  |  |
| 304 | Доработка расширенного поиска | 2014-04-29 → 2014-04-30 (+1d) |  |  |  | 89.2d → 89d |  |  |
| 307 | **Перенос логики сервисов по КЗ** | 2014-04-15 → 2014-04-22 (+7d) | 2014-04-30 → 2014-05-12 (+12d) |  |  | 62d → 57d |  |  |
| 308 | Задание поставлено | 2014-04-15 → 2014-04-22 (+7d) | 2014-04-15 → 2014-04-22 (+7d) |  |  | 62d → 57d |  |  |
| 309 | Пролведение процедуры Revers Engineering для процессов | 2014-04-22 → 2014-04-29 (+7d) | 2014-04-30 → 2014-05-12 (+12d) |  |  | 58d → 53d |  |  |
| 310 | Реализация в слое CMJ-CMSochi | 2014-04-22 → 2014-04-29 (+7d) | 2014-04-30 → 2014-05-12 (+12d) |  |  | 96d → 91d |  |  |
| 314 | **Интеграция с CMJ по Формированию дел** | 2014-04-23 → 2014-04-30 (+7d) |  | 26d? → 21d? |  | 58d → 42d |  |  |
| 315 | Конфиг ДОП | 2014-04-23 → 2014-04-30 (+7d) | 2014-04-25 → 2014-05-06 (+11d) |  |  | 58d → 42d |  |  |
| 316 | Mapper | 2014-04-28 → 2014-05-07 (+9d) | 2014-05-06 → 2014-05-14 (+8d) |  |  | 58d → 42d |  |  |
| 323 | **Перенос логики сервисов по ФД** | 2014-04-25 → 2014-05-06 (+11d) | 2014-05-14 → 2014-05-21 (+7d) |  |  | 58d → 53d |  |  |
| 324 | Задание поставлено | 2014-04-25 → 2014-05-06 (+11d) | 2014-04-25 → 2014-05-06 (+11d) |  |  | 55d → 56d |  |  |
| 325 | Пролведение процедуры Revers Engineering для процессов | 2014-05-05 → 2014-05-13 (+8d) | 2014-05-14 → 2014-05-21 (+7d) |  |  | 58d → 53d |  |  |
| 326 | Реализация в слое CMJ-CMSochi | 2014-05-05 → 2014-05-13 (+8d) | 2014-05-14 → 2014-05-21 (+7d) |  |  | 58d → 53d |  |  |
| 330 | **Интеграция с CMJ по Заседаниям** | 2014-05-07 → 2014-05-15 (+8d) |  | 24d? → 19d? |  | 58d → 42d |  |  |
| 331 | Конфиг ДОП | 2014-05-07 → 2014-05-15 (+8d) | 2014-05-12 → 2014-05-19 (+7d) |  |  | 58d → 42d |  |  |
| 332 | Mapper | 2014-05-13 → 2014-05-20 (+7d) | 2014-05-19 → 2014-05-26 (+7d) |  |  | 58d → 42d |  |  |
| 333 | **Настраиваемые коллекции** | 2014-05-23 → 2014-05-27 (+4d) | 2014-06-04 → 2014-06-05 (+1d) |  |  | 68.2d → 67d |  |  |
| 334 | **Конфигурация коллекций** | 2014-05-23 → 2014-05-27 (+4d) | 2014-06-03 → 2014-06-04 (+1d) |  |  | 68.2d → 67d |  |  |
| 335 | Типовая иерархия кастомных папок | 2014-05-23 → 2014-05-27 (+4d) | 2014-06-02 → 2014-06-03 (+1d) |  |  | 68.2d → 67d |  |  |
| 336 | Системные настройки для Зсд | 2014-05-23 → 2014-05-27 (+4d) | 2014-06-02 → 2014-06-03 (+1d) |  |  | 68.2d → 67d |  |  |
| 337 | Доработка расширенного поиска | 2014-05-23 → 2014-05-27 (+4d) | 2014-06-03 → 2014-06-04 (+1d) |  |  | 74.2d → 73d |  |  |
| 338 | Проверка работы | 2014-06-03 → 2014-06-05 (+2d) | 2014-06-04 → 2014-06-05 (+1d) |  |  | 74.2d → 73d |  |  |
| 339 | **Перенос логики сервисов по Зсд** | 2014-05-14 → 2014-05-21 (+7d) | 2014-05-23 → 2014-05-30 (+7d) |  |  | 58d → 53d |  |  |
| 340 | Задание поставлено | 2014-05-14 → 2014-05-21 (+7d) | 2014-05-14 → 2014-05-21 (+7d) |  |  | 42d → 53d |  |  |
| 341 | Пролведение процедуры Revers Engineering для процессов | 2014-05-15 → 2014-05-22 (+7d) | 2014-05-23 → 2014-05-30 (+7d) |  |  | 58d → 53d |  |  |
| 342 | Реализация в слое CMJ-CMSochi | 2014-05-15 → 2014-05-22 (+7d) | 2014-05-23 → 2014-05-30 (+7d) |  |  | 82d → 77d |  |  |
| 346 | **Интеграция с CMJ по Обсуждениям и ознакомлениям** | 2014-05-20 → 2014-05-27 (+7d) |  | 23d? → 18d? |  | 58d → 42d |  |  |
| 347 | Конфиг ДОП | 2014-05-20 → 2014-05-27 (+7d) | 2014-05-22 → 2014-05-29 (+7d) |  |  | 58d → 42d |  |  |
| 348 | Mapper | 2014-05-23 → 2014-05-30 (+7d) | 2014-05-29 → 2014-06-05 (+7d) |  |  | 58d → 42d |  |  |
| 349 | **Настраиваемые коллекции** | 2014-06-02 → 2014-06-06 (+4d) | 2014-06-12 → 2014-06-17 (+5d) |  |  | 68.2d → 65d |  |  |
| 350 | **Конфигурация коллекций** | 2014-06-02 → 2014-06-06 (+4d) | 2014-06-11 → 2014-06-16 (+5d) |  |  | 68.2d → 65d |  |  |

| ID | Task | Start | Finish | Duration | Total float |
| --- | --- | --- | --- | --- | --- |
| 351 | Типовая иерархия кастомных папок | 2014-06-02 → 2014-06-06 (+4d) | 2014-06-10 → 2014-06-13 (+3d) |  | 68.2d → 65d |
| 352 | Доработка расширенного поиска | 2014-06-02 → 2014-06-06 (+4d) | 2014-06-11 → 2014-06-16 (+5d) |  | 68.2d → 65d |
| 353 | Системные настройки для ОО | 2014-06-02 → 2014-06-06 (+4d) | 2014-06-10 → 2014-06-13 (+3d) |  | 69.2d → 66d |
| 354 | Проверка работы | 2014-06-11 → 2014-06-17 (+6d) | 2014-06-12 → 2014-06-17 (+5d) |  | 68.2d → 65d |
| 355 | **Перенос логики сервисов по ОО** | 2014-05-22 → 2014-05-29 (+7d) | 2014-06-03 → 2014-06-10 (+7d) |  | 58d → 53d |
| 356 | Задание поставлено | 2014-05-22 → 2014-05-29 (+7d) | 2014-05-22 → 2014-05-29 (+7d) |  | 43d → 54d |
| 357 | Пролведение процедуры Revers Engineering для процессов | 2014-05-26 → 2014-06-02 (+7d) | 2014-06-03 → 2014-06-10 (+7d) |  | 58d → 53d |
| 358 | Реализация в слое CMJ-CMSochi | 2014-05-26 → 2014-06-02 (+7d) | 2014-06-03 → 2014-06-10 (+7d) |  | 58d → 53d |
| 362 | **Интеграция с CMJ по "Кейсам"** | 2014-05-30 → 2014-06-06 (+7d) |  | 25d? → 20d? | 53d → 42d |
| 363 | Конфиг ДОП | 2014-05-30 → 2014-06-06 (+7d) | 2014-06-03 → 2014-06-10 (+7d) |  | 58d → 42d |
| 364 | Mapper | 2014-06-04 → 2014-06-11 (+7d) | 2014-06-10 → 2014-06-17 (+7d) |  | 62d → 42d |
| 365 | **Настраиваемые коллекции** | 2014-06-11 → 2014-06-18 (+7d) | 2014-06-20 → 2014-06-27 (+7d) |  | 62d → 42d |
| 366 | **Конфигурация коллекций** | 2014-06-11 → 2014-06-18 (+7d) | 2014-06-19 → 2014-06-26 (+7d) |  | 62d → 42d |
| 367 | Типовая иерархия кастомных папок | 2014-06-11 → 2014-06-18 (+7d) | 2014-06-18 → 2014-06-25 (+7d) |  | 62d → 42d |
| 368 | Доработка расширенного поиска | 2014-06-11 → 2014-06-18 (+7d) | 2014-06-19 → 2014-06-26 (+7d) |  | 62d → 42d |
| 369 | Системные настройки для "Кейсов" | 2014-06-11 → 2014-06-18 (+7d) | 2014-06-18 → 2014-06-25 (+7d) |  | 63d → 43d |
| 370 | Проверка работы | 2014-06-20 → 2014-06-27 (+7d) | 2014-06-20 → 2014-06-27 (+7d) |  | 62d → 57d |
| 371 | **Перенос логики сервисов по "Кейсам"** | 2014-06-03 → 2014-06-10 (+7d) | 2014-06-12 → 2014-06-19 (+7d) |  | 58d → 53d |
| 372 | Задание поставлено | 2014-06-03 → 2014-06-10 (+7d) | 2014-06-03 → 2014-06-10 (+7d) |  | 58d → 53d |
| 373 | Пролведение процедуры Revers Engineering для процессов | 2014-06-04 → 2014-06-11 (+7d) | 2014-06-12 → 2014-06-19 (+7d) |  | 58d → 53d |
| 374 | Реализация в слое CMJ-CMSochi | 2014-06-04 → 2014-06-11 (+7d) | 2014-06-12 → 2014-06-19 (+7d) |  | 58d → 53d |
| 378 | **Интеграция с CMJ ПКД** | 2014-06-12 → 2014-06-19 (+7d) | 2014-06-26 → 2014-07-03 (+7d) |  | 58d → 53d |
| 379 | **Перенос логики сервисов по ОО** | 2014-06-12 → 2014-06-19 (+7d) | 2014-06-26 → 2014-07-03 (+7d) |  | 58d → 53d |
| 380 | Задание поставлено | 2014-06-12 → 2014-06-19 (+7d) | 2014-06-12 → 2014-06-19 (+7d) |  | 58d → 53d |
| 381 | Пролведение процедуры Revers Engineering для процессов | 2014-06-13 → 2014-06-20 (+7d) | 2014-06-26 → 2014-07-03 (+7d) |  | 58d → 53d |
| 382 | Реализация в слое CMJ-CMSochi | 2014-06-13 → 2014-06-20 (+7d) | 2014-06-26 → 2014-07-03 (+7d) |  | 58d → 53d |
| 509 | **Тестирование** | 2014-03-21 → 2014-03-19 (-2d) |  | 79d? → 81d? |  |
| 510 | **Функциональное тестирование** | 2014-03-21 → 2014-03-19 (-2d) |  | 64d? → 66d? | 57d → 59d |
| 511 | Подготовка ПМИ | 2014-03-21 → 2014-03-19 (-2d) | 2014-03-27 → 2014-03-25 (-2d) |  | 57d → 59d |
| 512 | Разработка "сценариев тестирования" | 2014-03-21 → 2014-03-19 (-2d) | 2014-04-10 → 2014-04-08 (-2d) |  | 62d → 64d |
| 513 | Разработка модели нагрузки для тестирования | 2014-03-28 → 2014-03-26 (-2d) | 2014-04-10 → 2014-04-08 (-2d) |  | 62d → 64d |
| 514 | Адаптация автоматизированных сценариев от СМ4 для создания нагрузки | 2014-03-28 → 2014-03-26 (-2d) | 2014-05-05 → 2014-04-29 (-6d) |  | 57d → 59d |
| 529 | **Подготовка документации** | 2014-03-21 → 2014-03-19 (-2d) | 2014-07-15 → 2014-07-11 (-4d) |  | 45d → 47d |
| 530 | Разработка документа "Концепция системы " | 2014-03-21 → 2014-03-19 (-2d) | 2014-05-20 → 2014-05-16 (-4d) |  | 45d → 47d |
| 531 | Разработка "Software Architecture Document" | 2014-05-21 → 2014-05-19 (-2d) | 2014-07-15 → 2014-07-11 (-4d) |  | 45d → 47d |
| 532 | Документы подготовлены | 2014-07-15 → 2014-07-11 (-4d) | 2014-07-15 → 2014-07-11 (-4d) |  | 45d → 47d |

## Version 63 (saved 2014-03-27)

Last finish 2014-09-16 → 2014-12-02 (+77d). Complete tasks 147 → 176.

Added:

| ID | Task | Duration | Start | Finish | Predecessors | Resources |
| --- | --- | --- | --- | --- | --- | --- |
| 152 | Примененеие механизма замены @-формул | 3d | 2014-03-27 | 2014-03-31 | 151FS+30d | Глеб Ноздрачев |

Removed: 218 Получена версия CM4.X c WF движком

Changed:

| ID | Task | Finish | Duration | Complete | Total float | Other |
| --- | --- | --- | --- | --- | --- | --- |
| 1 | **Разработка версии CM4/5** | 2014-09-16 → 2014-12-02 (+77d) | 351d? → 406d? | 36% → 38% |  | baseline start none → 2013-04-22; baseline finish none → 2014-09-16 |
| 2 | Принято решение о начале разработки |  |  |  |  | baseline start none → 2013-04-22; baseline finish none → 2013-04-22 |
| 3 | Управление проектом |  |  |  | 117d → 84d | baseline start none → 2013-04-22; baseline finish none → 2014-05-21 |
| 4 | **Управление требованиями** |  |  |  | 0d → 55d | baseline start none → 2013-05-27; baseline finish none → 2014-09-16 |
| 5 | Выделен аналитик на проект |  |  |  |  | baseline start none → 2013-05-27; baseline finish none → 2013-05-27 |
| 6 | Формирование скоупа проекта _ верхний уровень |  |  |  |  | baseline start none → 2013-05-27; baseline finish none → 2013-06-14 |
| 7 | Скоуп на систему сформирован и утвержден |  |  |  |  | baseline start none → 2013-06-21; baseline finish none → 2013-06-21 |
| 8 | Сопровождение требований |  |  |  | 0d → 55d | baseline start none → 2013-06-24; baseline finish none → 2014-09-16 |
| 9 | **Создание модуля "Делопроизводство" (документоориентированная среда)** | 2014-08-13 → 2014-12-02 (+111d) | 327d? → 406d? | 38% → 40% | 24d → 0d | baseline start none → 2013-04-22; baseline finish none → 2014-08-13 |
| 10 | Первичные требования для создания модуля "Делопроизводство" подготовлены |  |  |  | 172.09d → 185.91d | baseline start none → 2013-04-22; baseline finish none → 2013-04-22 |
| 11 | **Апробация идей прототипа** |  |  |  |  | baseline start none → 2013-04-29; baseline finish none → 2013-06-06 |
| 12 | Пирожков доступен |  |  |  | 378d → 326d | baseline start none → 2013-06-03; baseline finish none → 2013-06-03 |
| 13 | Проведение предварительных испытаний системы |  |  |  |  | baseline start none → 2013-04-29; baseline finish none → 2013-05-16 |
| 14 | Описание обработки ВХ. Док. На примере технологий прототипа |  |  |  |  | baseline start none → 2013-05-20; baseline finish none → 2013-06-06 |
| 15 | **Настройка инфраструктуры** |  |  |  |  | baseline start none → 2013-05-20; baseline finish none → 2013-07-09 |
| 16 | Настройка непрерывной интеграции |  |  |  |  | baseline start none → 2013-05-20; baseline finish none → 2013-05-23 |
| 17 | Поддержка UNIT-тестирования и интеграционного тестирования на уроне среды непрерывной интеграции |  |  |  | 235.94d → 186d | baseline start none → 2013-06-04; baseline finish none → 2013-06-10 |
| 18 | Репакеджинг проекта |  |  |  |  | baseline start none → 2013-05-27; baseline finish none → 2013-05-29 |
| 19 | Автоматическое заполнение параметров JDBC через Maven |  |  |  |  | baseline start none → 2013-07-05; baseline finish none → 2013-07-09 |
| 20 | **Проектирование и формирование ядра системы** | 2014-08-13 → 2014-12-02 (+111d) | 327d? → 406d? | 45% → 47% | 24d → 0d | baseline start none → 2013-04-22; baseline finish none → 2014-08-13 |
| 21 | **Определение структуры модуля Делопроизводство** |  |  |  |  | baseline start none → 2013-04-22; baseline finish none → 2013-05-31 |
| 22 | Разбивка на слои |  |  |  |  | baseline start none → 2013-04-22; baseline finish none → 2013-04-26 |
| 23 | Конфигурации, загрузка и инициализация системы в базовой конфигурации |  |  |  |  | baseline start none → 2013-04-29; baseline finish none → 2013-05-08 |
| 24 | Базовая конфигурация объектов системы |  |  |  |  | baseline start none → 2013-05-13; baseline finish none → 2013-05-17 |
| 25 | Юнит-тестирование - базис |  |  |  |  | baseline start none → 2013-05-17; baseline finish none → 2013-05-24 |
| 26 | Базовая имплементация слоя DAO |  |  |  |  | baseline start none → 2013-05-20; baseline finish none → 2013-05-24 |
| 27 | Обеспечение программных компонет верификации первой очереди |  |  |  |  | baseline start none → 2013-05-27; baseline finish none → 2013-05-31 |
| 28 | **DAO** |  |  |  |  | baseline start none → 2013-06-03; baseline finish none → 2013-07-31 |
| 29 | DAO для бизнес-объектов |  |  |  |  | baseline start none → 2013-06-03; baseline finish none → 2013-06-11 |
| 30 | DAO для коллекций |  |  |  |  | baseline start none → 2013-06-12; baseline finish none → 2013-07-04 |
| 31 | Функционал системы готов для проведения проектирования интеграции с GUI СМ4 |  |  |  |  | baseline start none → 2013-06-24; baseline finish none → 2013-06-24 |
| 32 | DAO - утилитарные поля |  |  |  |  | baseline start none → 2013-06-25; baseline finish none → 2013-07-08 |
| 33 | DAO - кэш уровня транзакции |  |  |  |  | baseline start none → 2013-07-25; baseline finish none → 2013-07-31 |
| 34 | CRUD-сервис для бизнес-объектов |  |  |  |  | baseline start none → 2013-06-11; baseline finish none → 2013-06-24 |
| 35 | Расширение CRUD для интеграции с CMJ |  |  |  |  | baseline start none → 2013-08-08; baseline finish none → 2013-08-14 |
| 36 | Поддержка отсортированных дочерних бизнес-объектов |  |  |  | 274d → 264d | baseline start none → 2013-08-21; baseline finish none → 2013-08-27 |
| 37 | Настройка Datasources/Jaas сервера приложений средствами Maven |  |  |  |  | baseline start none → 2013-07-05; baseline finish none → 2013-07-08 |
| 38 | Рефакторинг |  |  |  |  | baseline start none → 2013-07-03; baseline finish none → 2013-07-08 |
| 39 | **Права доступа** |  |  |  |  | baseline start none → 2013-06-12; baseline finish none → 2013-09-10 |
| 40 | Права - оптимизация хранения (проектирование) |  |  |  |  | baseline start none → 2013-06-12; baseline finish none → 2013-07-23 |
| 41 | Описание существующими декларативными средствами конфигурации |  |  |  |  | baseline start none → 2013-07-16; baseline finish none → 2013-08-09 |
| 42 | Автофильтрация |  |  |  |  | baseline start none → 2013-07-29; baseline finish none → 2013-08-16 |
| 43 | Пересчёт прав доступа |  |  |  | 264d → 254d | baseline start none → 2013-08-19; baseline finish none → 2013-09-10 |
| 44 | **Workflow - интеграция с Activiti** |  |  |  |  | baseline start none → 2013-06-07; baseline finish none → 2013-10-11 |
| 45 | Проектирование |  |  |  |  | baseline start none → 2013-06-07; baseline finish none → 2013-07-24 |
| 46 | готова постановка по БП |  |  |  |  | baseline start none → 2013-09-09; baseline finish none → 2013-09-09 |
| 47 | Разработка |  |  |  |  | baseline start none → 2013-09-16; baseline finish none → 2013-10-11 |
| 48 | **Действия** |  |  |  |  | baseline start none → 2013-09-18; baseline finish none → 2013-10-11 |
| 49 | Концепция/Архитектура |  |  |  |  | baseline start none → 2013-09-18; baseline finish none → 2013-09-23 |
| 50 | Реализация |  |  |  |  | baseline start none → 2013-09-24; baseline finish none → 2013-10-11 |
| 51 | **Наследование ???** |  |  |  |  | baseline start none → 2013-08-09; baseline finish none → 2013-08-20 |
| 52 | Проектирование функции "Наследование" |  |  |  |  | baseline start none → 2013-08-09; baseline finish none → 2013-08-12 |
| 53 | Разработка функции "Наследование" |  |  |  |  | baseline start none → 2013-08-13; baseline finish none → 2013-08-20 |
| 54 | **Коллекции** |  |  |  |  | baseline start none → 2013-05-29; baseline finish none → 2013-10-18 |
| 55 | Коллекции - конфигурация |  |  |  |  | baseline start none → 2013-05-29; baseline finish none → 2013-05-31 |
| 56 | DAO - язык запросов коллекций |  |  |  |  | baseline start none → 2013-05-29; baseline finish none → 2013-06-17 |
| 57 | Сервис получения и получения счетчиков |  |  |  |  | baseline start none → 2013-05-29; baseline finish none → 2013-05-31 |
| 58 | Принято решение о работе с ПКД |  |  |  |  | baseline start none → 2013-10-01; baseline finish none → 2013-10-01 |
| 59 | ПКД ???? |  |  |  |  | baseline start none → 2013-10-01; baseline finish none → 2013-10-18 |
| 60 | **Бизнес-объекты (иерархии доменных объектов)** |  |  |  |  | baseline start none → 2013-07-24; baseline finish none → 2013-10-10 |
| 61 | Проектирование |  |  |  |  | baseline start none → 2013-07-24; baseline finish none → 2013-08-16 |
| 62 | Реализация1 |  |  |  |  | baseline start none → 2013-07-31; baseline finish none → 2013-08-02 |
| 63 | Подготовка описания по обновленным принциапам работы |  |  |  |  | baseline start none → 2013-08-16; baseline finish none → 2013-10-10 |
| 64 | **Поиск** |  |  |  |  | baseline start none → 2013-07-30; baseline finish none → 2014-03-07 |
| 65 | Идея поиска оформлена |  |  |  |  | baseline start none → 2013-09-09; baseline finish none → 2013-09-09 |
| 66 | Поиск |  |  |  |  | baseline start none → 2013-07-30; baseline finish none → 2013-11-06 |
| 67 | Полнотекстовый поиск |  |  |  |  | baseline start none → 2013-11-07; baseline finish none → 2014-03-07 |
| 68 | **Слой сопряжения CMJ server (CM4)** | 2014-07-18 → 2014-12-02 (+137d) | 239d? → 336d? | 26% → 32% | 42d → 0d | baseline start none → 2013-08-05; baseline finish none → 2014-07-18 |
| 69 | Решение принято и ресурсы достуны |  |  |  |  | baseline start none → 2013-08-05; baseline finish none → 2013-08-05 |
| 70 | Реализация коннекторов к платформе |  |  |  |  | baseline start none → 2013-08-08; baseline finish none → 2013-12-23 |

| ID | Task | Finish | Duration | Complete | Total float | Other |
| --- | --- | --- | --- | --- | --- | --- |
| 71 | Описание решения есть. Можно начинать разработку |  |  |  |  | baseline start none → 2013-08-28; baseline finish none → 2013-08-28 |
| 72 | Проработка задания выполнена, можно привлекать разработчиков БТЛ |  |  |  |  | baseline start none → 2013-09-18; baseline finish none → 2013-09-18 |
| 73 | Рефакторинг СМ 4.2.1 выполнен |  |  |  |  | baseline start none → 2013-09-30; baseline finish none → 2013-09-30 |
| 74 | Структура хранения определена |  |  |  |  | baseline start none → 2013-10-28; baseline finish none → 2013-10-28 |
| 75 | Проектирование завершено - готовность к интеграции |  |  |  |  | baseline start none → 2013-09-23; baseline finish none → 2013-09-23 |
| 76 | **Интеграция с CMJ по Внутренним Документам** | 2014-02-18 → 2014-03-31 (+41d) | 99d? → 128d? | 91% → 96% | 147d → 173d | baseline start none → 2013-09-23; baseline finish none → 2014-03-31 |
| 77 | MapperBuilder |  |  |  |  | baseline start none → 2013-09-23; baseline finish none → 2013-10-30 |
| 78 | Уточнение расширенной постановки по MapperBuilder выполнена |  |  |  |  | baseline start none → 2013-09-27; baseline finish none → 2013-09-27 |
| 79 | Конфиг ДОП СС |  |  |  |  | baseline start none → 2013-09-25; baseline finish none → 2013-09-26 |
| 80 | Mapper СС |  |  |  |  | baseline start none → 2013-10-31; baseline finish none → 2013-11-01 |
| 81 | Конфиг ДОП Каталога |  |  |  |  | baseline start none → 2013-09-24; baseline finish none → 2013-09-27 |
| 82 | Mapper Каталога |  |  |  |  | baseline start none → 2013-12-03; baseline finish none → 2013-12-04 |
| 83 | Конфиг ДОП Портала |  |  |  |  | baseline start none → 2013-09-25; baseline finish none → 2013-09-27 |
| 84 | Mapper Портала |  |  |  |  | baseline start none → 2013-10-31; baseline finish none → 2013-11-01 |
| 85 | Конфиг ДОП СО |  |  |  |  | baseline start none → 2013-09-23; baseline finish none → 2013-09-23 |
| 86 | Maper СО |  |  |  |  | baseline start none → 2013-12-05; baseline finish none → 2013-12-06 |
| 87 | Конфиг ДОП ВнД |  |  |  |  | baseline start none → 2013-09-27; baseline finish none → 2013-10-01 |
| 88 | **Mapper ВнД** |  |  |  |  | baseline start none → 2014-01-27; baseline finish none → 2014-02-06 |
| 89 | Приступили к выполнению антикризисного плана |  |  |  |  | baseline start none → 2014-01-27; baseline finish none → 2014-01-27 |
| 90 | Отладка Маппера Поручения |  |  |  |  | baseline start none → 2014-01-27; baseline finish none → 2014-01-27 |
| 91 | Отладка Маппера исполнения |  |  |  |  | baseline start none → 2014-01-27; baseline finish none → 2014-01-29 |
| 92 | Вспомогательная коллекция "responce" |  |  |  |  | baseline start none → 2014-01-27; baseline finish none → 2014-01-29 |
| 93 | Отладка мапперов |  |  |  |  | baseline start none → 2014-01-30; baseline finish none → 2014-02-04 |
| 94 | UI - коллекции (7) |  |  |  |  | baseline start none → 2014-01-31; baseline finish none → 2014-02-05 |
| 95 | CollectionProvider методы получения только категорий |  |  |  |  | baseline start none → 2014-01-31; baseline finish none → 2014-02-06 |
| 96 | **Доработка ВнД** | 2014-02-17 → 2014-03-25 (+36d) | 16d → 42d | 99% → 86% | 148d → 32.8d | baseline start none → 2014-01-27; baseline finish none → 2014-02-17 |
| 97 | Поддержка работы с Вложениями |  |  |  |  | baseline start none → 2014-02-04; baseline finish none → 2014-02-06 |
| 98 | Поддержка работы с ReachText |  |  |  |  | baseline start none → 2014-01-27; baseline finish none → 2014-01-27 |
| 99 | Правила вычисления дправ доступа - реализация |  |  |  |  | baseline start none → 2014-02-03; baseline finish none → 2014-02-06 |
| 100 | Поддержка полнотекстового поиска |  |  |  |  | baseline start none → 2014-02-07; baseline finish none → 2014-02-14 |
| 101 | Базовый сервис поддержки сценариев (+DOEL) |  |  |  |  | baseline start none → 2014-02-07; baseline finish none → 2014-02-17 |
| 102 | **Перенос Логики работы агентов** | 2014-02-07 → 2014-03-25 (+46d) | 10d → 42d | 97% → 79% | 154d → 32.8d | baseline start none → 2014-01-27; baseline finish none → 2014-02-07 |
| 103 | Подбор варианта реализации |  |  |  |  | baseline start none → 2014-01-27; baseline finish none → 2014-02-04 |
| 104 | Реализация и отладка переноса логики | 2014-02-07 → 2014-03-25 (+46d) | 3d → 35d | 90% → 75% | 154d → 32.8d | baseline start none → 2014-02-05; baseline finish none → 2014-02-07 |
| 105 | Кофиг ДОП СпО |  |  |  |  | baseline start none → 2013-09-23; baseline finish none → 2013-09-23 |
| 106 | Mapper СпО |  |  |  |  | baseline start none → 2013-11-04; baseline finish none → 2013-11-06 |
| 107 | Аутентификация |  |  |  |  | baseline start none → 2014-02-04; baseline finish none → 2014-02-10 |
| 108 | **Настраиваемые коллекции** |  |  |  |  | baseline start none → 2013-10-01; baseline finish none → 2014-02-06 |
| 109 | **Системные настройки** |  |  |  |  | baseline start none → 2013-10-01; baseline finish none → 2013-11-28 |
| 110 | Builder коллекций |  |  |  |  | baseline start none → 2013-10-01; baseline finish none → 2013-10-29 |
| 111 | XSD-схема XML-настроек |  |  |  |  | baseline start none → 2013-10-29; baseline finish none → 2013-11-01 |
| 112 | Чтение XML настроек через спец-Mapper |  |  |  |  | baseline start none → 2013-11-01; baseline finish none → 2013-11-06 |
| 113 | Mapper папок |  |  |  |  | baseline start none → 2013-11-26; baseline finish none → 2013-11-28 |
| 114 | **Конфигурация коллекций (логин)** |  |  |  |  | baseline start none → 2013-11-29; baseline finish none → 2013-12-12 |
| 115 | Типовая иерархия кастомных папок (3шт) |  |  |  |  | baseline start none → 2013-11-29; baseline finish none → 2013-12-05 |
| 116 | Системные настройки для ВнД |  |  |  |  | baseline start none → 2013-12-06; baseline finish none → 2013-12-12 |
| 117 | Проверка работы |  |  |  |  | baseline start none → 2013-12-13; baseline finish none → 2013-12-13 |
| 118 | Конфигурация корневой папки навигатора |  |  |  |  | baseline start none → 2014-02-06; baseline finish none → 2014-02-06 |
| 119 | **Разработка адаптеров для Вн** |  |  |  |  | baseline start none → 2013-09-30; baseline finish none → 2013-10-28 |
| 120 | Задание по View и Session поставлена |  |  |  |  | baseline start none → 2013-09-30; baseline finish none → 2013-09-30 |
| 121 | Адаптеры View, Session проектирование |  |  |  |  | baseline start none → 2013-09-30; baseline finish none → 2013-10-14 |
| 122 | Разработка логики адаптеров view&session |  |  |  |  | baseline start none → 2013-10-15; baseline finish none → 2013-10-28 |
| 123 | Разработка архитектуры дя адаптеров database |  |  |  |  | baseline start none → 2013-09-30; baseline finish none → 2013-10-04 |
| 124 | Разработка адаптеров database |  |  |  |  | baseline start none → 2013-10-07; baseline finish none → 2013-10-25 |
| 125 | Задание по Database и Document поставлена |  |  |  |  | baseline start none → 2013-10-04; baseline finish none → 2013-10-04 |
| 126 | Разработка адаптеров DOCUMENT |  |  |  |  | baseline start none → 2013-10-07; baseline finish none → 2013-10-25 |
| 127 | **Разработка коллекций (инициализация)** | 2014-01-24 A |  | 99% → 100% | 164d → none | baseline start none → 2013-10-29; baseline finish none → 2014-01-24 |
| 128 | Описание полей документов Вн |  |  |  |  | baseline start none → 2013-10-29; baseline finish none → 2013-10-30 |
| 129 | Коллекции Портала |  |  |  |  | baseline start none → 2013-10-29; baseline finish none → 2013-11-04 |
| 130 | Инструктаж по @-формулам проведен |  |  |  |  | baseline start none → 2013-11-04; baseline finish none → 2013-11-04 |
| 131 | Коллекции СС |  |  |  |  | baseline start none → 2013-11-05; baseline finish none → 2013-11-11 |
| 132 | Коллекции Каталога |  |  |  |  | baseline start none → 2013-11-05; baseline finish none → 2013-11-11 |
| 133 | Коллекции СО |  |  |  |  | baseline start none → 2013-11-05; baseline finish none → 2013-11-11 |
| 134 | Коллекции СпО |  |  |  |  | baseline start none → 2013-11-12; baseline finish none → 2013-11-19 |
| 135 | **Разработка коллекций (логин)** | 2014-01-24 A |  | 99% → 100% | 164d → none | baseline start none → 2013-12-24; baseline finish none → 2014-01-24 |
| 136 | Инициализация прошла |  |  |  |  | baseline start none → 2013-12-24; baseline finish none → 2013-12-24 |
| 137 | Определение состава коллекций после инициализации Вн |  |  |  |  | baseline start none → 2013-12-24; baseline finish none → 2013-12-24 |
| 138 | Коллекции Портала |  |  |  |  | baseline start none → 2013-12-24; baseline finish none → 2014-01-09 |
| 139 | Коллекции СС |  |  |  |  | baseline start none → 2014-01-10; baseline finish none → 2014-01-16 |
| 140 | Коллекции Каталога |  |  |  |  | baseline start none → 2014-01-10; baseline finish none → 2014-01-16 |

| ID | Task | Start | Finish | Duration | Complete | Total float | Predecessors | Other |
| --- | --- | --- | --- | --- | --- | --- | --- | --- |
| 141 | Коллекции СО |  |  |  |  |  |  | baseline start none → 2014-01-10; baseline finish none → 2014-01-16 |
| 142 | Коллекции СпО |  |  |  |  |  |  | baseline start none → 2014-01-17; baseline finish none → 2014-01-24 |
| 143 | Коллекции ВнД |  | 2014-01-24 A |  | 95% → 100% | 164d → none |  | baseline start none → 2014-01-17; baseline finish none → 2014-01-24 |
| 144 | ВнД |  |  |  |  | 0d → 60d |  | baseline start none → 2014-02-10; baseline finish none → 2014-02-10 |
| 145 | **Преобразование структуры зранения для Поруч и Исп.** | 2014-02-12 A | 2014-02-18 A |  | 0% → 100% | 147d → none |  | baseline start none → 2014-02-12; baseline finish none → 2014-02-18 |
| 146 | Принято решение по упрощению ДОП | 2014-02-12 A | 2014-02-12 A |  | 0% → 100% | 157d → none |  | baseline start none → 2014-02-12; baseline finish none → 2014-02-12 |
| 147 | Адаптация ДОП | 2014-02-12 A | 2014-02-13 A |  | 0% → 100% | 157d → none |  | baseline start none → 2014-02-12; baseline finish none → 2014-02-13 |
| 148 | Адаптация коллекций | 2014-02-14 A | 2014-02-18 A |  | 0% → 100% | 157d → none |  | baseline start none → 2014-02-14; baseline finish none → 2014-02-18 |
| 149 | **Адаптация CMJ-server** |  | 2014-02-12 → 2014-03-31 (+47d) | 2d → 35d | 50% → 57% | 151d → 118d |  | baseline start none → 2014-02-11; baseline finish none → 2014-03-31 |
| 150 | Подмена РБД для CMJ-Server |  |  |  |  |  |  | baseline start none → 2014-02-11; baseline finish none → 2014-02-12 |
| 151 | Имплементация аналогов @-функций для Sochi-server | 2014-02-11 A | 2014-02-12 A |  | 0% → 100% | 151d → none |  | baseline start none → 2014-02-11; baseline finish none → 2014-02-12 |
| 153 | Объединение War |  |  |  |  |  |  | baseline start none → 2014-02-11; baseline finish none → 2014-02-11 |
| 154 | **Инструмент заполнения** |  | 2014-02-14 A |  | 18% → 100% | 149d → none |  | baseline start none → 2014-02-11; baseline finish none → 2014-02-14 |
| 155 | **Заливка данных для демонстрации** |  |  |  |  |  |  | baseline start none → 2014-02-11; baseline finish none → 2014-02-14 |
| 156 | Подготовка задачи |  |  |  |  |  |  | baseline start none → 2014-02-11; baseline finish none → 2014-02-11 |
| 157 | Написание скриптов заливки |  |  |  |  |  |  | baseline start none → 2014-02-12; baseline finish none → 2014-02-14 |
| 158 | Инструмент заполнения Каталога | 2014-02-11 A | 2014-02-13 A |  | 0% → 100% | 150d → none |  | baseline start none → 2014-02-11; baseline finish none → 2014-02-13 |
| 159 | Инструмент заполнения СС | 2014-02-11 A | 2014-02-13 A |  | 0% → 100% | 150d → none |  | baseline start none → 2014-02-11; baseline finish none → 2014-02-13 |
| 160 | Инструмент заполнения Портала | 2014-02-11 A | 2014-02-13 A |  | 0% → 100% | 150d → none |  | baseline start none → 2014-02-11; baseline finish none → 2014-02-13 |
| 161 | Инструмент заполнения СО | 2014-02-11 A | 2014-02-13 A |  | 0% → 100% | 150d → none |  | baseline start none → 2014-02-11; baseline finish none → 2014-02-13 |
| 162 | Инструмент заполнения СпО | 2014-02-11 A | 2014-02-13 A |  | 0% → 100% | 150d → none |  | baseline start none → 2014-02-11; baseline finish none → 2014-02-13 |
| 163 | Проверка заполнения | 2014-02-11 A | 2014-02-13 A |  | 0% → 100% | 150d → none |  | baseline start none → 2014-02-11; baseline finish none → 2014-02-13 |
| 164 | **Интеграция с CMJ по Входящим документам** | 2014-02-06 A | 2014-03-14 → 2014-05-07 (+54d) | 26.8d → 62.2d | 0% → 59% | 47d → 148.8d |  | baseline start none → 2014-02-06; baseline finish none → 2014-04-02 |
| 165 | Задание выдано |  |  |  |  | 53d → 211d |  | baseline start none → 2014-02-06; baseline finish none → 2014-02-06 |
| 166 | Конфиг ДОП | 2014-02-06 A | 2014-02-13 A |  | 0% → 100% | 47d → none |  | baseline start none → 2014-02-06; baseline finish none → 2014-02-13 |
| 167 | Mapper | 2014-02-14 A | 2014-02-20 A |  | 0% → 100% | 68.2d → none |  | baseline start none → 2014-02-14; baseline finish none → 2014-02-20 |
| 168 | **Перенос логики сервисов по вхД** | 2014-02-20 A | 2014-03-14 → 2014-05-07 (+54d) | 16d → 51.4d | 0% → 3% | 68.2d → 87.8d |  | baseline start none → 2014-02-20; baseline finish none → 2014-04-02 |
| 169 | Задача поставлена | 2014-02-20 A | 2014-02-21 A |  | 0% → 100% | 68.2d → none |  | baseline start none → 2014-02-20; baseline finish none → 2014-02-21 |
| 170 | Пролведение процедуры Revers Engineering для процессов | 2014-02-21 → 2014-03-26 (+33d) | 2014-03-07 → 2014-04-16 (+40d) | 10d → 15.2d |  | 68.2d → 32.8d | 169 → 169, 104 | baseline start none → 2014-02-21; baseline finish none → 2014-03-14 |
| 171 | Реализация в слое CMJ-CMSochi | 2014-03-07 → 2014-04-16 (+40d) | 2014-03-14 → 2014-05-07 (+54d) | 5d → 13d |  | 68.2d → 32.8d |  | baseline start none → 2014-03-17; baseline finish none → 2014-04-02 |
| 172 | **Разработка коллекций** | 2014-02-14 A |  |  | 0% → 95% | 47d → 63d |  | baseline start none → 2014-02-14; baseline finish none → 2014-03-10 |
| 173 | Коллекции внутрисистемные | 2014-02-14 A | 2014-02-26 A |  | 0% → 100% | 73d → none |  | baseline start none → 2014-02-14; baseline finish none → 2014-02-26 |
| 174 | Коллекции GUI | 2014-02-14 A | 2014-02-27 A |  | 0% → 100% | 53d → none |  | baseline start none → 2014-02-14; baseline finish none → 2014-02-27 |
| 175 | **Настраиваемые коллекции** | 2014-02-28 A |  |  | 0% → 89% | 53d → 63d |  | baseline start none → 2014-02-28; baseline finish none → 2014-03-10 |
| 176 | **Конфигурация коллекций** | 2014-02-28 A |  |  | 0% → 97% | 53d → 66d |  | baseline start none → 2014-02-28; baseline finish none → 2014-03-05 |
| 177 | Типовая иерархия кастомных папок (3шт) | 2014-02-28 A | 2014-03-03 A |  | 0% → 100% | 53d → none |  | baseline start none → 2014-02-28; baseline finish none → 2014-03-03 |
| 178 | Системные настройки для Вх | 2014-03-04 A |  |  | 0% → 90% | 53d → 66d |  | baseline start none → 2014-03-04; baseline finish none → 2014-03-05 |
| 179 | Проверка работы | 2014-02-28 A | 2014-03-04 A |  | 0% → 100% | 54d → none |  | baseline start none → 2014-02-28; baseline finish none → 2014-03-04 |
| 180 | Доработка расширенного поиска | 2014-02-28 A |  |  | 0% → 80% | 65d → 63d |  | baseline start none → 2014-02-28; baseline finish none → 2014-03-10 |
| 181 | Интеграция по Вх выполнена |  |  |  |  | 65d → 120d |  | baseline start none → 2014-03-10; baseline finish none → 2014-03-10 |
| 182 | **Подключение механизма контроля доступа** |  |  |  |  | 120d → 175d |  | baseline start none → 2014-03-20; baseline finish none → 2014-03-27 |
| 183 | Доступность Ноздрачева |  |  |  |  | 120d → 175d |  | baseline start none → 2014-03-20; baseline finish none → 2014-03-20 |
| 184 | создание типовых матриц доступа |  |  |  |  | 120d → 175d |  | baseline start none → 2014-03-20; baseline finish none → 2014-03-27 |
| 185 | **Интеграция с CMJ по Договорам** |  | 2014-03-31 → 2014-05-23 (+53d) | 21.8d → 58d | 5% → 15% | 118.2d → 137d |  | baseline start none → 2014-02-27; baseline finish none → 2014-04-17 |
| 186 | Определен исполнитель по составлению конфигураций |  |  |  |  | 47d → 193d |  | baseline start none → 2014-02-27; baseline finish none → 2014-02-27 |
| 187 | Проектирование и получение оценки работ |  |  |  |  | 47d → 193d |  | baseline start none → 2014-02-28; baseline finish none → 2014-03-03 |
| 188 | Конфиг ДОП | 2014-03-04 A | 2014-03-06 A |  | 0% → 100% | 47d → none |  | baseline start none → 2014-03-04; baseline finish none → 2014-03-06 |
| 189 | Mapper |  | 2014-03-14 A |  | 50% → 100% | 122d → none |  | baseline start none → 2014-03-07; baseline finish none → 2014-03-14 |
| 190 | **Настраиваемые коллекции** | 2014-03-17 A | 2014-03-25 → 2014-04-08 (+14d) | 7d → 17d | 0% → 33% | 122d → 167d |  | baseline start none → 2014-03-17; baseline finish none → 2014-03-25 |
| 191 | **Конфигурация коллекций** |  | 2014-03-21 → 2014-04-07 (+17d) | 5d → 16d |  | 122d → 167d |  | baseline start none → 2014-03-17; baseline finish none → 2014-03-21 |
| 192 | Типовая иерархия кастомных папок (3шт) |  | 2014-03-21 → 2014-03-31 (+10d) | 5d → 8d |  | 122d → 167d |  | resources Евгений Баланенко → Евгений Сафроненко; Тимофей Билый; baseline start none → 2014-03-17; baseline finish none → 2014-03-21 |
| 193 | Системные настройки для Дгв | 2014-03-17 → 2014-04-01 (+15d) | 2014-03-21 → 2014-04-07 (+17d) |  |  | 123d → 167d | 192SS → 192 | resources Евгений Баланенко → Евгений Сафроненко; Тимофей Билый; baseline start none → 2014-03-17; baseline finish none → 2014-03-21 |
| 194 | Проверка работы | 2014-03-24 → 2014-04-08 (+15d) | 2014-03-24 → 2014-04-08 (+15d) |  |  | 123d → 167d |  | baseline start none → 2014-03-24; baseline finish none → 2014-03-24 |
| 195 | Доработка расширенного поиска | 2014-03-17 A | 2014-03-25 A |  | 0% → 100% | 122d → none |  | baseline start none → 2014-03-17; baseline finish none → 2014-03-25 |
| 196 | Конфигурация для модуля "Договора" получена | 2014-03-24 A | 2014-03-24 A |  | 0% → 100% | 123d → none |  | baseline start none → 2014-03-24; baseline finish none → 2014-03-24 |
| 197 | **Перенос логики сервисов по Дгв** | 2014-03-14 → 2014-05-07 (+54d) | 2014-03-31 → 2014-05-23 (+53d) |  |  | 68.2d → 87.8d |  | baseline start none → 2014-04-03; baseline finish none → 2014-04-17 |
| 198 | Задача поставлена | 2014-03-14 → 2014-05-07 (+54d) | 2014-03-17 → 2014-05-08 (+52d) |  |  | 68.2d → 87.8d |  | baseline start none → 2014-04-03; baseline finish none → 2014-04-03 |
| 199 | Пролведение процедуры Revers Engineering для процессов | 2014-03-17 → 2014-05-08 (+52d) | 2014-03-31 → 2014-05-23 (+53d) |  |  | 68.2d → 87.8d |  | baseline start none → 2014-04-04; baseline finish none → 2014-04-17 |
| 200 | Реализация в слое CMJ-CMSochi | 2014-03-17 → 2014-05-08 (+52d) | 2014-03-31 → 2014-05-23 (+53d) |  |  | 68.2d → 87.8d |  | baseline start none → 2014-04-04; baseline finish none → 2014-04-17 |
| 201 | **Разработка коллекций** | 2014-03-06 → 2014-03-11 (+5d) | 2014-03-18 → 2014-05-23 (+66d) | 9d → 51d |  | 53d → 63d |  | baseline start none → 2014-03-06; baseline finish none → 2014-03-18 |
| 202 | Коллекции | 2014-03-06 → 2014-03-11 (+5d) | 2014-03-18 → 2014-05-23 (+66d) | 9d → 51d |  | 53d → 63d | 176 → 176, 180 | resources (БТЛ) Олег Еренцов; (БТЛ) Дмитрий Лякин; (БТЛ)Сергей Степыгин → (БТЛ) Дмитрий Лякин; baseline start none → 2014-03-06; baseline finish none → 2014-03-18 |
| 203 | Интеграция по Дгв выполнена | 2014-03-25 → 2014-05-23 (+59d) | 2014-03-25 → 2014-05-23 (+59d) |  |  | 122d → 137d |  | baseline start none → 2014-03-25; baseline finish none → 2014-03-25 |
| 204 | **Интеграция с CMJ по Исходящие документам** |  | 2014-04-09 → 2014-06-05 (+57d) | 23.8d → 62d |  | 47d → 85d |  | baseline start none → 2014-03-07; baseline finish none → 2014-04-28 |
| 205 | Конфиг ДОП |  |  |  |  | 57d → 114d |  | baseline start none → 2014-03-07; baseline finish none → 2014-03-11 |
| 206 | Mapper |  |  |  |  | 57d → 115d |  | baseline start none → 2014-03-12; baseline finish none → 2014-03-20 |
| 207 | **Настраиваемые коллекции** |  |  |  |  | 59d → 114d |  | baseline start none → 2014-03-12; baseline finish none → 2014-03-21 |
| 208 | **Конфигурация коллекций** |  |  |  |  | 59d → 114d |  | baseline start none → 2014-03-12; baseline finish none → 2014-03-19 |
| 209 | Типовая иерархия кастомных папок (3шт) |  |  |  |  | 59d → 114d |  | baseline start none → 2014-03-12; baseline finish none → 2014-03-19 |
| 210 | Системные настройки для Исх |  |  |  |  | 59d → 114d |  | baseline start none → 2014-03-12; baseline finish none → 2014-03-19 |
| 211 | Проверка работы |  |  |  |  | 59d → 114d |  | baseline start none → 2014-03-20; baseline finish none → 2014-03-21 |

| ID | Task | Start | Finish | Duration | Complete | Total float | Predecessors | Other |
| --- | --- | --- | --- | --- | --- | --- | --- | --- |
| 212 | **Перенос логики сервисов по Исх** | 2014-03-31 → 2014-05-23 (+53d) | 2014-04-09 → 2014-06-03 (+55d) |  |  | 68.2d → 87.8d |  | baseline start none → 2014-04-17; baseline finish none → 2014-04-28 |
| 213 | Задание поставлено | 2014-03-31 → 2014-05-23 (+53d) | 2014-03-31 → 2014-05-23 (+53d) |  |  | 52.2d → 87.8d |  | baseline start none → 2014-04-17; baseline finish none → 2014-04-17 |
| 214 | Пролведение процедуры Revers Engineering для процессов | 2014-03-31 → 2014-05-23 (+53d) | 2014-04-09 → 2014-06-03 (+55d) |  |  | 68.2d → 87.8d |  | baseline start none → 2014-04-18; baseline finish none → 2014-04-28 |
| 215 | Реализация в слое CMJ-CMSochi | 2014-03-31 → 2014-05-23 (+53d) | 2014-04-09 → 2014-06-03 (+55d) |  |  | 68.2d → 87.8d |  | baseline start none → 2014-04-18; baseline finish none → 2014-04-28 |
| 216 | **Разработка коллекций** | 2014-03-19 → 2014-05-26 (+68d) | 2014-03-31 → 2014-06-05 (+66d) |  |  | 53d → 63d |  | baseline start none → 2014-03-19; baseline finish none → 2014-03-31 |
| 217 | Коллекции | 2014-03-19 → 2014-05-26 (+68d) | 2014-03-31 → 2014-06-05 (+66d) |  |  | 53d → 63d |  | baseline start none → 2014-03-19; baseline finish none → 2014-03-31 |
| 218 | Интеграция по Исх выполнена | 2014-03-31 → 2014-06-05 (+66d) | 2014-03-31 → 2014-06-05 (+66d) |  |  | 53d → 63d |  | baseline start none → 2014-03-31; baseline finish none → 2014-03-31 |
| 220 | **Переход на 4.3 CMJ** |  | 2014-06-05 → 2014-06-17 (+12d) | 54d → 62d |  | 62d → 110d |  | baseline start none → 2014-03-19; baseline finish none → 2014-06-05 |
| 221 | **Модификация CMJ** |  |  |  |  | 63d → 118d |  | baseline start none → 2014-03-19; baseline finish none → 2014-04-01 |
| 222 | Для отложенного добавления персон |  |  |  |  | 63d → 118d | Получена версия CM4.X c WF движком → none | baseline start none → 2014-03-19; baseline finish none → 2014-03-25 |
| 223 | Адаптация под функционал настраиваемых реквизитов |  |  |  |  | 63d → 118d |  | baseline start none → 2014-03-26; baseline finish none → 2014-04-01 |
| 224 | Конфиг ДОП | 2014-03-21 → 2014-03-26 (+5d) | 2014-03-25 → 2014-03-28 (+3d) |  |  | 83d → 123d | 206 → 206, 222 | baseline start none → 2014-03-26; baseline finish none → 2014-03-28 |
| 225 | Mapper | 2014-03-26 → 2014-03-31 (+5d) | 2014-04-01 → 2014-04-04 (+3d) |  |  | 107d → 159d |  | baseline start none → 2014-03-31; baseline finish none → 2014-04-04 |
| 226 | Коллекции | 2014-04-01 → 2014-06-06 (+66d) | 2014-04-10 → 2014-06-17 (+68d) |  |  | 53d → 63d |  | baseline start none → 2014-04-01; baseline finish none → 2014-04-10 |
| 227 | Настройка адаптеров для 4.3 |  |  |  |  | 104d → 159d |  | baseline start none → 2014-04-02; baseline finish none → 2014-04-04 |
| 228 | Помещение сущностей во временный модуль |  |  |  |  | 63d → 118d |  | baseline start none → 2014-04-02; baseline finish none → 2014-04-17 |
| 229 | Проверки сборки и функционала |  |  |  |  | 63d → 118d |  | baseline start none → 2014-04-18; baseline finish none → 2014-05-07 |
| 230 | Интеграция с мобильным клиентом - верефикация возможности |  |  |  |  | 63d → 118d |  | baseline start none → 2014-05-08; baseline finish none → 2014-06-05 |
| 231 | **Интеграция с CMJ по ОРД** | 2014-03-21 A | 2014-04-22 → 2014-06-27 (+66d) | 23d? → 68d? | 0% → 16% | 42d → 112d |  | baseline start none → 2014-03-21; baseline finish none → 2014-05-12 |
| 232 | Конфиг ДОП | 2014-03-21 A | 2014-03-25 A |  | 0% → 100% | 42d → none |  | baseline start none → 2014-03-21; baseline finish none → 2014-03-25 |
| 233 | Mapper | 2014-03-26 A | 2014-04-01 A |  | 0% → 100% | 42d → none |  | baseline start none → 2014-03-26; baseline finish none → 2014-04-01 |
| 234 | **Настраиваемые коллекции** |  |  |  |  | 54d → 109d |  | baseline start none → 2014-04-02; baseline finish none → 2014-04-11 |
| 235 | **Конфигурация коллекций** |  |  |  |  | 54d → 109d |  | baseline start none → 2014-04-02; baseline finish none → 2014-04-10 |
| 236 | Типовая иерархия кастомных папок (3шт) |  |  |  |  | 54d → 109d |  | baseline start none → 2014-04-02; baseline finish none → 2014-04-09 |
| 237 | Системные настройки для ОРД |  |  |  |  | 103d → 158d |  | baseline start none → 2014-04-02; baseline finish none → 2014-04-09 |
| 238 | Доработка расширенного поиска |  |  |  |  | 54d → 109d |  | baseline start none → 2014-04-02; baseline finish none → 2014-04-10 |
| 239 | Проверка работы |  |  |  |  | 109d → 164d |  | baseline start none → 2014-04-11; baseline finish none → 2014-04-11 |
| 240 | **Перенос логики сервисов по ОРД** | 2014-04-09 → 2014-06-03 (+55d) | 2014-04-18 → 2014-06-12 (+55d) |  |  | 68.2d → 87.8d |  | baseline start none → 2014-04-28; baseline finish none → 2014-05-12 |
| 241 | Задание поставлено | 2014-04-09 → 2014-06-03 (+55d) | 2014-04-09 → 2014-06-03 (+55d) |  |  | 68.2d → 87.8d |  | baseline start none → 2014-04-28; baseline finish none → 2014-04-28 |
| 242 | Пролведение процедуры Revers Engineering для процессов | 2014-04-09 → 2014-06-03 (+55d) | 2014-04-18 → 2014-06-12 (+55d) |  |  | 68.2d → 87.8d |  | baseline start none → 2014-04-29; baseline finish none → 2014-05-12 |
| 243 | Реализация в слое CMJ-CMSochi | 2014-04-09 → 2014-06-03 (+55d) | 2014-04-18 → 2014-06-12 (+55d) |  |  | 97.2d → 116.8d |  | baseline start none → 2014-04-29; baseline finish none → 2014-05-12 |
| 244 | **Разработка коллекций** | 2014-04-11 → 2014-06-18 (+68d) | 2014-04-22 → 2014-06-27 (+66d) |  |  | 53d → 63d |  | baseline start none → 2014-04-11; baseline finish none → 2014-04-22 |
| 245 | Коллекции | 2014-04-11 → 2014-06-18 (+68d) | 2014-04-22 → 2014-06-27 (+66d) |  |  | 53d → 63d |  | baseline start none → 2014-04-11; baseline finish none → 2014-04-22 |
| 246 | Интеграция по ОРД выполнена | 2014-04-22 → 2014-06-27 (+66d) | 2014-04-22 → 2014-06-27 (+66d) |  |  | 102d → 112d |  | baseline start none → 2014-04-22; baseline finish none → 2014-04-22 |
| 247 | **Интеграция с CMJ по самостоятельным поручениям** | 2014-04-02 A | 2014-05-06 → 2014-07-09 (+64d) | 23d? → 68d? | 0% → 16% | 94d → 104d |  | baseline start none → 2014-04-02; baseline finish none → 2014-05-21 |
| 248 | Конфиг ДОП | 2014-04-02 A | 2014-04-04 A |  | 0% → 100% | 101d → none |  | baseline start none → 2014-04-02; baseline finish none → 2014-04-04 |
| 249 | Mapper | 2014-04-07 A | 2014-04-11 A |  | 0% → 100% | 101d → none |  | baseline start none → 2014-04-07; baseline finish none → 2014-04-11 |
| 250 | **Настраиваемые коллекции** |  |  |  |  | 101d → 156d |  | baseline start none → 2014-04-14; baseline finish none → 2014-04-23 |
| 251 | **Конфигурация коллекций** |  |  |  |  | 101d → 156d |  | baseline start none → 2014-04-14; baseline finish none → 2014-04-22 |
| 252 | Типовая иерархия кастомных папок (3шт) |  |  |  |  | 101d → 156d |  | baseline start none → 2014-04-14; baseline finish none → 2014-04-21 |
| 253 | Системные настройки для СамПор |  |  |  |  | 102d → 157d |  | baseline start none → 2014-04-14; baseline finish none → 2014-04-21 |
| 254 | Доработка расширенного поиска |  |  |  |  | 101d → 156d |  | baseline start none → 2014-04-14; baseline finish none → 2014-04-22 |
| 255 | Проверка работы |  |  |  |  | 101d → 156d |  | baseline start none → 2014-04-23; baseline finish none → 2014-04-23 |
| 256 | **Перенос логики сервисов по СамПор** | 2014-04-18 → 2014-06-12 (+55d) | 2014-04-29 → 2014-06-23 (+55d) |  |  | 97.2d → 116.8d |  | baseline start none → 2014-05-12; baseline finish none → 2014-05-21 |
| 257 | Задание поставлено | 2014-04-18 → 2014-06-12 (+55d) | 2014-04-18 → 2014-06-12 (+55d) |  |  | 97.2d → 116.8d |  | baseline start none → 2014-05-12; baseline finish none → 2014-05-12 |
| 258 | Пролведение процедуры Revers Engineering для процессов | 2014-04-18 → 2014-06-12 (+55d) | 2014-04-29 → 2014-06-23 (+55d) |  |  | 97.2d → 116.8d |  | baseline start none → 2014-05-13; baseline finish none → 2014-05-21 |
| 259 | Реализация в слое CMJ-CMSochi | 2014-04-18 → 2014-06-12 (+55d) | 2014-04-29 → 2014-06-23 (+55d) |  |  | 97.2d → 116.8d |  | baseline start none → 2014-05-13; baseline finish none → 2014-05-21 |
| 260 | **Разработка коллекций** | 2014-04-23 → 2014-06-30 (+68d) | 2014-05-06 → 2014-07-09 (+64d) |  |  | 94d → 104d |  | baseline start none → 2014-04-23; baseline finish none → 2014-05-06 |
| 261 | Коллекции | 2014-04-23 → 2014-06-30 (+68d) | 2014-05-06 → 2014-07-09 (+64d) |  |  | 94d → 104d |  | baseline start none → 2014-04-23; baseline finish none → 2014-05-06 |
| 262 | Интеграция по СамПор выполнена | 2014-05-06 → 2014-07-09 (+64d) | 2014-05-06 → 2014-07-09 (+64d) |  |  | 94d → 104d |  | baseline start none → 2014-05-06; baseline finish none → 2014-05-06 |
| 263 | **Интеграция с CMJ по ОГ** | 2014-04-02 A | 2014-05-06 → 2014-07-09 (+64d) | 23d? → 68d? | 0% → 16% | 42d → 104d |  | baseline start none → 2014-04-02; baseline finish none → 2014-05-21 |
| 264 | Конфиг ДОП | 2014-04-02 A | 2014-04-04 A |  | 0% → 100% | 42d → none |  | baseline start none → 2014-04-02; baseline finish none → 2014-04-04 |
| 265 | Mapper | 2014-04-07 A | 2014-04-11 A |  | 0% → 100% | 42d → none |  | baseline start none → 2014-04-07; baseline finish none → 2014-04-11 |
| 266 | **Настраиваемые коллекции** |  |  |  |  | 53d → 108d |  | baseline start none → 2014-04-14; baseline finish none → 2014-04-23 |
| 267 | **Конфигурация коллекций** |  |  |  |  | 53d → 108d |  | baseline start none → 2014-04-14; baseline finish none → 2014-04-22 |
| 268 | Типовая иерархия кастомных папок (3шт) |  |  |  |  | 53d → 108d |  | baseline start none → 2014-04-14; baseline finish none → 2014-04-21 |
| 269 | Системные настройки для ОГ |  |  |  |  | 54d → 109d |  | baseline start none → 2014-04-14; baseline finish none → 2014-04-21 |
| 270 | Доработка расширенного поиска |  |  |  |  | 53d → 108d |  | baseline start none → 2014-04-14; baseline finish none → 2014-04-22 |
| 271 | Проверка работы |  |  |  |  | 101d → 156d |  | baseline start none → 2014-04-23; baseline finish none → 2014-04-23 |
| 272 | **Перенос логики сервисов по ОГ** | 2014-04-18 → 2014-06-12 (+55d) | 2014-04-29 → 2014-06-23 (+55d) |  |  | 68.2d → 87.8d |  | baseline start none → 2014-05-12; baseline finish none → 2014-05-21 |
| 273 | Задание поставлено | 2014-04-18 → 2014-06-12 (+55d) | 2014-04-18 → 2014-06-12 (+55d) |  |  | 68.2d → 32.8d |  | baseline start none → 2014-05-12; baseline finish none → 2014-05-12 |
| 274 | Пролведение процедуры Revers Engineering для процессов | 2014-04-18 → 2014-06-12 (+55d) | 2014-04-29 → 2014-06-23 (+55d) |  |  | 68.2d → 87.8d |  | baseline start none → 2014-05-13; baseline finish none → 2014-05-21 |
| 275 | Реализация в слое CMJ-CMSochi | 2014-04-18 → 2014-06-12 (+55d) | 2014-04-29 → 2014-06-23 (+55d) |  |  | 68.2d → 87.8d |  | baseline start none → 2014-05-13; baseline finish none → 2014-05-21 |
| 276 | **Разработка коллекций** | 2014-04-23 → 2014-06-30 (+68d) | 2014-05-06 → 2014-07-09 (+64d) |  |  | 53d → 63d |  | baseline start none → 2014-04-23; baseline finish none → 2014-05-06 |
| 277 | Коллекции | 2014-04-23 → 2014-06-30 (+68d) | 2014-05-06 → 2014-07-09 (+64d) |  |  | 53d → 8d |  | baseline start none → 2014-04-23; baseline finish none → 2014-05-06 |
| 278 | Интеграция по ОГ выполнена | 2014-05-06 → 2014-07-09 (+64d) | 2014-05-06 → 2014-07-09 (+64d) |  |  | 94d → 104d |  | baseline start none → 2014-05-06; baseline finish none → 2014-05-06 |
| 279 | **Интеграция с CMJ по WF** | 2014-04-14 A | 2014-06-19 → 2014-09-16 (+89d) | 46d? → 109d? | 0% → 1% | 42d → 55d |  | baseline start none → 2014-04-14; baseline finish none → 2014-06-19 |
| 280 | Конфиг ДОП | 2014-04-14 A | 2014-04-14 A |  | 0% → 100% | 42d → none |  | baseline start none → 2014-04-14; baseline finish none → 2014-04-14 |
| 281 | Mapper |  | 2014-04-17 → 2014-09-04 (+140d) | 3d → 100d |  | 42d → 0d |  | baseline start none → 2014-04-15; baseline finish none → 2014-04-17 |
| 282 | **Настраиваемые коллекции** | 2014-04-23 → 2014-09-05 (+135d) | 2014-05-06 → 2014-09-16 (+133d) |  |  | 53d → 14d |  | baseline start none → 2014-04-23; baseline finish none → 2014-05-06 |

| ID | Task | Start | Finish | Duration | Total float | Other |
| --- | --- | --- | --- | --- | --- | --- |
| 283 | **Конфигурация коллекций** | 2014-04-23 → 2014-09-05 (+135d) | 2014-05-05 → 2014-09-15 (+133d) |  | 53d → 14d | baseline start none → 2014-04-23; baseline finish none → 2014-05-05 |
| 284 | Типовая иерархия кастомных папок (3шт) | 2014-04-23 → 2014-09-05 (+135d) | 2014-04-28 → 2014-09-10 (+135d) |  | 53d → 14d | baseline start none → 2014-04-23; baseline finish none → 2014-04-28 |
| 285 | Системные настройки для WF | 2014-04-23 → 2014-09-05 (+135d) | 2014-04-28 → 2014-09-10 (+135d) |  | 53d → 14d | baseline start none → 2014-04-23; baseline finish none → 2014-04-28 |
| 286 | Доработка расширенного поиска | 2014-04-23 → 2014-09-05 (+135d) | 2014-05-05 → 2014-09-15 (+133d) |  | 94d → 55d | baseline start none → 2014-04-23; baseline finish none → 2014-05-05 |
| 287 | Проверка работы | 2014-05-06 → 2014-09-16 (+133d) | 2014-05-06 → 2014-09-16 (+133d) |  | 94d → 55d | baseline start none → 2014-05-06; baseline finish none → 2014-05-06 |
| 288 | **Перенос логики сервисов по WF** | 2014-04-29 → 2014-06-23 (+55d) | 2014-05-06 → 2014-06-26 (+51d) |  | 68.2d → 87.8d | baseline start none → 2014-05-21; baseline finish none → 2014-05-26 |
| 289 | Задание поставлено | 2014-04-29 → 2014-06-23 (+55d) | 2014-04-29 → 2014-06-23 (+55d) |  | 68.2d → 87.8d | baseline start none → 2014-05-21; baseline finish none → 2014-05-21 |
| 290 | Пролведение процедуры Revers Engineering для процессов | 2014-04-29 → 2014-06-23 (+55d) | 2014-05-06 → 2014-06-26 (+51d) |  | 68.2d → 87.8d | baseline start none → 2014-05-22; baseline finish none → 2014-05-26 |
| 291 | Реализация в слое CMJ-CMSochi | 2014-04-29 → 2014-06-23 (+55d) | 2014-05-06 → 2014-06-26 (+51d) |  | 68.2d → 87.8d | baseline start none → 2014-05-22; baseline finish none → 2014-05-26 |
| 292 | **Разработка адаптеров для СрвСогл** | 2014-06-05 → 2014-06-17 (+12d) | 2014-06-19 → 2014-07-01 (+12d) |  | 63d → 110d | baseline start none → 2014-06-05; baseline finish none → 2014-06-19 |
| 293 | Задание поставлено | 2014-06-05 → 2014-06-17 (+12d) | 2014-06-05 → 2014-06-17 (+12d) |  | 63d → 110d | baseline start none → 2014-06-05; baseline finish none → 2014-06-05 |
| 294 | Разработка архитектуры дя адаптеров | 2014-06-06 → 2014-06-18 (+12d) | 2014-06-12 → 2014-06-24 (+12d) |  | 63d → 110d | baseline start none → 2014-06-06; baseline finish none → 2014-06-12 |
| 295 | Разработка адаптеров | 2014-06-13 → 2014-06-25 (+12d) | 2014-06-19 → 2014-07-01 (+12d) |  | 63d → 110d | baseline start none → 2014-06-13; baseline finish none → 2014-06-19 |
| 296 | **Разработка коллекций** | 2014-05-07 → 2014-07-10 (+64d) | 2014-05-14 → 2014-07-16 (+63d) |  | 53d → 63d | baseline start none → 2014-05-07; baseline finish none → 2014-05-14 |
| 297 | Коллекции | 2014-05-07 → 2014-07-10 (+64d) | 2014-05-14 → 2014-07-16 (+63d) |  | 53d → 63d | baseline start none → 2014-05-07; baseline finish none → 2014-05-14 |
| 298 | Интеграция по WF выполнена | 2014-05-14 → 2014-09-16 (+125d) | 2014-05-14 → 2014-09-16 (+125d) |  | 89d → 55d | baseline start none → 2014-05-14; baseline finish none → 2014-05-14 |
| 299 | **Интеграция с CMJ по сервису Контроля Заданий** | 2014-04-18 → 2014-09-05 (+140d) | 2014-05-23 → 2014-09-26 (+126d) | 23d? → 16d? | 42d → 0d | baseline start none → 2014-04-18; baseline finish none → 2014-06-04 |
| 300 | Конфиг ДОП | 2014-04-18 → 2014-09-05 (+140d) | 2014-04-22 → 2014-09-09 (+140d) |  | 42d → 0d | baseline start none → 2014-04-18; baseline finish none → 2014-04-22 |
| 301 | Mapper | 2014-04-23 → 2014-09-10 (+140d) | 2014-04-29 → 2014-09-16 (+140d) |  | 42d → 0d | baseline start none → 2014-04-23; baseline finish none → 2014-04-29 |
| 302 | **Настраиваемые коллекции** | 2014-04-30 → 2014-09-17 (+140d) | 2014-05-16 → 2014-09-26 (+133d) | 9.8d? → 8d? | 71d → 29d | baseline start none → 2014-05-22; baseline finish none → 2014-06-04 |
| 303 | **Конфигурация коллекций** | 2014-04-30 → 2014-09-17 (+140d) | 2014-05-15 → 2014-09-25 (+133d) | 8.8d → 7d | 71d → 29d | baseline start none → 2014-05-22; baseline finish none → 2014-06-03 |
| 304 | Типовая иерархия кастомных папок | 2014-05-06 → 2014-09-17 (+134d) | 2014-05-15 → 2014-09-24 (+132d) |  | 68.2d → 29d | baseline start none → 2014-05-27; baseline finish none → 2014-06-03 |
| 305 | Доработка расширенного поиска | 2014-04-30 → 2014-09-17 (+140d) | 2014-05-13 → 2014-09-25 (+135d) |  | 89d → 47d | baseline start none → 2014-05-22; baseline finish none → 2014-05-30 |
| 306 | Системные настройки для КЗ | 2014-05-06 → 2014-09-17 (+134d) | 2014-05-15 → 2014-09-24 (+132d) |  | 68.2d → 29d | baseline start none → 2014-05-27; baseline finish none → 2014-06-03 |
| 307 | Проверка работы | 2014-05-15 → 2014-09-26 (+134d) | 2014-05-16 → 2014-09-26 (+133d) |  | 87.2d → 47d | baseline start none → 2014-06-04; baseline finish none → 2014-06-04 |
| 308 | **Перенос логики сервисов по КЗ** | 2014-04-22 → 2014-09-09 (+140d) | 2014-05-12 → 2014-09-19 (+130d) | 11d → 8d | 57d → 15d | baseline start none → 2014-04-22; baseline finish none → 2014-05-12 |
| 309 | Задание поставлено | 2014-04-22 → 2014-09-09 (+140d) | 2014-04-22 → 2014-09-09 (+140d) |  | 57d → 15d | baseline start none → 2014-04-22; baseline finish none → 2014-04-22 |
| 310 | Пролведение процедуры Revers Engineering для процессов | 2014-04-29 → 2014-09-11 (+135d) | 2014-05-12 → 2014-09-19 (+130d) |  | 53d → 14d | baseline start none → 2014-04-29; baseline finish none → 2014-05-12 |
| 311 | Реализация в слое CMJ-CMSochi | 2014-04-29 → 2014-09-11 (+135d) | 2014-05-12 → 2014-09-19 (+130d) |  | 91d → 52d | baseline start none → 2014-04-29; baseline finish none → 2014-05-12 |
| 312 | **Разработка коллекций** | 2014-05-15 → 2014-09-10 (+118d) | 2014-05-23 → 2014-09-18 (+118d) |  | 53d → 24d | baseline start none → 2014-05-15; baseline finish none → 2014-05-23 |
| 313 | Коллекции | 2014-05-15 → 2014-09-10 (+118d) | 2014-05-23 → 2014-09-18 (+118d) |  | 53d → 24d | baseline start none → 2014-05-15; baseline finish none → 2014-05-23 |
| 314 | Интеграция по КЗ выполнена | 2014-05-23 → 2014-09-26 (+126d) | 2014-05-23 → 2014-09-26 (+126d) |  | 82d → 47d | baseline start none → 2014-06-04; baseline finish none → 2014-06-04 |
| 315 | **Интеграция с CMJ по Формированию дел** | 2014-04-30 → 2014-09-17 (+140d) | 2014-06-02 → 2014-10-08 (+128d) | 21d? → 16d? | 42d → 0d | baseline start none → 2014-04-30; baseline finish none → 2014-06-13 |
| 316 | Конфиг ДОП | 2014-04-30 → 2014-09-17 (+140d) | 2014-05-06 → 2014-09-19 (+136d) |  | 42d → 0d | baseline start none → 2014-04-30; baseline finish none → 2014-05-06 |
| 317 | Mapper | 2014-05-07 → 2014-09-22 (+138d) | 2014-05-14 → 2014-09-26 (+135d) |  | 42d → 0d | baseline start none → 2014-05-07; baseline finish none → 2014-05-14 |
| 318 | **Настраиваемые коллекции** | 2014-05-15 → 2014-09-29 (+137d) | 2014-05-27 → 2014-10-08 (+134d) |  | 68.2d → 27d | baseline start none → 2014-06-04; baseline finish none → 2014-06-13 |
| 319 | **Конфигурация коллекций** | 2014-05-15 → 2014-09-29 (+137d) | 2014-05-26 → 2014-10-07 (+134d) |  | 68.2d → 27d | baseline start none → 2014-06-04; baseline finish none → 2014-06-12 |
| 320 | Типовая иерархия кастомных папок | 2014-05-15 → 2014-09-29 (+137d) | 2014-05-23 → 2014-10-06 (+136d) |  | 68.2d → 27d | baseline start none → 2014-06-04; baseline finish none → 2014-06-11 |
| 321 | Доработка расширенного поиска | 2014-05-15 → 2014-09-29 (+137d) | 2014-05-26 → 2014-10-07 (+134d) |  | 80.2d → 39d | baseline start none → 2014-06-04; baseline finish none → 2014-06-12 |
| 322 | Системные настройки для ФД | 2014-05-15 → 2014-09-29 (+137d) | 2014-05-23 → 2014-10-06 (+136d) |  | 68.2d → 27d | baseline start none → 2014-06-04; baseline finish none → 2014-06-11 |
| 323 | Проверка работы | 2014-05-26 → 2014-10-08 (+135d) | 2014-05-27 → 2014-10-08 (+134d) |  | 80.2d → 39d | baseline start none → 2014-06-13; baseline finish none → 2014-06-13 |
| 324 | **Перенос логики сервисов по ФД** | 2014-05-06 → 2014-09-19 (+136d) | 2014-05-21 → 2014-09-30 (+132d) | 10d → 7d | 53d → 14d | baseline start none → 2014-05-06; baseline finish none → 2014-05-21 |
| 325 | Задание поставлено | 2014-05-06 → 2014-09-19 (+136d) | 2014-05-06 → 2014-09-19 (+136d) |  | 56d → 14d | baseline start none → 2014-05-06; baseline finish none → 2014-05-06 |
| 326 | Пролведение процедуры Revers Engineering для процессов | 2014-05-13 → 2014-09-22 (+132d) | 2014-05-21 → 2014-09-30 (+132d) |  | 53d → 14d | baseline start none → 2014-05-13; baseline finish none → 2014-05-21 |
| 327 | Реализация в слое CMJ-CMSochi | 2014-05-13 → 2014-09-22 (+132d) | 2014-05-21 → 2014-09-30 (+132d) |  | 53d → 14d | baseline start none → 2014-05-13; baseline finish none → 2014-05-21 |
| 328 | **Разработка коллекций** | 2014-05-26 → 2014-09-22 (+119d) | 2014-06-02 → 2014-09-29 (+119d) |  | 53d → 23d | baseline start none → 2014-05-26; baseline finish none → 2014-06-02 |
| 329 | Коллекции | 2014-05-26 → 2014-09-22 (+119d) | 2014-06-02 → 2014-09-29 (+119d) |  | 53d → 23d | baseline start none → 2014-05-26; baseline finish none → 2014-06-02 |
| 330 | Интеграция по ФД выполнена | 2014-06-02 → 2014-10-08 (+128d) | 2014-06-02 → 2014-10-08 (+128d) |  | 76d → 39d | baseline start none → 2014-06-13; baseline finish none → 2014-06-13 |
| 331 | **Интеграция с CMJ по Заседаниям** | 2014-05-15 → 2014-09-29 (+137d) | 2014-06-10 → 2014-10-20 (+132d) | 19d? → 16d? | 42d → 0d | baseline start none → 2014-05-15; baseline finish none → 2014-06-23 |
| 332 | Конфиг ДОП | 2014-05-15 → 2014-09-29 (+137d) | 2014-05-19 → 2014-10-01 (+135d) |  | 42d → 0d | baseline start none → 2014-05-15; baseline finish none → 2014-05-19 |
| 333 | Mapper | 2014-05-20 → 2014-10-02 (+135d) | 2014-05-26 → 2014-10-08 (+135d) |  | 42d → 0d | baseline start none → 2014-05-20; baseline finish none → 2014-05-26 |
| 334 | **Настраиваемые коллекции** | 2014-05-27 → 2014-10-09 (+135d) | 2014-06-05 → 2014-10-20 (+137d) |  | 67d → 25d | baseline start none → 2014-06-12; baseline finish none → 2014-06-23 |
| 335 | **Конфигурация коллекций** | 2014-05-27 → 2014-10-09 (+135d) | 2014-06-04 → 2014-10-17 (+135d) |  | 67d → 25d | baseline start none → 2014-06-12; baseline finish none → 2014-06-20 |
| 336 | Типовая иерархия кастомных папок | 2014-05-27 → 2014-10-09 (+135d) | 2014-06-03 → 2014-10-16 (+135d) |  | 67d → 25d | baseline start none → 2014-06-12; baseline finish none → 2014-06-19 |
| 337 | Системные настройки для Зсд | 2014-05-27 → 2014-10-09 (+135d) | 2014-06-03 → 2014-10-16 (+135d) |  | 67d → 25d | baseline start none → 2014-06-12; baseline finish none → 2014-06-19 |
| 338 | Доработка расширенного поиска | 2014-05-27 → 2014-10-09 (+135d) | 2014-06-04 → 2014-10-17 (+135d) |  | 73d → 31d | baseline start none → 2014-06-12; baseline finish none → 2014-06-20 |
| 339 | Проверка работы | 2014-06-05 → 2014-10-20 (+137d) | 2014-06-05 → 2014-10-20 (+137d) |  | 73d → 31d | baseline start none → 2014-06-23; baseline finish none → 2014-06-23 |
| 340 | **Перенос логики сервисов по Зсд** | 2014-05-21 → 2014-10-01 (+133d) | 2014-05-30 → 2014-10-10 (+133d) |  | 53d → 13d | baseline start none → 2014-05-21; baseline finish none → 2014-05-30 |
| 341 | Задание поставлено | 2014-05-21 → 2014-10-01 (+133d) | 2014-05-21 → 2014-10-01 (+133d) |  | 53d → 13d | baseline start none → 2014-05-21; baseline finish none → 2014-05-21 |
| 342 | Пролведение процедуры Revers Engineering для процессов | 2014-05-22 → 2014-10-02 (+133d) | 2014-05-30 → 2014-10-10 (+133d) |  | 53d → 13d | baseline start none → 2014-05-22; baseline finish none → 2014-05-30 |
| 343 | Реализация в слое CMJ-CMSochi | 2014-05-22 → 2014-10-02 (+133d) | 2014-05-30 → 2014-10-10 (+133d) |  | 77d → 37d | baseline start none → 2014-05-22; baseline finish none → 2014-05-30 |
| 344 | **Разработка коллекций** | 2014-06-03 → 2014-10-02 (+121d) | 2014-06-10 → 2014-10-09 (+121d) |  | 53d → 21d | baseline start none → 2014-06-03; baseline finish none → 2014-06-10 |
| 345 | Коллекции | 2014-06-03 → 2014-10-02 (+121d) | 2014-06-10 → 2014-10-09 (+121d) |  | 53d → 21d | baseline start none → 2014-06-03; baseline finish none → 2014-06-10 |
| 346 | Интеграция по Зсд выполнена | 2014-06-10 → 2014-10-20 (+132d) | 2014-06-10 → 2014-10-20 (+132d) |  | 70d → 31d | baseline start none → 2014-06-23; baseline finish none → 2014-06-23 |
| 347 | **Интеграция с CMJ по Обсуждениям и ознакомлениям** | 2014-05-27 → 2014-10-09 (+135d) | 2014-06-19 → 2014-10-30 (+133d) | 18d? → 16d? | 42d → 0d | baseline start none → 2014-05-27; baseline finish none → 2014-07-01 |
| 348 | Конфиг ДОП | 2014-05-27 → 2014-10-09 (+135d) | 2014-05-29 → 2014-10-13 (+137d) |  | 42d → 0d | baseline start none → 2014-05-27; baseline finish none → 2014-05-29 |
| 349 | Mapper | 2014-05-30 → 2014-10-14 (+137d) | 2014-06-05 → 2014-10-20 (+137d) |  | 42d → 0d | baseline start none → 2014-05-30; baseline finish none → 2014-06-05 |
| 350 | **Настраиваемые коллекции** | 2014-06-06 → 2014-10-21 (+137d) | 2014-06-17 → 2014-10-30 (+135d) |  | 65d → 23d | baseline start none → 2014-06-20; baseline finish none → 2014-07-01 |
| 351 | **Конфигурация коллекций** | 2014-06-06 → 2014-10-21 (+137d) | 2014-06-16 → 2014-10-29 (+135d) |  | 65d → 23d | baseline start none → 2014-06-20; baseline finish none → 2014-06-30 |
| 352 | Типовая иерархия кастомных папок | 2014-06-06 → 2014-10-21 (+137d) | 2014-06-13 → 2014-10-28 (+137d) |  | 65d → 23d | baseline start none → 2014-06-20; baseline finish none → 2014-06-27 |

| ID | Task | Start | Finish | Duration | Total float | Other |
| --- | --- | --- | --- | --- | --- | --- |
| 353 | Доработка расширенного поиска | 2014-06-06 → 2014-10-21 (+137d) | 2014-06-16 → 2014-10-29 (+135d) |  | 65d → 23d | baseline start none → 2014-06-20; baseline finish none → 2014-06-30 |
| 354 | Системные настройки для ОО | 2014-06-06 → 2014-10-21 (+137d) | 2014-06-13 → 2014-10-28 (+137d) |  | 66d → 24d | baseline start none → 2014-06-20; baseline finish none → 2014-06-27 |
| 355 | Проверка работы | 2014-06-17 → 2014-10-30 (+135d) | 2014-06-17 → 2014-10-30 (+135d) |  | 65d → 23d | baseline start none → 2014-07-01; baseline finish none → 2014-07-01 |
| 356 | **Перенос логики сервисов по ОО** | 2014-05-29 → 2014-10-13 (+137d) | 2014-06-10 → 2014-10-22 (+134d) | 8d → 7d | 53d → 12d | baseline start none → 2014-05-29; baseline finish none → 2014-06-10 |
| 357 | Задание поставлено | 2014-05-29 → 2014-10-13 (+137d) | 2014-05-29 → 2014-10-13 (+137d) |  | 54d → 12d | baseline start none → 2014-05-29; baseline finish none → 2014-05-29 |
| 358 | Пролведение процедуры Revers Engineering для процессов | 2014-06-02 → 2014-10-14 (+134d) | 2014-06-10 → 2014-10-22 (+134d) |  | 53d → 12d | baseline start none → 2014-06-02; baseline finish none → 2014-06-10 |
| 359 | Реализация в слое CMJ-CMSochi | 2014-06-02 → 2014-10-14 (+134d) | 2014-06-10 → 2014-10-22 (+134d) |  | 53d → 12d | baseline start none → 2014-06-02; baseline finish none → 2014-06-10 |
| 360 | **Разработка коллекций** | 2014-06-11 → 2014-10-14 (+125d) | 2014-06-19 → 2014-10-22 (+125d) |  | 53d → 19d | baseline start none → 2014-06-11; baseline finish none → 2014-06-19 |
| 361 | Коллекции | 2014-06-11 → 2014-10-14 (+125d) | 2014-06-19 → 2014-10-22 (+125d) |  | 53d → 19d | baseline start none → 2014-06-11; baseline finish none → 2014-06-19 |
| 362 | Интеграция по ОО выполнена | 2014-06-19 → 2014-10-30 (+133d) | 2014-06-19 → 2014-10-30 (+133d) |  | 63d → 23d | baseline start none → 2014-07-01; baseline finish none → 2014-07-01 |
| 363 | **Интеграция с CMJ по "Кейсам"** | 2014-06-06 → 2014-10-21 (+137d) | 2014-07-03 → 2014-11-11 (+131d) | 20d? → 16d? | 42d → 0d | baseline start none → 2014-06-06; baseline finish none → 2014-07-03 |
| 364 | Конфиг ДОП | 2014-06-06 → 2014-10-21 (+137d) | 2014-06-10 → 2014-10-23 (+135d) |  | 42d → 0d | baseline start none → 2014-06-06; baseline finish none → 2014-06-10 |
| 365 | Mapper | 2014-06-11 → 2014-10-24 (+135d) | 2014-06-17 → 2014-10-30 (+135d) |  | 42d → 0d | baseline start none → 2014-06-11; baseline finish none → 2014-06-17 |
| 366 | **Настраиваемые коллекции** | 2014-06-18 → 2014-10-31 (+135d) | 2014-06-27 → 2014-11-11 (+137d) |  | 42d → 0d | baseline start none → 2014-06-18; baseline finish none → 2014-06-27 |
| 367 | **Конфигурация коллекций** | 2014-06-18 → 2014-10-31 (+135d) | 2014-06-26 → 2014-11-10 (+137d) |  | 42d → 0d | baseline start none → 2014-06-18; baseline finish none → 2014-06-26 |
| 368 | Типовая иерархия кастомных папок | 2014-06-18 → 2014-10-31 (+135d) | 2014-06-25 → 2014-11-07 (+135d) |  | 42d → 0d | baseline start none → 2014-06-18; baseline finish none → 2014-06-25 |
| 369 | Доработка расширенного поиска | 2014-06-18 → 2014-10-31 (+135d) | 2014-06-26 → 2014-11-10 (+137d) |  | 42d → 0d | baseline start none → 2014-06-18; baseline finish none → 2014-06-26 |
| 370 | Системные настройки для "Кейсов" | 2014-06-18 → 2014-10-31 (+135d) | 2014-06-25 → 2014-11-07 (+135d) |  | 43d → 1d | baseline start none → 2014-06-18; baseline finish none → 2014-06-25 |
| 371 | Проверка работы | 2014-06-27 → 2014-11-11 (+137d) | 2014-06-27 → 2014-11-11 (+137d) |  | 57d → 15d | baseline start none → 2014-06-27; baseline finish none → 2014-06-27 |
| 372 | **Перенос логики сервисов по "Кейсам"** | 2014-06-10 → 2014-10-23 (+135d) | 2014-06-19 → 2014-11-03 (+137d) |  | 53d → 11d | baseline start none → 2014-06-10; baseline finish none → 2014-06-19 |
| 373 | Задание поставлено | 2014-06-10 → 2014-10-23 (+135d) | 2014-06-10 → 2014-10-23 (+135d) |  | 53d → 11d | baseline start none → 2014-06-10; baseline finish none → 2014-06-10 |
| 374 | Пролведение процедуры Revers Engineering для процессов | 2014-06-11 → 2014-10-24 (+135d) | 2014-06-19 → 2014-11-03 (+137d) |  | 53d → 11d | baseline start none → 2014-06-11; baseline finish none → 2014-06-19 |
| 375 | Реализация в слое CMJ-CMSochi | 2014-06-11 → 2014-10-24 (+135d) | 2014-06-19 → 2014-11-03 (+137d) |  | 53d → 11d | baseline start none → 2014-06-11; baseline finish none → 2014-06-19 |
| 376 | **Разработка коллекций** | 2014-06-20 → 2014-10-24 (+126d) | 2014-07-03 → 2014-11-06 (+126d) |  | 53d → 18d | baseline start none → 2014-06-20; baseline finish none → 2014-07-03 |
| 377 | Коллекции | 2014-06-20 → 2014-10-24 (+126d) | 2014-07-03 → 2014-11-06 (+126d) |  | 53d → 18d | baseline start none → 2014-06-20; baseline finish none → 2014-07-03 |
| 378 | Интеграция по "Кейсам" выполнена | 2014-07-03 → 2014-11-11 (+131d) | 2014-07-03 → 2014-11-11 (+131d) |  | 53d → 15d | baseline start none → 2014-07-03; baseline finish none → 2014-07-03 |
| 379 | **Интеграция с CMJ ПКД** | 2014-06-19 → 2014-11-03 (+137d) | 2014-07-03 → 2014-11-17 (+137d) |  | 53d → 11d | baseline start none → 2014-06-19; baseline finish none → 2014-07-03 |
| 380 | **Перенос логики сервисов по ОО** | 2014-06-19 → 2014-11-03 (+137d) | 2014-07-03 → 2014-11-17 (+137d) |  | 53d → 11d | baseline start none → 2014-06-19; baseline finish none → 2014-07-03 |
| 381 | Задание поставлено | 2014-06-19 → 2014-11-03 (+137d) | 2014-06-19 → 2014-11-03 (+137d) |  | 53d → 11d | baseline start none → 2014-06-19; baseline finish none → 2014-06-19 |
| 382 | Пролведение процедуры Revers Engineering для процессов | 2014-06-20 → 2014-11-04 (+137d) | 2014-07-03 → 2014-11-17 (+137d) |  | 53d → 11d | baseline start none → 2014-06-20; baseline finish none → 2014-07-03 |
| 383 | Реализация в слое CMJ-CMSochi | 2014-06-20 → 2014-11-04 (+137d) | 2014-07-03 → 2014-11-17 (+137d) |  | 53d → 11d | baseline start none → 2014-06-20; baseline finish none → 2014-07-03 |
| 384 | **Интеграция с CMJ по ПРВЗ(мобильность)** | 2014-06-27 → 2014-11-11 (+137d) | 2014-07-18 → 2014-12-02 (+137d) |  | 42d → 0d | baseline start none → 2014-06-27; baseline finish none → 2014-07-18 |
| 385 | Конфиг ДОП | 2014-06-27 → 2014-11-11 (+137d) | 2014-07-01 → 2014-11-13 (+135d) |  | 42d → 0d | baseline start none → 2014-06-27; baseline finish none → 2014-07-01 |
| 386 | Mapper | 2014-07-02 → 2014-11-14 (+135d) | 2014-07-08 → 2014-11-20 (+135d) |  | 42d → 0d | baseline start none → 2014-07-02; baseline finish none → 2014-07-08 |
| 387 | **Настраиваемые коллекции** | 2014-07-09 → 2014-11-21 (+135d) | 2014-07-18 → 2014-12-02 (+137d) |  | 42d → 0d | baseline start none → 2014-07-09; baseline finish none → 2014-07-18 |
| 388 | **Конфигурация коллекций** | 2014-07-09 → 2014-11-21 (+135d) | 2014-07-17 → 2014-12-01 (+137d) |  | 42d → 0d | baseline start none → 2014-07-09; baseline finish none → 2014-07-17 |
| 389 | Типовая иерархия кастомных папок | 2014-07-09 → 2014-11-21 (+135d) | 2014-07-16 → 2014-11-28 (+135d) |  | 42d → 0d | baseline start none → 2014-07-09; baseline finish none → 2014-07-16 |
| 390 | Доработка расширенного поиска | 2014-07-09 → 2014-11-21 (+135d) | 2014-07-17 → 2014-12-01 (+137d) |  | 42d → 0d | baseline start none → 2014-07-09; baseline finish none → 2014-07-17 |
| 391 | Системные настройки для ПРВЗ | 2014-07-09 → 2014-11-21 (+135d) | 2014-07-16 → 2014-11-28 (+135d) |  | 43d → 1d | baseline start none → 2014-07-09; baseline finish none → 2014-07-16 |
| 392 | Проверка работы | 2014-07-18 → 2014-12-02 (+137d) | 2014-07-18 → 2014-12-02 (+137d) |  | 42d → 0d | baseline start none → 2014-07-18; baseline finish none → 2014-07-18 |
| 393 | **Перенос логики сервисов по ПРВЗ** | 2014-07-01 → 2014-11-13 (+135d) | 2014-07-10 → 2014-11-24 (+137d) |  | 48d → 6d | baseline start none → 2014-07-01; baseline finish none → 2014-07-10 |
| 394 | Задание поставлено | 2014-07-01 → 2014-11-13 (+135d) | 2014-07-01 → 2014-11-13 (+135d) |  | 48d → 6d | baseline start none → 2014-07-01; baseline finish none → 2014-07-01 |
| 395 | Пролведение процедуры Revers Engineering для процессов | 2014-07-02 → 2014-11-14 (+135d) | 2014-07-10 → 2014-11-24 (+137d) |  | 48d → 6d | baseline start none → 2014-07-02; baseline finish none → 2014-07-10 |
| 396 | Реализация в слое CMJ-CMSochi | 2014-07-02 → 2014-11-14 (+135d) | 2014-07-10 → 2014-11-24 (+137d) |  | 48d → 6d | baseline start none → 2014-07-02; baseline finish none → 2014-07-10 |
| 397 | **Разработка коллекций** | 2014-07-02 → 2014-11-14 (+135d) | 2014-07-15 → 2014-11-27 (+135d) |  | 45d → 3d | baseline start none → 2014-07-02; baseline finish none → 2014-07-15 |
| 398 | Коллекции | 2014-07-02 → 2014-11-14 (+135d) | 2014-07-15 → 2014-11-27 (+135d) |  | 45d → 3d | baseline start none → 2014-07-02; baseline finish none → 2014-07-15 |
| 399 | Интеграция по ПРВЗ выполнена | 2014-07-18 → 2014-12-02 (+137d) | 2014-07-18 → 2014-12-02 (+137d) |  | 42d → 0d | baseline start none → 2014-07-18; baseline finish none → 2014-07-18 |
| 401 | Основные коннеторы реализованы |  |  |  |  | baseline start none → 2013-12-09; baseline finish none → 2013-12-09 |
| 402 | **Проверка работоспособности решения - Организация демонстрации** |  |  |  |  | baseline start none → 2013-12-09; baseline finish none → 2013-12-12 |
| 403 | Подготовка стенда |  |  |  |  | baseline start none → 2013-12-09; baseline finish none → 2013-12-11 |
| 404 | Подготовка прототипа |  |  |  |  | baseline start none → 2013-12-09; baseline finish none → 2013-12-10 |
| 405 | Проведение демонстраций |  |  |  |  | baseline start none → 2013-12-11; baseline finish none → 2013-12-11 |
| 406 | Анализ результатов - выводы |  |  |  |  | baseline start none → 2013-12-12; baseline finish none → 2013-12-12 |
| 407 | **Сервис работы с вложениями** |  |  |  |  | baseline start none → 2013-07-11; baseline finish none → 2013-08-09 |
| 408 | Принято решение о проектировании сервиса обработки вложений |  |  |  |  | baseline start none → 2013-07-11; baseline finish none → 2013-07-11 |
| 409 | API |  |  |  |  | baseline start none → 2013-07-11; baseline finish none → 2013-07-17 |
| 410 | Реализация |  |  |  |  | baseline start none → 2013-07-18; baseline finish none → 2013-07-26 |
| 411 | Исследования по перехватчику конца транзакции |  |  |  |  | baseline start none → 2013-07-29; baseline finish none → 2013-08-02 |
| 412 | Чистка файлов в случае отката транзакции |  |  |  |  | baseline start none → 2013-08-05; baseline finish none → 2013-08-09 |
| 413 | **Механизм формирования отчетов** |  |  |  |  | baseline start none → 2013-11-01; baseline finish none → 2013-12-12 |
| 414 | Определен состав отчетов |  |  |  |  | baseline start none → 2013-11-01; baseline finish none → 2013-11-01 |
| 415 | Система готова к интеграции с модулем отчетов |  |  |  |  | baseline start none → 2013-11-01; baseline finish none → 2013-11-01 |
| 416 | JDBC-драйвер для системы построения отчётов |  |  |  |  | baseline start none → 2013-11-01; baseline finish none → 2013-11-14 |
| 417 | Интеграция с Jasper Reports |  |  |  |  | baseline start none → 2013-11-15; baseline finish none → 2013-12-12 |
| 418 | **GUI** |  |  |  |  | baseline start none → 2013-04-22; baseline finish none → 2014-08-11 |
| 419 | Принято решение о применении GWT-компонентов |  |  |  |  | baseline start none → 2013-07-22; baseline finish none → 2013-07-22 |
| 420 | Адаптация компонентов GUI из СМ4 для наложения на архитектуру см5 |  |  |  |  | baseline start none → 2013-07-22; baseline finish none → 2013-09-02 |
| 421 | Изучение GWT/Настройка CMJ 4 для дебага |  |  |  |  | baseline start none → 2013-08-05; baseline finish none → 2013-08-08 |
| 422 | Разработка базовой архитектуры GUI на основе GWT-компонентов |  |  |  |  | baseline start none → 2013-07-22; baseline finish none → 2013-07-24 |
| 423 | Интеграция с JAAS/Аутентификация |  |  |  |  | baseline start none → 2013-07-31; baseline finish none → 2013-08-06 |

| ID | Task | Total float | Other |
| --- | --- | --- | --- |
| 424 | Архитектура разметки главного экрана |  | baseline start none → 2013-08-07; baseline finish none → 2013-08-08 |
| 425 | **Панель навигации** |  | baseline start none → 2013-08-09; baseline finish none → 2013-09-18 |
| 426 | Проектирование - панель навигации |  | baseline start none → 2013-08-09; baseline finish none → 2013-08-12 |
| 427 | Разработка - панель навигации |  | baseline start none → 2013-09-11; baseline finish none → 2013-09-18 |
| 428 | GUI - архитектура плагинов/дочерних плагинов. Базис |  | baseline start none → 2013-08-13; baseline finish none → 2013-09-03 |
| 429 | Базовая реализация архитектуры плагинов |  | baseline start none → 2013-09-04; baseline finish none → 2013-09-10 |
| 430 | **GUI - плагин отображения коллекций** |  | baseline start none → 2013-09-04; baseline finish none → 2013-09-24 |
| 431 | Проектирование |  | baseline start none → 2013-09-04; baseline finish none → 2013-09-05 |
| 432 | Разработка |  | baseline start none → 2013-09-17; baseline finish none → 2013-09-24 |
| 433 | **GUI - действия** |  | baseline start none → 2013-04-22; baseline finish none → 2013-09-09 |
| 434 | Проектирование |  | baseline start none → 2013-09-06; baseline finish none → 2013-09-09 |
| 435 | Разработка |  | baseline start none → 2013-04-22; baseline finish none → 2013-04-29 |
| 436 | **Формы встроенного GUI** |  | baseline start none → 2013-09-10; baseline finish none → 2013-09-30 |
| 437 | Конфигурация-архитектура |  | baseline start none → 2013-09-10; baseline finish none → 2013-09-10 |
| 438 | Маппинг на объекты |  | baseline start none → 2013-09-13; baseline finish none → 2013-09-16 |
| 439 | API GWT client-server |  | baseline start none → 2013-09-13; baseline finish none → 2013-09-17 |
| 440 | Реализация чтения |  | baseline start none → 2013-09-24; baseline finish none → 2013-09-30 |
| 441 | Реализация сохранения |  | baseline start none → 2013-09-19; baseline finish none → 2013-09-25 |
| 442 | **GUI - поиск** |  | baseline start none → 2013-12-23; baseline finish none → 2014-02-14 |
| 443 | GUI - поиск. Проектирование |  | baseline start none → 2013-12-23; baseline finish none → 2014-01-29 |
| 444 | GUI - поиск. Реализация |  | baseline start none → 2014-01-30; baseline finish none → 2014-02-14 |
| 445 | **GUI - виджеты разработка** |  | baseline start none → 2013-10-01; baseline finish none → 2014-06-25 |
| 446 | Дата/время |  | baseline start none → 2013-10-01; baseline finish none → 2013-10-07 |
| 447 | Остальные без особенностей стиля ст.лебедева (базовый набор) |  | baseline start none → 2014-02-17; baseline finish none → 2014-04-25 |
| 448 | Остальные для стиля ст.лебедева |  | baseline start none → 2014-04-28; baseline finish none → 2014-06-25 |
| 449 | **GUI - брендинг, стилизация, темы** |  | baseline start none → 2014-06-26; baseline finish none → 2014-08-11 |
| 450 | Концепция |  | baseline start none → 2014-06-26; baseline finish none → 2014-07-09 |
| 451 | Реализация |  | baseline start none → 2014-07-10; baseline finish none → 2014-08-11 |
| 452 | Тестирование производительности конфигурации |  | baseline start none → 2013-09-10; baseline finish none → 2013-10-14 |
| 453 | **Дополнительные сервисы платформы** |  | baseline start none → 2013-12-09; baseline finish none → 2014-08-13 |
| 454 | Расширение функциональности DAO (требования CMJ4.1, базовые требования) |  | baseline start none → 2013-12-09; baseline finish none → 2014-01-29 |
| 455 | Защита конфигурационных файлов от изменений |  | baseline start none → 2014-01-30; baseline finish none → 2014-02-27 |
| 456 | Выделение конфигурации GUI в отдельные сущности, к изменению формата которых система не будет восприимчива |  | baseline start none → 2014-02-28; baseline finish none → 2014-03-27 |
| 457 | Версионность/аудит |  | baseline start none → 2014-03-28; baseline finish none → 2014-04-24 |
| 458 | Блокировки бизнес-объектов |  | baseline start none → 2014-04-25; baseline finish none → 2014-05-28 |
| 459 | Уточнение состава и сроков работ |  | baseline start none → 2014-08-12; baseline finish none → 2014-08-13 |
| 460 | Кросс-СУБД, поддержка Oracle |  | baseline start none → 2014-05-29; baseline finish none → 2014-06-25 |
| 461 | SQL-trace |  | baseline start none → 2014-06-26; baseline finish none → 2014-07-17 |
| 462 | Локализация (на уровне конфигурации) |  | baseline start none → 2014-07-18; baseline finish none → 2014-08-07 |
| 463 | **Интеграция с системой управления учетными записями** |  | baseline start none → 2014-05-29; baseline finish none → 2014-06-17 |
| 464 | Интеграция с ActiveDirectory | 75d → 65d | baseline start none → 2014-05-29; baseline finish none → 2014-06-17 |
| 465 | **Расширение функций сервиса конфигурации** |  | baseline start none → 2013-07-09; baseline finish none → 2014-01-14 |
| 466 | Расширяемость конфигурации |  | baseline start none → 2013-07-09; baseline finish none → 2013-12-11 |
| 467 | Изменение и дополнение конфигурации системы |  | baseline start none → 2013-12-12; baseline finish none → 2014-01-14 |
| 468 | **Сервис для работы с системным журналом** |  | baseline start none → 2014-01-15; baseline finish none → 2014-02-04 |
| 469 | Ведение журнала действий пользователей и действий с объектами системы |  | baseline start none → 2014-01-15; baseline finish none → 2014-01-28 |
| 470 | Настройка уровня логирования |  | baseline start none → 2014-01-29; baseline finish none → 2014-02-04 |
| 471 | **Подсистема нотификаций** |  | baseline start none → 2014-01-20; baseline finish none → 2014-04-02 |
| 472 | Описание принципов устройства и функционирования подсистемы нотификаций |  | baseline start none → 2014-01-20; baseline finish none → 2014-01-31 |
| 473 | Подготовка проекта подсистемы нотификаций |  | baseline start none → 2014-02-03; baseline finish none → 2014-02-25 |
| 474 | **Разработка подсистемы** |  | baseline start none → 2014-03-06; baseline finish none → 2014-04-02 |
| 475 | Доработка существующих сервисов |  | baseline start none → 2014-03-06; baseline finish none → 2014-03-26 |
| 476 | Разработка специфичного функционала подсистемы |  | baseline start none → 2014-03-06; baseline finish none → 2014-03-26 |
| 477 | Сборка и отладка |  | baseline start none → 2014-03-27; baseline finish none → 2014-04-02 |
| 478 | **Архитектурный комитет** |  | baseline start none → 2013-06-11; baseline finish none → 2014-06-30 |
| 479 | Контроль и корректировка технических решений "Архитектурный комитет" |  | baseline start none → 2013-06-11; baseline finish none → 2014-06-30 |
| 480 | **Средства мониторинга** |  | baseline start none → 2014-03-05; baseline finish none → 2014-04-18 |
| 481 | уточнена постановка |  | baseline start none → 2014-03-05; baseline finish none → 2014-03-05 |
| 482 | **Проектирование и формализация** |  | baseline start none → 2014-03-05; baseline finish none → 2014-03-12 |
| 483 | Определение параметров контроля |  | baseline start none → 2014-03-05; baseline finish none → 2014-03-07 |
| 484 | Разработка методики контроля |  | baseline start none → 2014-03-10; baseline finish none → 2014-03-12 |
| 485 | **Реализация** |  | baseline start none → 2014-03-13; baseline finish none → 2014-04-18 |
| 486 | Определение точек контроля системы |  | baseline start none → 2014-03-13; baseline finish none → 2014-03-21 |
| 487 | Разработка счетчиков точек контроля |  | baseline start none → 2014-03-24; baseline finish none → 2014-04-11 |
| 488 | Сборка "zabbix" |  | baseline start none → 2014-04-14; baseline finish none → 2014-04-18 |
| 489 | **Стабилизация ядра системы** |  | baseline start none → 2014-04-03; baseline finish none → 2014-07-09 |
| 490 | Исправление ошибок в ядре |  | baseline start none → 2014-04-03; baseline finish none → 2014-07-09 |
| 491 | Доработка недостающего функционала |  | baseline start none → 2014-04-03; baseline finish none → 2014-07-09 |
| 492 | **Разработка Форм для АРМ тематических администраторов** |  | baseline start none → 2013-12-23; baseline finish none → 2014-06-25 |
| 493 | Предварительный Сбор и подготовка требований |  | baseline start none → 2013-12-23; baseline finish none → 2014-01-30 |

| ID | Task | Total float | Predecessors | Other |
| --- | --- | --- | --- | --- |
| 494 | Уточнение стребований к АРМ тематичесхких админов |  |  | baseline start none → 2014-02-10; baseline finish none → 2014-03-21 |
| 495 | **Подготовка работы со списками значений** |  |  | baseline start none → 2014-03-24; baseline finish none → 2014-05-06 |
| 496 | Разработка функционала учета организационно штатной структуры |  |  | baseline start none → 2014-03-24; baseline finish none → 2014-04-04 |
| 497 | Разработка функционала с рубрикаторами (сложные справочники) |  |  | baseline start none → 2014-04-07; baseline finish none → 2014-04-18 |
| 498 | Разработка функционала для работы с словарями данных (простые, линейные справочники) |  |  | baseline start none → 2014-04-21; baseline finish none → 2014-05-06 |
| 499 | Разработка форм для работы в GUI (настройки форм) |  |  | baseline start none → 2014-05-07; baseline finish none → 2014-05-21 |
| 500 | Разработка структуры рабочего места АРМ |  |  | baseline start none → 2014-05-22; baseline finish none → 2014-05-28 |
| 501 | Разработка специфичных для форм АРМ элементов GUI |  |  | baseline start none → 2014-05-29; baseline finish none → 2014-06-25 |
| 502 | **Подготовка базового набора отчетов и ГО** |  |  | baseline start none → 2014-02-10; baseline finish none → 2014-07-16 |
| 503 | Данные для подготовки базового набора отчетов собраны |  |  | baseline start none → 2014-02-10; baseline finish none → 2014-02-10 |
| 504 | Структура данных для отчетов подготовлена и описана |  |  | baseline start none → 2014-02-10; baseline finish none → 2014-02-10 |
| 505 | Механизм управления отчетными формами подготовлен |  |  | baseline start none → 2014-02-10; baseline finish none → 2014-02-10 |
| 506 | Уточнение требований по шаблонам отчетов |  |  | baseline start none → 2014-02-10; baseline finish none → 2014-03-07 |
| 507 | Требования по отображению отчетов сформированы |  |  | baseline start none → 2014-03-07; baseline finish none → 2014-03-07 |
| 508 | GUI - отображение отчётов |  |  | baseline start none → 2014-03-10; baseline finish none → 2014-03-28 |
| 509 | Подготовка отчетов |  |  | baseline start none → 2014-03-10; baseline finish none → 2014-05-06 |
| 510 | Сопряжение с мобильным клиентом СМ4 |  |  | baseline start none → 2014-05-07; baseline finish none → 2014-07-16 |
| 511 | **Тестирование** | 46d → 101d | Получена версия CM4.X c WF движком → none | baseline start none → 2014-03-19; baseline finish none → 2014-07-14 |
| 512 | **Функциональное тестирование** | 59d → 114d |  | baseline start none → 2014-03-19; baseline finish none → 2014-06-23 |
| 513 | Подготовка ПМИ |  |  | baseline start none → 2014-03-19; baseline finish none → 2014-03-25 |
| 514 | Разработка "сценариев тестирования" |  |  | baseline start none → 2014-03-19; baseline finish none → 2014-04-08 |
| 515 | Разработка модели нагрузки для тестирования |  |  | baseline start none → 2014-03-26; baseline finish none → 2014-04-08 |
| 516 | Адаптация автоматизированных сценариев от СМ4 для создания нагрузки |  |  | baseline start none → 2014-03-26; baseline finish none → 2014-04-29 |
| 517 | **Проведение тестирования** | 51d → 106d |  | baseline start none → 2014-04-28; baseline finish none → 2014-06-23 |
| 518 | **Подготовка среды тестирования** | 51d → 106d |  | baseline start none → 2014-04-28; baseline finish none → 2014-05-21 |
| 519 | Разворачивание системы |  |  | baseline start none → 2014-04-28; baseline finish none → 2014-05-07 |
| 520 | Система готова для подключения инструментов мониторинга |  |  | baseline start none → 2014-05-07; baseline finish none → 2014-05-07 |
| 521 | Наполнение данными |  |  | baseline start none → 2014-05-07; baseline finish none → 2014-05-21 |
| 522 | Среда тестирования готова |  |  | baseline start none → 2014-05-21; baseline finish none → 2014-05-21 |
| 523 | Проведение тестирования |  |  | baseline start none → 2014-05-22; baseline finish none → 2014-06-04 |
| 524 | **Обработка результатов тестирования и внесение изменений в модуль** |  |  | baseline start none → 2014-06-03; baseline finish none → 2014-06-23 |
| 525 | Устранение замечаний по результатам функционального тестирования |  |  | baseline start none → 2014-06-03; baseline finish none → 2014-06-23 |
| 526 | Проверка устранения замечаний |  |  | baseline start none → 2014-06-16; baseline finish none → 2014-06-23 |
| 527 | **Нагрузочное тестирование** |  |  | baseline start none → 2014-06-04; baseline finish none → 2014-07-14 |
| 528 | Стенд для нагрузочного тестирования подготовлен |  |  | baseline start none → 2014-06-04; baseline finish none → 2014-06-04 |
| 529 | Проведения нагрузочного тестирования |  |  | baseline start none → 2014-06-24; baseline finish none → 2014-07-07 |
| 530 | Обработка результатов нагрузочного тестирования |  |  | baseline start none → 2014-07-08; baseline finish none → 2014-07-14 |
| 531 | **Подготовка документации** |  |  | baseline start none → 2014-03-19; baseline finish none → 2014-07-11 |
| 532 | Разработка документа "Концепция системы " |  |  | baseline start none → 2014-03-19; baseline finish none → 2014-05-16 |
| 533 | Разработка "Software Architecture Document" |  |  | baseline start none → 2014-05-19; baseline finish none → 2014-07-11 |
| 534 | Документы подготовлены |  |  | baseline start none → 2014-07-11; baseline finish none → 2014-07-11 |

## Version 64 (saved 2014-03-31)

Last finish stays 2014-12-02. Complete tasks 176 → 175.

Added:

| ID | Task | Duration | Start | Finish | Resources |
| --- | --- | --- | --- | --- | --- |
| 223 | таблица описания объектов | 5d | 2013-04-22 | 2013-04-26 | 221 |

Changed:

| ID | Task | Start | Finish | Duration | Complete | Total float | Predecessors |
| --- | --- | --- | --- | --- | --- | --- | --- |
| 68 | **Слой сопряжения CMJ server (CM4)** | 2013-08-05 A → 2013-04-22 A (-105d) |  | 336d? → 406d? |  |  |  |
| 219 | **Переход на 4.3 CMJ** | 2014-03-19 → 2013-04-22 (-331d) |  | 62d → 286d |  |  |  |
| 224 | Конфиг ДОП | 2014-03-26 → 2014-04-02 (+7d) | 2014-03-28 → 2014-04-04 (+7d) |  |  | 123d → 118d | 206, 221 → 206, 221, 220 |
| 225 | Mapper | 2014-03-31 → 2014-04-07 (+7d) | 2014-04-04 → 2014-04-11 (+7d) |  |  | 159d → 154d |  |
| 279 | **Интеграция с CMJ по WF** | 2014-04-14 A → 2014-04-14 |  |  | 1% → 0% | 55d → 0d |  |
| 280 | Конфиг ДОП | 2014-04-14 A → 2014-04-14 | 2014-04-14 A → 2014-04-14 |  | 100% → 0% | none → 0d |  |

## Version 65 (saved 2014-04-01)

Last finish stays 2014-12-02. Complete tasks 175 → 179.

Changed:

| ID | Task | Start | Finish | Complete | Total float |
| --- | --- | --- | --- | --- | --- |
| 20 | **Проектирование и формирование ядра системы** |  |  | 47% → 48% |  |
| 68 | **Слой сопряжения CMJ server (CM4)** |  |  | 32% → 33% |  |
| 172 | **Разработка коллекций** |  |  | 95% → 96% |  |
| 175 | **Настраиваемые коллекции** |  |  | 89% → 90% |  |
| 176 | **Конфигурация коллекций** |  | 2014-03-05 A | 97% → 100% | 66d → none |
| 178 | Системные настройки для Вх |  | 2014-03-05 A | 90% → 100% | 66d → none |
| 204 | **Интеграция с CMJ по Исходящие документам** | 2014-03-07 A |  | 0% → 21% |  |
| 205 | Конфиг ДОП | 2014-03-07 A | 2014-03-11 A | 0% → 100% | 114d → none |
| 206 | Mapper | 2014-03-12 A | 2014-03-20 A | 0% → 100% | 115d → none |
| 219 | **Переход на 4.3 CMJ** | 2013-04-22 A |  | 0% → 6% |  |
| 220 | **Модификация CMJ** | 2014-03-19 A |  | 0% → 50% |  |
| 221 | Для отложенного добавления персон | 2014-03-19 A | 2014-03-25 A | 0% → 100% | 118d → none |

## Version 66 (saved 2014-04-03)

Last finish stays 2014-12-02. Complete tasks 179 → 180.

Removed: 227 Настройка адаптеров для 4.3; 228 Помещение сущностей во временный модуль

Changed:

| ID | Task | Start | Finish | Duration | Complete | Total float | Predecessors | Other |
| --- | --- | --- | --- | --- | --- | --- | --- | --- |
| 68 | **Слой сопряжения CMJ server (CM4)** | 2013-04-22 A → 2013-08-05 A (+105d) |  | 406d? → 336d? | 33% → 34% |  |  |  |
| 144 | ВнД | 2014-02-10 A | 2014-02-10 A |  | 0% → 100% | 106.96d → none |  |  |
| 165 | Задание выдано | 2014-02-06 A |  |  | 0% → 95% | 211d → 0d |  |  |
| 219 | **Переход на 4.3 CMJ** | 2013-04-22 A → 2014-03-19 A (+331d) | 2014-06-17 → 2014-06-11 (-6d) | 286d → 58d | 6% → 9% | 110d → 114d |  |  |
| 220 | **Модификация CMJ** |  | 2014-04-01 → 2014-04-08 (+7d) | 10d → 15d |  | 118d → 132d |  |  |
| 222 | Адаптация под функционал настраиваемых реквизитов | 2014-03-26 → 2014-04-02 (+7d) | 2014-04-01 → 2014-04-08 (+7d) |  |  | 118d → 113d | 221 → 221FS+5d |  |
| 223 | таблица описания объектов | 2013-04-22 → 2014-04-02 (+345d) | 2013-04-26 → 2014-04-08 (+347d) |  |  | 391d → 157d | none → 222SS | resources 221 → Илья |
| 224 | Конфиг ДОП | 2014-04-02 → 2014-04-09 (+7d) | 2014-04-04 → 2014-04-11 (+7d) |  |  | 118d → 132d |  | resources Александр Власюк → Глеб Ноздрачев |
| 225 | Mapper | 2014-04-07 → 2014-04-14 (+7d) | 2014-04-11 → 2014-04-21 (+10d) | 5d → 6d |  | 154d → 148d |  | resources Александр Власюк → Глеб Ноздрачев |
| 226 | Коллекции |  | 2014-06-17 → 2014-06-11 (-6d) | 8d → 4d |  | 63d → 67d |  |  |
| 227 | Проверки сборки и функционала | 2014-04-18 → 2014-04-09 (-9d) | 2014-05-07 → 2014-04-15 (-22d) | 12d → 5d |  | 118d → 132d | 224SS, Помещение сущностей во временный модуль → 224SS |  |
| 228 | Интеграция с мобильным клиентом - верефикация возможности | 2014-05-08 → 2014-04-16 (-22d) | 2014-06-05 → 2014-05-16 (-20d) |  |  | 118d → 132d |  |  |
| 229 | **Интеграция с CMJ по ОРД** |  | 2014-06-27 → 2014-06-23 (-4d) | 68d? → 64d? |  | 112d → 116d |  |  |
| 242 | **Разработка коллекций** | 2014-06-18 → 2014-06-12 (-6d) | 2014-06-27 → 2014-06-23 (-4d) |  |  | 63d → 67d |  |  |
| 243 | Коллекции | 2014-06-18 → 2014-06-12 (-6d) | 2014-06-27 → 2014-06-23 (-4d) |  |  | 63d → 67d |  |  |
| 244 | Интеграция по ОРД выполнена | 2014-06-27 → 2014-06-23 (-4d) | 2014-06-27 → 2014-06-23 (-4d) |  |  | 112d → 116d |  |  |
| 245 | **Интеграция с CMJ по самостоятельным поручениям** |  | 2014-07-09 → 2014-07-03 (-6d) | 68d? → 64d? |  | 104d → 108d |  |  |
| 258 | **Разработка коллекций** | 2014-06-30 → 2014-06-24 (-6d) | 2014-07-09 → 2014-07-03 (-6d) |  |  | 104d → 108d |  |  |
| 259 | Коллекции | 2014-06-30 → 2014-06-24 (-6d) | 2014-07-09 → 2014-07-03 (-6d) |  |  | 104d → 108d |  |  |
| 260 | Интеграция по СамПор выполнена | 2014-07-09 → 2014-07-03 (-6d) | 2014-07-09 → 2014-07-03 (-6d) |  |  | 104d → 108d |  |  |
| 261 | **Интеграция с CMJ по ОГ** |  | 2014-07-09 → 2014-07-03 (-6d) | 68d? → 64d? |  | 104d → 108d |  |  |
| 274 | **Разработка коллекций** | 2014-06-30 → 2014-06-24 (-6d) | 2014-07-09 → 2014-07-03 (-6d) |  |  | 63d → 67d |  |  |
| 275 | Коллекции | 2014-06-30 → 2014-06-24 (-6d) | 2014-07-09 → 2014-07-03 (-6d) |  |  | 8d → 67d |  |  |
| 276 | Интеграция по ОГ выполнена | 2014-07-09 → 2014-07-03 (-6d) | 2014-07-09 → 2014-07-03 (-6d) |  |  | 104d → 108d |  |  |
| 290 | **Разработка адаптеров для СрвСогл** | 2014-06-17 → 2014-06-11 (-6d) | 2014-07-01 → 2014-06-25 (-6d) |  |  | 110d → 114d |  |  |
| 291 | Задание поставлено | 2014-06-17 → 2014-06-11 (-6d) | 2014-06-17 → 2014-06-11 (-6d) |  |  | 110d → 114d |  |  |
| 292 | Разработка архитектуры дя адаптеров | 2014-06-18 → 2014-06-12 (-6d) | 2014-06-24 → 2014-06-18 (-6d) |  |  | 110d → 114d |  |  |
| 293 | Разработка адаптеров | 2014-06-25 → 2014-06-19 (-6d) | 2014-07-01 → 2014-06-25 (-6d) |  |  | 110d → 114d |  |  |
| 294 | **Разработка коллекций** | 2014-07-10 → 2014-07-04 (-6d) | 2014-07-16 → 2014-07-10 (-6d) |  |  | 63d → 67d |  |  |
| 295 | Коллекции | 2014-07-10 → 2014-07-04 (-6d) | 2014-07-16 → 2014-07-10 (-6d) |  |  | 63d → 67d |  |  |
| 468 | **Подсистема нотификаций** |  | 2014-04-02 → 2014-04-11 (+9d) | 53d → 60d | 8% → 7% | 46d → 94d |  |  |
| 470 | Подготовка проекта подсистемы нотификаций |  | 2014-02-25 → 2014-03-06 (+9d) | 17d → 24d |  | 46d → 94d |  |  |
| 471 | **Разработка подсистемы** | 2014-03-06 → 2014-03-17 (+11d) | 2014-04-02 → 2014-04-11 (+9d) |  |  | 46d → 94d |  |  |
| 472 | Доработка существующих сервисов | 2014-03-06 → 2014-03-17 (+11d) | 2014-03-26 → 2014-04-04 (+9d) |  |  | 46d → 94d |  |  |
| 473 | Разработка специфичного функционала подсистемы | 2014-03-06 → 2014-03-17 (+11d) | 2014-03-26 → 2014-04-04 (+9d) |  |  | 46d → 94d |  | resources (БТЛ) Михаил Ларин [50%]; Роман Митинков → Ардабьев Илья |
| 474 | Сборка и отладка | 2014-03-27 → 2014-04-07 (+11d) | 2014-04-02 → 2014-04-11 (+9d) |  |  | 46d → 94d |  |  |
| 486 | **Стабилизация ядра системы** | 2014-04-03 → 2014-04-14 (+11d) | 2014-07-09 → 2014-07-18 (+9d) |  |  | 46d → 94d |  |  |
| 487 | Исправление ошибок в ядре | 2014-04-03 → 2014-04-14 (+11d) | 2014-07-09 → 2014-07-18 (+9d) |  |  | 46d → 94d |  |  |
| 488 | Доработка недостающего функционала | 2014-04-03 → 2014-04-14 (+11d) | 2014-07-09 → 2014-07-18 (+9d) |  |  | 46d → 94d |  |  |

## Version 67 (saved 2014-04-10)

Last finish 2014-12-02 → 2014-09-16 (-77d). Complete tasks 180 → 221.

Changed:

| ID | Task | Start | Finish | Duration | Complete | Total float | Predecessors | Other |
| --- | --- | --- | --- | --- | --- | --- | --- | --- |
| 1 | **Разработка версии CM4/5** | 2013-04-22 A → 2013-04-19 A (-3d) | 2014-12-02 → 2014-09-16 (-77d) | 406d? → 352d? | 38% → 47% |  |  |  |
| 9 | **Создание модуля "Делопроизводство" (документоориентированная среда)** | 2013-04-22 A → 2013-04-19 A (-3d) | 2014-12-02 → 2014-08-29 (-95d) | 406d? → 340d? | 40% → 51% | 0d → 12d |  |  |
| 20 | **Проектирование и формирование ядра системы** |  | 2014-12-02 → 2014-08-29 (-95d) | 406d? → 339d? | 48% → 64% | 0d → 12d |  |  |
| 68 | **Слой сопряжения CMJ server (CM4)** |  | 2014-12-02 → 2014-08-29 (-95d) | 336d? → 269d? | 34% → 62% | 0d → 12d |  |  |
| 70 | Реализация коннекторов к платформе |  | 2013-12-23 A |  | 29% → 100% | 86d → none |  |  |
| 76 | **Интеграция с CMJ по Внутренним Документам** |  |  |  | 96% → 99% | 173d → 0d |  |  |
| 96 | **Доработка ВнД** |  | 2014-03-25 A |  | 86% → 100% | 87.8d → none |  |  |
| 102 | **Перенос Логики работы агентов** |  | 2014-03-25 A |  | 79% → 100% | 87.8d → none |  |  |
| 104 | Реализация и отладка переноса логики |  | 2014-03-25 A |  | 75% → 100% | 87.8d → none |  |  |
| 149 | **Адаптация CMJ-server** |  | 2014-03-31 A |  | 57% → 100% | 173d → none |  |  |
| 152 | Примененеие механизма замены @-формул | 2014-03-27 A | 2014-03-31 A |  | 0% → 100% | 173d → none |  |  |
| 164 | **Интеграция с CMJ по Входящим документам** |  | 2014-05-07 A |  | 59% → 100% | 87.8d → none |  |  |
| 165 | Задание выдано |  | 2014-02-06 A |  | 95% → 100% | 0d → none |  |  |
| 168 | **Перенос логики сервисов по вхД** |  | 2014-05-07 A |  | 3% → 100% | 87.8d → none |  |  |
| 170 | Пролведение процедуры Revers Engineering для процессов | 2014-03-26 A | 2014-04-16 A |  | 0% → 100% | 87.8d → none |  |  |
| 171 | Реализация в слое CMJ-CMSochi | 2014-04-16 A | 2014-05-07 A |  | 0% → 100% | 87.8d → none |  |  |
| 172 | **Разработка коллекций** |  | 2014-03-10 A |  | 96% → 100% | 67d → none |  |  |
| 175 | **Настраиваемые коллекции** |  | 2014-03-10 A |  | 90% → 100% | 67d → none |  |  |
| 180 | Доработка расширенного поиска |  | 2014-03-10 A |  | 80% → 100% | 67d → none |  |  |
| 181 | Интеграция по Вх выполнена | 2014-03-10 A | 2014-03-10 A |  | 0% → 100% | 120d → none |  |  |
| 182 | **Подключение механизма контроля доступа** | 2014-03-20 A | 2014-03-27 A |  | 0% → 100% | 175d → none |  |  |
| 183 | Доступность Ноздрачева | 2014-03-20 A | 2014-03-20 A |  | 0% → 100% | 175d → none |  |  |
| 184 | создание типовых матриц доступа | 2014-03-20 A | 2014-03-27 A |  | 0% → 100% | 175d → none |  |  |
| 185 | **Интеграция с CMJ по Договорам** |  |  |  | 15% → 85% | 137d → 82d |  |  |
| 186 | Определен исполнитель по составлению конфигураций | 2014-02-27 A | 2014-02-27 A |  | 0% → 100% | 193d → none |  |  |
| 187 | Проектирование и получение оценки работ | 2014-02-28 A | 2014-03-03 A |  | 0% → 100% | 193d → none |  |  |
| 190 | **Настраиваемые коллекции** |  | 2014-04-08 A |  | 33% → 100% | 167d → none |  |  |
| 191 | **Конфигурация коллекций** | 2014-03-17 A | 2014-04-07 A |  | 0% → 100% | 167d → none |  |  |
| 192 | Типовая иерархия кастомных папок (3шт) | 2014-03-17 A | 2014-03-31 A |  | 0% → 100% | 167d → none |  |  |
| 193 | Системные настройки для Дгв | 2014-04-01 A | 2014-04-07 A |  | 0% → 100% | 167d → none |  |  |
| 194 | Проверка работы | 2014-04-08 A | 2014-04-08 A |  | 0% → 100% | 167d → none |  |  |
| 197 | **Перенос логики сервисов по Дгв** | 2014-05-07 → 2014-04-16 A (-21d) | 2014-05-23 → 2014-05-08 (-15d) | 11d → 14d | 0% → 36% | 87.8d → 147.8d |  |  |
| 198 | Задача поставлена | 2014-05-07 A | 2014-05-08 A |  | 0% → 100% | 87.8d → none | 168 → none |  |
| 199 | Пролведение процедуры Revers Engineering для процессов | 2014-05-08 → 2014-04-16 A (-22d) | 2014-05-23 → 2014-04-30 (-23d) |  | 0% → 35% | 87.8d → 151.8d | 198, 188 → 170 |  |
| 200 | Реализация в слое CMJ-CMSochi | 2014-05-08 → 2014-04-16 A (-22d) | 2014-05-23 → 2014-04-30 (-23d) |  | 0% → 30% | 87.8d → 0d |  |  |
| 201 | **Разработка коллекций** | 2014-03-11 A |  |  | 0% → 97% |  |  |  |
| 202 | Коллекции | 2014-03-11 A |  |  | 0% → 97% | 63d → 67d |  |  |
| 204 | **Интеграция с CMJ по Исходящие документам** |  |  |  | 21% → 51% | 85d → 12d |  |  |
| 205 | Конфиг ДОП |  |  |  |  |  | 188 → 188, 196 |  |
| 207 | **Настраиваемые коллекции** | 2014-03-12 A | 2014-03-21 A |  | 0% → 100% | 118d → none |  |  |
| 208 | **Конфигурация коллекций** | 2014-03-12 A | 2014-03-19 A |  | 0% → 100% | 118d → none |  |  |
| 209 | Типовая иерархия кастомных папок (3шт) | 2014-03-12 A | 2014-03-19 A |  | 0% → 100% | 114d → none |  |  |
| 210 | Системные настройки для Исх | 2014-03-12 A | 2014-03-19 A |  | 0% → 100% | 118d → none |  |  |
| 211 | Проверка работы | 2014-03-20 A | 2014-03-21 A |  | 0% → 100% | 114d → none |  |  |
| 212 | **Перенос логики сервисов по Исх** | 2014-05-23 → 2014-04-30 (-23d) | 2014-06-03 → 2014-05-14 (-20d) |  |  | 87.8d → 0d |  |  |
| 213 | Задание поставлено | 2014-05-23 → 2014-04-30 (-23d) | 2014-05-23 → 2014-04-30 (-23d) |  |  | 87.8d → 0d |  |  |
| 214 | Пролведение процедуры Revers Engineering для процессов | 2014-05-23 → 2014-04-30 (-23d) | 2014-06-03 → 2014-05-14 (-20d) |  |  | 87.8d → 0d |  |  |
| 215 | Реализация в слое CMJ-CMSochi | 2014-05-23 → 2014-04-30 (-23d) | 2014-06-03 → 2014-05-14 (-20d) |  |  | 87.8d → 0d |  |  |
| 219 | **Переход на 4.3 CMJ** |  |  |  | 9% → 92% | 114d → 12d |  |  |
| 220 | **Модификация CMJ** |  | 2014-04-08 A |  | 50% → 100% | 132d → none |  |  |
| 222 | Адаптация под функционал настраиваемых реквизитов | 2014-04-02 A | 2014-04-08 A |  | 0% → 100% | 113d → none |  |  |
| 223 | таблица описания объектов | 2014-04-02 → 2014-04-09 A (+7d) | 2014-04-08 → 2014-04-15 A (+7d) |  | 0% → 100% | 157d → none | 222SS → 222, 222SS | resources Илья → Глеб Ноздрачев |
| 224 | Конфиг ДОП | 2014-04-09 A | 2014-04-11 A |  | 0% → 100% | 132d → none |  |  |
| 225 | Mapper | 2014-04-14 A | 2014-04-21 A |  | 0% → 100% | 148d → none |  |  |
| 227 | Проверки сборки и функционала | 2014-04-09 A | 2014-04-15 A |  | 0% → 100% | 132d → none |  |  |
| 228 | Интеграция с мобильным клиентом - верефикация возможности | 2014-04-16 A | 2014-05-16 A |  | 0% → 100% | 132d → none |  |  |
| 229 | **Интеграция с CMJ по ОРД** |  |  |  | 16% → 56% | 116d → 61d |  |  |
| 232 | **Настраиваемые коллекции** | 2014-04-02 A | 2014-04-11 A |  | 0% → 100% | 109d → none |  |  |
| 233 | **Конфигурация коллекций** | 2014-04-02 A | 2014-04-10 A |  | 0% → 100% | 109d → none |  |  |
| 234 | Типовая иерархия кастомных папок (3шт) | 2014-04-02 A | 2014-04-09 A |  | 0% → 100% | 109d → none |  |  |
| 235 | Системные настройки для ОРД | 2014-04-02 A | 2014-04-09 A |  | 0% → 100% | 158d → none |  |  |
| 236 | Доработка расширенного поиска | 2014-04-02 A | 2014-04-10 A |  | 0% → 100% | 109d → none |  |  |
| 237 | Проверка работы | 2014-04-11 A | 2014-04-11 A |  | 0% → 100% | 164d → none |  |  |
| 238 | **Перенос логики сервисов по ОРД** | 2014-06-03 → 2014-05-14 (-20d) | 2014-06-12 → 2014-05-23 (-20d) |  |  | 87.8d → 0d |  |  |
| 239 | Задание поставлено | 2014-06-03 → 2014-05-14 (-20d) | 2014-06-03 → 2014-05-14 (-20d) |  |  | 87.8d → 0d |  |  |
| 240 | Пролведение процедуры Revers Engineering для процессов | 2014-06-03 → 2014-05-14 (-20d) | 2014-06-12 → 2014-05-23 (-20d) |  |  | 87.8d → 39.8d |  |  |
| 241 | Реализация в слое CMJ-CMSochi | 2014-06-03 → 2014-05-14 (-20d) | 2014-06-12 → 2014-05-23 (-20d) |  |  | 116.8d → 39.8d |  |  |
| 245 | **Интеграция с CMJ по самостоятельным поручениям** |  |  |  | 16% → 56% | 108d → 53d |  |  |
| 248 | **Настраиваемые коллекции** | 2014-04-14 A | 2014-04-23 A |  | 0% → 100% | 156d → none |  |  |
| 249 | **Конфигурация коллекций** | 2014-04-14 A | 2014-04-22 A |  | 0% → 100% | 156d → none |  |  |

| ID | Task | Start | Finish | Duration | Complete | Total float | Predecessors | Other |
| --- | --- | --- | --- | --- | --- | --- | --- | --- |
| 250 | Типовая иерархия кастомных папок (3шт) | 2014-04-14 A | 2014-04-21 A |  | 0% → 100% | 156d → none |  |  |
| 251 | Системные настройки для СамПор | 2014-04-14 A | 2014-04-21 A |  | 0% → 100% | 157d → none |  |  |
| 252 | Доработка расширенного поиска | 2014-04-14 A | 2014-04-22 A |  | 0% → 100% | 156d → none |  |  |
| 253 | Проверка работы | 2014-04-23 A | 2014-04-23 A |  | 0% → 100% | 156d → none |  |  |
| 254 | **Перенос логики сервисов по СамПор** | 2014-06-12 → 2014-05-23 (-20d) | 2014-06-23 → 2014-06-03 (-20d) |  |  | 116.8d → 39.8d |  |  |
| 255 | Задание поставлено | 2014-06-12 → 2014-05-23 (-20d) | 2014-06-12 → 2014-05-23 (-20d) |  |  | 116.8d → 130.8d |  |  |
| 256 | Пролведение процедуры Revers Engineering для процессов | 2014-06-12 → 2014-05-23 (-20d) | 2014-06-23 → 2014-06-03 (-20d) |  |  | 116.8d → 39.8d |  |  |
| 257 | Реализация в слое CMJ-CMSochi | 2014-06-12 → 2014-05-23 (-20d) | 2014-06-23 → 2014-06-03 (-20d) |  |  | 116.8d → 39.8d |  |  |
| 261 | **Интеграция с CMJ по ОГ** |  |  |  | 16% → 56% | 108d → 53d |  |  |
| 264 | **Настраиваемые коллекции** | 2014-04-14 A | 2014-04-23 A |  | 0% → 100% | 108d → none |  |  |
| 265 | **Конфигурация коллекций** | 2014-04-14 A | 2014-04-22 A |  | 0% → 100% | 108d → none |  |  |
| 266 | Типовая иерархия кастомных папок (3шт) | 2014-04-14 A | 2014-04-21 A |  | 0% → 100% | 108d → none |  |  |
| 267 | Системные настройки для ОГ | 2014-04-14 A | 2014-04-21 A |  | 0% → 100% | 109d → none |  |  |
| 268 | Доработка расширенного поиска | 2014-04-14 A | 2014-04-22 A |  | 0% → 100% | 108d → none |  |  |
| 269 | Проверка работы | 2014-04-23 A | 2014-04-23 A |  | 0% → 100% | 156d → none |  |  |
| 270 | **Перенос логики сервисов по ОГ** | 2014-06-12 → 2014-06-03 (-9d) | 2014-06-23 → 2014-06-12 (-11d) |  |  | 87.8d → 39.8d |  |  |
| 271 | Задание поставлено | 2014-06-12 → 2014-06-03 (-9d) | 2014-06-12 → 2014-06-03 (-9d) |  |  | 32.8d → 94.8d | 262, 240 → 262, 240, 257 |  |
| 272 | Пролведение процедуры Revers Engineering для процессов | 2014-06-12 → 2014-06-03 (-9d) | 2014-06-23 → 2014-06-12 (-11d) |  |  | 87.8d → 39.8d |  |  |
| 273 | Реализация в слое CMJ-CMSochi | 2014-06-12 → 2014-06-03 (-9d) | 2014-06-23 → 2014-06-12 (-11d) |  |  | 87.8d → 39.8d |  |  |
| 277 | **Интеграция с CMJ по WF + связи** | 2014-04-14 A | 2014-09-16 → 2014-07-10 (-68d) | 109d? → 61d? | 0% → 10% | 0d → 48d |  | was named Интеграция с CMJ по WF |
| 278 | Конфиг ДОП | 2014-04-14 A | 2014-04-14 A |  | 0% → 100% | 0d → none |  |  |
| 279 | Mapper | 2014-04-15 A | 2014-09-04 → 2014-04-17 A (-140d) | 100d → 3d | 0% → 100% | 0d → none |  |  |
| 280 | **Настраиваемые коллекции** | 2014-09-05 → 2014-04-23 (-135d) | 2014-09-16 → 2014-05-06 (-133d) |  |  | 14d → 53d |  |  |
| 281 | **Конфигурация коллекций** | 2014-09-05 → 2014-04-23 (-135d) | 2014-09-15 → 2014-05-05 (-133d) |  |  | 14d → 53d |  |  |
| 282 | Типовая иерархия кастомных папок (3шт) | 2014-09-05 → 2014-04-23 (-135d) | 2014-09-10 → 2014-04-28 (-135d) |  |  | 14d → 53d |  |  |
| 283 | Системные настройки для WF | 2014-09-05 → 2014-04-23 (-135d) | 2014-09-10 → 2014-04-28 (-135d) |  |  | 14d → 53d |  |  |
| 284 | Доработка расширенного поиска | 2014-09-05 → 2014-04-23 (-135d) | 2014-09-15 → 2014-05-05 (-133d) |  |  | 55d → 94d |  |  |
| 285 | Проверка работы | 2014-09-16 → 2014-05-06 (-133d) | 2014-09-16 → 2014-05-06 (-133d) |  |  | 55d → 94d |  |  |
| 286 | **Перенос логики сервисов по WF** | 2014-06-23 → 2014-06-12 (-11d) | 2014-06-26 → 2014-06-17 (-9d) |  |  | 87.8d → 39.8d |  |  |
| 287 | Задание поставлено | 2014-06-23 → 2014-06-12 (-11d) | 2014-06-23 → 2014-06-12 (-11d) |  |  | 87.8d → 39.8d |  |  |
| 288 | Пролведение процедуры Revers Engineering для процессов | 2014-06-23 → 2014-06-12 (-11d) | 2014-06-26 → 2014-06-17 (-9d) |  |  | 87.8d → 39.8d |  |  |
| 289 | Реализация в слое CMJ-CMSochi | 2014-06-23 → 2014-06-12 (-11d) | 2014-06-26 → 2014-06-17 (-9d) |  |  | 87.8d → 39.8d |  |  |
| 296 | Интеграция по WF выполнена | 2014-09-16 → 2014-07-10 (-68d) | 2014-09-16 → 2014-07-10 (-68d) |  |  | 55d → 48d |  |  |
| 297 | **Интеграция с CMJ по сервису Контроля Заданий** | 2014-09-05 → 2014-04-18 (-140d) | 2014-09-26 → 2014-07-21 (-67d) | 16d? → 64d? |  | 0d → 41d |  |  |
| 298 | Конфиг ДОП | 2014-09-05 → 2014-04-18 (-140d) | 2014-09-09 → 2014-04-22 (-140d) |  |  | 0d → 42d |  |  |
| 299 | Mapper | 2014-09-10 → 2014-04-23 (-140d) | 2014-09-16 → 2014-04-29 (-140d) |  |  | 0d → 42d |  |  |
| 300 | **Настраиваемые коллекции** | 2014-09-17 → 2014-06-12 (-97d) | 2014-09-26 → 2014-06-26 (-92d) | 8d? → 10d? |  | 29d → 42.8d |  |  |
| 301 | **Конфигурация коллекций** | 2014-09-17 → 2014-06-12 (-97d) | 2014-09-25 → 2014-06-25 (-92d) | 7d → 9d |  | 29d → 42.8d |  |  |
| 302 | Типовая иерархия кастомных папок | 2014-09-17 → 2014-06-17 (-92d) | 2014-09-24 → 2014-06-25 (-91d) |  |  | 29d → 39.8d |  |  |
| 303 | Доработка расширенного поиска | 2014-09-17 → 2014-06-12 (-97d) | 2014-09-25 → 2014-06-23 (-94d) |  |  | 47d → 60.8d |  |  |
| 304 | Системные настройки для КЗ | 2014-09-17 → 2014-06-17 (-92d) | 2014-09-24 → 2014-06-25 (-91d) |  |  | 29d → 39.8d |  |  |
| 305 | Проверка работы | 2014-09-26 → 2014-06-25 (-93d) | 2014-09-26 → 2014-06-26 (-92d) |  |  | 47d → 58.8d |  |  |
| 306 | **Перенос логики сервисов по КЗ** | 2014-09-09 → 2014-04-22 (-140d) | 2014-09-19 → 2014-05-12 (-130d) | 8d → 11d |  | 15d → 57d |  |  |
| 307 | Задание поставлено | 2014-09-09 → 2014-04-22 (-140d) | 2014-09-09 → 2014-04-22 (-140d) |  |  | 15d → 57d |  |  |
| 308 | Пролведение процедуры Revers Engineering для процессов | 2014-09-11 → 2014-04-29 (-135d) | 2014-09-19 → 2014-05-12 (-130d) |  |  | 14d → 53d |  |  |
| 309 | Реализация в слое CMJ-CMSochi | 2014-09-11 → 2014-04-29 (-135d) | 2014-09-19 → 2014-05-12 (-130d) |  |  | 52d → 91d |  |  |
| 310 | **Разработка коллекций** | 2014-09-10 → 2014-07-11 (-61d) | 2014-09-18 → 2014-07-21 (-59d) |  |  | 24d → 12d |  |  |
| 311 | Коллекции | 2014-09-10 → 2014-07-11 (-61d) | 2014-09-18 → 2014-07-21 (-59d) |  |  | 24d → 12d |  |  |
| 312 | Интеграция по КЗ выполнена | 2014-09-26 → 2014-07-21 (-67d) | 2014-09-26 → 2014-07-21 (-67d) |  |  | 47d → 41d |  |  |
| 313 | **Интеграция с CMJ по Формированию дел** | 2014-09-17 → 2014-04-30 (-140d) | 2014-10-08 → 2014-07-29 (-71d) | 16d? → 62d? |  | 0d → 35d |  |  |
| 314 | Конфиг ДОП | 2014-09-17 → 2014-04-30 (-140d) | 2014-09-19 → 2014-05-06 (-136d) |  |  | 0d → 42d |  |  |
| 315 | Mapper | 2014-09-22 → 2014-05-07 (-138d) | 2014-09-26 → 2014-05-14 (-135d) |  |  | 0d → 42d |  |  |
| 316 | **Настраиваемые коллекции** | 2014-09-29 → 2014-06-25 (-96d) | 2014-10-08 → 2014-07-07 (-93d) |  |  | 27d → 39.8d |  |  |
| 317 | **Конфигурация коллекций** | 2014-09-29 → 2014-06-25 (-96d) | 2014-10-07 → 2014-07-04 (-95d) |  |  | 27d → 39.8d |  |  |
| 318 | Типовая иерархия кастомных папок | 2014-09-29 → 2014-06-25 (-96d) | 2014-10-06 → 2014-07-03 (-95d) |  |  | 27d → 39.8d |  |  |
| 319 | Доработка расширенного поиска | 2014-09-29 → 2014-06-25 (-96d) | 2014-10-07 → 2014-07-04 (-95d) |  |  | 39d → 51.8d |  |  |
| 320 | Системные настройки для ФД | 2014-09-29 → 2014-06-25 (-96d) | 2014-10-06 → 2014-07-03 (-95d) |  |  | 27d → 39.8d |  |  |
| 321 | Проверка работы | 2014-10-08 → 2014-07-04 (-96d) | 2014-10-08 → 2014-07-07 (-93d) |  |  | 39d → 51.8d |  |  |
| 322 | **Перенос логики сервисов по ФД** | 2014-09-19 → 2014-05-06 (-136d) | 2014-09-30 → 2014-05-21 (-132d) | 7d → 10d |  | 14d → 53d |  |  |
| 323 | Задание поставлено | 2014-09-19 → 2014-05-06 (-136d) | 2014-09-19 → 2014-05-06 (-136d) |  |  | 14d → 56d |  |  |
| 324 | Пролведение процедуры Revers Engineering для процессов | 2014-09-22 → 2014-05-13 (-132d) | 2014-09-30 → 2014-05-21 (-132d) |  |  | 14d → 53d |  |  |
| 325 | Реализация в слое CMJ-CMSochi | 2014-09-22 → 2014-05-13 (-132d) | 2014-09-30 → 2014-05-21 (-132d) |  |  | 14d → 53d |  |  |
| 326 | **Разработка коллекций** | 2014-09-22 → 2014-07-22 (-62d) | 2014-09-29 → 2014-07-29 (-62d) |  |  | 23d → 12d |  |  |
| 327 | Коллекции | 2014-09-22 → 2014-07-22 (-62d) | 2014-09-29 → 2014-07-29 (-62d) |  |  | 23d → 12d |  |  |
| 328 | Интеграция по ФД выполнена | 2014-10-08 → 2014-07-29 (-71d) | 2014-10-08 → 2014-07-29 (-71d) |  |  | 39d → 35d |  |  |
| 329 | **Интеграция с CMJ по Заседаниям** | 2014-09-29 → 2014-05-15 (-137d) | 2014-10-20 → 2014-08-06 (-75d) | 16d? → 60d? |  | 0d → 29d |  |  |
| 330 | Конфиг ДОП | 2014-09-29 → 2014-05-15 (-137d) | 2014-10-01 → 2014-05-19 (-135d) |  |  | 0d → 42d |  |  |
| 331 | Mapper | 2014-10-02 → 2014-05-20 (-135d) | 2014-10-08 → 2014-05-26 (-135d) |  |  | 0d → 42d |  |  |
| 332 | **Настраиваемые коллекции** | 2014-10-09 → 2014-07-03 (-98d) | 2014-10-20 → 2014-07-15 (-97d) |  |  | 25d → 39.8d |  |  |
| 333 | **Конфигурация коллекций** | 2014-10-09 → 2014-07-03 (-98d) | 2014-10-17 → 2014-07-14 (-95d) |  |  | 25d → 39.8d |  |  |

| ID | Task | Start | Finish | Duration | Complete | Total float | Other |
| --- | --- | --- | --- | --- | --- | --- | --- |
| 334 | Типовая иерархия кастомных папок | 2014-10-09 → 2014-07-03 (-98d) | 2014-10-16 → 2014-07-11 (-97d) |  |  | 25d → 39.8d |  |
| 335 | Системные настройки для Зсд | 2014-10-09 → 2014-07-03 (-98d) | 2014-10-16 → 2014-07-11 (-97d) |  |  | 25d → 39.8d |  |
| 336 | Доработка расширенного поиска | 2014-10-09 → 2014-07-03 (-98d) | 2014-10-17 → 2014-07-14 (-95d) |  |  | 31d → 45.8d |  |
| 337 | Проверка работы | 2014-10-20 → 2014-07-14 (-98d) | 2014-10-20 → 2014-07-15 (-97d) |  |  | 31d → 45.8d |  |
| 338 | **Перенос логики сервисов по Зсд** | 2014-10-01 → 2014-05-21 (-133d) | 2014-10-10 → 2014-05-30 (-133d) |  |  | 13d → 53d |  |
| 339 | Задание поставлено | 2014-10-01 → 2014-05-21 (-133d) | 2014-10-01 → 2014-05-21 (-133d) |  |  | 13d → 53d |  |
| 340 | Пролведение процедуры Revers Engineering для процессов | 2014-10-02 → 2014-05-22 (-133d) | 2014-10-10 → 2014-05-30 (-133d) |  |  | 13d → 53d |  |
| 341 | Реализация в слое CMJ-CMSochi | 2014-10-02 → 2014-05-22 (-133d) | 2014-10-10 → 2014-05-30 (-133d) |  |  | 37d → 77d |  |
| 342 | **Разработка коллекций** | 2014-10-02 → 2014-07-30 (-64d) | 2014-10-09 → 2014-08-06 (-64d) |  |  | 21d → 12d |  |
| 343 | Коллекции | 2014-10-02 → 2014-07-30 (-64d) | 2014-10-09 → 2014-08-06 (-64d) |  |  | 21d → 12d |  |
| 344 | Интеграция по Зсд выполнена | 2014-10-20 → 2014-08-06 (-75d) | 2014-10-20 → 2014-08-06 (-75d) |  |  | 31d → 29d |  |
| 345 | **Интеграция с CMJ по Обсуждениям и ознакомлениям** | 2014-10-09 → 2014-05-27 (-135d) | 2014-10-30 → 2014-08-15 (-76d) | 16d? → 59d? |  | 0d → 22d |  |
| 346 | Конфиг ДОП | 2014-10-09 → 2014-05-27 (-135d) | 2014-10-13 → 2014-05-29 (-137d) |  |  | 0d → 42d |  |
| 347 | Mapper | 2014-10-14 → 2014-05-30 (-137d) | 2014-10-20 → 2014-06-05 (-137d) |  |  | 0d → 42d |  |
| 348 | **Настраиваемые коллекции** | 2014-10-21 → 2014-07-11 (-102d) | 2014-10-30 → 2014-07-23 (-99d) |  |  | 23d → 39.8d |  |
| 349 | **Конфигурация коллекций** | 2014-10-21 → 2014-07-11 (-102d) | 2014-10-29 → 2014-07-22 (-99d) |  |  | 23d → 39.8d |  |
| 350 | Типовая иерархия кастомных папок | 2014-10-21 → 2014-07-11 (-102d) | 2014-10-28 → 2014-07-21 (-99d) |  |  | 23d → 39.8d |  |
| 351 | Доработка расширенного поиска | 2014-10-21 → 2014-07-11 (-102d) | 2014-10-29 → 2014-07-22 (-99d) |  |  | 23d → 39.8d |  |
| 352 | Системные настройки для ОО | 2014-10-21 → 2014-07-11 (-102d) | 2014-10-28 → 2014-07-21 (-99d) |  |  | 24d → 40.8d |  |
| 353 | Проверка работы | 2014-10-30 → 2014-07-22 (-100d) | 2014-10-30 → 2014-07-23 (-99d) |  |  | 23d → 39.8d |  |
| 354 | **Перенос логики сервисов по ОО** | 2014-10-13 → 2014-05-29 (-137d) | 2014-10-22 → 2014-06-10 (-134d) | 7d → 8d |  | 12d → 53d |  |
| 355 | Задание поставлено | 2014-10-13 → 2014-05-29 (-137d) | 2014-10-13 → 2014-05-29 (-137d) |  |  | 12d → 54d |  |
| 356 | Пролведение процедуры Revers Engineering для процессов | 2014-10-14 → 2014-06-02 (-134d) | 2014-10-22 → 2014-06-10 (-134d) |  |  | 12d → 53d |  |
| 357 | Реализация в слое CMJ-CMSochi | 2014-10-14 → 2014-06-02 (-134d) | 2014-10-22 → 2014-06-10 (-134d) |  |  | 12d → 53d |  |
| 358 | **Разработка коллекций** | 2014-10-14 → 2014-08-07 (-68d) | 2014-10-22 → 2014-08-15 (-68d) |  |  | 19d → 12d |  |
| 359 | Коллекции | 2014-10-14 → 2014-08-07 (-68d) | 2014-10-22 → 2014-08-15 (-68d) |  |  | 19d → 12d |  |
| 360 | Интеграция по ОО выполнена | 2014-10-30 → 2014-08-15 (-76d) | 2014-10-30 → 2014-08-15 (-76d) |  |  | 23d → 22d |  |
| 361 | **Интеграция с CMJ по "Кейсам"** | 2014-10-21 → 2014-06-06 (-137d) | 2014-11-11 → 2014-08-29 (-74d) | 16d? → 61d? |  | 0d → 12d |  |
| 362 | Конфиг ДОП | 2014-10-21 → 2014-06-06 (-137d) | 2014-10-23 → 2014-06-10 (-135d) |  |  | 0d → 42d |  |
| 363 | Mapper | 2014-10-24 → 2014-06-11 (-135d) | 2014-10-30 → 2014-06-17 (-135d) |  |  | 0d → 42d |  |
| 364 | **Настраиваемые коллекции** | 2014-10-31 → 2014-06-18 (-135d) | 2014-11-11 → 2014-06-27 (-137d) |  |  | 0d → 42d |  |
| 365 | **Конфигурация коллекций** | 2014-10-31 → 2014-06-18 (-135d) | 2014-11-10 → 2014-06-26 (-137d) |  |  | 0d → 42d |  |
| 366 | Типовая иерархия кастомных папок | 2014-10-31 → 2014-06-18 (-135d) | 2014-11-07 → 2014-06-25 (-135d) |  |  | 0d → 42d |  |
| 367 | Доработка расширенного поиска | 2014-10-31 → 2014-06-18 (-135d) | 2014-11-10 → 2014-06-26 (-137d) |  |  | 0d → 42d |  |
| 368 | Системные настройки для "Кейсов" | 2014-10-31 → 2014-06-18 (-135d) | 2014-11-07 → 2014-06-25 (-135d) |  |  | 1d → 43d |  |
| 369 | Проверка работы | 2014-11-11 → 2014-06-27 (-137d) | 2014-11-11 → 2014-06-27 (-137d) |  |  | 15d → 57d |  |
| 370 | **Перенос логики сервисов по "Кейсам"** | 2014-10-23 → 2014-06-10 (-135d) | 2014-11-03 → 2014-06-19 (-137d) |  |  | 11d → 53d |  |
| 371 | Задание поставлено | 2014-10-23 → 2014-06-10 (-135d) | 2014-10-23 → 2014-06-10 (-135d) |  |  | 11d → 53d |  |
| 372 | Пролведение процедуры Revers Engineering для процессов | 2014-10-24 → 2014-06-11 (-135d) | 2014-11-03 → 2014-06-19 (-137d) |  |  | 11d → 53d |  |
| 373 | Реализация в слое CMJ-CMSochi | 2014-10-24 → 2014-06-11 (-135d) | 2014-11-03 → 2014-06-19 (-137d) |  |  | 11d → 53d |  |
| 374 | **Разработка коллекций** | 2014-10-24 → 2014-08-18 (-67d) | 2014-11-06 → 2014-08-29 (-69d) |  |  | 18d → 12d |  |
| 375 | Коллекции | 2014-10-24 → 2014-08-18 (-67d) | 2014-11-06 → 2014-08-29 (-69d) |  |  | 18d → 12d |  |
| 376 | Интеграция по "Кейсам" выполнена | 2014-11-11 → 2014-08-29 (-74d) | 2014-11-11 → 2014-08-29 (-74d) |  |  | 15d → 12d |  |
| 377 | **Интеграция с CMJ ПКД** | 2014-11-03 → 2014-06-19 (-137d) | 2014-11-17 → 2014-07-03 (-137d) |  |  | 11d → 53d |  |
| 378 | **Перенос логики сервисов по ОО** | 2014-11-03 → 2014-06-19 (-137d) | 2014-11-17 → 2014-07-03 (-137d) |  |  | 11d → 53d |  |
| 379 | Задание поставлено | 2014-11-03 → 2014-06-19 (-137d) | 2014-11-03 → 2014-06-19 (-137d) |  |  | 11d → 53d |  |
| 380 | Пролведение процедуры Revers Engineering для процессов | 2014-11-04 → 2014-06-20 (-137d) | 2014-11-17 → 2014-07-03 (-137d) |  |  | 11d → 53d |  |
| 381 | Реализация в слое CMJ-CMSochi | 2014-11-04 → 2014-06-20 (-137d) | 2014-11-17 → 2014-07-03 (-137d) |  |  | 11d → 53d |  |
| 382 | **Интеграция с CMJ по ПРВЗ(мобильность)** | 2014-11-11 → 2014-06-27 (-137d) | 2014-12-02 → 2014-07-18 (-137d) |  |  | 0d → 42d |  |
| 383 | Конфиг ДОП | 2014-11-11 → 2014-06-27 (-137d) | 2014-11-13 → 2014-07-01 (-135d) |  |  | 0d → 42d |  |
| 384 | Mapper | 2014-11-14 → 2014-07-02 (-135d) | 2014-11-20 → 2014-07-08 (-135d) |  |  | 0d → 42d |  |
| 385 | **Настраиваемые коллекции** | 2014-11-21 → 2014-07-09 (-135d) | 2014-12-02 → 2014-07-18 (-137d) |  |  | 0d → 42d |  |
| 386 | **Конфигурация коллекций** | 2014-11-21 → 2014-07-09 (-135d) | 2014-12-01 → 2014-07-17 (-137d) |  |  | 0d → 42d |  |
| 387 | Типовая иерархия кастомных папок | 2014-11-21 → 2014-07-09 (-135d) | 2014-11-28 → 2014-07-16 (-135d) |  |  | 0d → 42d |  |
| 388 | Доработка расширенного поиска | 2014-11-21 → 2014-07-09 (-135d) | 2014-12-01 → 2014-07-17 (-137d) |  |  | 0d → 42d |  |
| 389 | Системные настройки для ПРВЗ | 2014-11-21 → 2014-07-09 (-135d) | 2014-11-28 → 2014-07-16 (-135d) |  |  | 1d → 43d |  |
| 390 | Проверка работы | 2014-12-02 → 2014-07-18 (-137d) | 2014-12-02 → 2014-07-18 (-137d) |  |  | 0d → 42d |  |
| 391 | **Перенос логики сервисов по ПРВЗ** | 2014-11-13 → 2014-07-01 (-135d) | 2014-11-24 → 2014-07-10 (-137d) |  |  | 6d → 48d |  |
| 392 | Задание поставлено | 2014-11-13 → 2014-07-01 (-135d) | 2014-11-13 → 2014-07-01 (-135d) |  |  | 6d → 48d |  |
| 393 | Пролведение процедуры Revers Engineering для процессов | 2014-11-14 → 2014-07-02 (-135d) | 2014-11-24 → 2014-07-10 (-137d) |  |  | 6d → 48d |  |
| 394 | Реализация в слое CMJ-CMSochi | 2014-11-14 → 2014-07-02 (-135d) | 2014-11-24 → 2014-07-10 (-137d) |  |  | 6d → 48d |  |
| 395 | **Разработка коллекций** | 2014-11-14 → 2014-07-02 (-135d) | 2014-11-27 → 2014-07-15 (-135d) |  |  | 3d → 45d |  |
| 396 | Коллекции | 2014-11-14 → 2014-07-02 (-135d) | 2014-11-27 → 2014-07-15 (-135d) |  |  | 3d → 45d |  |
| 397 | Интеграция по ПРВЗ выполнена | 2014-12-02 → 2014-07-18 (-137d) | 2014-12-02 → 2014-07-18 (-137d) |  |  | 0d → 42d |  |
| 398 | Основные коннеторы реализованы | 2013-12-09 A | 2013-12-09 A |  | 0% → 100% | 191d → none |  |
| 477 | **Средства мониторинга** | 2014-03-05 → 2014-03-31 A (+26d) | 2014-04-18 → 2014-05-19 (+31d) |  |  | 159d → 141d |  |
| 478 | уточнена постановка | 2014-03-05 → 2014-03-31 A (+26d) | 2014-03-05 → 2014-03-31 A (+26d) |  | 0% → 100% | 104d → none | constraint start no earlier than 2014-03-05 → start no earlier than 2014-03-31 |
| 479 | **Проектирование и формализация** | 2014-03-05 → 2014-03-31 (+26d) | 2014-03-12 → 2014-04-07 (+26d) |  |  | 159d → 141d |  |
| 480 | Определение параметров контроля | 2014-03-05 → 2014-03-31 (+26d) | 2014-03-07 → 2014-04-02 (+26d) |  |  | 104d → 141d |  |
| 481 | Разработка методики контроля | 2014-03-10 → 2014-04-03 (+24d) | 2014-03-12 → 2014-04-07 (+26d) |  |  | 104d → 141d |  |

| ID | Task | Start | Finish | Duration | Total float |
| --- | --- | --- | --- | --- | --- |
| 482 | **Реализация** | 2014-03-13 → 2014-04-08 (+26d) | 2014-04-18 → 2014-05-19 (+31d) |  | 159d → 141d |
| 483 | Определение точек контроля системы | 2014-03-13 → 2014-04-08 (+26d) | 2014-03-21 → 2014-04-16 (+26d) |  | 104d → 141d |
| 484 | Разработка счетчиков точек контроля | 2014-03-24 → 2014-04-17 (+24d) | 2014-04-11 → 2014-05-12 (+31d) |  | 104d → 141d |
| 485 | Сборка "zabbix" | 2014-04-14 → 2014-05-13 (+29d) | 2014-04-18 → 2014-05-19 (+31d) |  | 104d → 141d |
| 508 | **Тестирование** | 2014-03-19 → 2013-04-19 (-334d) |  | 81d? → 306d? | 101d → 46d |
| 509 | **Функциональное тестирование** | 2014-03-19 → 2013-04-19 (-334d) |  | 66d? → 291d? | 114d → 61d |
| 510 | Подготовка ПМИ | 2014-03-19 → 2013-04-19 (-334d) | 2014-03-25 → 2013-04-25 (-334d) |  | 114d → 339d |
| 511 | Разработка "сценариев тестирования" | 2014-03-19 → 2013-04-19 (-334d) | 2014-04-08 → 2013-05-16 (-327d) |  | 119d → 344d |
| 512 | Разработка модели нагрузки для тестирования | 2014-03-26 → 2013-04-26 (-334d) | 2014-04-08 → 2013-05-16 (-327d) |  | 119d → 344d |
| 513 | Адаптация автоматизированных сценариев от СМ4 для создания нагрузки | 2014-03-26 → 2013-04-26 (-334d) | 2014-04-29 → 2013-06-06 (-327d) |  | 114d → 339d |
| 528 | **Подготовка документации** | 2014-03-19 → 2013-04-19 (-334d) | 2014-07-11 → 2013-08-15 (-330d) |  | 102d → 327d |
| 529 | Разработка документа "Концепция системы " | 2014-03-19 → 2013-04-19 (-334d) | 2014-05-16 → 2013-06-20 (-330d) |  | 47d → 327d |
| 530 | Разработка "Software Architecture Document" | 2014-05-19 → 2013-06-21 (-332d) | 2014-07-11 → 2013-08-15 (-330d) |  | 102d → 327d |
| 531 | Документы подготовлены | 2014-07-11 → 2013-08-15 (-330d) | 2014-07-11 → 2013-08-15 (-330d) |  | 47d → 327d |

## Version 68 (saved 2014-04-11)

Last finish stays 2014-09-16. Complete tasks 221 → 223.

Added:

| ID | Task | Duration | Start | Finish | Predecessors | Resources |
| --- | --- | --- | --- | --- | --- | --- |
| 185 | Проверка корректности подключения | 3d | 2014-04-17 | 2014-04-21 | 184FS+14d | Глеб Ноздрачев |
| 245 | Готовность в "ВорккФлоу" | 1d? | 2014-05-14 | 2014-05-15 | 229, 220, 186, 182 |  |

Removed: 228 Интеграция с мобильным клиентом - верефикация возможности

Changed:

| ID | Task | Start | Finish | Duration | Complete | Total float | Predecessors |
| --- | --- | --- | --- | --- | --- | --- | --- |
| 1 | **Разработка версии CM4/5** |  |  |  | 47% → 46% |  |  |
| 9 | **Создание модуля "Делопроизводство" (документоориентированная среда)** |  | 2014-08-29 → 2014-08-13 (-16d) | 340d? → 328d? | 51% → 50% | 12d → 24d |  |
| 20 | **Проектирование и формирование ядра системы** |  | 2014-08-29 → 2014-08-13 (-16d) | 339d? → 327d? | 64% → 63% | 12d → 24d |  |
| 68 | **Слой сопряжения CMJ server (CM4)** |  | 2014-08-29 → 2014-07-18 (-42d) | 269d? → 239d? | 62% → 60% | 12d → 42d |  |
| 76 | **Интеграция с CMJ по Внутренним Документам** |  | 2014-03-31 A |  | 99% → 100% | 0d → none |  |
| 88 | **Mapper ВнД** |  | 2014-02-06 A |  | 99% → 100% | 0d → none |  |
| 164 | **Интеграция с CMJ по Входящим документам** |  | 2014-05-07 A → 2014-04-08 A (-29d) | 62.2d → 44d |  |  |  |
| 168 | **Перенос логики сервисов по вхД** |  | 2014-05-07 A → 2014-04-08 A (-29d) | 51.4d → 33.2d |  |  |  |
| 170 | Пролведение процедуры Revers Engineering для процессов |  | 2014-04-16 A → 2014-04-08 A (-8d) | 15.2d → 10d |  |  |  |
| 171 | Реализация в слое CMJ-CMSochi | 2014-04-16 A → 2014-04-02 A (-14d) | 2014-05-07 A → 2014-04-07 A (-30d) | 13d → 4d |  |  | 170 → 170SS+5d |
| 182 | **Подключение механизма контроля доступа** |  | 2014-03-27 A → 2014-04-21 (+25d) | 6d → 23d | 100% → 67% | none → 102d |  |
| 186 | **Интеграция с CMJ по Договорам** |  | 2014-05-23 → 2014-05-08 (-15d) | 58d → 47.2d | 85% → 77% | 82d → 91.8d |  |
| 202 | **Разработка коллекций** |  | 2014-05-23 → 2014-03-18 A (-66d) | 51d → 6d | 97% → 100% | 67d → none |  |
| 203 | Коллекции |  | 2014-05-23 → 2014-03-18 A (-66d) | 51d → 6d | 97% → 100% | 67d → none |  |
| 204 | Интеграция по Дгв выполнена | 2014-05-23 → 2014-04-08 (-45d) | 2014-05-23 → 2014-04-08 (-45d) |  |  | 137d → 111d |  |
| 205 | **Интеграция с CMJ по Исходящие документам** |  | 2014-06-05 → 2014-05-14 (-22d) | 62d → 45.2d |  | 12d → 89.8d |  |
| 217 | **Разработка коллекций** | 2014-05-26 → 2014-03-19 (-68d) | 2014-06-05 → 2014-03-31 (-66d) |  |  | 67d → 104d |  |
| 218 | Коллекции | 2014-05-26 → 2014-03-19 (-68d) | 2014-06-05 → 2014-03-31 (-66d) |  |  | 67d → 104d |  |
| 219 | Интеграция по Исх выполнена | 2014-06-05 → 2014-03-31 (-66d) | 2014-06-05 → 2014-03-31 (-66d) |  |  | 67d → 104d |  |
| 220 | **Переход на 4.3 CMJ** |  | 2014-06-11 → 2014-04-21 (-51d) | 58d → 24d | 92% → 55% | 12d → 93d |  |
| 224 | таблица описания объектов |  |  |  |  |  | 223, 223SS → 223 |
| 226 | Mapper | 2014-04-14 A → 2014-04-14 | 2014-04-21 A → 2014-04-21 |  | 100% → 0% | none → 93d |  |
| 227 | Коллекции | 2014-06-06 → 2014-04-01 (-66d) | 2014-06-11 → 2014-04-04 (-68d) |  |  | 67d → 104d |  |
| 228 | Проверки сборки и функционала | 2014-04-09 A → 2014-04-09 | 2014-04-15 A → 2014-04-15 |  | 100% → 0% | none → 97d |  |
| 229 | **Интеграция с CMJ по ОРД** |  | 2014-06-23 → 2014-05-14 (-40d) | 64d? → 35.2d? | 56% → 99% | 61d → 88.8d |  |
| 238 | **Перенос логики сервисов по ОРД** | 2014-05-14 → 2014-04-09 A (-35d) | 2014-05-23 → 2014-05-14 A (-9d) | 7d → 22.2d | 0% → 100% | 0d → none |  |
| 239 | Задание поставлено | 2014-05-14 A | 2014-05-14 A |  | 0% → 100% | 0d → none |  |
| 240 | Пролведение процедуры Revers Engineering для процессов | 2014-05-14 → 2014-04-09 A (-35d) | 2014-05-23 → 2014-04-11 A (-42d) | 7d → 3d | 0% → 100% | 39.8d → none | 239 → 170 |
| 241 | Реализация в слое CMJ-CMSochi | 2014-05-14 → 2014-04-09 A (-35d) | 2014-05-23 → 2014-04-11 A (-42d) | 7d → 3d | 0% → 100% | 39.8d → none |  |
| 242 | **Разработка коллекций** | 2014-06-12 → 2014-03-26 A (-78d) | 2014-06-23 → 2014-04-04 A (-80d) |  | 0% → 100% | 12d → none | 219 → none |
| 243 | Коллекции | 2014-06-12 → 2014-03-26 A (-78d) | 2014-06-23 → 2014-04-04 A (-80d) |  | 0% → 100% | 67d → none | 230, 227 → 230 |
| 244 | Интеграция по ОРД выполнена | 2014-06-23 → 2014-04-11 (-73d) | 2014-06-23 → 2014-04-11 (-73d) |  |  | 116d → 108d |  |
| 246 | **Интеграция с CMJ по самостоятельным поручениям** |  | 2014-07-03 → 2014-04-23 (-71d) | 64d? → 16d? |  | 53d → 101d |  |
| 255 | **Перенос логики сервисов по СамПор** | 2014-05-23 → 2014-04-11 (-42d) | 2014-06-03 → 2014-04-22 (-42d) |  |  | 39.8d → 66d |  |
| 256 | Задание поставлено | 2014-05-23 → 2014-04-11 (-42d) | 2014-05-23 → 2014-04-11 (-42d) |  |  | 130.8d → 66d |  |
| 257 | Пролведение процедуры Revers Engineering для процессов | 2014-05-23 → 2014-04-14 (-39d) | 2014-06-03 → 2014-04-22 (-42d) |  |  | 39.8d → 66d |  |
| 258 | Реализация в слое CMJ-CMSochi | 2014-05-23 → 2014-04-14 (-39d) | 2014-06-03 → 2014-04-22 (-42d) |  |  | 39.8d → 66d |  |
| 259 | **Разработка коллекций** | 2014-06-24 → 2014-04-07 (-78d) | 2014-07-03 → 2014-04-16 (-78d) |  |  | 53d → 106d |  |
| 260 | Коллекции | 2014-06-24 → 2014-04-07 (-78d) | 2014-07-03 → 2014-04-16 (-78d) |  |  | 108d → 106d |  |
| 261 | Интеграция по СамПор выполнена | 2014-07-03 → 2014-04-23 (-71d) | 2014-07-03 → 2014-04-23 (-71d) |  |  | 108d → 101d |  |
| 262 | **Интеграция с CMJ по ОГ** |  | 2014-07-03 → 2014-05-05 (-59d) | 64d? → 22d? |  | 53d → 95d |  |
| 271 | **Перенос логики сервисов по ОГ** | 2014-06-03 → 2014-04-22 (-42d) | 2014-06-12 → 2014-05-05 (-38d) |  |  | 39.8d → 66d |  |
| 272 | Задание поставлено | 2014-06-03 → 2014-04-22 (-42d) | 2014-06-03 → 2014-04-22 (-42d) |  |  | 94.8d → 66d |  |
| 273 | Пролведение процедуры Revers Engineering для процессов | 2014-06-03 → 2014-04-23 (-41d) | 2014-06-12 → 2014-05-05 (-38d) |  |  | 39.8d → 66d |  |
| 274 | Реализация в слое CMJ-CMSochi | 2014-06-03 → 2014-04-23 (-41d) | 2014-06-12 → 2014-05-05 (-38d) |  |  | 39.8d → 66d |  |
| 275 | **Разработка коллекций** | 2014-06-24 → 2014-04-07 (-78d) | 2014-07-03 → 2014-04-16 (-78d) |  |  | 12d → 65d |  |
| 276 | Коллекции | 2014-06-24 → 2014-04-07 (-78d) | 2014-07-03 → 2014-04-16 (-78d) |  |  | 67d → 65d |  |
| 277 | Интеграция по ОГ выполнена | 2014-07-03 → 2014-04-23 (-71d) | 2014-07-03 → 2014-04-23 (-71d) |  |  | 108d → 101d |  |
| 278 | **Интеграция с CMJ по WF + связи** |  | 2014-07-10 → 2014-05-08 (-63d) | 61d? → 17d? |  | 48d → 92d |  |
| 287 | **Перенос логики сервисов по WF** | 2014-06-12 → 2014-05-05 (-38d) | 2014-06-17 → 2014-05-08 (-40d) |  |  | 39.8d → 66d |  |
| 288 | Задание поставлено | 2014-06-12 → 2014-05-05 (-38d) | 2014-06-12 → 2014-05-05 (-38d) |  |  | 39.8d → 66d |  |
| 289 | Пролведение процедуры Revers Engineering для процессов | 2014-06-12 → 2014-05-06 (-37d) | 2014-06-17 → 2014-05-08 (-40d) |  |  | 39.8d → 66d |  |
| 290 | Реализация в слое CMJ-CMSochi | 2014-06-12 → 2014-05-06 (-37d) | 2014-06-17 → 2014-05-08 (-40d) |  |  | 39.8d → 66d |  |
| 291 | **Разработка адаптеров для СрвСогл** | 2014-06-11 → 2014-04-21 (-51d) | 2014-06-25 → 2014-05-07 (-49d) |  |  | 59d → 93d |  |
| 292 | Задание поставлено | 2014-06-11 → 2014-04-21 (-51d) | 2014-06-11 → 2014-04-21 (-51d) |  |  | 59d → 93d |  |
| 293 | Разработка архитектуры дя адаптеров | 2014-06-12 → 2014-04-22 (-51d) | 2014-06-18 → 2014-04-28 (-51d) |  |  | 59d → 93d |  |
| 294 | Разработка адаптеров | 2014-06-19 → 2014-04-29 (-51d) | 2014-06-25 → 2014-05-07 (-49d) |  |  | 59d → 93d |  |
| 295 | **Разработка коллекций** | 2014-07-04 → 2014-04-17 (-78d) | 2014-07-10 → 2014-04-23 (-78d) |  |  | 12d → 65d |  |
| 296 | Коллекции | 2014-07-04 → 2014-04-17 (-78d) | 2014-07-10 → 2014-04-23 (-78d) |  |  | 12d → 65d |  |
| 297 | Интеграция по WF выполнена | 2014-07-10 → 2014-05-06 (-65d) | 2014-07-10 → 2014-05-06 (-65d) |  |  | 48d → 94d |  |
| 298 | **Интеграция с CMJ по сервису Контроля Заданий** |  | 2014-07-21 → 2014-05-20 (-62d) | 64d? → 20d? |  | 41d → 42d |  |
| 301 | **Настраиваемые коллекции** | 2014-06-12 → 2014-05-06 (-37d) | 2014-06-26 → 2014-05-20 (-37d) |  |  | 42.8d → 69d |  |
| 302 | **Конфигурация коллекций** | 2014-06-12 → 2014-05-06 (-37d) | 2014-06-25 → 2014-05-19 (-37d) |  |  | 42.8d → 69d |  |
| 303 | Типовая иерархия кастомных папок | 2014-06-17 → 2014-05-12 (-36d) | 2014-06-25 → 2014-05-19 (-37d) |  |  | 39.8d → 66d |  |
| 304 | Доработка расширенного поиска | 2014-06-12 → 2014-05-06 (-37d) | 2014-06-23 → 2014-05-15 (-39d) |  |  | 60.8d → 87d |  |
| 305 | Системные настройки для КЗ | 2014-06-17 → 2014-05-12 (-36d) | 2014-06-25 → 2014-05-19 (-37d) |  |  | 39.8d → 66d |  |
| 306 | Проверка работы | 2014-06-25 → 2014-05-20 (-36d) | 2014-06-26 → 2014-05-20 (-37d) |  |  | 58.8d → 85d |  |
| 311 | **Разработка коллекций** | 2014-07-11 → 2014-04-24 (-78d) | 2014-07-21 → 2014-05-06 (-76d) |  |  | 12d → 65d |  |
| 312 | Коллекции | 2014-07-11 → 2014-04-24 (-78d) | 2014-07-21 → 2014-05-06 (-76d) |  |  | 12d → 65d |  |
| 313 | Интеграция по КЗ выполнена | 2014-07-21 → 2014-05-20 (-62d) | 2014-07-21 → 2014-05-20 (-62d) |  |  | 41d → 85d |  |

| ID | Task | Start | Finish | Duration | Total float |
| --- | --- | --- | --- | --- | --- |
| 314 | **Интеграция с CMJ по Формированию дел** |  | 2014-07-29 → 2014-05-29 (-61d) | 62d? → 19d? | 35d → 42d |
| 317 | **Настраиваемые коллекции** | 2014-06-25 → 2014-05-20 (-36d) | 2014-07-07 → 2014-05-29 (-39d) |  | 39.8d → 66d |
| 318 | **Конфигурация коллекций** | 2014-06-25 → 2014-05-20 (-36d) | 2014-07-04 → 2014-05-28 (-37d) |  | 39.8d → 66d |
| 319 | Типовая иерархия кастомных папок | 2014-06-25 → 2014-05-20 (-36d) | 2014-07-03 → 2014-05-27 (-37d) |  | 39.8d → 66d |
| 320 | Доработка расширенного поиска | 2014-06-25 → 2014-05-20 (-36d) | 2014-07-04 → 2014-05-28 (-37d) |  | 51.8d → 78d |
| 321 | Системные настройки для ФД | 2014-06-25 → 2014-05-20 (-36d) | 2014-07-03 → 2014-05-27 (-37d) |  | 39.8d → 66d |
| 322 | Проверка работы | 2014-07-04 → 2014-05-29 (-36d) | 2014-07-07 → 2014-05-29 (-39d) |  | 51.8d → 78d |
| 327 | **Разработка коллекций** | 2014-07-22 → 2014-05-07 (-76d) | 2014-07-29 → 2014-05-15 (-75d) |  | 12d → 65d |
| 328 | Коллекции | 2014-07-22 → 2014-05-07 (-76d) | 2014-07-29 → 2014-05-15 (-75d) |  | 12d → 65d |
| 329 | Интеграция по ФД выполнена | 2014-07-29 → 2014-05-29 (-61d) | 2014-07-29 → 2014-05-29 (-61d) |  | 35d → 78d |
| 330 | **Интеграция с CMJ по Заседаниям** |  | 2014-08-06 → 2014-06-06 (-61d) | 60d? → 17d? | 29d → 42d |
| 333 | **Настраиваемые коллекции** | 2014-07-03 → 2014-05-28 (-36d) | 2014-07-15 → 2014-06-06 (-39d) |  | 39.8d → 66d |
| 334 | **Конфигурация коллекций** | 2014-07-03 → 2014-05-28 (-36d) | 2014-07-14 → 2014-06-05 (-39d) |  | 39.8d → 66d |
| 335 | Типовая иерархия кастомных папок | 2014-07-03 → 2014-05-28 (-36d) | 2014-07-11 → 2014-06-04 (-37d) |  | 39.8d → 66d |
| 336 | Системные настройки для Зсд | 2014-07-03 → 2014-05-28 (-36d) | 2014-07-11 → 2014-06-04 (-37d) |  | 39.8d → 66d |
| 337 | Доработка расширенного поиска | 2014-07-03 → 2014-05-28 (-36d) | 2014-07-14 → 2014-06-05 (-39d) |  | 45.8d → 72d |
| 338 | Проверка работы | 2014-07-14 → 2014-06-06 (-38d) | 2014-07-15 → 2014-06-06 (-39d) |  | 45.8d → 72d |
| 343 | **Разработка коллекций** | 2014-07-30 → 2014-05-20 (-71d) | 2014-08-06 → 2014-05-27 (-71d) |  | 12d → 63d |
| 344 | Коллекции | 2014-07-30 → 2014-05-20 (-71d) | 2014-08-06 → 2014-05-27 (-71d) |  | 12d → 63d |
| 345 | Интеграция по Зсд выполнена | 2014-08-06 → 2014-06-06 (-61d) | 2014-08-06 → 2014-06-06 (-61d) |  | 29d → 72d |
| 346 | **Интеграция с CMJ по Обсуждениям и ознакомлениям** |  | 2014-08-15 → 2014-06-17 (-59d) | 59d? → 16d? | 22d → 42d |
| 349 | **Настраиваемые коллекции** | 2014-07-11 → 2014-06-06 (-35d) | 2014-07-23 → 2014-06-17 (-36d) |  | 39.8d → 65d |
| 350 | **Конфигурация коллекций** | 2014-07-11 → 2014-06-06 (-35d) | 2014-07-22 → 2014-06-16 (-36d) |  | 39.8d → 65d |
| 351 | Типовая иерархия кастомных папок | 2014-07-11 → 2014-06-06 (-35d) | 2014-07-21 → 2014-06-13 (-38d) |  | 39.8d → 65d |
| 352 | Доработка расширенного поиска | 2014-07-11 → 2014-06-06 (-35d) | 2014-07-22 → 2014-06-16 (-36d) |  | 39.8d → 65d |
| 353 | Системные настройки для ОО | 2014-07-11 → 2014-06-06 (-35d) | 2014-07-21 → 2014-06-13 (-38d) |  | 40.8d → 66d |
| 354 | Проверка работы | 2014-07-22 → 2014-06-17 (-35d) | 2014-07-23 → 2014-06-17 (-36d) |  | 39.8d → 65d |
| 359 | **Разработка коллекций** | 2014-08-07 → 2014-05-30 (-69d) | 2014-08-15 → 2014-06-09 (-67d) |  | 12d → 61d |
| 360 | Коллекции | 2014-08-07 → 2014-05-30 (-69d) | 2014-08-15 → 2014-06-09 (-67d) |  | 12d → 61d |
| 361 | Интеграция по ОО выполнена | 2014-08-15 → 2014-06-17 (-59d) | 2014-08-15 → 2014-06-17 (-59d) |  | 22d → 65d |
| 362 | **Интеграция с CMJ по "Кейсам"** |  | 2014-08-29 → 2014-06-27 (-63d) | 61d? → 16d? | 12d → 42d |
| 375 | **Разработка коллекций** | 2014-08-18 → 2014-06-11 (-68d) | 2014-08-29 → 2014-06-24 (-66d) |  | 12d → 60d |
| 376 | Коллекции | 2014-08-18 → 2014-06-11 (-68d) | 2014-08-29 → 2014-06-24 (-66d) |  | 12d → 60d |
| 377 | Интеграция по "Кейсам" выполнена | 2014-08-29 → 2014-06-27 (-63d) | 2014-08-29 → 2014-06-27 (-63d) |  | 12d → 57d |

## Version 69 (saved 2014-05-12)

Last finish stays 2014-09-16. Complete tasks 223 → 231.

Added:

| ID | Task | Duration | Start | Finish | Predecessors | Constraint | Resources |
| --- | --- | --- | --- | --- | --- | --- | --- |
| 529 | **Разработка установочного комплекта** | 6d | 2014-05-05 | 2014-05-13 |  |  |  |
| 530 | Создание конфигурации для EAP 6.2 | 4d | 2014-05-05 | 2014-05-08 |  | start no earlier than 2014-05-05 | (БТЛ) Михаил Ларин |
| 531 | Получение средств для развертывания Jboss | 2d | 2014-05-12 | 2014-05-13 | 530 |  | (БТЛ) Михаил Ларин |

Changed:

| ID | Task | Start | Finish | Complete | Total float |
| --- | --- | --- | --- | --- | --- |
| 1 | **Разработка версии CM4/5** |  |  | 46% → 47% |  |
| 9 | **Создание модуля "Делопроизводство" (документоориентированная среда)** |  |  | 50% → 51% |  |
| 20 | **Проектирование и формирование ядра системы** |  |  | 63% → 64% |  |
| 68 | **Слой сопряжения CMJ server (CM4)** |  |  | 60% → 63% |  |
| 186 | **Интеграция с CMJ по Договорам** |  | 2014-05-08 A | 77% → 100% | 91.8d → none |
| 198 | **Перенос логики сервисов по Дгв** |  | 2014-05-08 A | 36% → 100% | 91.8d → none |
| 200 | Пролведение процедуры Revers Engineering для процессов |  | 2014-04-30 A | 35% → 100% | 95.8d → none |
| 201 | Реализация в слое CMJ-CMSochi |  | 2014-04-30 A | 30% → 100% | 89.8d → none |
| 204 | Интеграция по Дгв выполнена | 2014-04-08 A | 2014-04-08 A | 0% → 100% | 111d → none |
| 205 | **Интеграция с CMJ по Исходящие документам** |  | 2014-05-14 A | 51% → 100% | 89.8d → none |
| 213 | **Перенос логики сервисов по Исх** | 2014-04-30 A | 2014-05-14 A | 0% → 100% | 89.8d → none |
| 214 | Задание поставлено | 2014-04-30 A | 2014-04-30 A | 0% → 100% | 89.8d → none |
| 215 | Пролведение процедуры Revers Engineering для процессов | 2014-04-30 A | 2014-05-14 A | 0% → 100% | 89.8d → none |
| 216 | Реализация в слое CMJ-CMSochi | 2014-04-30 A | 2014-05-14 A | 0% → 100% | 89.8d → none |
| 217 | **Разработка коллекций** | 2014-03-19 A | 2014-03-31 A | 0% → 100% | 104d → none |
| 218 | Коллекции | 2014-03-19 A | 2014-03-31 A | 0% → 100% | 104d → none |
| 219 | Интеграция по Исх выполнена | 2014-03-31 A | 2014-03-31 A | 0% → 100% | 104d → none |

## Version 70 (saved 2014-05-13)

Last finish stays 2014-09-16. Complete tasks 231 → 233.

Changed:

| ID | Task | Start | Finish | Complete | Total float |
| --- | --- | --- | --- | --- | --- |
| 1 | **Разработка версии CM4/5** |  |  | 47% → 48% |  |
| 9 | **Создание модуля "Делопроизводство" (документоориентированная среда)** |  |  | 51% → 53% |  |
| 20 | **Проектирование и формирование ядра системы** |  |  | 64% → 66% |  |
| 451 | **Дополнительные сервисы платформы** |  |  | 32% → 53% |  |
| 458 | Кросс-СУБД, поддержка Oracle | 2014-05-29 A | 2014-06-25 A | 0% → 100% | 28d → none |
| 459 | SQL-trace | 2014-06-26 A | 2014-07-17 A | 0% → 100% | 28d → none |

## Version 71 (saved 2014-05-21)

Last finish 2014-09-16 → 2014-09-26 (+10d).

Added:

| ID | Task | Duration | Start | Finish | Predecessors | Constraint |
| --- | --- | --- | --- | --- | --- | --- |
| 506 | **Проектирование "генератора отчетов"** | 0d | 2014-03-24 | 2014-03-24 |  |  |
| 507 | Проектировнаие подсистемы отчетов выполнено | 0d | 2014-03-24 | 2014-03-24 |  | start no earlier than 2014-03-24 |
| 508 | **GUI для отчетов** | 30d | 2014-04-01 | 2014-05-16 |  |  |
| 509 | Подсистема отчетов спроектирована | 0d | 2014-04-01 | 2014-04-01 | 507FS+7d |  |
| 511 | **Разработка шаблонов** | 42d | 2014-05-21 | 2014-07-18 |  |  |
| 512 | Задача по шаблоноам поставлена | 0d | 2014-05-21 | 2014-05-21 | 510FS+3d |  |

Changed:

| ID | Task | Start | Finish | Duration | Complete | Total float | Predecessors | Other |
| --- | --- | --- | --- | --- | --- | --- | --- | --- |
| 1 | **Разработка версии CM4/5** |  | 2014-09-16 → 2014-09-26 (+10d) | 352d? → 360d? |  |  |  |  |
| 9 | **Создание модуля "Делопроизводство" (документоориентированная среда)** |  | 2014-08-13 → 2014-09-26 (+44d) | 328d? → 360d? | 53% → 52% | 24d → 0d |  |  |
| 68 | **Слой сопряжения CMJ server (CM4)** |  | 2014-07-18 → 2014-07-28 (+10d) | 239d? → 245d? |  | 42d → 44d |  |  |
| 246 | **Интеграция с CMJ по самостоятельным поручениям** |  | 2014-04-23 → 2014-05-22 (+29d) | 16d? → 33d? | 56% → 57% | 101d → 92d |  |  |
| 255 | **Перенос логики сервисов по СамПор** | 2014-04-11 → 2014-05-12 (+31d) | 2014-04-22 → 2014-05-20 (+28d) |  |  | 66d → 39d |  |  |
| 256 | Задание поставлено | 2014-04-11 → 2014-05-12 (+31d) | 2014-04-11 → 2014-05-12 (+31d) |  |  | 66d → 39d |  | constraint start no earlier than 2013-09-30 → start no earlier than 2014-05-12 |
| 257 | Пролведение процедуры Revers Engineering для процессов | 2014-04-14 → 2014-05-12 (+28d) | 2014-04-22 → 2014-05-20 (+28d) |  |  | 66d → 52d |  |  |
| 258 | Реализация в слое CMJ-CMSochi | 2014-04-14 → 2014-05-12 (+28d) | 2014-04-22 → 2014-05-20 (+28d) |  |  | 66d → 52d |  |  |
| 259 | **Разработка коллекций** | 2014-04-07 → 2014-05-12 (+35d) | 2014-04-16 → 2014-05-20 (+34d) | 8d → 7d |  | 106d → 39d |  |  |
| 260 | Коллекции | 2014-04-07 → 2014-05-12 (+35d) | 2014-04-16 → 2014-05-20 (+34d) | 8d → 7d |  | 106d → 39d | 247, 243 → 256 |  |
| 261 | Интеграция по СамПор выполнена | 2014-04-23 → 2014-05-22 (+29d) | 2014-04-23 → 2014-05-22 (+29d) |  |  | 101d → 87d | 248, 249, 260 → 248, 249 | constraint none → start no earlier than 2014-05-22 |
| 262 | **Интеграция с CMJ по ОГ** |  | 2014-05-05 → 2014-05-30 (+25d) | 22d? → 40d? |  | 95d → 85d |  |  |
| 271 | **Перенос логики сервисов по ОГ** | 2014-04-22 → 2014-05-20 (+28d) | 2014-05-05 → 2014-05-29 (+24d) |  |  | 66d → 52d |  |  |
| 272 | Задание поставлено | 2014-04-22 → 2014-05-20 (+28d) | 2014-04-22 → 2014-05-20 (+28d) |  |  | 66d → 49d |  |  |
| 273 | Пролведение процедуры Revers Engineering для процессов | 2014-04-23 → 2014-05-21 (+28d) | 2014-05-05 → 2014-05-29 (+24d) |  |  | 66d → 49d |  |  |
| 274 | Реализация в слое CMJ-CMSochi | 2014-04-23 → 2014-05-21 (+28d) | 2014-05-05 → 2014-05-29 (+24d) |  |  | 66d → 52d |  |  |
| 275 | **Разработка коллекций** | 2014-04-07 → 2014-05-21 (+44d) | 2014-04-16 → 2014-05-30 (+44d) |  |  | 65d → 39d |  |  |
| 276 | Коллекции | 2014-04-07 → 2014-05-21 (+44d) | 2014-04-16 → 2014-05-30 (+44d) |  |  | 65d → 36d | 263, 243 → 263, 260 |  |
| 277 | Интеграция по ОГ выполнена | 2014-04-23 → 2014-05-30 (+37d) | 2014-04-23 → 2014-05-30 (+37d) |  |  | 101d → 77d |  |  |
| 278 | **Интеграция с CMJ по WF + связи** |  | 2014-05-08 → 2014-06-06 (+29d) | 17d? → 37d? |  | 92d → 80d |  |  |
| 287 | **Перенос логики сервисов по WF** | 2014-05-05 → 2014-05-29 (+24d) | 2014-05-08 → 2014-06-03 (+26d) |  |  | 66d → 52d |  |  |
| 288 | Задание поставлено | 2014-05-05 → 2014-05-29 (+24d) | 2014-05-05 → 2014-05-29 (+24d) |  |  | 66d → 49d |  |  |
| 289 | Пролведение процедуры Revers Engineering для процессов | 2014-05-06 → 2014-05-30 (+24d) | 2014-05-08 → 2014-06-03 (+26d) |  |  | 66d → 49d |  |  |
| 290 | Реализация в слое CMJ-CMSochi | 2014-05-06 → 2014-05-30 (+24d) | 2014-05-08 → 2014-06-03 (+26d) |  |  | 66d → 52d |  |  |
| 295 | **Разработка коллекций** | 2014-04-17 → 2014-06-02 (+46d) | 2014-04-23 → 2014-06-06 (+44d) |  |  | 65d → 39d |  |  |
| 296 | Коллекции | 2014-04-17 → 2014-06-02 (+46d) | 2014-04-23 → 2014-06-06 (+44d) |  |  | 65d → 36d |  |  |
| 297 | Интеграция по WF выполнена | 2014-05-06 → 2014-06-06 (+31d) | 2014-05-06 → 2014-06-06 (+31d) |  |  | 94d → 72d |  |  |
| 298 | **Интеграция с CMJ по сервису Контроля Заданий** |  | 2014-05-20 → 2014-06-17 (+28d) | 20d? → 40d? |  | 42d → 50d |  |  |
| 301 | **Настраиваемые коллекции** | 2014-05-06 → 2014-05-30 (+24d) | 2014-05-20 → 2014-06-12 (+23d) |  |  | 69d → 60d |  |  |
| 302 | **Конфигурация коллекций** | 2014-05-06 → 2014-05-30 (+24d) | 2014-05-19 → 2014-06-11 (+23d) |  |  | 69d → 55d |  |  |
| 303 | Типовая иерархия кастомных папок | 2014-05-12 → 2014-06-04 (+23d) | 2014-05-19 → 2014-06-11 (+23d) |  |  | 66d → 49d |  |  |
| 304 | Доработка расширенного поиска | 2014-05-06 → 2014-05-30 (+24d) | 2014-05-15 → 2014-06-09 (+25d) |  |  | 87d → 73d |  |  |
| 305 | Системные настройки для КЗ | 2014-05-12 → 2014-06-04 (+23d) | 2014-05-19 → 2014-06-11 (+23d) |  |  | 66d → 52d |  |  |
| 306 | Проверка работы | 2014-05-20 → 2014-06-12 (+23d) | 2014-05-20 → 2014-06-12 (+23d) |  |  | 85d → 68d |  |  |
| 311 | **Разработка коллекций** | 2014-04-24 → 2014-06-09 (+46d) | 2014-05-06 → 2014-06-17 (+42d) |  |  | 65d → 39d |  |  |
| 312 | Коллекции | 2014-04-24 → 2014-06-09 (+46d) | 2014-05-06 → 2014-06-17 (+42d) |  |  | 65d → 36d |  |  |
| 313 | Интеграция по КЗ выполнена | 2014-05-20 → 2014-06-17 (+28d) | 2014-05-20 → 2014-06-17 (+28d) |  |  | 85d → 65d |  |  |
| 314 | **Интеграция с CMJ по Формированию дел** |  | 2014-05-29 → 2014-06-25 (+27d) | 19d? → 38d? |  | 42d → 50d |  |  |
| 317 | **Настраиваемые коллекции** | 2014-05-20 → 2014-06-12 (+23d) | 2014-05-29 → 2014-06-23 (+25d) |  |  | 66d → 57d |  |  |
| 318 | **Конфигурация коллекций** | 2014-05-20 → 2014-06-12 (+23d) | 2014-05-28 → 2014-06-20 (+23d) |  |  | 66d → 57d |  |  |
| 319 | Типовая иерархия кастомных папок | 2014-05-20 → 2014-06-12 (+23d) | 2014-05-27 → 2014-06-19 (+23d) |  |  | 66d → 57d |  |  |
| 320 | Доработка расширенного поиска | 2014-05-20 → 2014-06-12 (+23d) | 2014-05-28 → 2014-06-20 (+23d) |  |  | 78d → 69d |  |  |
| 321 | Системные настройки для ФД | 2014-05-20 → 2014-06-12 (+23d) | 2014-05-27 → 2014-06-19 (+23d) |  |  | 66d → 57d |  |  |
| 322 | Проверка работы | 2014-05-29 → 2014-06-23 (+25d) | 2014-05-29 → 2014-06-23 (+25d) |  |  | 78d → 69d |  |  |
| 327 | **Разработка коллекций** | 2014-05-07 → 2014-06-18 (+42d) | 2014-05-15 → 2014-06-25 (+41d) |  |  | 65d → 44d |  |  |
| 328 | Коллекции | 2014-05-07 → 2014-06-18 (+42d) | 2014-05-15 → 2014-06-25 (+41d) |  |  | 65d → 44d |  |  |
| 329 | Интеграция по ФД выполнена | 2014-05-29 → 2014-06-25 (+27d) | 2014-05-29 → 2014-06-25 (+27d) |  |  | 78d → 67d |  |  |
| 330 | **Интеграция с CMJ по Заседаниям** |  | 2014-06-06 → 2014-07-03 (+27d) | 17d? → 36d? |  | 42d → 50d |  |  |
| 333 | **Настраиваемые коллекции** | 2014-05-28 → 2014-06-20 (+23d) | 2014-06-06 → 2014-07-01 (+25d) |  |  | 66d → 57d |  |  |
| 334 | **Конфигурация коллекций** | 2014-05-28 → 2014-06-20 (+23d) | 2014-06-05 → 2014-06-30 (+25d) |  |  | 66d → 52d |  |  |
| 335 | Типовая иерархия кастомных папок | 2014-05-28 → 2014-06-20 (+23d) | 2014-06-04 → 2014-06-27 (+23d) |  |  | 66d → 49d |  |  |
| 336 | Системные настройки для Зсд | 2014-05-28 → 2014-06-20 (+23d) | 2014-06-04 → 2014-06-27 (+23d) |  |  | 66d → 52d |  |  |
| 337 | Доработка расширенного поиска | 2014-05-28 → 2014-06-20 (+23d) | 2014-06-05 → 2014-06-30 (+25d) |  |  | 72d → 58d |  |  |
| 338 | Проверка работы | 2014-06-06 → 2014-07-01 (+25d) | 2014-06-06 → 2014-07-01 (+25d) |  |  | 72d → 55d |  |  |
| 343 | **Разработка коллекций** | 2014-05-20 → 2014-06-26 (+37d) | 2014-05-27 → 2014-07-03 (+37d) |  |  | 63d → 44d |  |  |
| 344 | Коллекции | 2014-05-20 → 2014-06-26 (+37d) | 2014-05-27 → 2014-07-03 (+37d) |  |  | 63d → 44d |  |  |
| 345 | Интеграция по Зсд выполнена | 2014-06-06 → 2014-07-03 (+27d) | 2014-06-06 → 2014-07-03 (+27d) |  |  | 72d → 61d |  |  |
| 346 | **Интеграция с CMJ по Обсуждениям и ознакомлениям** |  | 2014-06-17 → 2014-07-14 (+27d) | 16d? → 35d? |  | 42d → 50d |  |  |
| 349 | **Настраиваемые коллекции** | 2014-06-06 → 2014-06-30 (+24d) | 2014-06-17 → 2014-07-09 (+22d) |  |  | 65d → 57d |  |  |
| 350 | **Конфигурация коллекций** | 2014-06-06 → 2014-06-30 (+24d) | 2014-06-16 → 2014-07-08 (+22d) |  |  | 65d → 52d |  |  |
| 351 | Типовая иерархия кастомных папок | 2014-06-06 → 2014-06-30 (+24d) | 2014-06-13 → 2014-07-07 (+24d) |  |  | 65d → 49d |  |  |
| 352 | Доработка расширенного поиска | 2014-06-06 → 2014-06-30 (+24d) | 2014-06-16 → 2014-07-08 (+22d) |  |  | 65d → 52d |  |  |
| 353 | Системные настройки для ОО | 2014-06-06 → 2014-06-30 (+24d) | 2014-06-13 → 2014-07-07 (+24d) |  |  | 66d → 53d |  |  |
| 354 | Проверка работы | 2014-06-17 → 2014-07-09 (+22d) | 2014-06-17 → 2014-07-09 (+22d) |  |  | 65d → 49d |  |  |
| 359 | **Разработка коллекций** | 2014-05-30 → 2014-07-04 (+35d) | 2014-06-09 → 2014-07-14 (+35d) |  |  | 61d → 39d |  |  |
| 360 | Коллекции | 2014-05-30 → 2014-07-04 (+35d) | 2014-06-09 → 2014-07-14 (+35d) |  |  | 61d → 36d |  |  |
| 361 | Интеграция по ОО выполнена | 2014-06-17 → 2014-07-14 (+27d) | 2014-06-17 → 2014-07-14 (+27d) |  |  | 65d → 46d |  |  |
| 362 | **Интеграция с CMJ по "Кейсам"** |  | 2014-06-27 → 2014-07-28 (+31d) | 16d? → 37d? |  | 42d → 44d |  |  |
| 375 | **Разработка коллекций** | 2014-06-11 → 2014-07-15 (+34d) | 2014-06-24 → 2014-07-28 (+34d) |  |  | 60d → 39d |  |  |
| 376 | Коллекции | 2014-06-11 → 2014-07-15 (+34d) | 2014-06-24 → 2014-07-28 (+34d) |  |  | 60d → 36d |  |  |

| ID | Task | Start | Finish | Duration | Complete | Total float | Predecessors | Other |
| --- | --- | --- | --- | --- | --- | --- | --- | --- |
| 377 | Интеграция по "Кейсам" выполнена | 2014-06-27 → 2014-07-28 (+31d) | 2014-06-27 → 2014-07-28 (+31d) |  |  | 57d → 36d |  |  |
| 469 | **Подсистема нотификаций** |  |  |  | 7% → 13% | 39d → 42d |  |  |
| 472 | **Разработка подсистемы** | 2014-03-17 A |  |  | 0% → 11% | 39d → 42d |  |  |
| 473 | Доработка существующих сервисов | 2014-03-17 A |  |  | 0% → 25% | 39d → 42d |  |  |
| 500 | **Подготовка базового набора отчетов и ГО** |  | 2014-07-16 → 2014-07-18 (+2d) | 110d → 112d |  | 44d → 0d |  |  |
| 510 | GUI - отображение отчётов | 2014-03-10 → 2014-04-02 (+23d) | 2014-03-28 → 2014-05-16 (+49d) | 15d → 30d |  | 119d → 0d | 505 → 505, 507, 509 | resources Денис Митавский → Леся Пуховая |
| 513 | Подготовка шаблонов типовых отчетов | 2014-03-10 → 2014-05-26 (+77d) | 2014-05-06 → 2014-07-18 (+73d) |  |  | 44d → 0d | 505 → 512FS+2d | was named Подготовка отчетов; resources Влад Симоненко; Алексей Львов; Андрей Карандей → (БТЛ) Дмитрий Лякин; Антон Ганчев (Киев) |
| 514 | Сопряжение с мобильным клиентом СМ4 | 2014-05-07 → 2014-07-21 (+75d) | 2014-07-16 → 2014-09-26 (+72d) |  |  | 44d → 0d |  |  |
| 515 | **Тестирование** |  | 2014-07-14 → 2014-09-24 (+72d) | 306d? → 358d? |  | 46d → 2d |  |  |
| 516 | **Функциональное тестирование** |  | 2014-06-23 → 2014-09-03 (+72d) | 291d? → 343d? |  | 61d → 17d |  |  |
| 521 | **Проведение тестирования** | 2014-04-28 → 2014-07-14 (+77d) | 2014-06-23 → 2014-09-03 (+72d) |  |  | 51d → 7d |  |  |
| 522 | **Подготовка среды тестирования** | 2014-04-28 → 2014-07-14 (+77d) | 2014-05-21 → 2014-08-01 (+72d) |  |  | 51d → 7d |  |  |
| 523 | Разворачивание системы | 2014-04-28 → 2014-07-14 (+77d) | 2014-05-07 → 2014-07-21 (+75d) |  |  | 94d → 50d |  |  |
| 524 | Система готова для подключения инструментов мониторинга | 2014-05-07 → 2014-07-21 (+75d) | 2014-05-07 → 2014-07-21 (+75d) |  |  | 94d → 50d |  |  |
| 525 | Наполнение данными | 2014-05-07 → 2014-07-21 (+75d) | 2014-05-21 → 2014-08-01 (+72d) |  |  | 46d → 2d |  |  |
| 526 | Среда тестирования готова | 2014-05-21 → 2014-08-01 (+72d) | 2014-05-21 → 2014-08-01 (+72d) |  |  | 46d → 2d |  |  |
| 527 | Проведение тестирования | 2014-05-22 → 2014-08-04 (+74d) | 2014-06-04 → 2014-08-15 (+72d) |  |  | 46d → 2d |  |  |
| 528 | **Обработка результатов тестирования и внесение изменений в модуль** | 2014-06-03 → 2014-08-14 (+72d) | 2014-06-23 → 2014-09-03 (+72d) |  |  | 46d → 2d |  |  |
| 529 | Устранение замечаний по результатам функционального тестирования | 2014-06-03 → 2014-08-14 (+72d) | 2014-06-23 → 2014-09-03 (+72d) |  |  | 46d → 2d |  |  |
| 530 | Проверка устранения замечаний | 2014-06-16 → 2014-08-27 (+72d) | 2014-06-23 → 2014-09-03 (+72d) |  |  | 46d → 2d |  |  |
| 531 | **Нагрузочное тестирование** | 2014-06-04 → 2014-08-15 (+72d) | 2014-07-14 → 2014-09-24 (+72d) |  |  | 46d → 2d |  |  |
| 532 | Стенд для нагрузочного тестирования подготовлен | 2014-06-04 → 2014-08-15 (+72d) | 2014-06-04 → 2014-08-15 (+72d) |  |  | 59d → 15d |  |  |
| 533 | Проведения нагрузочного тестирования | 2014-06-24 → 2014-09-04 (+72d) | 2014-07-07 → 2014-09-17 (+72d) |  |  | 46d → 2d |  |  |
| 534 | Обработка результатов нагрузочного тестирования | 2014-07-08 → 2014-09-18 (+72d) | 2014-07-14 → 2014-09-24 (+72d) |  |  | 46d → 2d |  |  |

## Version 72 (saved 2014-05-27)

Last finish stays 2014-09-26. Complete tasks 233 → 242.

Added:

| ID | Task | Duration | Start | Finish | Predecessors | Resources |
| --- | --- | --- | --- | --- | --- | --- |
| 277 | Тематический классификаnор (2 коллекции) | 1d | 2014-06-02 | 2014-06-02 | 276 | (БТЛ) Олег Еренцов; (БТЛ) Дмитрий Лякин; (БТЛ)Сергей Степыгин |

Removed: 299 Конфиг ДОП; 300 Mapper; 416 GUI

Changed:

| ID | Task | Start | Finish | Duration | Complete | Total float | Predecessors | Other |
| --- | --- | --- | --- | --- | --- | --- | --- | --- |
| 1 | **Разработка версии CM4/5** |  |  |  | 48% → 49% |  |  |  |
| 9 | **Создание модуля "Делопроизводство" (документоориентированная среда)** |  |  |  | 52% → 54% |  |  |  |
| 20 | **Проектирование и формирование ядра системы** |  |  |  | 66% → 69% |  |  |  |
| 68 | **Слой сопряжения CMJ server (CM4)** | 2013-08-05 A → 2013-04-22 A (-105d) | 2014-07-28 → 2014-07-29 (+1d) | 245d? → 316d? | 63% → 67% | 44d → 43d |  |  |
| 229 | **Интеграция с CMJ по ОРД** |  | 2014-05-14 A |  | 99% → 100% | 96.8d → none |  |  |
| 244 | Интеграция по ОРД выполнена | 2014-04-11 A | 2014-04-11 A |  | 0% → 100% | 108d → none |  |  |
| 246 | **Интеграция с CMJ по самостоятельным поручениям** |  |  |  | 57% → 99% |  |  |  |
| 255 | **Перенос логики сервисов по СамПор** | 2014-05-12 A | 2014-05-20 A |  | 0% → 100% | 39d → none |  |  |
| 256 | Задание поставлено | 2014-05-12 A | 2014-05-12 A |  | 0% → 100% | 39d → none |  |  |
| 257 | Пролведение процедуры Revers Engineering для процессов | 2014-05-12 A | 2014-05-20 A |  | 0% → 100% | 52d → none |  |  |
| 258 | Реализация в слое CMJ-CMSochi | 2014-05-12 A | 2014-05-20 A |  | 0% → 100% | 52d → none |  |  |
| 259 | **Разработка коллекций** | 2014-05-12 A | 2014-05-20 A |  | 0% → 100% | 39d → none |  |  |
| 260 | Коллекции | 2014-05-12 A | 2014-05-20 A |  | 0% → 100% | 39d → none |  |  |
| 262 | **Интеграция с CMJ по ОГ** |  | 2014-05-30 → 2014-06-02 (+3d) | 40d? → 41d? | 56% → 98% | 85d → 84d |  |  |
| 271 | **Перенос логики сервисов по ОГ** | 2014-05-20 A | 2014-05-29 A |  | 0% → 100% | 52d → none |  |  |
| 272 | Задание поставлено | 2014-05-20 A | 2014-05-20 A |  | 0% → 100% | 49d → none |  |  |
| 273 | Пролведение процедуры Revers Engineering для процессов | 2014-05-21 A | 2014-05-29 A |  | 0% → 100% | 49d → none |  |  |
| 274 | Реализация в слое CMJ-CMSochi | 2014-05-21 A | 2014-05-29 A |  | 0% → 100% | 52d → none |  |  |
| 275 | **Разработка коллекций** | 2014-05-21 A | 2014-05-30 → 2014-06-02 (+3d) | 8d → 9d | 0% → 89% | 39d → 43d |  |  |
| 276 | Коллекции | 2014-05-21 A | 2014-05-30 A |  | 0% → 100% | 36d → none |  |  |
| 279 | **Интеграция с CMJ по WF + связи** |  | 2014-06-06 → 2014-06-09 (+3d) | 37d? → 38d? |  | 80d → 79d |  |  |
| 296 | **Разработка коллекций** | 2014-06-02 → 2014-06-03 (+1d) | 2014-06-06 → 2014-06-09 (+3d) |  |  | 39d → 43d |  |  |
| 297 | Коллекции | 2014-06-02 → 2014-06-03 (+1d) | 2014-06-06 → 2014-06-09 (+3d) |  |  | 36d → 43d |  |  |
| 298 | Интеграция по WF выполнена | 2014-06-06 → 2014-06-09 (+3d) | 2014-06-06 → 2014-06-09 (+3d) |  |  | 72d → 79d |  |  |
| 299 | **Интеграция с CMJ по сервису Контроля Заданий** | 2014-04-18 → 2013-09-30 (-200d) | 2014-06-17 → 2014-06-18 (+1d) | 40d? → 177d? |  | 50d → 72d |  |  |
| 300 | **Настраиваемые коллекции** |  |  |  |  |  | Mapper → none |  |
| 306 | **Перенос логики сервисов по КЗ** | 2014-04-22 → 2013-09-30 (-204d) |  | 11d → 150d |  | 60d → 99d |  |  |
| 307 | Задание поставлено | 2014-04-22 → 2013-09-30 (-204d) | 2014-04-22 → 2013-09-30 (-204d) |  |  | 57d → 204d | Конфиг ДОП → none |  |
| 310 | **Разработка коллекций** | 2014-06-09 → 2014-06-10 (+1d) | 2014-06-17 → 2014-06-18 (+1d) |  |  | 39d → 43d |  |  |
| 311 | Коллекции | 2014-06-09 → 2014-06-10 (+1d) | 2014-06-17 → 2014-06-18 (+1d) |  |  | 36d → 43d | Конфиг ДОП, 297 → 297 |  |
| 312 | Интеграция по КЗ выполнена | 2014-06-17 → 2014-06-18 (+1d) | 2014-06-17 → 2014-06-18 (+1d) |  |  | 65d → 72d | Mapper, 300, 311 → 300, 311 |  |
| 313 | **Интеграция с CMJ по Формированию дел** | 2014-04-30 → 2013-04-22 (-373d) | 2014-06-25 → 2014-06-26 (+1d) | 38d? → 293d? |  | 50d → 66d |  |  |
| 314 | Конфиг ДОП | 2014-04-30 → 2013-04-22 (-373d) | 2014-05-06 → 2013-04-24 (-377d) |  |  | 50d → 304d | Mapper → none |  |
| 315 | Mapper | 2014-05-07 → 2013-04-25 (-377d) | 2014-05-14 → 2013-05-06 (-373d) |  |  | 50d → 304d |  |  |
| 322 | **Перенос логики сервисов по ФД** | 2014-05-06 → 2013-09-30 (-218d) |  | 10d → 157d |  |  |  |  |
| 323 | Задание поставлено | 2014-05-06 → 2013-09-30 (-218d) | 2014-05-06 → 2013-09-30 (-218d) |  |  | 64d → 211d |  |  |
| 326 | **Разработка коллекций** | 2014-06-18 → 2014-06-19 (+1d) | 2014-06-25 → 2014-06-26 (+1d) |  |  | 44d → 43d |  |  |
| 327 | Коллекции | 2014-06-18 → 2014-06-19 (+1d) | 2014-06-25 → 2014-06-26 (+1d) |  |  | 44d → 43d |  |  |
| 328 | Интеграция по ФД выполнена | 2014-06-25 → 2014-06-26 (+1d) | 2014-06-25 → 2014-06-26 (+1d) |  |  | 67d → 66d |  |  |
| 329 | **Интеграция с CMJ по Заседаниям** | 2014-05-15 → 2013-05-07 (-373d) | 2014-07-03 → 2014-07-04 (+1d) | 36d? → 291d? |  | 50d → 60d |  |  |
| 330 | Конфиг ДОП | 2014-05-15 → 2013-05-07 (-373d) | 2014-05-19 → 2013-05-13 (-371d) |  |  | 50d → 304d |  |  |
| 331 | Mapper | 2014-05-20 → 2013-05-14 (-371d) | 2014-05-26 → 2013-05-20 (-371d) |  |  | 50d → 304d |  |  |
| 342 | **Разработка коллекций** | 2014-06-26 → 2014-06-27 (+1d) | 2014-07-03 → 2014-07-04 (+1d) |  |  | 44d → 43d |  |  |
| 343 | Коллекции | 2014-06-26 → 2014-06-27 (+1d) | 2014-07-03 → 2014-07-04 (+1d) |  |  | 44d → 43d |  |  |
| 344 | Интеграция по Зсд выполнена | 2014-07-03 → 2014-07-04 (+1d) | 2014-07-03 → 2014-07-04 (+1d) |  |  | 61d → 60d |  |  |
| 345 | **Интеграция с CMJ по Обсуждениям и ознакомлениям** | 2014-05-27 → 2013-05-21 (-371d) | 2014-07-14 → 2014-07-15 (+1d) | 35d? → 290d? |  | 50d → 53d |  |  |
| 346 | Конфиг ДОП | 2014-05-27 → 2013-05-21 (-371d) | 2014-05-29 → 2013-05-23 (-371d) |  |  | 42d → 304d |  |  |
| 347 | Mapper | 2014-05-30 → 2013-05-24 (-371d) | 2014-06-05 → 2013-05-30 (-371d) |  |  | 42d → 304d |  |  |
| 354 | **Перенос логики сервисов по ОО** | 2014-05-29 → 2013-09-30 (-241d) |  | 8d → 171d |  | 56d → 61d |  |  |
| 355 | Задание поставлено | 2014-05-29 → 2013-09-30 (-241d) | 2014-05-29 → 2013-09-30 (-241d) |  |  | 54d → 225d |  |  |
| 358 | **Разработка коллекций** | 2014-07-04 → 2014-07-07 (+3d) | 2014-07-14 → 2014-07-15 (+1d) |  |  | 39d → 43d |  |  |
| 359 | Коллекции | 2014-07-04 → 2014-07-07 (+3d) | 2014-07-14 → 2014-07-15 (+1d) |  |  | 36d → 43d |  |  |
| 360 | Интеграция по ОО выполнена | 2014-07-14 → 2014-07-15 (+1d) | 2014-07-14 → 2014-07-15 (+1d) |  |  | 46d → 53d |  |  |
| 361 | **Интеграция с CMJ по "Кейсам" + Документы** | 2014-06-06 → 2013-05-31 (-371d) | 2014-07-28 → 2014-07-29 (+1d) | 37d? → 292d? |  | 44d → 43d |  | was named Интеграция с CMJ по "Кейсам" |
| 362 | Конфиг ДОП | 2014-06-06 → 2013-05-31 (-371d) | 2014-06-10 → 2013-06-04 (-371d) |  |  | 42d → 304d |  |  |
| 363 | Mapper | 2014-06-11 → 2013-06-05 (-371d) | 2014-06-17 → 2013-06-11 (-371d) |  |  | 42d → 304d |  |  |
| 364 | **Настраиваемые коллекции** | 2014-06-18 → 2013-06-12 (-371d) | 2014-06-27 → 2013-06-21 (-371d) |  |  | 50d → 304d |  |  |
| 365 | **Конфигурация коллекций** | 2014-06-18 → 2013-06-12 (-371d) | 2014-06-26 → 2013-06-20 (-371d) |  |  | 45d → 304d |  |  |
| 366 | Типовая иерархия кастомных папок | 2014-06-18 → 2013-06-12 (-371d) | 2014-06-25 → 2013-06-19 (-371d) |  |  | 45d → 304d |  |  |
| 367 | Доработка расширенного поиска | 2014-06-18 → 2013-06-12 (-371d) | 2014-06-26 → 2013-06-20 (-371d) |  |  | 45d → 304d |  |  |
| 368 | Системные настройки для "Кейсов" | 2014-06-18 → 2013-06-12 (-371d) | 2014-06-25 → 2013-06-19 (-371d) |  |  | 46d → 305d |  |  |
| 369 | Проверка работы | 2014-06-27 → 2013-06-21 (-371d) | 2014-06-27 → 2013-06-21 (-371d) |  |  | 57d → 319d |  |  |
| 374 | **Разработка коллекций** | 2014-07-15 → 2014-07-16 (+1d) | 2014-07-28 → 2014-07-29 (+1d) |  |  | 39d → 43d |  |  |
| 375 | Коллекции | 2014-07-15 → 2014-07-16 (+1d) | 2014-07-28 → 2014-07-29 (+1d) |  |  | 36d → 43d |  |  |
| 376 | Интеграция по "Кейсам" выполнена | 2014-07-28 → 2014-07-29 (+1d) | 2014-07-28 → 2014-07-29 (+1d) |  |  | 36d → 43d |  |  |
| 382 | **Интеграция с CMJ по ПРВЗ(мобильность)** | 2014-06-27 → 2013-06-21 (-371d) | 2014-07-18 → 2013-10-08 (-283d) | 16d? → 78d? |  | 50d → 242d |  |  |
| 383 | Конфиг ДОП | 2014-06-27 → 2013-06-21 (-371d) | 2014-07-01 → 2013-06-25 (-371d) |  |  | 42d → 304d |  |  |
| 384 | Mapper | 2014-07-02 → 2013-06-26 (-371d) | 2014-07-08 → 2013-07-02 (-371d) |  |  | 42d → 304d |  |  |
| 385 | **Настраиваемые коллекции** | 2014-07-09 → 2013-07-03 (-371d) | 2014-07-18 → 2013-07-12 (-371d) |  |  | 50d → 304d |  |  |
| 386 | **Конфигурация коллекций** | 2014-07-09 → 2013-07-03 (-371d) | 2014-07-17 → 2013-07-11 (-371d) |  |  | 45d → 304d |  |  |

| ID | Task | Start | Finish | Total float | Predecessors |
| --- | --- | --- | --- | --- | --- |
| 387 | Типовая иерархия кастомных папок | 2014-07-09 → 2013-07-03 (-371d) | 2014-07-16 → 2013-07-10 (-371d) | 45d → 304d |  |
| 388 | Доработка расширенного поиска | 2014-07-09 → 2013-07-03 (-371d) | 2014-07-17 → 2013-07-11 (-371d) | 45d → 304d |  |
| 389 | Системные настройки для ПРВЗ | 2014-07-09 → 2013-07-03 (-371d) | 2014-07-16 → 2013-07-10 (-371d) | 46d → 305d |  |
| 390 | Проверка работы | 2014-07-18 → 2013-07-12 (-371d) | 2014-07-18 → 2013-07-12 (-371d) | 42d → 304d |  |
| 391 | **Перенос логики сервисов по ПРВЗ** | 2014-07-01 → 2013-09-30 (-274d) | 2014-07-10 → 2013-10-08 (-275d) | 51d → 242d |  |
| 392 | Задание поставлено | 2014-07-01 → 2013-09-30 (-274d) | 2014-07-01 → 2013-09-30 (-274d) | 48d → 242d |  |
| 393 | Пролведение процедуры Revers Engineering для процессов | 2014-07-02 → 2013-09-30 (-275d) | 2014-07-10 → 2013-10-08 (-275d) | 48d → 242d |  |
| 394 | Реализация в слое CMJ-CMSochi | 2014-07-02 → 2013-09-30 (-275d) | 2014-07-10 → 2013-10-08 (-275d) | 51d → 242d |  |
| 395 | **Разработка коллекций** | 2014-07-02 → 2013-06-26 (-371d) | 2014-07-15 → 2013-07-09 (-371d) | 48d → 307d |  |
| 396 | Коллекции | 2014-07-02 → 2013-06-26 (-371d) | 2014-07-15 → 2013-07-09 (-371d) | 45d → 307d |  |
| 397 | Интеграция по ПРВЗ выполнена | 2014-07-18 → 2013-07-12 (-371d) | 2014-07-18 → 2013-07-12 (-371d) | 42d → 304d |  |
| 455 | Уточнение состава и сроков работ |  |  |  | GUI → none |

## Version 73 (saved 2014-05-30)

Last finish stays 2014-09-26. Complete tasks 242 → 243.

Added:

| ID | Task | Duration | Start | Finish | Predecessors | Constraint | Resources |
| --- | --- | --- | --- | --- | --- | --- | --- |
| 282 | **Связи** | 280d | 2013-04-22 | 2014-06-09 |  |  |  |
| 283 | Подготовлен док. Соответствия | 2d | 2014-06-02 | 2014-06-03 |  | finish no earlier than 2014-06-03 |  |
| 284 | Конфиг ДОП | 1d | 2014-06-04 | 2014-06-04 | 283 |  | Александр Власюк |
| 285 | Mapper | 3d | 2014-06-05 | 2014-06-09 | 284 |  | Александр Власюк |
| 286 | Подготовлен справочник по связязям | 0d | 2013-04-22 | 2013-04-22 |  |  | Тугушев Илья |
| 416 | **Графический интерфейс пользователя** | 325d | 2013-04-22 A | 2014-08-11 |  |  |  |

Removed: 292 Разработка адаптеров для СрвСогл; 293 Задание поставлено; 294 Разработка архитектуры дя адаптеров; 295 Разработка адаптеров

Changed:

| ID | Task | Start | Finish | Duration | Complete | Total float | Predecessors | Other |
| --- | --- | --- | --- | --- | --- | --- | --- | --- |
| 1 | **Разработка версии CM4/5** |  |  |  | 49% → 50% |  |  |  |
| 68 | **Слой сопряжения CMJ server (CM4)** |  | 2014-07-29 → 2014-08-04 (+6d) | 316d? → 320d? | 67% → 68% | 43d → 39d |  |  |
| 262 | **Интеграция с CMJ по ОГ** |  |  |  | 98% → 99% |  |  |  |
| 275 | **Разработка коллекций** |  | 2014-06-02 A |  | 89% → 100% | 43d → none |  |  |
| 277 | Тематический классификаnор (2 коллекции) | 2014-06-02 A | 2014-06-02 A |  | 0% → 100% | 43d → none |  |  |
| 279 | **Интеграция с CMJ по WF + связи** | 2014-04-14 A → 2013-04-22 A (-357d) | 2014-06-09 → 2014-06-13 (+4d) | 38d? → 284d? | 10% → 26% | 79d → 75d |  |  |
| 287 | **Настраиваемые коллекции** | 2014-04-23 A |  |  | 0% → 34% | 61d → 102d |  |  |
| 288 | **Конфигурация коллекций** | 2014-04-23 A |  |  | 0% → 37% | 61d → 102d |  |  |
| 289 | Типовая иерархия кастомных папок (3шт) | 2014-04-23 A |  |  | 0% → 46% | 53d → 105d |  |  |
| 290 | Системные настройки для WF | 2014-04-23 A |  |  | 0% → 46% |  |  |  |
| 291 | Доработка расширенного поиска | 2014-04-23 A |  |  | 0% → 26% |  |  |  |
| 297 | **Разработка коллекций по связям** | 2014-06-03 → 2014-06-10 (+7d) | 2014-06-09 → 2014-06-13 (+4d) | 5d → 4d |  | 43d → 39d |  | was named Разработка коллекций |
| 298 | Коллекции по связям | 2014-06-03 → 2014-06-10 (+7d) | 2014-06-09 → 2014-06-13 (+4d) | 5d → 4d |  | 43d → 39d | 280, 275 → 280, 275, 284, 285 | was named Коллекции |
| 299 | Интеграция по WF выполнена | 2014-06-09 → 2014-06-13 (+4d) | 2014-06-09 → 2014-06-13 (+4d) |  |  | 79d → 75d |  |  |
| 300 | **Интеграция с CMJ по сервису Контроля Заданий** |  | 2014-06-18 → 2014-06-24 (+6d) | 177d? → 181d? |  | 72d → 68d |  |  |
| 311 | **Разработка коллекций** | 2014-06-10 → 2014-06-16 (+6d) | 2014-06-18 → 2014-06-24 (+6d) |  |  | 43d → 39d |  |  |
| 312 | Коллекции | 2014-06-10 → 2014-06-16 (+6d) | 2014-06-18 → 2014-06-24 (+6d) |  |  | 43d → 39d |  |  |
| 313 | Интеграция по КЗ выполнена | 2014-06-18 → 2014-06-24 (+6d) | 2014-06-18 → 2014-06-24 (+6d) |  |  | 72d → 68d |  |  |
| 314 | **Интеграция с CMJ по Формированию дел** |  | 2014-06-26 → 2014-07-02 (+6d) | 293d? → 297d? |  | 66d → 62d |  |  |
| 327 | **Разработка коллекций** | 2014-06-19 → 2014-06-25 (+6d) | 2014-06-26 → 2014-07-02 (+6d) |  |  | 43d → 39d |  |  |
| 328 | Коллекции | 2014-06-19 → 2014-06-25 (+6d) | 2014-06-26 → 2014-07-02 (+6d) |  |  | 43d → 39d |  |  |
| 329 | Интеграция по ФД выполнена | 2014-06-26 → 2014-07-02 (+6d) | 2014-06-26 → 2014-07-02 (+6d) |  |  | 66d → 62d |  |  |
| 330 | **Интеграция с CMJ по Заседаниям** |  | 2014-07-04 → 2014-07-10 (+6d) | 291d? → 295d? |  | 60d → 56d |  |  |
| 343 | **Разработка коллекций** | 2014-06-27 → 2014-07-03 (+6d) | 2014-07-04 → 2014-07-10 (+6d) |  |  | 43d → 39d |  |  |
| 344 | Коллекции | 2014-06-27 → 2014-07-03 (+6d) | 2014-07-04 → 2014-07-10 (+6d) |  |  | 43d → 39d |  |  |
| 345 | Интеграция по Зсд выполнена | 2014-07-04 → 2014-07-10 (+6d) | 2014-07-04 → 2014-07-10 (+6d) |  |  | 60d → 56d |  |  |
| 346 | **Интеграция с CMJ по Обсуждениям и ознакомлениям** |  | 2014-07-15 → 2014-07-21 (+6d) | 290d? → 294d? |  | 53d → 49d |  |  |
| 359 | **Разработка коллекций** | 2014-07-07 → 2014-07-11 (+4d) | 2014-07-15 → 2014-07-21 (+6d) |  |  | 43d → 39d |  |  |
| 360 | Коллекции | 2014-07-07 → 2014-07-11 (+4d) | 2014-07-15 → 2014-07-21 (+6d) |  |  | 43d → 39d |  |  |
| 361 | Интеграция по ОО выполнена | 2014-07-15 → 2014-07-21 (+6d) | 2014-07-15 → 2014-07-21 (+6d) |  |  | 53d → 49d |  |  |
| 362 | **Интеграция с CMJ по "Кейсам" + Документы** |  | 2014-07-29 → 2014-08-04 (+6d) | 292d? → 296d? |  | 43d → 39d |  |  |
| 375 | **Разработка коллекций** | 2014-07-16 → 2014-07-22 (+6d) | 2014-07-29 → 2014-08-04 (+6d) |  |  | 43d → 39d |  |  |
| 376 | Коллекции | 2014-07-16 → 2014-07-22 (+6d) | 2014-07-29 → 2014-08-04 (+6d) |  |  | 43d → 39d |  |  |
| 377 | Интеграция по "Кейсам" выполнена | 2014-07-29 → 2014-08-04 (+6d) | 2014-07-29 → 2014-08-04 (+6d) |  |  | 43d → 39d |  |  |
| 378 | **Интеграция с CMJ ПКД (нотификация по текущим задачам пользователя)** |  |  |  |  |  |  | was named Интеграция с CMJ ПКД |
| 457 | Уточнение состава и сроков работ |  |  |  |  |  | none → 416 |  |

## Version 74 (saved 2014-06-05)

Last finish stays 2014-09-26. Complete tasks 243 → 245.

Added:

| ID | Task | Duration | Start | Finish | Predecessors | Resources |
| --- | --- | --- | --- | --- | --- | --- |
| 362 | **Интеграция с CMJ по Связям** | 17d | 2014-07-08 | 2014-07-30 |  |  |
| 363 | Конфиг ДОП | 3d | 2014-07-08 | 2014-07-10 | 348 | Александр Власюк |
| 364 | Mapper | 5d | 2014-07-11 | 2014-07-17 | 363 | Александр Власюк |
| 365 | **Разработка коллекций** | 7d | 2014-07-22 | 2014-07-30 |  |  |
| 366 | Коллекции | 7d | 2014-07-22 | 2014-07-30 | 363, 361 | (БТЛ) Олег Еренцов; (БТЛ) Дмитрий Лякин; (БТЛ)Сергей Степыгин |
| 367 | Интеграция по ОО выполнена | 0d | 2014-07-30 | 2014-07-30 | 364, 366 |  |

Changed:

| ID | Task | Start | Finish | Duration | Complete | Total float | Predecessors | Other |
| --- | --- | --- | --- | --- | --- | --- | --- | --- |
| 20 | **Проектирование и формирование ядра системы** |  | 2014-08-13 → 2014-08-19 (+6d) | 327d? → 331d? | 69% → 68% | 32d → 28d |  |  |
| 68 | **Слой сопряжения CMJ server (CM4)** |  | 2014-08-04 → 2014-08-19 (+15d) | 320d? → 331d? | 68% → 67% | 39d → 28d |  |  |
| 246 | **Интеграция с CMJ по самостоятельным поручениям** |  | 2014-05-22 A |  | 99% → 100% | 92d → none |  |  |
| 261 | Интеграция по СамПор выполнена | 2014-05-22 A | 2014-05-22 A |  | 0% → 100% | 92d → none |  |  |
| 262 | **Интеграция с CMJ по ОГ** |  | 2014-06-02 A |  | 99% → 100% | 84d → none |  |  |
| 278 | Интеграция по ОГ выполнена | 2014-05-30 A | 2014-05-30 A |  | 0% → 100% | 85d → none |  |  |
| 279 | **Интеграция с CMJ по WF** |  |  |  |  |  |  | was named Интеграция с CMJ по WF + связи |
| 300 | **Интеграция с CMJ по сервису Контроля Заданий** | 2013-09-30 → 2014-05-30 (+242d) |  | 181d? → 18d? |  | 68d → 31d |  |  |
| 302 | **Конфигурация коллекций** |  |  |  |  | 60d → 53d | none → 281 |  |
| 307 | **Перенос логики сервисов по КЗ** | 2013-09-30 → 2014-06-03 (+246d) | 2014-05-12 → 2014-06-12 (+31d) | 150d → 7d |  | 99d → 28d | none → 293 |  |
| 308 | Задание поставлено | 2013-09-30 → 2014-06-03 (+246d) | 2013-09-30 → 2014-06-03 (+246d) |  |  | 204d → 28d |  |  |
| 309 | Пролведение процедуры Revers Engineering для процессов | 2014-04-29 → 2014-06-04 (+36d) | 2014-05-12 → 2014-06-12 (+31d) |  |  | 61d → 38d |  |  |
| 310 | Реализация в слое CMJ-CMSochi | 2014-04-29 → 2014-06-04 (+36d) | 2014-05-12 → 2014-06-12 (+31d) |  |  | 99d → 76d |  |  |
| 314 | **Интеграция с CMJ по Формированию дел** | 2013-04-22 → 2014-06-04 (+408d) |  | 297d? → 21d? |  | 62d → 28d |  |  |
| 315 | Конфиг ДОП | 2013-04-22 → 2014-06-04 (+408d) | 2013-04-24 → 2014-06-06 (+408d) |  |  | 304d → 28d | none → 308 |  |
| 316 | Mapper | 2013-04-25 → 2014-06-09 (+410d) | 2013-05-06 → 2014-06-13 (+403d) |  |  | 304d → 28d |  |  |
| 317 | **Настраиваемые коллекции** | 2014-06-12 → 2014-06-16 (+4d) | 2014-06-23 → 2014-06-25 (+2d) |  |  | 57d → 48d |  |  |
| 318 | **Конфигурация коллекций** | 2014-06-12 → 2014-06-16 (+4d) | 2014-06-20 → 2014-06-24 (+4d) |  |  | 57d → 48d |  |  |
| 319 | Типовая иерархия кастомных папок | 2014-06-12 → 2014-06-16 (+4d) | 2014-06-19 → 2014-06-23 (+4d) |  |  | 57d → 48d |  |  |
| 320 | Доработка расширенного поиска | 2014-06-12 → 2014-06-16 (+4d) | 2014-06-20 → 2014-06-24 (+4d) |  |  | 69d → 67d |  |  |
| 321 | Системные настройки для ФД | 2014-06-12 → 2014-06-16 (+4d) | 2014-06-19 → 2014-06-23 (+4d) |  |  | 57d → 48d |  |  |
| 322 | Проверка работы | 2014-06-23 → 2014-06-25 (+2d) | 2014-06-23 → 2014-06-25 (+2d) |  |  | 69d → 67d |  |  |
| 323 | **Перенос логики сервисов по ФД** | 2013-09-30 → 2014-06-06 (+249d) | 2014-05-21 → 2014-06-23 (+33d) | 157d → 11d |  | 61d → 38d |  |  |
| 324 | Задание поставлено | 2013-09-30 → 2014-06-06 (+249d) | 2013-09-30 → 2014-06-06 (+249d) |  |  | 211d → 42d |  |  |
| 325 | Пролведение процедуры Revers Engineering для процессов | 2014-05-13 → 2014-06-13 (+31d) | 2014-05-21 → 2014-06-23 (+33d) |  |  | 61d → 38d |  |  |
| 326 | Реализация в слое CMJ-CMSochi | 2014-05-13 → 2014-06-13 (+31d) | 2014-05-21 → 2014-06-23 (+33d) |  |  | 61d → 38d |  |  |
| 330 | **Интеграция с CMJ по Заседаниям** | 2013-05-07 → 2014-06-16 (+405d) |  | 295d? → 19d? |  | 56d → 28d |  |  |
| 331 | Конфиг ДОП | 2013-05-07 → 2014-06-16 (+405d) | 2013-05-13 → 2014-06-18 (+401d) |  |  | 304d → 28d | 316 → 316, 245 |  |
| 332 | Mapper | 2013-05-14 → 2014-06-19 (+401d) | 2013-05-20 → 2014-06-25 (+401d) |  |  | 304d → 28d |  |  |
| 333 | **Настраиваемые коллекции** | 2014-06-20 → 2014-06-26 (+6d) | 2014-07-01 → 2014-07-07 (+6d) |  |  | 57d → 46d |  |  |
| 334 | **Конфигурация коллекций** | 2014-06-20 → 2014-06-26 (+6d) | 2014-06-30 → 2014-07-04 (+4d) |  |  | 57d → 46d |  |  |
| 335 | Типовая иерархия кастомных папок | 2014-06-20 → 2014-06-26 (+6d) | 2014-06-27 → 2014-07-03 (+6d) |  |  | 57d → 46d |  |  |
| 336 | Системные настройки для Зсд | 2014-06-20 → 2014-06-26 (+6d) | 2014-06-27 → 2014-07-03 (+6d) |  |  | 57d → 46d |  |  |
| 337 | Доработка расширенного поиска | 2014-06-20 → 2014-06-26 (+6d) | 2014-06-30 → 2014-07-04 (+4d) |  |  | 63d → 59d |  |  |
| 338 | Проверка работы | 2014-07-01 → 2014-07-07 (+6d) | 2014-07-01 → 2014-07-07 (+6d) |  |  | 63d → 59d |  |  |
| 339 | **Перенос логики сервисов по Зсд** | 2014-05-21 → 2014-06-23 (+33d) | 2014-05-30 → 2014-07-02 (+33d) |  |  | 61d → 38d |  |  |
| 340 | Задание поставлено | 2014-05-21 → 2014-06-23 (+33d) | 2014-05-21 → 2014-06-23 (+33d) |  |  | 61d → 38d |  |  |
| 341 | Пролведение процедуры Revers Engineering для процессов | 2014-05-22 → 2014-06-24 (+33d) | 2014-05-30 → 2014-07-02 (+33d) |  |  | 61d → 38d |  |  |
| 342 | Реализация в слое CMJ-CMSochi | 2014-05-22 → 2014-06-24 (+33d) | 2014-05-30 → 2014-07-02 (+33d) |  |  | 85d → 62d |  |  |
| 346 | **Интеграция с CMJ по Обсуждениям и ознакомлениям** | 2013-05-21 → 2014-06-26 (+401d) |  | 294d? → 18d? |  | 49d → 28d |  |  |
| 347 | Конфиг ДОП | 2013-05-21 → 2014-06-26 (+401d) | 2013-05-23 → 2014-06-30 (+403d) |  |  | 304d → 28d |  |  |
| 348 | Mapper | 2013-05-24 → 2014-07-01 (+403d) | 2013-05-30 → 2014-07-07 (+403d) |  |  | 304d → 28d |  |  |
| 349 | **Настраиваемые коллекции** | 2014-06-30 → 2014-07-08 (+8d) | 2014-07-09 → 2014-07-17 (+8d) |  |  | 57d → 44d |  |  |
| 350 | **Конфигурация коллекций** | 2014-06-30 → 2014-07-08 (+8d) | 2014-07-08 → 2014-07-16 (+8d) |  |  | 57d → 44d |  |  |
| 351 | Типовая иерархия кастомных папок | 2014-06-30 → 2014-07-08 (+8d) | 2014-07-07 → 2014-07-15 (+8d) |  |  | 57d → 44d |  |  |
| 352 | Доработка расширенного поиска | 2014-06-30 → 2014-07-08 (+8d) | 2014-07-08 → 2014-07-16 (+8d) |  |  | 57d → 44d |  |  |
| 353 | Системные настройки для ОО | 2014-06-30 → 2014-07-08 (+8d) | 2014-07-07 → 2014-07-15 (+8d) |  |  | 58d → 45d |  |  |
| 354 | Проверка работы | 2014-07-09 → 2014-07-17 (+8d) | 2014-07-09 → 2014-07-17 (+8d) |  |  | 57d → 44d |  |  |
| 355 | **Перенос логики сервисов по ОО** | 2013-09-30 → 2014-06-30 (+273d) | 2014-06-10 → 2014-07-11 (+31d) | 171d → 9d |  | 61d → 38d |  |  |
| 356 | Задание поставлено | 2013-09-30 → 2014-06-30 (+273d) | 2013-09-30 → 2014-06-30 (+273d) |  |  | 225d → 40d |  |  |
| 357 | Пролведение процедуры Revers Engineering для процессов | 2014-06-02 → 2014-07-03 (+31d) | 2014-06-10 → 2014-07-11 (+31d) |  |  | 61d → 38d |  |  |
| 358 | Реализация в слое CMJ-CMSochi | 2014-06-02 → 2014-07-03 (+31d) | 2014-06-10 → 2014-07-11 (+31d) |  |  | 61d → 38d |  |  |
| 368 | **Интеграция с CMJ по "Кейсам" + Документы** | 2013-05-31 → 2014-07-08 (+403d) |  | 296d? → 20d? |  | 39d → 28d |  |  |
| 369 | Конфиг ДОП | 2013-05-31 → 2014-07-08 (+403d) | 2013-06-04 → 2014-07-10 (+401d) |  |  | 304d → 28d |  |  |
| 370 | Mapper | 2013-06-05 → 2014-07-11 (+401d) | 2013-06-11 → 2014-07-17 (+401d) |  |  | 304d → 28d |  |  |
| 371 | **Настраиваемые коллекции** | 2013-06-12 → 2014-07-18 (+401d) | 2013-06-21 → 2014-07-29 (+403d) |  |  | 304d → 28d |  |  |
| 372 | **Конфигурация коллекций** | 2013-06-12 → 2014-07-18 (+401d) | 2013-06-20 → 2014-07-28 (+403d) |  |  | 304d → 28d |  |  |
| 373 | Типовая иерархия кастомных папок | 2013-06-12 → 2014-07-18 (+401d) | 2013-06-19 → 2014-07-25 (+401d) |  |  | 304d → 28d |  |  |
| 374 | Доработка расширенного поиска | 2013-06-12 → 2014-07-18 (+401d) | 2013-06-20 → 2014-07-28 (+403d) |  |  | 304d → 28d |  |  |
| 375 | Системные настройки для "Кейсов" | 2013-06-12 → 2014-07-18 (+401d) | 2013-06-19 → 2014-07-25 (+401d) |  |  | 305d → 29d |  |  |
| 376 | Проверка работы | 2013-06-21 → 2014-07-29 (+403d) | 2013-06-21 → 2014-07-29 (+403d) |  |  | 319d → 43d |  |  |
| 377 | **Перенос логики сервисов по "Кейсам"** | 2014-06-10 → 2014-07-11 (+31d) | 2014-06-19 → 2014-07-22 (+33d) |  |  | 61d → 38d |  |  |
| 378 | Задание поставлено | 2014-06-10 → 2014-07-11 (+31d) | 2014-06-10 → 2014-07-11 (+31d) |  |  | 61d → 38d |  |  |
| 379 | Пролведение процедуры Revers Engineering для процессов | 2014-06-11 → 2014-07-14 (+33d) | 2014-06-19 → 2014-07-22 (+33d) |  |  | 61d → 38d |  |  |
| 380 | Реализация в слое CMJ-CMSochi | 2014-06-11 → 2014-07-14 (+33d) | 2014-06-19 → 2014-07-22 (+33d) |  |  | 61d → 38d |  |  |
| 384 | **Интеграция с CMJ ПКД (нотификация по текущим задачам пользователя)** | 2014-06-19 → 2014-07-22 (+33d) | 2014-07-03 → 2014-08-05 (+33d) |  |  | 61d → 38d |  |  |
| 385 | **Перенос логики сервисов по ОО** | 2014-06-19 → 2014-07-22 (+33d) | 2014-07-03 → 2014-08-05 (+33d) |  |  | 61d → 38d |  |  |
| 386 | Задание поставлено | 2014-06-19 → 2014-07-22 (+33d) | 2014-06-19 → 2014-07-22 (+33d) |  |  | 61d → 38d |  |  |
| 387 | Пролведение процедуры Revers Engineering для процессов | 2014-06-20 → 2014-07-23 (+33d) | 2014-07-03 → 2014-08-05 (+33d) |  |  | 61d → 38d |  |  |
| 388 | Реализация в слое CMJ-CMSochi | 2014-06-20 → 2014-07-23 (+33d) | 2014-07-03 → 2014-08-05 (+33d) |  |  | 61d → 38d |  |  |

| ID | Task | Start | Finish | Duration | Total float |
| --- | --- | --- | --- | --- | --- |
| 389 | **Интеграция с CMJ по ПРВЗ(мобильность)** | 2013-06-21 → 2014-07-29 (+403d) | 2013-10-08 → 2014-08-19 (+315d) | 78d? → 16d? | 242d → 28d |
| 390 | Конфиг ДОП | 2013-06-21 → 2014-07-29 (+403d) | 2013-06-25 → 2014-07-31 (+401d) |  | 304d → 28d |
| 391 | Mapper | 2013-06-26 → 2014-08-01 (+401d) | 2013-07-02 → 2014-08-07 (+401d) |  | 304d → 28d |
| 392 | **Настраиваемые коллекции** | 2013-07-03 → 2014-08-08 (+401d) | 2013-07-12 → 2014-08-19 (+403d) |  | 304d → 28d |
| 393 | **Конфигурация коллекций** | 2013-07-03 → 2014-08-08 (+401d) | 2013-07-11 → 2014-08-18 (+403d) |  | 304d → 28d |
| 394 | Типовая иерархия кастомных папок | 2013-07-03 → 2014-08-08 (+401d) | 2013-07-10 → 2014-08-15 (+401d) |  | 304d → 28d |
| 395 | Доработка расширенного поиска | 2013-07-03 → 2014-08-08 (+401d) | 2013-07-11 → 2014-08-18 (+403d) |  | 304d → 28d |
| 396 | Системные настройки для ПРВЗ | 2013-07-03 → 2014-08-08 (+401d) | 2013-07-10 → 2014-08-15 (+401d) |  | 305d → 29d |
| 397 | Проверка работы | 2013-07-12 → 2014-08-19 (+403d) | 2013-07-12 → 2014-08-19 (+403d) |  | 304d → 28d |
| 398 | **Перенос логики сервисов по ПРВЗ** | 2013-09-30 → 2014-07-31 (+304d) | 2013-10-08 → 2014-08-11 (+307d) |  | 242d → 34d |
| 399 | Задание поставлено | 2013-09-30 → 2014-07-31 (+304d) | 2013-09-30 → 2014-07-31 (+304d) |  | 242d → 34d |
| 400 | Пролведение процедуры Revers Engineering для процессов | 2013-09-30 → 2014-08-01 (+305d) | 2013-10-08 → 2014-08-11 (+307d) |  | 242d → 34d |
| 401 | Реализация в слое CMJ-CMSochi | 2013-09-30 → 2014-08-01 (+305d) | 2013-10-08 → 2014-08-11 (+307d) |  | 242d → 34d |
| 402 | **Разработка коллекций** | 2013-06-26 → 2014-08-01 (+401d) | 2013-07-09 → 2014-08-14 (+401d) |  | 307d → 31d |
| 403 | Коллекции | 2013-06-26 → 2014-08-01 (+401d) | 2013-07-09 → 2014-08-14 (+401d) |  | 307d → 31d |
| 404 | Интеграция по ПРВЗ выполнена | 2013-07-12 → 2014-08-19 (+403d) | 2013-07-12 → 2014-08-19 (+403d) |  | 304d → 28d |

## Version 75 (saved 2014-06-10)

Last finish 2014-09-26 → 2014-09-29 (+3d). Complete tasks 245 → 248.

Removed: 286 Подготовлен справочник по связязям; 291 Доработка расширенного поиска; 297 Разработка коллекций по связям; 298 Коллекции по связям

Changed:

| ID | Task | Start | Finish | Duration | Complete | Total float | Predecessors | Other |
| --- | --- | --- | --- | --- | --- | --- | --- | --- |
| 1 | **Разработка версии CM4/5** |  | 2014-09-26 → 2014-09-29 (+3d) | 360d? → 361d? |  |  |  |  |
| 9 | **Создание модуля "Делопроизводство" (документоориентированная среда)** |  | 2014-09-26 → 2014-09-29 (+3d) | 360d? → 361d? |  |  |  |  |
| 20 | **Проектирование и формирование ядра системы** |  | 2014-08-19 → 2014-09-29 (+41d) | 331d? → 360d? | 68% → 69% | 28d → 0d |  |  |
| 68 | **Слой сопряжения CMJ server (CM4)** | 2013-04-22 A → 2013-08-05 A (+105d) | 2014-08-19 → 2014-09-29 (+41d) | 331d? → 290d? | 67% → 68% | 28d → 0d |  |  |
| 75 | Проектирование завершено - готовность к интеграции |  |  |  |  |  |  | constraint start no earlier than 2013-09-23 → none |
| 76 | **Интеграция с CMJ по Внутренним Документам** |  |  |  |  |  | 75 → none |  |
| 245 | Готовность в "ВорккФлоу" | 2014-05-14 A | 2014-05-15 A |  | 0% → 100% | 49.8d → none |  |  |
| 279 | **Интеграция с CMJ по WF** | 2013-04-22 A → 2014-04-14 A (+357d) | 2014-06-13 → 2014-06-10 (-3d) | 284d? → 39d? | 26% → 43% | 75d → 79d |  |  |
| 282 | **Связи** | 2013-04-22 → 2014-06-02 A (+406d) |  | 280d → 6d | 0% → 67% | 79d → 80d |  |  |
| 284 | Конфиг ДОП | 2014-06-04 A | 2014-06-04 A |  | 0% → 100% | 39d → none |  |  |
| 285 | Mapper | 2014-06-05 A | 2014-06-09 A |  | 0% → 100% | 39d → none |  |  |
| 286 | **Настраиваемые коллекции** |  | 2014-05-06 → 2014-04-29 (-7d) | 8d? → 5d? | 34% → 41% | 102d → 27d |  |  |
| 287 | **Конфигурация коллекций** |  | 2014-05-05 → 2014-04-28 (-7d) | 7d → 4d | 37% → 46% | 102d → 27d |  |  |
| 290 | Проверка работы | 2014-05-06 → 2014-04-29 (-7d) | 2014-05-06 → 2014-04-29 (-7d) |  |  | 102d → 27d |  |  |
| 291 | **Перенос логики сервисов по WF** |  | 2014-06-03 → 2014-06-10 (+7d) | 3d → 8d |  | 28d → 0d |  |  |
| 293 | Пролведение процедуры Revers Engineering для процессов |  | 2014-06-03 → 2014-06-05 (+2d) | 3d → 5d |  | 50d → 0d |  |  |
| 294 | Реализация в слое CMJ-CMSochi | 2014-05-30 → 2014-06-06 (+7d) | 2014-06-03 → 2014-06-10 (+7d) |  |  | 28d → 0d | 293SS → 293 |  |
| 295 | Интеграция по WF выполнена | 2014-06-13 → 2014-06-10 (-3d) | 2014-06-13 → 2014-06-10 (-3d) |  |  | 75d → 0d | 281, 286, Коллекции по связям → 281, 286, 291 |  |
| 296 | **Интеграция с CMJ по Связям** | 2014-07-08 → 2014-06-11 (-27d) | 2014-07-30 → 2014-06-24 (-36d) | 17d → 10d |  | 42d → 0d |  |  |
| 297 | Конфиг ДОП | 2014-07-08 → 2014-06-11 (-27d) | 2014-07-10 → 2014-06-13 (-27d) |  |  | 49d → 0d | 355 → 295 |  |
| 298 | Mapper | 2014-07-11 → 2014-06-16 (-25d) | 2014-07-17 → 2014-06-20 (-27d) |  |  | 51d → 2d |  |  |
| 299 | **Разработка коллекций** | 2014-07-22 → 2014-06-16 (-36d) | 2014-07-30 → 2014-06-24 (-36d) |  |  | 42d → 0d |  |  |
| 300 | Коллекции | 2014-07-22 → 2014-06-16 (-36d) | 2014-07-30 → 2014-06-24 (-36d) |  |  | 42d → 0d | 297, 368 → 297 |  |
| 301 | Интеграция по ОО выполнена | 2014-07-30 → 2014-06-24 (-36d) | 2014-07-30 → 2014-06-24 (-36d) |  |  | 42d → 0d |  |  |
| 302 | **Интеграция с CMJ по сервису Контроля Заданий** | 2014-05-30 → 2014-06-10 (+11d) | 2014-06-24 → 2014-07-22 (+28d) | 18d? → 30d? |  | 31d → 10d |  |  |
| 303 | **Настраиваемые коллекции** | 2014-05-30 → 2014-06-25 (+26d) | 2014-06-12 → 2014-07-14 (+32d) | 10d? → 14d? |  | 53d → 0d |  |  |
| 304 | **Конфигурация коллекций** | 2014-05-30 → 2014-06-25 (+26d) | 2014-06-11 → 2014-07-11 (+30d) | 9d → 13d |  | 53d → 0d |  |  |
| 305 | Типовая иерархия кастомных папок | 2014-06-04 → 2014-06-25 (+21d) | 2014-06-11 → 2014-07-02 (+21d) |  |  | 50d → 0d | 294 → 301 |  |
| 306 | Доработка расширенного поиска | 2014-05-30 → 2014-07-03 (+34d) | 2014-06-09 → 2014-07-11 (+32d) |  |  | 78d → 0d | 294SS → 305 |  |
| 307 | Системные настройки для КЗ | 2014-06-04 → 2014-06-25 (+21d) | 2014-06-11 → 2014-07-02 (+21d) |  |  | 50d → 7d |  |  |
| 308 | Проверка работы | 2014-06-12 → 2014-07-14 (+32d) | 2014-06-12 → 2014-07-14 (+32d) |  |  | 76d → 0d |  |  |
| 309 | **Перенос логики сервисов по КЗ** | 2014-06-03 → 2014-06-10 (+7d) | 2014-06-12 → 2014-07-22 (+40d) | 7d → 30d |  | 28d → 44d |  |  |
| 310 | Задание поставлено | 2014-06-03 → 2014-06-10 (+7d) | 2014-06-03 → 2014-06-10 (+7d) |  |  | 28d → 79d |  |  |
| 311 | Пролведение процедуры Revers Engineering для процессов | 2014-06-04 → 2014-07-14 (+40d) | 2014-06-12 → 2014-07-22 (+40d) |  |  | 38d → 21d | 310, 289 → 306 |  |
| 312 | Реализация в слое CMJ-CMSochi | 2014-06-04 → 2014-07-14 (+40d) | 2014-06-12 → 2014-07-22 (+40d) |  |  | 76d → 49d |  |  |
| 313 | **Разработка коллекций** | 2014-06-16 → 2014-06-25 (+9d) | 2014-06-24 → 2014-07-03 (+9d) |  |  | 39d → 33d |  |  |
| 314 | Коллекции | 2014-06-16 → 2014-06-25 (+9d) | 2014-06-24 → 2014-07-03 (+9d) |  |  | 39d → 33d | Коллекции по связям → 301 |  |
| 315 | Интеграция по КЗ выполнена | 2014-06-24 → 2014-07-14 (+20d) | 2014-06-24 → 2014-07-14 (+20d) |  |  | 68d → 55d |  |  |
| 316 | **Интеграция с CMJ по Формированию дел** | 2014-06-04 → 2014-07-15 (+41d) | 2014-07-02 → 2014-08-05 (+34d) | 21d? → 16d? |  | 28d → 0d |  |  |
| 317 | Конфиг ДОП | 2014-06-04 → 2014-07-15 (+41d) | 2014-06-06 → 2014-07-17 (+41d) |  |  | 28d → 0d | 310 → 308, 310 |  |
| 318 | Mapper | 2014-06-09 → 2014-07-18 (+39d) | 2014-06-13 → 2014-07-24 (+41d) |  |  | 28d → 0d |  |  |
| 319 | **Настраиваемые коллекции** | 2014-06-16 → 2014-07-25 (+39d) | 2014-06-25 → 2014-08-05 (+41d) |  |  | 48d → 27d |  |  |
| 320 | **Конфигурация коллекций** | 2014-06-16 → 2014-07-25 (+39d) | 2014-06-24 → 2014-08-04 (+41d) |  |  | 48d → 27d |  |  |
| 321 | Типовая иерархия кастомных папок | 2014-06-16 → 2014-07-25 (+39d) | 2014-06-23 → 2014-08-01 (+39d) |  |  | 48d → 27d |  |  |
| 322 | Доработка расширенного поиска | 2014-06-16 → 2014-07-25 (+39d) | 2014-06-24 → 2014-08-04 (+41d) |  |  | 67d → 29d |  |  |
| 323 | Системные настройки для ФД | 2014-06-16 → 2014-07-25 (+39d) | 2014-06-23 → 2014-08-01 (+39d) |  |  | 48d → 27d |  |  |
| 324 | Проверка работы | 2014-06-25 → 2014-08-05 (+41d) | 2014-06-25 → 2014-08-05 (+41d) |  |  | 67d → 29d |  |  |
| 325 | **Перенос логики сервисов по ФД** | 2014-06-06 → 2014-07-17 (+41d) | 2014-06-23 → 2014-07-31 (+38d) | 11d → 10d |  | 38d → 21d |  |  |
| 326 | Задание поставлено | 2014-06-06 → 2014-07-17 (+41d) | 2014-06-06 → 2014-07-17 (+41d) |  |  | 42d → 24d |  |  |
| 327 | Пролведение процедуры Revers Engineering для процессов | 2014-06-13 → 2014-07-23 (+40d) | 2014-06-23 → 2014-07-31 (+38d) |  |  | 38d → 21d |  |  |
| 328 | Реализация в слое CMJ-CMSochi | 2014-06-13 → 2014-07-23 (+40d) | 2014-06-23 → 2014-07-31 (+38d) |  |  | 38d → 21d |  |  |
| 329 | **Разработка коллекций** | 2014-06-25 → 2014-07-18 (+23d) | 2014-07-02 → 2014-07-25 (+23d) |  |  | 39d → 23d |  |  |
| 330 | Коллекции | 2014-06-25 → 2014-07-18 (+23d) | 2014-07-02 → 2014-07-25 (+23d) |  |  | 39d → 23d |  |  |
| 331 | Интеграция по ФД выполнена | 2014-07-02 → 2014-08-05 (+34d) | 2014-07-02 → 2014-08-05 (+34d) |  |  | 62d → 29d |  |  |
| 332 | **Интеграция с CMJ ПКД (нотификация по текущим задачам пользователя)** | 2014-07-22 → 2014-08-05 (+14d) | 2014-08-05 → 2014-08-19 (+14d) |  |  | 38d → 29d |  |  |
| 333 | **Перенос логики сервисов по ОО** | 2014-07-22 → 2014-08-05 (+14d) | 2014-08-05 → 2014-08-19 (+14d) |  |  | 38d → 29d |  |  |
| 334 | Задание поставлено | 2014-07-22 → 2014-08-05 (+14d) | 2014-07-22 → 2014-08-05 (+14d) |  |  | 38d → 29d | 365, 378 → 331 |  |
| 335 | Пролведение процедуры Revers Engineering для процессов | 2014-07-23 → 2014-08-06 (+14d) | 2014-08-05 → 2014-08-19 (+14d) |  |  | 38d → 29d |  |  |
| 336 | Реализация в слое CMJ-CMSochi | 2014-07-23 → 2014-08-06 (+14d) | 2014-08-05 → 2014-08-19 (+14d) |  |  | 38d → 29d |  |  |
| 337 | **Интеграция с CMJ по Заседаниям** | 2014-06-16 → 2014-07-25 (+39d) | 2014-07-10 → 2014-08-15 (+36d) | 19d? → 16d? |  | 28d → 0d |  |  |
| 338 | Конфиг ДОП | 2014-06-16 → 2014-07-25 (+39d) | 2014-06-18 → 2014-07-29 (+41d) |  |  | 28d → 0d |  |  |
| 339 | Mapper | 2014-06-19 → 2014-07-30 (+41d) | 2014-06-25 → 2014-08-05 (+41d) |  |  | 28d → 0d |  |  |
| 340 | **Настраиваемые коллекции** | 2014-06-26 → 2014-08-06 (+41d) | 2014-07-07 → 2014-08-15 (+39d) |  |  | 46d → 25d |  |  |
| 341 | **Конфигурация коллекций** | 2014-06-26 → 2014-08-06 (+41d) | 2014-07-04 → 2014-08-14 (+41d) |  |  | 46d → 25d |  |  |
| 342 | Типовая иерархия кастомных папок | 2014-06-26 → 2014-08-06 (+41d) | 2014-07-03 → 2014-08-13 (+41d) |  |  | 46d → 25d |  |  |
| 343 | Системные настройки для Зсд | 2014-06-26 → 2014-08-06 (+41d) | 2014-07-03 → 2014-08-13 (+41d) |  |  | 46d → 25d |  |  |
| 344 | Доработка расширенного поиска | 2014-06-26 → 2014-08-06 (+41d) | 2014-07-04 → 2014-08-14 (+41d) |  |  | 59d → 31d |  |  |
| 345 | Проверка работы | 2014-07-07 → 2014-08-15 (+39d) | 2014-07-07 → 2014-08-15 (+39d) |  |  | 59d → 31d |  |  |
| 346 | **Перенос логики сервисов по Зсд** | 2014-06-23 → 2014-07-31 (+38d) | 2014-07-02 → 2014-08-11 (+40d) |  |  | 38d → 21d |  |  |
| 347 | Задание поставлено | 2014-06-23 → 2014-07-31 (+38d) | 2014-06-23 → 2014-07-31 (+38d) |  |  | 38d → 21d |  |  |

| ID | Task | Start | Finish | Duration | Total float |
| --- | --- | --- | --- | --- | --- |
| 348 | Пролведение процедуры Revers Engineering для процессов | 2014-06-24 → 2014-08-01 (+38d) | 2014-07-02 → 2014-08-11 (+40d) |  | 38d → 21d |
| 349 | Реализация в слое CMJ-CMSochi | 2014-06-24 → 2014-08-01 (+38d) | 2014-07-02 → 2014-08-11 (+40d) |  | 62d → 35d |
| 350 | **Разработка коллекций** | 2014-07-03 → 2014-07-30 (+27d) | 2014-07-10 → 2014-08-06 (+27d) |  | 39d → 21d |
| 351 | Коллекции | 2014-07-03 → 2014-07-30 (+27d) | 2014-07-10 → 2014-08-06 (+27d) |  | 39d → 21d |
| 352 | Интеграция по Зсд выполнена | 2014-07-10 → 2014-08-15 (+36d) | 2014-07-10 → 2014-08-15 (+36d) |  | 56d → 31d |
| 353 | **Интеграция с CMJ по Обсуждениям и ознакомлениям** | 2014-06-26 → 2014-08-06 (+41d) | 2014-07-21 → 2014-08-27 (+37d) | 18d? → 16d? | 28d → 0d |
| 354 | Конфиг ДОП | 2014-06-26 → 2014-08-06 (+41d) | 2014-06-30 → 2014-08-08 (+39d) |  | 28d → 0d |
| 355 | Mapper | 2014-07-01 → 2014-08-11 (+41d) | 2014-07-07 → 2014-08-15 (+39d) |  | 28d → 0d |
| 356 | **Настраиваемые коллекции** | 2014-07-08 → 2014-08-18 (+41d) | 2014-07-17 → 2014-08-27 (+41d) |  | 44d → 23d |
| 357 | **Конфигурация коллекций** | 2014-07-08 → 2014-08-18 (+41d) | 2014-07-16 → 2014-08-26 (+41d) |  | 44d → 23d |
| 358 | Типовая иерархия кастомных папок | 2014-07-08 → 2014-08-18 (+41d) | 2014-07-15 → 2014-08-25 (+41d) |  | 44d → 23d |
| 359 | Доработка расширенного поиска | 2014-07-08 → 2014-08-18 (+41d) | 2014-07-16 → 2014-08-26 (+41d) |  | 44d → 23d |
| 360 | Системные настройки для ОО | 2014-07-08 → 2014-08-18 (+41d) | 2014-07-15 → 2014-08-25 (+41d) |  | 45d → 24d |
| 361 | Проверка работы | 2014-07-17 → 2014-08-27 (+41d) | 2014-07-17 → 2014-08-27 (+41d) |  | 44d → 23d |
| 362 | **Перенос логики сервисов по ОО** | 2014-06-30 → 2014-08-08 (+39d) | 2014-07-11 → 2014-08-20 (+40d) | 9d → 8d | 38d → 21d |
| 363 | Задание поставлено | 2014-06-30 → 2014-08-08 (+39d) | 2014-06-30 → 2014-08-08 (+39d) |  | 40d → 22d |
| 364 | Пролведение процедуры Revers Engineering для процессов | 2014-07-03 → 2014-08-12 (+40d) | 2014-07-11 → 2014-08-20 (+40d) |  | 38d → 21d |
| 365 | Реализация в слое CMJ-CMSochi | 2014-07-03 → 2014-08-12 (+40d) | 2014-07-11 → 2014-08-20 (+40d) |  | 38d → 21d |
| 366 | **Разработка коллекций** | 2014-07-11 → 2014-08-11 (+31d) | 2014-07-21 → 2014-08-19 (+29d) |  | 39d → 19d |
| 367 | Коллекции | 2014-07-11 → 2014-08-11 (+31d) | 2014-07-21 → 2014-08-19 (+29d) |  | 39d → 19d |
| 368 | Интеграция по ОО выполнена | 2014-07-21 → 2014-08-27 (+37d) | 2014-07-21 → 2014-08-27 (+37d) |  | 42d → 23d |
| 369 | **Интеграция с CMJ по "Кейсам" + Документы** | 2014-07-08 → 2014-08-18 (+41d) | 2014-08-04 → 2014-09-08 (+35d) | 20d? → 16d? | 28d → 0d |
| 370 | Конфиг ДОП | 2014-07-08 → 2014-08-18 (+41d) | 2014-07-10 → 2014-08-20 (+41d) |  | 28d → 0d |
| 371 | Mapper | 2014-07-11 → 2014-08-21 (+41d) | 2014-07-17 → 2014-08-27 (+41d) |  | 28d → 0d |
| 372 | **Настраиваемые коллекции** | 2014-07-18 → 2014-08-28 (+41d) | 2014-07-29 → 2014-09-08 (+41d) |  | 28d → 0d |
| 373 | **Конфигурация коллекций** | 2014-07-18 → 2014-08-28 (+41d) | 2014-07-28 → 2014-09-05 (+39d) |  | 28d → 0d |
| 374 | Типовая иерархия кастомных папок | 2014-07-18 → 2014-08-28 (+41d) | 2014-07-25 → 2014-09-04 (+41d) |  | 28d → 0d |
| 375 | Доработка расширенного поиска | 2014-07-18 → 2014-08-28 (+41d) | 2014-07-28 → 2014-09-05 (+39d) |  | 28d → 0d |
| 376 | Системные настройки для "Кейсов" | 2014-07-18 → 2014-08-28 (+41d) | 2014-07-25 → 2014-09-04 (+41d) |  | 29d → 1d |
| 377 | Проверка работы | 2014-07-29 → 2014-09-08 (+41d) | 2014-07-29 → 2014-09-08 (+41d) |  | 43d → 15d |
| 378 | **Перенос логики сервисов по "Кейсам"** | 2014-07-11 → 2014-08-20 (+40d) | 2014-07-22 → 2014-08-29 (+38d) |  | 38d → 21d |
| 379 | Задание поставлено | 2014-07-11 → 2014-08-20 (+40d) | 2014-07-11 → 2014-08-20 (+40d) |  | 38d → 21d |
| 380 | Пролведение процедуры Revers Engineering для процессов | 2014-07-14 → 2014-08-21 (+38d) | 2014-07-22 → 2014-08-29 (+38d) |  | 38d → 21d |
| 381 | Реализация в слое CMJ-CMSochi | 2014-07-14 → 2014-08-21 (+38d) | 2014-07-22 → 2014-08-29 (+38d) |  | 38d → 21d |
| 382 | **Разработка коллекций** | 2014-07-22 → 2014-08-21 (+30d) | 2014-08-04 → 2014-09-03 (+30d) |  | 39d → 18d |
| 383 | Коллекции | 2014-07-22 → 2014-08-21 (+30d) | 2014-08-04 → 2014-09-03 (+30d) |  | 39d → 18d |
| 384 | Интеграция по "Кейсам" выполнена | 2014-08-04 → 2014-09-08 (+35d) | 2014-08-04 → 2014-09-08 (+35d) |  | 39d → 15d |
| 385 | **Интеграция с CMJ по ПРВЗ(мобильность)** | 2014-07-29 → 2014-09-08 (+41d) | 2014-08-19 → 2014-09-29 (+41d) |  | 28d → 0d |
| 386 | Конфиг ДОП | 2014-07-29 → 2014-09-08 (+41d) | 2014-07-31 → 2014-09-10 (+41d) |  | 28d → 0d |
| 387 | Mapper | 2014-08-01 → 2014-09-11 (+41d) | 2014-08-07 → 2014-09-17 (+41d) |  | 28d → 0d |
| 388 | **Настраиваемые коллекции** | 2014-08-08 → 2014-09-18 (+41d) | 2014-08-19 → 2014-09-29 (+41d) |  | 28d → 0d |
| 389 | **Конфигурация коллекций** | 2014-08-08 → 2014-09-18 (+41d) | 2014-08-18 → 2014-09-26 (+39d) |  | 28d → 0d |
| 390 | Типовая иерархия кастомных папок | 2014-08-08 → 2014-09-18 (+41d) | 2014-08-15 → 2014-09-25 (+41d) |  | 28d → 0d |
| 391 | Доработка расширенного поиска | 2014-08-08 → 2014-09-18 (+41d) | 2014-08-18 → 2014-09-26 (+39d) |  | 28d → 0d |
| 392 | Системные настройки для ПРВЗ | 2014-08-08 → 2014-09-18 (+41d) | 2014-08-15 → 2014-09-25 (+41d) |  | 29d → 1d |
| 393 | Проверка работы | 2014-08-19 → 2014-09-29 (+41d) | 2014-08-19 → 2014-09-29 (+41d) |  | 28d → 0d |
| 394 | **Перенос логики сервисов по ПРВЗ** | 2014-07-31 → 2014-09-10 (+41d) | 2014-08-11 → 2014-09-19 (+39d) |  | 34d → 6d |
| 395 | Задание поставлено | 2014-07-31 → 2014-09-10 (+41d) | 2014-07-31 → 2014-09-10 (+41d) |  | 34d → 6d |
| 396 | Пролведение процедуры Revers Engineering для процессов | 2014-08-01 → 2014-09-11 (+41d) | 2014-08-11 → 2014-09-19 (+39d) |  | 34d → 6d |
| 397 | Реализация в слое CMJ-CMSochi | 2014-08-01 → 2014-09-11 (+41d) | 2014-08-11 → 2014-09-19 (+39d) |  | 34d → 6d |
| 398 | **Разработка коллекций** | 2014-08-01 → 2014-09-11 (+41d) | 2014-08-14 → 2014-09-24 (+41d) |  | 31d → 3d |
| 399 | Коллекции | 2014-08-01 → 2014-09-11 (+41d) | 2014-08-14 → 2014-09-24 (+41d) |  | 31d → 3d |
| 400 | Интеграция по ПРВЗ выполнена | 2014-08-19 → 2014-09-29 (+41d) | 2014-08-19 → 2014-09-29 (+41d) |  | 28d → 0d |

## Version 76 (saved 2014-07-08)

Last finish stays 2014-09-29.

Added:

| ID | Task | Duration | Start | Finish | Predecessors | Constraint | Resources |
| --- | --- | --- | --- | --- | --- | --- | --- |
| 401 | **Поддержка ЭП** | 18d | 2014-07-10 | 2014-08-05 |  |  |  |
| 402 | Задача по поддержке ЭП поставлена | 0d | 2014-07-10 | 2014-07-10 |  | finish no earlier than 2014-07-10 |  |
| 403 | Конфиг ДОП | 3d | 2014-07-11 | 2014-07-15 | 402 |  | Александр Власюк |
| 404 | Mapper | 5d | 2014-07-16 | 2014-07-22 | 403 |  | Александр Власюк |
| 405 | Разработка АРМ настроек | 4d | 2014-07-23 | 2014-07-28 | 404 |  |  |
| 406 | **Разработка коллекций** | 10d | 2014-07-23 | 2014-08-05 | 404 |  |  |
| 407 | Коллекции | 10d | 2014-07-23 | 2014-08-05 |  |  | (БТЛ) Олег Еренцов; (БТЛ) Дмитрий Лякин; (БТЛ)Сергей Степыгин |
| 408 | Интеграция по ЭП выполнена | 0d | 2014-08-05 | 2014-08-05 | 407 |  |  |

Changed:

| ID | Task | Complete |
| --- | --- | --- |
| 1 | **Разработка версии CM4/5** | 50% → 49% |
| 20 | **Проектирование и формирование ядра системы** | 69% → 68% |
| 68 | **Слой сопряжения CMJ server (CM4)** | 68% → 67% |

## Version 77 (saved 2014-08-05)

Last finish stays 2014-09-29.

Added:

| ID | Task | Duration | Start | Finish | Constraint | Resources |
| --- | --- | --- | --- | --- | --- | --- |
| 302 | Пождерживающие сервисы по связям | 11d | 2014-08-11 | 2014-08-25 | start no earlier than 2014-08-11 | Наталья Смолянец (Смолянец) [250%] |

Changed:

| ID | Task | Finish | Duration | Complete | Other |
| --- | --- | --- | --- | --- | --- |
| 68 | **Слой сопряжения CMJ server (CM4)** |  |  | 67% → 66% |  |
| 296 | **Интеграция с CMJ по Связям** | 2014-06-24 → 2014-08-25 (+62d) | 10d → 54d |  |  |
| 306 | Типовая иерархия кастомных папок |  |  |  | resources Евгений Сафроненко → Александр Власюк |
| 322 | Типовая иерархия кастомных папок |  |  |  | resources Евгений Сафроненко → Александр Власюк |

## Version 78 (saved 2014-08-07)

Last finish 2014-09-29 → 2014-11-11 (+43d).

Added:

| ID | Task | Duration | Start | Finish | Constraint |
| --- | --- | --- | --- | --- | --- |
| 386 | Есть предварительная доменная структура для интеграции с мобильным клиентом | 0d | 2014-08-29 | 2014-08-29 | start no earlier than 2014-08-29 |

Changed:

| ID | Task | Start | Finish | Duration | Total float | Predecessors |
| --- | --- | --- | --- | --- | --- | --- |
| 1 | **Разработка версии CM4/5** |  | 2014-09-29 → 2014-11-11 (+43d) | 361d? → 392d? |  |  |
| 9 | **Создание модуля "Делопроизводство" (документоориентированная среда)** |  | 2014-09-29 → 2014-11-11 (+43d) | 361d? → 392d? |  |  |
| 20 | **Проектирование и формирование ядра системы** |  | 2014-09-29 → 2014-11-11 (+43d) | 360d? → 391d? |  |  |
| 68 | **Слой сопряжения CMJ server (CM4)** |  | 2014-09-29 → 2014-11-11 (+43d) | 290d? → 321d? |  |  |
| 303 | **Интеграция с CMJ по сервису Контроля Заданий** | 2014-06-10 → 2014-08-25 (+76d) | 2014-07-22 → 2014-09-22 (+62d) | 30d? → 20d? | 10d → 0d | none → 296 |
| 304 | **Настраиваемые коллекции** | 2014-06-25 → 2014-08-26 (+62d) | 2014-07-14 → 2014-09-12 (+60d) |  |  |  |
| 305 | **Конфигурация коллекций** | 2014-06-25 → 2014-08-26 (+62d) | 2014-07-11 → 2014-09-11 (+62d) |  |  |  |
| 306 | Типовая иерархия кастомных папок | 2014-06-25 → 2014-08-26 (+62d) | 2014-07-02 → 2014-09-02 (+62d) |  |  |  |
| 307 | Доработка расширенного поиска | 2014-07-03 → 2014-09-03 (+62d) | 2014-07-11 → 2014-09-11 (+62d) |  |  |  |
| 308 | Системные настройки для КЗ | 2014-06-25 → 2014-08-26 (+62d) | 2014-07-02 → 2014-09-02 (+62d) |  |  |  |
| 309 | Проверка работы | 2014-07-14 → 2014-09-12 (+60d) | 2014-07-14 → 2014-09-12 (+60d) |  |  |  |
| 310 | **Перенос логики сервисов по КЗ** | 2014-06-10 → 2014-08-25 (+76d) | 2014-07-22 → 2014-09-22 (+62d) | 30d → 20d | 44d → 21d |  |
| 311 | Задание поставлено | 2014-06-10 → 2014-08-25 (+76d) | 2014-06-10 → 2014-08-25 (+76d) |  | 79d → 56d |  |
| 312 | Пролведение процедуры Revers Engineering для процессов | 2014-07-14 → 2014-09-12 (+60d) | 2014-07-22 → 2014-09-22 (+62d) |  | 21d → 8d |  |
| 313 | Реализация в слое CMJ-CMSochi | 2014-07-14 → 2014-09-12 (+60d) | 2014-07-22 → 2014-09-22 (+62d) |  | 49d → 36d |  |
| 314 | **Разработка коллекций** | 2014-06-25 → 2014-08-26 (+62d) | 2014-07-03 → 2014-09-03 (+62d) |  | 33d → 19d |  |
| 315 | Коллекции | 2014-06-25 → 2014-08-26 (+62d) | 2014-07-03 → 2014-09-03 (+62d) |  | 33d → 19d |  |
| 316 | Интеграция по КЗ выполнена | 2014-07-14 → 2014-09-12 (+60d) | 2014-07-14 → 2014-09-12 (+60d) |  | 55d → 42d |  |
| 317 | **Интеграция с CMJ по Формированию дел** | 2014-07-15 → 2014-09-15 (+62d) | 2014-08-05 → 2014-10-06 (+62d) |  |  |  |
| 318 | Конфиг ДОП | 2014-07-15 → 2014-09-15 (+62d) | 2014-07-17 → 2014-09-17 (+62d) |  |  |  |
| 319 | Mapper | 2014-07-18 → 2014-09-18 (+62d) | 2014-07-24 → 2014-09-24 (+62d) |  |  |  |
| 320 | **Настраиваемые коллекции** | 2014-07-25 → 2014-09-25 (+62d) | 2014-08-05 → 2014-10-06 (+62d) |  | 27d → 2d |  |
| 321 | **Конфигурация коллекций** | 2014-07-25 → 2014-09-25 (+62d) | 2014-08-04 → 2014-10-03 (+60d) |  | 27d → 2d |  |
| 322 | Типовая иерархия кастомных папок | 2014-07-25 → 2014-09-25 (+62d) | 2014-08-01 → 2014-10-02 (+62d) |  | 27d → 2d |  |
| 323 | Доработка расширенного поиска | 2014-07-25 → 2014-09-25 (+62d) | 2014-08-04 → 2014-10-03 (+60d) |  | 29d → 16d |  |
| 324 | Системные настройки для ФД | 2014-07-25 → 2014-09-25 (+62d) | 2014-08-01 → 2014-10-02 (+62d) |  | 27d → 2d |  |
| 325 | Проверка работы | 2014-08-05 → 2014-10-06 (+62d) | 2014-08-05 → 2014-10-06 (+62d) |  | 29d → 16d |  |
| 326 | **Перенос логики сервисов по ФД** | 2014-07-17 → 2014-09-17 (+62d) | 2014-07-31 → 2014-10-01 (+62d) |  | 21d → 8d |  |
| 327 | Задание поставлено | 2014-07-17 → 2014-09-17 (+62d) | 2014-07-17 → 2014-09-17 (+62d) |  | 24d → 11d |  |
| 328 | Пролведение процедуры Revers Engineering для процессов | 2014-07-23 → 2014-09-23 (+62d) | 2014-07-31 → 2014-10-01 (+62d) |  | 21d → 8d |  |
| 329 | Реализация в слое CMJ-CMSochi | 2014-07-23 → 2014-09-23 (+62d) | 2014-07-31 → 2014-10-01 (+62d) |  | 21d → 8d |  |
| 330 | **Разработка коллекций** | 2014-07-18 → 2014-09-18 (+62d) | 2014-07-25 → 2014-09-25 (+62d) |  | 23d → 9d |  |
| 331 | Коллекции | 2014-07-18 → 2014-09-18 (+62d) | 2014-07-25 → 2014-09-25 (+62d) |  | 23d → 9d |  |
| 332 | Интеграция по ФД выполнена | 2014-08-05 → 2014-10-06 (+62d) | 2014-08-05 → 2014-10-06 (+62d) |  | 29d → 16d |  |
| 333 | **Интеграция с CMJ ПКД (нотификация по текущим задачам пользователя)** | 2014-08-05 → 2014-10-06 (+62d) | 2014-08-19 → 2014-10-20 (+62d) |  | 29d → 16d |  |
| 334 | **Перенос логики сервисов по ОО** | 2014-08-05 → 2014-10-06 (+62d) | 2014-08-19 → 2014-10-20 (+62d) |  | 29d → 16d |  |
| 335 | Задание поставлено | 2014-08-05 → 2014-10-06 (+62d) | 2014-08-05 → 2014-10-06 (+62d) |  | 29d → 16d |  |
| 336 | Пролведение процедуры Revers Engineering для процессов | 2014-08-06 → 2014-10-07 (+62d) | 2014-08-19 → 2014-10-20 (+62d) |  | 29d → 16d |  |
| 337 | Реализация в слое CMJ-CMSochi | 2014-08-06 → 2014-10-07 (+62d) | 2014-08-19 → 2014-10-20 (+62d) |  | 29d → 16d |  |
| 338 | **Интеграция с CMJ по Обсуждениям и ознакомлениям** | 2014-08-06 → 2014-10-07 (+62d) | 2014-08-27 → 2014-10-28 (+62d) |  | 0d → 2d |  |
| 339 | Конфиг ДОП | 2014-08-06 → 2014-10-07 (+62d) | 2014-08-08 → 2014-10-09 (+62d) |  | 0d → 2d |  |
| 340 | Mapper | 2014-08-11 → 2014-10-10 (+60d) | 2014-08-15 → 2014-10-16 (+62d) |  | 0d → 2d |  |
| 341 | **Настраиваемые коллекции** | 2014-08-18 → 2014-10-17 (+60d) | 2014-08-27 → 2014-10-28 (+62d) |  | 23d → 10d |  |
| 342 | **Конфигурация коллекций** | 2014-08-18 → 2014-10-17 (+60d) | 2014-08-26 → 2014-10-27 (+62d) |  | 23d → 10d |  |
| 343 | Типовая иерархия кастомных папок | 2014-08-18 → 2014-10-17 (+60d) | 2014-08-25 → 2014-10-24 (+60d) |  | 23d → 10d |  |
| 344 | Доработка расширенного поиска | 2014-08-18 → 2014-10-17 (+60d) | 2014-08-26 → 2014-10-27 (+62d) |  | 23d → 10d |  |
| 345 | Системные настройки для ОО | 2014-08-18 → 2014-10-17 (+60d) | 2014-08-25 → 2014-10-24 (+60d) |  | 24d → 11d |  |
| 346 | Проверка работы | 2014-08-27 → 2014-10-28 (+62d) | 2014-08-27 → 2014-10-28 (+62d) |  | 23d → 10d |  |
| 347 | **Перенос логики сервисов по ОО** | 2014-08-08 → 2014-10-09 (+62d) | 2014-08-20 → 2014-10-21 (+62d) |  | 21d → 8d |  |
| 348 | Задание поставлено | 2014-08-08 → 2014-10-09 (+62d) | 2014-08-08 → 2014-10-09 (+62d) |  | 22d → 9d |  |
| 349 | Пролведение процедуры Revers Engineering для процессов | 2014-08-12 → 2014-10-13 (+62d) | 2014-08-20 → 2014-10-21 (+62d) |  | 21d → 8d |  |
| 350 | Реализация в слое CMJ-CMSochi | 2014-08-12 → 2014-10-13 (+62d) | 2014-08-20 → 2014-10-21 (+62d) |  | 21d → 8d |  |
| 351 | **Разработка коллекций** | 2014-08-11 → 2014-10-10 (+60d) | 2014-08-19 → 2014-10-20 (+62d) |  | 19d → 6d |  |
| 352 | Коллекции | 2014-08-11 → 2014-10-10 (+60d) | 2014-08-19 → 2014-10-20 (+62d) |  | 19d → 6d |  |
| 353 | Интеграция по ОО выполнена | 2014-08-27 → 2014-10-28 (+62d) | 2014-08-27 → 2014-10-28 (+62d) |  | 23d → 10d |  |
| 354 | **Интеграция с CMJ по "Кейсам" + Документы** | 2014-08-18 → 2014-10-17 (+60d) | 2014-09-08 → 2014-11-07 (+60d) |  | 0d → 2d |  |
| 355 | Конфиг ДОП | 2014-08-18 → 2014-10-17 (+60d) | 2014-08-20 → 2014-10-21 (+62d) |  | 0d → 2d |  |
| 356 | Mapper | 2014-08-21 → 2014-10-22 (+62d) | 2014-08-27 → 2014-10-28 (+62d) |  | 0d → 2d |  |
| 357 | **Настраиваемые коллекции** | 2014-08-28 → 2014-10-29 (+62d) | 2014-09-08 → 2014-11-07 (+60d) |  | 0d → 2d |  |
| 358 | **Конфигурация коллекций** | 2014-08-28 → 2014-10-29 (+62d) | 2014-09-05 → 2014-11-06 (+62d) |  | 0d → 2d |  |
| 359 | Типовая иерархия кастомных папок | 2014-08-28 → 2014-10-29 (+62d) | 2014-09-04 → 2014-11-05 (+62d) |  | 0d → 2d |  |
| 360 | Доработка расширенного поиска | 2014-08-28 → 2014-10-29 (+62d) | 2014-09-05 → 2014-11-06 (+62d) |  | 0d → 2d |  |
| 361 | Системные настройки для "Кейсов" | 2014-08-28 → 2014-10-29 (+62d) | 2014-09-04 → 2014-11-05 (+62d) |  | 1d → 3d |  |
| 362 | Проверка работы | 2014-09-08 → 2014-11-07 (+60d) | 2014-09-08 → 2014-11-07 (+60d) |  | 15d → 2d |  |
| 363 | **Перенос логики сервисов по "Кейсам"** | 2014-08-20 → 2014-10-21 (+62d) | 2014-08-29 → 2014-10-30 (+62d) |  | 21d → 8d |  |
| 364 | Задание поставлено | 2014-08-20 → 2014-10-21 (+62d) | 2014-08-20 → 2014-10-21 (+62d) |  | 21d → 8d |  |
| 365 | Пролведение процедуры Revers Engineering для процессов | 2014-08-21 → 2014-10-22 (+62d) | 2014-08-29 → 2014-10-30 (+62d) |  | 21d → 8d |  |
| 366 | Реализация в слое CMJ-CMSochi | 2014-08-21 → 2014-10-22 (+62d) | 2014-08-29 → 2014-10-30 (+62d) |  | 21d → 8d |  |
| 367 | **Разработка коллекций** | 2014-08-21 → 2014-10-22 (+62d) | 2014-09-03 → 2014-11-04 (+62d) |  | 18d → 5d |  |
| 368 | Коллекции | 2014-08-21 → 2014-10-22 (+62d) | 2014-09-03 → 2014-11-04 (+62d) |  | 18d → 5d |  |

| ID | Task | Start | Finish | Total float | Predecessors |
| --- | --- | --- | --- | --- | --- |
| 369 | Интеграция по "Кейсам" выполнена | 2014-09-08 → 2014-11-07 (+60d) | 2014-09-08 → 2014-11-07 (+60d) | 15d → 2d |  |
| 370 | **Интеграция с CMJ по Заседаниям** | 2014-07-25 → 2014-09-25 (+62d) | 2014-08-15 → 2014-10-16 (+62d) |  |  |
| 371 | Конфиг ДОП | 2014-07-25 → 2014-09-25 (+62d) | 2014-07-29 → 2014-09-29 (+62d) |  |  |
| 372 | Mapper | 2014-07-30 → 2014-09-30 (+62d) | 2014-08-05 → 2014-10-06 (+62d) |  |  |
| 373 | **Настраиваемые коллекции** | 2014-08-06 → 2014-10-07 (+62d) | 2014-08-15 → 2014-10-16 (+62d) | 25d → 0d |  |
| 374 | **Конфигурация коллекций** | 2014-08-06 → 2014-10-07 (+62d) | 2014-08-14 → 2014-10-15 (+62d) | 25d → 0d |  |
| 375 | Типовая иерархия кастомных папок | 2014-08-06 → 2014-10-07 (+62d) | 2014-08-13 → 2014-10-14 (+62d) | 25d → 0d |  |
| 376 | Системные настройки для Зсд | 2014-08-06 → 2014-10-07 (+62d) | 2014-08-13 → 2014-10-14 (+62d) | 25d → 1d |  |
| 377 | Доработка расширенного поиска | 2014-08-06 → 2014-10-07 (+62d) | 2014-08-14 → 2014-10-15 (+62d) | 31d → 0d |  |
| 378 | Проверка работы | 2014-08-15 → 2014-10-16 (+62d) | 2014-08-15 → 2014-10-16 (+62d) | 31d → 0d |  |
| 379 | **Перенос логики сервисов по Зсд** | 2014-07-31 → 2014-10-01 (+62d) | 2014-08-11 → 2014-10-10 (+60d) | 21d → 8d |  |
| 380 | Задание поставлено | 2014-07-31 → 2014-10-01 (+62d) | 2014-07-31 → 2014-10-01 (+62d) | 21d → 8d |  |
| 381 | Пролведение процедуры Revers Engineering для процессов | 2014-08-01 → 2014-10-02 (+62d) | 2014-08-11 → 2014-10-10 (+60d) | 21d → 8d |  |
| 382 | Реализация в слое CMJ-CMSochi | 2014-08-01 → 2014-10-02 (+62d) | 2014-08-11 → 2014-10-10 (+60d) | 35d → 22d |  |
| 383 | **Разработка коллекций** | 2014-07-30 → 2014-09-30 (+62d) | 2014-08-06 → 2014-10-07 (+62d) | 21d → 7d |  |
| 384 | Коллекции | 2014-07-30 → 2014-09-30 (+62d) | 2014-08-06 → 2014-10-07 (+62d) | 21d → 7d |  |
| 385 | Интеграция по Зсд выполнена | 2014-08-15 → 2014-10-16 (+62d) | 2014-08-15 → 2014-10-16 (+62d) | 31d → 0d |  |
| 387 | **Интеграция с CMJ по ПРВЗ(мобильность)** | 2014-09-08 → 2014-08-29 (-10d) | 2014-09-29 → 2014-09-19 (-10d) | 0d → 37d | none → 386 |
| 388 | Конфиг ДОП | 2014-09-08 → 2014-08-29 (-10d) | 2014-09-10 → 2014-09-02 (-8d) | 0d → 37d | 358 → none |
| 389 | Mapper | 2014-09-11 → 2014-09-03 (-8d) | 2014-09-17 → 2014-09-09 (-8d) | 0d → 37d |  |
| 390 | **Настраиваемые коллекции** | 2014-09-18 → 2014-09-10 (-8d) | 2014-09-29 → 2014-09-19 (-10d) | 0d → 37d |  |
| 391 | **Конфигурация коллекций** | 2014-09-18 → 2014-09-10 (-8d) | 2014-09-26 → 2014-09-18 (-8d) | 0d → 37d |  |
| 392 | Типовая иерархия кастомных папок | 2014-09-18 → 2014-09-10 (-8d) | 2014-09-25 → 2014-09-17 (-8d) | 0d → 37d |  |
| 393 | Доработка расширенного поиска | 2014-09-18 → 2014-09-10 (-8d) | 2014-09-26 → 2014-09-18 (-8d) | 0d → 37d |  |
| 394 | Системные настройки для ПРВЗ | 2014-09-18 → 2014-09-10 (-8d) | 2014-09-25 → 2014-09-17 (-8d) | 1d → 38d |  |
| 395 | Проверка работы | 2014-09-29 → 2014-09-19 (-10d) | 2014-09-29 → 2014-09-19 (-10d) | 0d → 37d |  |
| 396 | **Перенос логики сервисов по ПРВЗ** | 2014-09-10 → 2014-09-02 (-8d) | 2014-09-19 → 2014-09-11 (-8d) | 6d → 43d |  |
| 397 | Задание поставлено | 2014-09-10 → 2014-09-02 (-8d) | 2014-09-10 → 2014-09-02 (-8d) | 6d → 43d |  |
| 398 | Пролведение процедуры Revers Engineering для процессов | 2014-09-11 → 2014-09-03 (-8d) | 2014-09-19 → 2014-09-11 (-8d) | 6d → 43d |  |
| 399 | Реализация в слое CMJ-CMSochi | 2014-09-11 → 2014-09-03 (-8d) | 2014-09-19 → 2014-09-11 (-8d) | 6d → 43d |  |
| 400 | **Разработка коллекций** | 2014-09-11 → 2014-09-03 (-8d) | 2014-09-24 → 2014-09-16 (-8d) | 3d → 40d |  |
| 401 | Коллекции | 2014-09-11 → 2014-09-03 (-8d) | 2014-09-24 → 2014-09-16 (-8d) | 3d → 40d |  |
| 402 | Интеграция по ПРВЗ выполнена | 2014-09-29 → 2014-09-19 (-10d) | 2014-09-29 → 2014-09-19 (-10d) | 0d → 37d |  |
| 403 | **Поддержка ЭП** | 2014-07-10 → 2014-10-16 (+98d) | 2014-08-05 → 2014-11-11 (+98d) | 39d → 0d | none → 385 |
| 404 | Задача по поддержке ЭП поставлена | 2014-07-10 → 2014-10-16 (+98d) | 2014-07-10 → 2014-10-16 (+98d) | 39d → 0d |  |
| 405 | Конфиг ДОП | 2014-07-11 → 2014-10-17 (+98d) | 2014-07-15 → 2014-10-21 (+98d) | 39d → 0d |  |
| 406 | Mapper | 2014-07-16 → 2014-10-22 (+98d) | 2014-07-22 → 2014-10-28 (+98d) | 39d → 0d |  |
| 407 | Разработка АРМ настроек | 2014-07-23 → 2014-10-29 (+98d) | 2014-07-28 → 2014-11-03 (+98d) | 45d → 6d |  |
| 408 | **Разработка коллекций** | 2014-07-23 → 2014-10-29 (+98d) | 2014-08-05 → 2014-11-11 (+98d) | 39d → 0d |  |
| 409 | Коллекции | 2014-07-23 → 2014-10-29 (+98d) | 2014-08-05 → 2014-11-11 (+98d) | 39d → 0d |  |
| 410 | Интеграция по ЭП выполнена | 2014-08-05 → 2014-11-11 (+98d) | 2014-08-05 → 2014-11-11 (+98d) | 39d → 0d |  |

## Version 79 (saved 2014-08-13)

Last finish 2014-11-11 → 2014-12-03 (+22d). Complete tasks 248 → 253.

Added:

| ID | Task | Duration | Start | Finish | Predecessors | Constraint | Resources |
| --- | --- | --- | --- | --- | --- | --- | --- |
| 303 | **Нагрузочное тестирование** | 3d | 2014-08-25 | 2014-08-28 | 302 |  |  |
| 304 | борудование выделено | 0d | 2014-08-25 | 2014-08-25 |  |  |  |
| 305 | Система с поддерживающими сервисами готова | 0d | 2014-08-25 | 2014-08-25 |  |  |  |
| 306 | Подготовка данных | 3d | 2014-08-26 | 2014-08-28 |  |  |  |
| 307 | Проведение испытаний | 3d | 2014-08-26 | 2014-08-28 |  |  |  |
| 333 | Разработка АРМ предметных администраторов для ФД | 4d | 2014-09-25 | 2014-09-30 | 323 |  | Максим Филатов |
| 373 | **Интеграция с CMJ по НРД** | 10d | 2014-10-17 | 2014-10-30 |  |  |  |
| 374 | Конфиг ДОП | 2d | 2014-10-17 | 2014-10-20 | 360 |  | Александр Власюк |
| 375 | Mapper | 2d | 2014-10-21 | 2014-10-22 | 374 |  | Александр Власюк |
| 376 | **Настраиваемые коллекции** | 6d | 2014-10-23 | 2014-10-30 | 375 |  |  |
| 377 | **Конфигурация коллекций** | 4d | 2014-10-23 | 2014-10-28 |  |  |  |
| 378 | Системные настройки для НРД | 4d | 2014-10-23 | 2014-10-28 |  |  | Тимофей Билый |
| 379 | Доработка расширенного поиска | 4d | 2014-10-23 | 2014-10-28 |  |  | Сергей Околот |
| 380 | Проверка работы | 2d | 2014-10-29 | 2014-10-30 | 377 |  | Глеб Ноздрачев [80%] |
| 381 | **Перенос логики сервисов по НРД** | 3d | 2014-10-20 | 2014-10-23 |  |  |  |
| 382 | Задание поставлено | 0d | 2014-10-20 | 2014-10-20 | 374 | start no earlier than 2013-09-30 | Тугушев Илья [80%] |
| 384 | **Разработка коллекций** | 6d | 2014-10-21 | 2014-10-28 |  |  |  |
| 385 | Коллекции | 6d | 2014-10-21 | 2014-10-28 | 374 |  | (БТЛ) Олег Еренцов; (БТЛ) Дмитрий Лякин; (БТЛ)Сергей Степыгин |
| 386 | Интеграция по Зсд выполнена | 0d | 2014-10-30 | 2014-10-30 | 375, 376, 385 |  |  |

Removed: 329 Реализация в слое CMJ-CMSochi; 359 Типовая иерархия кастомных папок

Changed:

| ID | Task | Start | Finish | Duration | Complete | Total float | Predecessors | Other |
| --- | --- | --- | --- | --- | --- | --- | --- | --- |
| 1 | **Разработка версии CM4/5** |  | 2014-11-11 → 2014-12-03 (+22d) | 392d? → 408d? | 49% → 50% |  |  |  |
| 9 | **Создание модуля "Делопроизводство" (документоориентированная среда)** |  | 2014-11-11 → 2014-12-03 (+22d) | 392d? → 408d? |  |  |  |  |
| 20 | **Проектирование и формирование ядра системы** |  | 2014-11-11 → 2014-12-03 (+22d) | 391d? → 407d? | 68% → 69% |  |  |  |
| 68 | **Слой сопряжения CMJ server (CM4)** |  | 2014-11-11 → 2014-12-03 (+22d) | 321d? → 337d? | 66% → 68% |  |  |  |
| 279 | **Интеграция с CMJ по WF ( ознакомлениям и согласование)** |  | 2014-06-10 → 2014-08-28 (+79d) | 39d? → 96d? |  | 110d → 69d |  | was named Интеграция с CMJ по WF |
| 282 | **Связи** | 2014-06-02 A → 2014-06-04 A (+2d) | 2014-06-09 → 2014-08-28 (+80d) | 6d → 62d |  | 80d → 69d |  |  |
| 283 | Подготовлен док. Соответствия | 2014-06-02 → 2014-08-27 (+86d) | 2014-06-03 → 2014-08-28 (+86d) |  |  | 84d → 69d |  | constraint finish no earlier than 2014-06-03 → start no earlier than 2014-08-27 |
| 302 | Пддерживающие сервисы по связям |  |  |  |  |  |  | was named Пождерживающие сервисы по связям; resources Наталья Смолянец (Смолянец) [250%] → Антон Ганчев (Киев) [250%] |
| 308 | **Интеграция с CMJ по сервису Контроля Заданий** | 2014-08-25 A | 2014-09-22 → 2014-09-12 (-10d) | 20d? → 14d? | 0% → 90% | 0d → 58d |  |  |
| 309 | **Настраиваемые коллекции** | 2014-08-26 A |  |  | 0% → 83% |  |  |  |
| 310 | **Конфигурация коллекций** | 2014-08-26 A |  |  | 0% → 87% |  |  |  |
| 311 | Типовая иерархия кастомных папок | 2014-08-26 A | 2014-09-02 A |  | 0% → 100% | 0d → none |  |  |
| 312 | Доработка расширенного поиска | 2014-09-03 A |  |  | 0% → 66% |  |  |  |
| 313 | Системные настройки для КЗ | 2014-08-26 A | 2014-09-02 A |  | 0% → 100% | 7d → none |  |  |
| 315 | **Перенос логики сервисов по КЗ** | 2014-08-25 A | 2014-09-22 → 2014-09-03 A (-19d) | 20d → 7d | 0% → 100% | 21d → none |  |  |
| 316 | Задание поставлено | 2014-08-25 A | 2014-08-25 A |  | 0% → 100% | 56d → none |  |  |
| 317 | Реализация в слое CMJ-CMSochi | 2014-09-12 → 2014-08-26 A (-17d) | 2014-09-22 → 2014-09-03 A (-19d) |  | 0% → 100% | 36d → none | 383SS → none |  |
| 318 | **Разработка коллекций** | 2014-08-26 A | 2014-09-03 A |  | 0% → 100% | 19d → none |  |  |
| 319 | Коллекции | 2014-08-26 A | 2014-09-03 A |  | 0% → 100% | 19d → none |  |  |
| 322 | Конфиг ДОП |  |  |  |  |  | 314, 316 → 314 |  |
| 330 | **Перенос логики сервисов по ФД** |  | 2014-10-01 → 2014-10-02 (+1d) | 10d → 11d |  | 8d → 37d |  |  |
| 332 | Пролведение процедуры Revers Engineering для процессов | 2014-09-23 → 2014-09-18 (-5d) | 2014-10-01 → 2014-10-02 (+1d) | 7d → 11d |  | 8d → 37d | 331, 383 → 331, 302 | resources Наталья Смолянец (Смолянец) → Антон Ганчев (Киев) |
| 342 | **Интеграция с CMJ по Обсуждениям** | 2014-10-07 → 2014-09-25 (-12d) | 2014-10-28 → 2014-11-17 (+20d) | 16d? → 38d? |  | 2d → 0d |  | was named Интеграция с CMJ по Обсуждениям и ознакомлениям |
| 343 | Конфиг ДОП | 2014-10-07 → 2014-09-25 (-12d) | 2014-10-09 → 2014-09-29 (-10d) |  |  | 2d → 0d | 389 → 323 |  |
| 344 | Mapper | 2014-10-10 → 2014-09-30 (-10d) | 2014-10-16 → 2014-10-06 (-10d) |  |  | 2d → 0d |  |  |
| 345 | **Настраиваемые коллекции** | 2014-10-17 → 2014-11-06 (+20d) | 2014-10-28 → 2014-11-17 (+20d) |  |  | 10d → 12d |  |  |
| 346 | **Конфигурация коллекций** | 2014-10-17 → 2014-11-06 (+20d) | 2014-10-27 → 2014-11-14 (+18d) |  |  | 10d → 12d |  |  |
| 347 | Типовая иерархия кастомных папок | 2014-10-17 → 2014-11-06 (+20d) | 2014-10-24 → 2014-11-13 (+20d) |  |  | 10d → 12d |  |  |
| 348 | Доработка расширенного поиска | 2014-10-17 → 2014-11-06 (+20d) | 2014-10-27 → 2014-11-14 (+18d) |  |  | 10d → 12d |  |  |
| 349 | Системные настройки для О | 2014-10-17 → 2014-11-06 (+20d) | 2014-10-24 → 2014-11-13 (+20d) |  |  | 11d → 13d |  | was named Системные настройки для ОО |
| 350 | Проверка работы | 2014-10-28 → 2014-11-17 (+20d) | 2014-10-28 → 2014-11-17 (+20d) |  |  | 10d → 12d |  |  |
| 351 | **Перенос логики сервисов по О** | 2014-10-09 → 2014-09-29 (-10d) | 2014-10-21 → 2014-10-08 (-13d) | 8d → 7d |  | 8d → 33d |  | was named Перенос логики сервисов по ОО |
| 352 | Задание поставлено | 2014-10-09 → 2014-09-29 (-10d) | 2014-10-09 → 2014-09-29 (-10d) |  |  | 9d → 33d |  |  |
| 353 | Пролведение процедуры Revers Engineering для процессов | 2014-10-13 → 2014-09-30 (-13d) | 2014-10-21 → 2014-10-08 (-13d) |  |  | 8d → 33d | 352, 398 → 352 |  |
| 354 | Реализация в слое CMJ-CMSochi | 2014-10-13 → 2014-09-30 (-13d) | 2014-10-21 → 2014-10-08 (-13d) |  |  | 8d → 33d |  |  |
| 355 | **Разработка коллекций** | 2014-10-10 → 2014-09-30 (-10d) | 2014-10-20 → 2014-10-08 (-12d) |  |  | 6d → 30d |  |  |
| 356 | Коллекции | 2014-10-10 → 2014-09-30 (-10d) | 2014-10-20 → 2014-10-08 (-12d) |  |  | 6d → 30d | 343, 401 → 343 |  |
| 357 | Интеграция по ОО выполнена | 2014-10-28 → 2014-11-17 (+20d) | 2014-10-28 → 2014-11-17 (+20d) |  |  | 10d → 12d |  |  |
| 358 | **Интеграция с CMJ по "Кейсам" + Документы** | 2014-10-17 → 2014-10-07 (-10d) | 2014-11-07 → 2014-10-28 (-10d) |  |  | 2d → 0d |  |  |
| 359 | Конфиг ДОП | 2014-10-17 → 2014-10-07 (-10d) | 2014-10-21 → 2014-10-09 (-12d) |  |  | 2d → 0d |  |  |
| 360 | Mapper | 2014-10-22 → 2014-10-10 (-12d) | 2014-10-28 → 2014-10-16 (-12d) |  |  | 2d → 0d |  |  |
| 361 | **Настраиваемые коллекции** | 2014-10-29 → 2014-10-17 (-12d) | 2014-11-07 → 2014-10-28 (-10d) |  |  | 2d → 26d |  |  |
| 362 | **Конфигурация коллекций** | 2014-10-29 → 2014-10-17 (-12d) | 2014-11-06 → 2014-10-27 (-10d) |  |  | 2d → 26d |  |  |
| 363 | Доработка расширенного поиска | 2014-10-29 → 2014-10-17 (-12d) | 2014-11-06 → 2014-10-27 (-10d) |  |  | 2d → 26d | Типовая иерархия кастомных папокSS → none |  |
| 364 | Системные настройки для "Кейсов" | 2014-10-29 → 2014-10-17 (-12d) | 2014-11-05 → 2014-10-24 (-12d) |  |  | 3d → 27d | Типовая иерархия кастомных папокSS → none |  |
| 365 | Проверка работы | 2014-11-07 → 2014-10-28 (-10d) | 2014-11-07 → 2014-10-28 (-10d) |  |  | 2d → 26d |  |  |
| 366 | **Перенос логики сервисов по "Кейсам"** | 2014-10-21 → 2014-10-09 (-12d) | 2014-10-30 → 2014-10-20 (-10d) |  |  | 8d → 32d |  |  |
| 367 | Задание поставлено | 2014-10-21 → 2014-10-09 (-12d) | 2014-10-21 → 2014-10-09 (-12d) |  |  | 8d → 32d |  |  |
| 368 | Пролведение процедуры Revers Engineering для процессов | 2014-10-22 → 2014-10-10 (-12d) | 2014-10-30 → 2014-10-20 (-10d) |  |  | 8d → 32d |  |  |
| 369 | Реализация в слое CMJ-CMSochi | 2014-10-22 → 2014-10-10 (-12d) | 2014-10-30 → 2014-10-20 (-10d) |  |  | 8d → 32d |  |  |
| 370 | **Разработка коллекций** | 2014-10-22 → 2014-10-10 (-12d) | 2014-11-04 → 2014-10-23 (-12d) |  |  | 5d → 29d |  |  |
| 371 | Коллекции | 2014-10-22 → 2014-10-10 (-12d) | 2014-11-04 → 2014-10-23 (-12d) |  |  | 5d → 29d |  |  |
| 372 | Интеграция по "Кейсам" выполнена | 2014-11-07 → 2014-10-28 (-10d) | 2014-11-07 → 2014-10-28 (-10d) |  |  | 2d → 26d |  |  |
| 383 | Пролведение процедуры Revers Engineering для процессов | 2014-09-12 → 2014-10-21 (+39d) | 2014-09-22 → 2014-10-23 (+31d) | 7d → 3d |  | 8d → 29d | 312 → 382 | resources Наталья Смолянец (Смолянец) → Антон Ганчев (Киев); baseline start 2014-04-29 → 2014-05-22; baseline finish 2014-05-12 → 2014-05-30 |
| 387 | **Интеграция с CMJ по Заседаниям** | 2014-09-25 → 2014-10-17 (+22d) | 2014-10-16 → 2014-11-07 (+22d) |  |  |  |  |  |
| 388 | Конфиг ДОП | 2014-09-25 → 2014-10-17 (+22d) | 2014-09-29 → 2014-10-21 (+22d) |  |  |  | 323, 245 → 323, 360 |  |
| 389 | Mapper | 2014-09-30 → 2014-10-22 (+22d) | 2014-10-06 → 2014-10-28 (+22d) |  |  |  |  |  |
| 390 | **Настраиваемые коллекции** | 2014-10-07 → 2014-10-29 (+22d) | 2014-10-16 → 2014-11-07 (+22d) |  |  |  |  |  |
| 391 | **Конфигурация коллекций** | 2014-10-07 → 2014-10-29 (+22d) | 2014-10-15 → 2014-11-06 (+22d) |  |  |  |  |  |
| 392 | Типовая иерархия кастомных папок | 2014-10-07 → 2014-10-29 (+22d) | 2014-10-14 → 2014-11-05 (+22d) |  |  |  |  |  |
| 393 | Системные настройки для Зсд | 2014-10-07 → 2014-10-29 (+22d) | 2014-10-14 → 2014-11-05 (+22d) |  |  |  |  |  |
| 394 | Доработка расширенного поиска | 2014-10-07 → 2014-10-29 (+22d) | 2014-10-15 → 2014-11-06 (+22d) |  |  |  |  |  |
| 395 | Проверка работы | 2014-10-16 → 2014-11-07 (+22d) | 2014-10-16 → 2014-11-07 (+22d) |  |  |  |  |  |
| 396 | **Перенос логики сервисов по Зсд** | 2014-10-01 → 2014-10-21 (+20d) | 2014-10-10 → 2014-10-30 (+20d) |  |  | 8d → 24d |  |  |
| 397 | Задание поставлено | 2014-10-01 → 2014-10-21 (+20d) | 2014-10-01 → 2014-10-21 (+20d) |  |  | 8d → 24d |  |  |
| 398 | Пролведение процедуры Revers Engineering для процессов | 2014-10-02 → 2014-10-22 (+20d) | 2014-10-10 → 2014-10-30 (+20d) |  |  | 8d → 24d | 397, Реализация в слое CMJ-CMSochi → 397 |  |
| 399 | Реализация в слое CMJ-CMSochi | 2014-10-02 → 2014-10-22 (+20d) | 2014-10-10 → 2014-10-30 (+20d) |  |  | 22d → 24d |  |  |
| 400 | **Разработка коллекций** | 2014-09-30 → 2014-10-22 (+22d) | 2014-10-07 → 2014-10-29 (+22d) |  |  |  |  |  |
| 401 | Коллекции | 2014-09-30 → 2014-10-22 (+22d) | 2014-10-07 → 2014-10-29 (+22d) |  |  |  |  |  |
| 402 | Интеграция по Зсд выполнена | 2014-10-16 → 2014-11-07 (+22d) | 2014-10-16 → 2014-11-07 (+22d) |  |  |  |  |  |

| ID | Task | Start | Finish | Total float | Other |
| --- | --- | --- | --- | --- | --- |
| 403 | Есть предварительная доменная структура для интеграции с мобильным клиентом | 2014-08-29 → 2014-09-29 (+31d) | 2014-08-29 → 2014-09-29 (+31d) | 37d → 32d | constraint start no earlier than 2014-08-29 → start no earlier than 2014-09-29 |
| 404 | **Интеграция с CMJ по ПРВЗ(мобильность)** | 2014-08-29 → 2014-09-29 (+31d) | 2014-09-19 → 2014-10-20 (+31d) | 37d → 32d |  |
| 405 | Конфиг ДОП | 2014-08-29 → 2014-09-29 (+31d) | 2014-09-02 → 2014-10-01 (+29d) | 37d → 32d |  |
| 406 | Mapper | 2014-09-03 → 2014-10-02 (+29d) | 2014-09-09 → 2014-10-08 (+29d) | 37d → 32d |  |
| 407 | **Настраиваемые коллекции** | 2014-09-10 → 2014-10-09 (+29d) | 2014-09-19 → 2014-10-20 (+31d) | 37d → 32d |  |
| 408 | **Конфигурация коллекций** | 2014-09-10 → 2014-10-09 (+29d) | 2014-09-18 → 2014-10-17 (+29d) | 37d → 32d |  |
| 409 | Типовая иерархия кастомных папок | 2014-09-10 → 2014-10-09 (+29d) | 2014-09-17 → 2014-10-16 (+29d) | 37d → 32d |  |
| 410 | Доработка расширенного поиска | 2014-09-10 → 2014-10-09 (+29d) | 2014-09-18 → 2014-10-17 (+29d) | 37d → 32d |  |
| 411 | Системные настройки для ПРВЗ | 2014-09-10 → 2014-10-09 (+29d) | 2014-09-17 → 2014-10-16 (+29d) | 38d → 33d |  |
| 412 | Проверка работы | 2014-09-19 → 2014-10-20 (+31d) | 2014-09-19 → 2014-10-20 (+31d) | 37d → 32d |  |
| 413 | **Перенос логики сервисов по ПРВЗ** | 2014-09-02 → 2014-10-01 (+29d) | 2014-09-11 → 2014-10-10 (+29d) | 43d → 38d |  |
| 414 | Задание поставлено | 2014-09-02 → 2014-10-01 (+29d) | 2014-09-02 → 2014-10-01 (+29d) | 43d → 38d |  |
| 415 | Пролведение процедуры Revers Engineering для процессов | 2014-09-03 → 2014-10-02 (+29d) | 2014-09-11 → 2014-10-10 (+29d) | 43d → 38d |  |
| 416 | Реализация в слое CMJ-CMSochi | 2014-09-03 → 2014-10-02 (+29d) | 2014-09-11 → 2014-10-10 (+29d) | 43d → 38d |  |
| 417 | **Разработка коллекций** | 2014-09-03 → 2014-10-02 (+29d) | 2014-09-16 → 2014-10-15 (+29d) | 40d → 35d |  |
| 418 | Коллекции | 2014-09-03 → 2014-10-02 (+29d) | 2014-09-16 → 2014-10-15 (+29d) | 40d → 35d |  |
| 419 | Интеграция по ПРВЗ выполнена | 2014-09-19 → 2014-10-20 (+31d) | 2014-09-19 → 2014-10-20 (+31d) | 37d → 32d |  |
| 420 | **Поддержка ЭП** | 2014-10-16 → 2014-11-07 (+22d) | 2014-11-11 → 2014-12-03 (+22d) |  |  |
| 421 | Задача по поддержке ЭП поставлена | 2014-10-16 → 2014-11-07 (+22d) | 2014-10-16 → 2014-11-07 (+22d) |  |  |
| 422 | Конфиг ДОП | 2014-10-17 → 2014-11-10 (+24d) | 2014-10-21 → 2014-11-12 (+22d) |  |  |
| 423 | Mapper | 2014-10-22 → 2014-11-13 (+22d) | 2014-10-28 → 2014-11-19 (+22d) |  |  |
| 424 | Разработка АРМ настроек | 2014-10-29 → 2014-11-20 (+22d) | 2014-11-03 → 2014-11-25 (+22d) |  |  |
| 425 | **Разработка коллекций** | 2014-10-29 → 2014-11-20 (+22d) | 2014-11-11 → 2014-12-03 (+22d) |  |  |
| 426 | Коллекции | 2014-10-29 → 2014-11-20 (+22d) | 2014-11-11 → 2014-12-03 (+22d) |  |  |
| 427 | Интеграция по ЭП выполнена | 2014-11-11 → 2014-12-03 (+22d) | 2014-11-11 → 2014-12-03 (+22d) |  |  |

## Version 80 (saved 2014-09-04)

Last finish stays 2014-12-03. Complete tasks 253 → 279.

Added:

| ID | Task | Duration | Start | Finish | Predecessors | Constraint | Resources |
| --- | --- | --- | --- | --- | --- | --- | --- |
| 229 | АРМ по настройке реквизитов | 10d | 2014-09-05 | 2014-09-18 |  | finish no earlier than 2014-09-18 | (БТЛ)Сергей Степыгин |
| 330 | **Интеграция по СООБЩЕНИЯМ** | 81d | 2014-06-11 A | 2014-10-01 |  |  |  |
| 331 | Составление сообщений по ВХ и ВН | 20d | 2014-06-11 A | 2014-07-08 A |  | start no earlier than 2014-06-11 | Ардабьев Илья |
| 332 | Уведомления по модулям ОРД и ИсхД | 10d | 2014-09-04 | 2014-09-17 |  | start no earlier than 2014-09-04 | (БТЛ) Дмитрий Лякин |
| 333 | Уведомления по КЗ | 10d | 2014-09-18 | 2014-10-01 | 332 |  | (БТЛ) Дмитрий Лякин |

Removed: 282 Связи; 283 Подготовлен док. Соответствия; 284 Конфиг ДОП; 285 Mapper; 288 Типовая иерархия кастомных папок (3шт); 291 Перенос логики сервисов по WF; 292 Задание поставлено; 293 Пролведение процедуры Revers Engineering для процессов; 294 Реализация в слое CMJ-CMSochi; 326 Типовая иерархия кастомных папок; 327 Доработка расширенного поиска; 332 Пролведение процедуры Revers Engineering для процессов; 341 Реализация в слое CMJ-CMSochi

Changed:

| ID | Task | Start | Finish | Duration | Complete | Total float | Predecessors | Other |
| --- | --- | --- | --- | --- | --- | --- | --- | --- |
| 1 | **Разработка версии CM4/5** |  |  |  | 50% → 55% |  |  |  |
| 9 | **Создание модуля "Делопроизводство" (документоориентированная среда)** |  |  |  | 54% → 61% |  |  |  |
| 20 | **Проектирование и формирование ядра системы** |  |  |  | 69% → 73% |  |  |  |
| 68 | **Слой сопряжения CMJ server (CM4)** | 2013-08-05 A → 2013-04-22 A (-105d) |  | 337d? → 407d? | 68% → 74% |  |  |  |
| 220 | **Переход на 4.3 CMJ** |  | 2014-04-21 → 2014-09-18 (+150d) | 24d → 129d | 55% → 77% | 159d → 54d |  |  |
| 226 | Mapper | 2014-04-14 A | 2014-04-21 A |  | 0% → 100% | 112d → none |  |  |
| 227 | Коллекции | 2014-04-01 A | 2014-04-04 A |  | 0% → 100% | 123d → none |  |  |
| 228 | Проверки сборки и функционала | 2014-04-09 A | 2014-04-15 A |  | 0% → 100% | 163d → none |  |  |
| 280 | **Интеграция с CMJ по WF ( ознакомлениям и согласование)** |  | 2014-08-28 → 2014-09-11 (+14d) | 96d? → 106d? | 43% → 76% | 69d → 59d |  |  |
| 283 | **Настраиваемые коллекции** |  | 2014-04-29 → 2014-09-11 (+135d) | 5d? → 99d? | 41% → 74% | 71d → 59d |  |  |
| 284 | **Конфигурация коллекций** |  | 2014-04-28 → 2014-09-10 (+135d) | 4d → 98d | 46% → 76% | 71d → 59d |  |  |
| 285 | Коллекции | 2014-09-18 → 2014-04-23 (-148d) | 2014-09-25 → 2014-04-28 (-150d) | 6d → 2.17d |  | 25d → 60d | 315, 312 → none | resources (БТЛ) Олег Еренцов; (БТЛ) Дмитрий Лякин; (БТЛ)Сергей Степыгин → (БТЛ) Олег Еренцов; baseline start 2014-05-26 → 2014-04-23; baseline finish 2014-06-02 → 2014-04-28 |
| 286 | Системные настройки для WF | 2014-04-23 A → 2014-07-21 A (+89d) | 2014-04-28 → 2014-09-10 (+135d) | 4d → 38d | 46% → 80% | 71d → 59d | Типовая иерархия кастомных папок (3шт)SS → 285SS | constraint none → finish no earlier than 2014-07-21; resources Тимофей Билый → Тимофей Билый; (БТЛ) Михаил Ларин; Глеб Ноздрачев |
| 287 | Проверка работы | 2014-04-29 → 2014-09-11 (+135d) | 2014-04-29 → 2014-09-11 (+135d) |  |  | 71d → 59d |  |  |
| 288 | Интеграция по WF выполнена | 2014-06-10 → 2014-09-11 (+93d) | 2014-06-10 → 2014-09-11 (+93d) |  |  | 44d → 59d | 282, 283, Перенос логики сервисов по WF → 282, 283 |  |
| 289 | **Интеграция с CMJ по Связям** | 2014-06-11 A |  |  | 0% → 87% | 0d → 69d |  |  |
| 290 | Конфиг ДОП | 2014-06-11 A | 2014-06-13 A |  | 0% → 100% | 44d → none |  |  |
| 291 | Mapper | 2014-06-16 A | 2014-06-20 A |  | 0% → 100% | 46d → none |  |  |
| 292 | **Разработка коллекций** | 2014-06-16 A | 2014-06-24 A |  | 0% → 100% | 44d → none |  |  |
| 293 | Коллекции | 2014-06-16 A | 2014-06-24 A |  | 0% → 100% | 44d → none |  |  |
| 294 | Интеграция по ОО выполнена | 2014-06-24 A | 2014-06-24 A |  | 0% → 100% | 44d → none |  |  |
| 295 | Пддерживающие сервисы по связям | 2014-08-11 A |  |  | 0% → 70% | 0d → 54d |  | resources Антон Ганчев (Киев) [250%] → Антон Ганчев (Киев) [250%]; (БТЛ)Сергей Степыгин |
| 301 | **Интеграция с CMJ по сервису Контроля Заданий** |  | 2014-09-12 A |  | 90% → 100% | 58d → none |  |  |
| 302 | **Настраиваемые коллекции** |  | 2014-09-12 A |  | 83% → 100% | 0d → none |  |  |
| 303 | **Конфигурация коллекций** |  | 2014-09-11 A |  | 87% → 100% | 0d → none |  |  |
| 305 | Доработка расширенного поиска |  | 2014-09-11 A |  | 66% → 100% | 0d → none |  |  |
| 307 | Проверка работы | 2014-09-12 A | 2014-09-12 A |  | 0% → 100% | 0d → none |  |  |
| 308 | **Перенос логики сервисов по КЗ** |  |  |  |  |  | Перенос логики сервисов по WF → none |  |
| 313 | Интеграция по КЗ выполнена | 2014-09-12 A | 2014-09-12 A |  | 0% → 100% | 58d → none |  |  |
| 314 | **Интеграция с CMJ по Формированию дел** | 2014-09-15 → 2013-04-22 A (-511d) | 2014-10-06 → 2014-10-03 (-3d) | 16d? → 364d? | 0% → 55% | 0d → 43d |  |  |
| 315 | Конфиг ДОП | 2014-09-15 A | 2014-09-17 A |  | 0% → 100% | 0d → none |  |  |
| 316 | Mapper | 2014-09-18 A | 2014-09-24 A |  | 0% → 100% | 0d → none |  |  |
| 317 | **Настраиваемые коллекции** | 2014-09-25 A | 2014-10-06 → 2014-10-03 (-3d) | 8d? → 7d? | 0% → 86% | 18d → 43d |  |  |
| 318 | **Конфигурация коллекций** | 2014-09-25 A | 2014-10-03 → 2014-10-02 A (-1d) | 7d → 6d | 0% → 100% | 18d → none |  |  |
| 319 | Системные настройки для ФД | 2014-09-25 A | 2014-10-02 A |  | 0% → 100% | 18d → none | Типовая иерархия кастомных папокSS → none | resources Тимофей Билый → Андрей Роговец |
| 320 | Проверка работы | 2014-10-06 → 2014-10-03 (-3d) | 2014-10-06 → 2014-10-03 (-3d) |  |  | 32d → 43d |  |  |
| 321 | **Перенос логики сервисов по ФД** | 2014-09-17 A | 2014-10-02 → 2014-09-17 A (-15d) | 11d → 0d | 0% → 100% | 37d → none |  |  |
| 322 | Задание поставлено | 2014-09-17 A | 2014-09-17 A |  | 0% → 100% | 37d → none |  |  |
| 323 | Разработка АРМ предметных администраторов для ФД | 2014-09-25 A |  |  | 0% → 50% |  |  |  |
| 324 | Разработка коллекций | 2014-09-18 → 2013-04-22 (-514d) | 2014-09-25 → 2013-05-08 (-505d) | 6d → 10d |  | 25d → 397d |  |  |
| 325 | Интеграция по ФД выполнена | 2014-10-06 → 2014-10-03 (-3d) | 2014-10-06 → 2014-10-03 (-3d) |  |  | 32d → 43d | 316, 317, 285 → 316, 317 |  |
| 326 | **Интеграция с CMJ ПКД (нотификация по текущим задачам пользователя)** | 2014-10-06 A |  |  |  |  |  |  |
| 327 | **Перенос логики сервисов по ОО** | 2014-10-06 A |  |  |  |  |  |  |
| 328 | Задание поставлено | 2014-10-06 A | 2014-10-06 A |  | 0% → 100% | 32d → none |  |  |
| 329 | Пролведение процедуры Revers Engineering для процессов |  |  |  |  |  |  | resources Наталья Смолянец (Смолянец) → Глеб Ноздрачев |
| 389 | Задание поставлено |  |  |  |  |  | 380, Пролведение процедуры Revers Engineering для процессов → 380 |  |
| 393 | Коллекции |  |  |  |  |  | 380, 285 → 380 |  |
| 437 | **Графический интерфейс пользователя** |  | 2014-08-11 → 2014-09-17 (+37d) | 325d → 352d |  | 80d → 38d |  |  |
| 464 | **GUI - виджеты разработка** |  | 2014-06-25 → 2014-09-17 (+84d) | 181d → 241d | 5% → 3% | 80d → 38d |  |  |
| 467 | Остальные для стиля ст.лебедева |  | 2014-06-25 → 2014-09-17 (+84d) | 40d → 100d |  | 80d → 38d |  |  |
| 468 | **GUI - брендинг, стилизация, темы** | 2014-06-26 → 2014-04-28 A (-59d) | 2014-08-11 → 2014-06-16 A (-56d) |  | 0% → 100% | 80d → none |  |  |
| 469 | Концепция | 2014-06-26 → 2014-04-28 A (-59d) | 2014-07-09 → 2014-05-14 A (-56d) |  | 0% → 100% | 80d → none | 462, 466, 467 → 462, 466 |  |
| 470 | Реализация | 2014-07-10 → 2014-05-15 A (-56d) | 2014-08-11 → 2014-06-16 A (-56d) |  | 0% → 100% | 80d → none |  |  |
| 472 | **Дополнительные сервисы платформы** |  | 2014-08-13 → 2014-10-10 (+58d) | 167d → 209d | 53% → 76% | 80d → 38d |  |  |
| 475 | Выделение конфигурации GUI в отдельные сущности, к изменению формата которых система не будет восприимчива |  | 2014-03-27 A |  | 5% → 100% | 121d → none |  |  |
| 476 | Версионность/аудит |  |  |  |  | 121d → 145.9d |  | resources Валерий Мацукевич → Андрей Цветков |
| 477 | Блокировки бизнес-объектов | 2014-04-25 A |  |  | 0% → 90% | 121d → 127d |  |  |
| 478 | Уточнение состава и сроков работ | 2014-08-12 → 2014-09-18 (+37d) | 2014-08-13 → 2014-09-19 (+37d) |  |  | 80d → 38d |  |  |
| 481 | Локализация (на уровне конфигурации) | 2014-07-18 → 2014-09-22 (+66d) | 2014-08-07 → 2014-10-10 (+64d) |  |  | 84d → 38d | 480 → 480, 478 |  |
| 482 | **Интеграция с системой управления учетными записями** | 2014-05-29 → 2014-08-25 A (+88d) | 2014-06-17 → 2014-09-15 (+90d) | 14d → 16d | 0% → 50% | 121d → 57d |  |  |
| 483 | Интеграция с ActiveDirectory | 2014-05-29 → 2014-08-25 A (+88d) | 2014-06-17 → 2014-09-15 (+90d) | 14d → 16d | 0% → 50% | 121d → 57d |  | constraint none → finish no earlier than 2014-09-15 |
| 487 | **Сервис для работы с системным журналом** |  | 2014-02-04 → 2014-09-17 (+225d) | 15d → 173d | 67% → 50% | 213d → 55d |  |  |
| 489 | Настройка уровня логирования | 2014-01-29 → 2014-09-04 (+218d) | 2014-02-04 → 2014-09-17 (+225d) | 5d → 10d |  | 213d → 55d | 488 → none | constraint none → start no earlier than 2014-09-04; resources Андрей Карандей → Андрей Цветков |
| 521 | **Подготовка базового набора отчетов и ГО** | 2014-02-10 A | 2014-07-18 → 2014-09-05 (+49d) | 112d → 147d | 0% → 99% | 48d → 0d |  |  |
| 522 | Данные для подготовки базового набора отчетов собраны | 2014-02-10 A | 2014-02-10 A |  | 0% → 100% | 65d → none |  |  |
| 523 | Структура данных для отчетов подготовлена и описана | 2014-02-10 A | 2014-02-10 A |  | 0% → 100% | 65d → none |  |  |
| 524 | Механизм управления отчетными формами подготовлен | 2014-02-10 A | 2014-02-10 A |  | 0% → 100% | 65d → none |  |  |
| 525 | Уточнение требований по шаблонам отчетов | 2014-02-10 A | 2014-03-07 A |  | 0% → 100% | 65d → none |  |  |
| 526 | Требования по отображению отчетов сформированы | 2014-03-07 A | 2014-03-07 A |  | 0% → 100% | 65d → none |  |  |
| 527 | **Проектирование "генератора отчетов"** | 2014-03-24 A |  |  |  | 48d → 0d |  |  |

| ID | Task | Start | Finish | Duration | Complete | Total float | Other |
| --- | --- | --- | --- | --- | --- | --- | --- |
| 528 | Проектировнаие подсистемы отчетов выполнено | 2014-03-24 A |  |  | 0% → 85% | 48d → 0d |  |
| 529 | **GUI для отчетов** | 2014-04-01 A | 2014-05-16 A |  | 0% → 100% | 48d → none |  |
| 530 | Подсистема отчетов спроектирована | 2014-04-01 A | 2014-04-01 A |  | 0% → 100% | 48d → none |  |
| 531 | GUI - отображение отчётов | 2014-04-02 A | 2014-05-16 A |  | 0% → 100% | 48d → none |  |
| 532 | **Разработка шаблонов** | 2014-05-21 A | 2014-07-18 → 2014-09-05 A (+49d) | 42d → 77d | 0% → 100% | 48d → none |  |
| 533 | Задача по шаблоноам поставлена | 2014-05-21 A | 2014-05-21 A |  | 0% → 100% | 48d → none |  |
| 534 | Подготовка шаблонов типовых отчетов | 2014-05-26 → 2014-07-14 A (+49d) | 2014-07-18 → 2014-09-05 A (+49d) |  | 0% → 100% | 48d → none | constraint none → start no earlier than 2014-07-14 |
| 535 | Сопряжение с мобильным клиентом СМ4 | 2014-07-21 → 2014-09-08 (+49d) | 2014-09-26 → 2014-11-14 (+49d) |  |  | 48d → 13d |  |
| 536 | **Тестирование** |  | 2014-09-24 → 2014-11-12 (+49d) | 358d? → 393d? |  | 50d → 15d |  |
| 537 | **Функциональное тестирование** |  | 2014-09-03 → 2014-10-22 (+49d) | 343d? → 378d? |  | 65d → 30d |  |
| 542 | **Проведение тестирования** | 2014-07-14 → 2014-09-01 (+49d) | 2014-09-03 → 2014-10-22 (+49d) |  |  | 55d → 20d |  |
| 543 | **Подготовка среды тестирования** | 2014-07-14 → 2014-09-01 (+49d) | 2014-08-01 → 2014-09-19 (+49d) |  |  | 55d → 20d |  |
| 544 | Разворачивание системы | 2014-07-14 → 2014-09-01 (+49d) | 2014-07-21 → 2014-09-08 (+49d) |  |  | 98d → 63d |  |
| 545 | Система готова для подключения инструментов мониторинга | 2014-07-21 → 2014-09-08 (+49d) | 2014-07-21 → 2014-09-08 (+49d) |  |  | 98d → 63d |  |
| 546 | Наполнение данными | 2014-07-21 → 2014-09-08 (+49d) | 2014-08-01 → 2014-09-19 (+49d) |  |  | 50d → 15d |  |
| 547 | Среда тестирования готова | 2014-08-01 → 2014-09-19 (+49d) | 2014-08-01 → 2014-09-19 (+49d) |  |  | 50d → 15d |  |
| 548 | Проведение тестирования | 2014-08-04 → 2014-09-22 (+49d) | 2014-08-15 → 2014-10-03 (+49d) |  |  | 50d → 15d |  |
| 549 | **Обработка результатов тестирования и внесение изменений в модуль** | 2014-08-14 → 2014-10-02 (+49d) | 2014-09-03 → 2014-10-22 (+49d) |  |  | 50d → 15d |  |
| 550 | Устранение замечаний по результатам функционального тестирования | 2014-08-14 → 2014-10-02 (+49d) | 2014-09-03 → 2014-10-22 (+49d) |  |  | 50d → 15d |  |
| 551 | Проверка устранения замечаний | 2014-08-27 → 2014-10-15 (+49d) | 2014-09-03 → 2014-10-22 (+49d) |  |  | 50d → 15d |  |
| 552 | **Нагрузочное тестирование** | 2014-08-15 → 2014-10-03 (+49d) | 2014-09-24 → 2014-11-12 (+49d) |  |  | 50d → 15d |  |
| 553 | Стенд для нагрузочного тестирования подготовлен | 2014-08-15 → 2014-10-03 (+49d) | 2014-08-15 → 2014-10-03 (+49d) |  |  | 63d → 28d |  |
| 554 | Проведения нагрузочного тестирования | 2014-09-04 → 2014-10-23 (+49d) | 2014-09-17 → 2014-11-05 (+49d) |  |  | 50d → 15d |  |
| 555 | Обработка результатов нагрузочного тестирования | 2014-09-18 → 2014-11-06 (+49d) | 2014-09-24 → 2014-11-12 (+49d) |  |  | 50d → 15d |  |
| 559 | **Подготовка документации** |  |  | 80d → 80d? |  |  |  |

## Version 81 (saved 2014-09-05)

Last finish stays 2014-12-03.

Added:

| ID | Task | Duration | Start | Finish | Predecessors | Constraint | Resources |
| --- | --- | --- | --- | --- | --- | --- | --- |
| 395 | **Интеграция с МЭДО** | 18d | 2014-10-01 | 2014-10-27 | 333 |  |  |
| 396 | Задача по поддержке ЭП поставлена | 0d | 2014-10-01 | 2014-10-01 |  | finish no earlier than 2014-07-10 |  |
| 397 | Конфиг ДОП | 3d | 2014-10-02 | 2014-10-06 | 396 |  | Александр Власюк |
| 398 | Mapper | 5d | 2014-10-07 | 2014-10-13 | 397 |  | Александр Власюк |
| 399 | Разработка АРМ настроек | 4d | 2014-10-14 | 2014-10-17 | 398 |  |  |
| 400 | **Разработка коллекций** | 10d | 2014-10-14 | 2014-10-27 | 398 |  |  |
| 401 | Коллекции | 10d | 2014-10-14 | 2014-10-27 |  |  | (БТЛ) Олег Еренцов; (БТЛ) Дмитрий Лякин; (БТЛ)Сергей Степыгин |
| 402 | Интеграция по ЭП выполнена | 0d | 2014-10-27 | 2014-10-27 | 401 |  |  |

Changed:

| ID | Task | Start | Finish | Duration | Complete | Total float | Predecessors |
| --- | --- | --- | --- | --- | --- | --- | --- |
| 9 | **Создание модуля "Делопроизводство" (документоориентированная среда)** |  |  |  | 61% → 60% |  |  |
| 68 | **Слой сопряжения CMJ server (CM4)** | 2013-04-22 A → 2013-08-05 A (+105d) |  | 407d? → 337d? | 74% → 73% |  |  |
| 314 | **Интеграция с CMJ по Формированию дел** | 2013-04-22 A → 2014-09-15 A (+511d) | 2014-10-03 → 2014-10-14 (+11d) | 364d? → 22d? |  | 43d → 36d |  |
| 324 | Разработка коллекций | 2013-04-22 → 2014-10-01 (+527d) | 2013-05-08 → 2014-10-14 (+524d) |  |  | 397d → 36d | none → 323 |
